# CFPP Task Order #4 - CLIN 2 (DEC Month End update complete)

Schedule from Primavera P6, 2021-05-24 to 2024-04-30, data date 2023-01-01, A marks actual dates.

## Calendars

- UAMPS 5 Day w/ Holidays: Mon-Fri 07:00-15:00; Sat-Sun off. Exceptions (off unless hours are given): 2021-05-31, 2021-07-05, 2021-09-06, 2021-10-11, 2021-11-11, 2021-11-25 to 2021-11-26, 2021-12-24 07:00-15:00, 2021-12-27 to 2021-12-31, 2022-01-17 07:00-15:00, 2022-02-21 07:00-15:00, 2022-05-30, 2022-07-04, 2022-09-05, 2022-10-10 07:00-15:00, 2022-11-11 07:00-15:00, 2022-11-24, 2022-12-26, 2023-01-02 07:00-15:00, 2023-01-16 07:00-15:00, 2023-02-20 07:00-15:00, 2023-04-03 07:00-15:00, 2023-04-10 07:00-15:00, 2023-04-17 07:00-15:00, 2023-04-24 07:00-15:00, 2023-05-29, 2023-07-04, 2023-09-04, 2023-10-09 07:00-15:00, 2023-11-10 07:00-15:00, 2023-11-23 to 2023-11-24, 2023-12-25 to 2023-12-29, 2024-01-01, 2024-01-15 07:00-15:00, 2024-02-19 07:00-15:00.

## Resources

| Resource | Group |
| --- | --- |
| Field Investigations | labor |
| Meteorology | labor |
| Hydrology | labor |
| Part 1 | labor |
| Part 2 | labor |
| Part 3 | labor |
| Part 4 | labor |
| Part 5 | labor |
| Part 6 | labor |
| Part 7 | labor |
| Part 8 | labor |
| Part 9 | labor |
| Part 10 | labor |
| Part 11 | labor |
| Topical Reports & Integration | labor |
| Final Reviews & Publications | labor |
| Indirect Budget | labor |
| Covid Attestation | labor |
| LWA | labor |

## Schedule

| ID | WBS | Activity | Type | Duration | Start | Finish | Predecessors | Complete | Planned start | Planned finish | Total float | Free float | Constraint | Other | zText_Level 3 Schedule | SDA cleanup notes | Rebaseline details | 11B NOV EOM Notes | CFPP, LLC WBS Structure | Author | zText_CFPP Look Ahead Notes | DOE MILESTONE | UDF Indicator 01 | UDF Text 01 | UDF Text 02 | JLG - Generic Field | Milestone | PIM - Milestone | Period of Performance | PMAR | zText_33 | zText_02 | z_Text-4 | TWG | NEED UPDATE | Monthly Variance | 10B OCT EOM Notes | 12B DEC EOM Notes | PSHA | Reconcile Rev 0 Milestones | CFPP - Contractor's Remarks | nuscale comp | Forecast Finish | Critical Paths | 10A OCT MIDMONTH Notes | COLA Critical Path Sched | Critcal Path | ETAP DETAILS | zText_01 | Areva - Item Number | zText_03 |
| --- | --- | --- | --- | --- | --- | --- | --- | --- | --- | --- | --- | --- | --- | --- | --- | --- | --- | --- | --- | --- | --- | --- | --- | --- | --- | --- | --- | --- | --- | --- | --- | --- | --- | --- | --- | --- | --- | --- | --- | --- | --- | --- | --- | --- | --- | --- | --- | --- | --- | --- | --- |
|  | LWA2 | **CFPP - LWA Planning Milestones (With Exemptions)** |  |  | 2022-10-31 | 2024-01-10 |  |  |  |  |  |  |  |  |  |  |  |  |  |  |  |  |  |  |  |  |  |  |  |  |  |  |  |  |  |  |  |  |  |  |  |  |  |  |  |  |  |  |  |  |  |
| CP-LWA-1100 |  | Exemption Request Prep Start | milestone | 0d | 2022-10-31 A | 2022-10-31 A | PKM-0065 | 100% |  |  |  |  |  | cal | Yes | 6 - 8 months from start of exemption to submittal Matt | FL5 | As of 29nov22 complete | 03 | TO4 |  |  |  |  |  |  |  |  |  |  |  |  |  |  |  |  |  |  |  |  |  |  |  |  |  |  |  |  |  |  |  |
| CP-LWA-1110 |  | Exemption Submittal Review (TO4 Team Review) | milestone | 0d | 2023-05-12 | 2023-05-12 | CP-LWA-1100 |  |  |  | 242d | 34d | start on or after 2023-05-12 | cal | Yes | need chapter 2 complete to start this | FL5 |  | 03 | TO4 |  |  |  |  |  |  |  |  |  |  |  |  |  |  |  |  |  |  |  |  |  |  |  |  |  |  |  |  |  |  |  |
| CP-LWA-1120 |  | Exemption Request Submitted | milestone | 0d | 2023-06-30 | 2023-06-30 | CP-LWA-1110 |  |  |  | 208d | 129d | start on or after 2023-06-30 | cal | Yes |  | FL5 |  | 03 | TO4 |  |  |  |  |  |  |  |  |  |  |  |  |  |  |  |  |  |  |  |  |  |  |  |  |  |  |  |  |  |  |  |
| CP-LWA-1130 |  | LWA/COLA Submitted | milestone | 0d | 2024-01-10 | 2024-01-10 | PKM-0180 FF, CP-LWA-1120 |  |  |  | 79d |  |  | cal | Yes |  | FL5 |  | 03 | TO4 |  |  |  |  |  |  |  |  |  |  |  |  |  |  |  |  |  |  |  |  |  |  |  |  |  |  |  |  |  |  |  |
|  | LWA1 | **CFPP - LWA Planning Milestones (Two Separate LWA Requests)** |  |  | 2022-09-26 | 2024-01-10 |  |  |  |  |  |  |  |  |  |  |  |  |  |  |  |  |  |  |  |  |  |  |  |  |  |  |  |  |  |  |  |  |  |  |  |  |  |  |  |  |  |  |  |  |  |
| CP-LWA-0100 |  | LWA Request #1 Prep Start | milestone | 0d | 2022-09-26 A | 2022-09-26 A | IFM-CFP-TO4-0077 FS+20d | 100% | 2022-10-03 | 2022-10-03 |  |  |  | cal | Yes |  | FL5 |  | 03 | TO4 | Y | x |  |  |  |  |  |  |  |  |  |  |  |  |  |  |  |  |  |  |  |  |  |  |  |  |  |  |  |  |  |
| CP-LWA-0150 |  | LWA Request #1 - Submitted | milestone | 0d | 2023-10-13 | 2023-10-13 | CP-LWA-MIL-0130 FF, CP-LWA-0100 |  |  |  | 134d | 55d |  | cal | Yes |  | FL5 |  | 03 | TO4 |  |  |  |  |  |  |  |  |  |  |  |  |  |  |  |  |  |  |  |  |  |  |  |  |  |  |  |  |  |  |  |
| CP-LWA-0200 |  | LWA Request #2 - Submitted | milestone | 0d | 2024-01-10 | 2024-01-10 | PKM-0180 FF, CP-LWA-0150 |  |  |  | 79d |  |  | cal | Yes |  | FL5 |  | 03 | TO4 |  |  |  |  |  |  |  |  |  |  |  |  |  |  |  |  |  |  |  |  |  |  |  |  |  |  |  |  |  |  |  |
|  | MS | **CFPP - Project Milestones** |  |  | 2021-05-24 | 2024-04-30 |  |  |  |  |  |  |  |  |  |  |  |  |  |  |  |  |  |  |  |  |  |  |  |  |  |  |  |  |  |  |  |  |  |  |  |  |  |  |  |  |  |  |  |  |  |
|  | KM | **CFPP TO4 CLIN 2 - Project Milestones - Key Milestones** |  |  | 2021-05-24 | 2024-04-30 |  |  |  |  |  |  |  |  |  |  |  |  |  |  |  |  |  |  |  |  |  |  |  |  |  |  |  |  |  |  |  |  |  |  |  |  |  |  |  |  |  |  |  |  |  |
| PKM-0000 |  | PKM - CFPP COLA Begins | milestone | 0d | 2021-05-24 A | 2021-05-24 A |  | 100% |  |  |  |  |  |  | Yes |  | FL4 |  | 03 | FL4 |  |  | UDF_G3 | UAMPS | Removed B700 | 2.5 Seismic COLA | verified COMPLETE | PKM | LNTP |  |  |  |  |  |  |  |  |  |  |  |  |  |  |  |  |  |  |  |  |  |  |
| PKM-0005 |  | PKM - Award CLIN 2 (CFPP to Fluor) (LNTP) | milestone | 0d | 2021-05-24 A | 2021-05-24 A | PKM-0000 | 100% |  |  |  |  |  | PMAR | Yes |  | FL4 |  | 03 | FL4 |  |  | UDF_G3 | DR/MC |  |  | verified COMPLETE | PKM | LNTP | Y |  |  |  |  |  |  |  |  |  |  |  |  |  |  |  |  |  |  |  |  |  |
| PKM-0010 |  | PKM - Receive CFPP Scope Decision - Number of Units | milestone | 0d | 2021-05-24 A | 2021-05-24 A | PKM-0005 | 100% |  |  |  |  |  |  | Yes |  | CFPP |  | 03 | CFPP |  |  | UDF_G3 | DR/MC |  |  | verified COMPLETE | PKM | LNTP |  |  |  |  |  |  |  |  |  |  |  |  |  |  |  |  |  |  |  |  |  |  |
| PKM-0015 |  | PKM - Award Subcontract - S&ME | milestone | 0d | 2021-06-10 A | 2021-06-10 A | B-000-0010, PKM-0010 | 100% |  |  |  |  |  |  | Yes |  | FL4 |  | 03 | FL4 |  |  | UDF_G3 | DR/MC |  |  | verified COMPLETE | PKM | LNTP |  |  |  |  |  |  |  |  |  |  |  |  |  |  |  |  |  |  |  |  |  |  |
| PKM-0020 |  | PKM - Award Subcontract - RIZZO LNTP | milestone | 0d | 2021-06-17 A | 2021-06-17 A | B-000-0005 | 100% |  |  |  |  |  |  | Yes |  | FL4 |  | 03 | FL4 |  |  | UDF_G3 | DR/MC |  |  | verified COMPLETE | PKM | LNTP |  |  |  |  |  |  |  |  |  |  |  |  |  |  |  |  |  |  |  |  |  |  |
| PKM-0025 |  | PKM - Complete Project Startup | milestone | 0d | 2021-07-12 A | 2021-07-12 A | PKM-0005 FS+21d, PKM-0015 FF | 100% |  |  |  |  |  |  | Yes |  | FL4 |  | 03 | FL4 |  |  | UDF_G3 | DR/MC |  |  | verified COMPLETE | PKM | LNTP |  |  |  |  |  |  |  |  |  |  |  |  |  |  |  |  |  |  |  |  |  |  |
| PKM-0030 |  | PKM - Complete Alignment Meetings | milestone | 0d | 2021-07-12 A | 2021-07-12 A | PKM-0005 FS+21d, PKM-0025 FF | 100% |  |  |  |  |  |  | Yes |  | FL4 |  | 03 | FL4 |  |  | UDF_G3 | DR/MC |  |  | verified COMPLETE | PKM | LNTP |  |  |  |  |  |  |  |  |  |  |  |  |  |  |  |  |  |  |  |  |  |  |
| PKM-0035 |  | PKM - Award CLIN2 (CFPP to Fluor) (FNTP) | milestone | 0d | 2021-08-20 A | 2021-08-20 A | PKM-0005 | 100% | 2021-08-25 | 2021-08-25 |  |  |  | PMAR | Yes |  | FL4 |  | 03 | FL4 |  |  | UDF_G3 | DR/MC |  |  | verified COMPLETE | PKM | FNTP | Y | Critical Path | Yes | CP-1 |  |  |  |  |  |  |  |  |  |  |  |  |  |  |  |  |  |  |
| PKM-0040 |  | PKM - Award Subcontract Mod - RIZZO FNTP | milestone | 0d | 2021-09-20 A | 2021-09-20 A | PKM-0035, B-000-0035 | 100% |  |  |  |  |  |  | Yes |  | FL4 |  | 03 | FL4 |  |  | UDF_G3 | DR/MC |  |  | verified COMPLETE | PKM | FNTP |  | Critical Path | Yes | CP-1 |  |  |  |  |  |  |  |  |  |  |  |  |  |  |  |  |  |  |
| PKM-0045 |  | PKM - Award Subcontract Mod - SM&E | milestone | 0d | 2021-09-21 A | 2021-09-21 A | PKM-0035, PKM-0040 FS+1d, B-000-0035 | 100% |  |  |  |  |  |  | Yes |  | FL4 |  | 03 | FL4 |  |  | UDF_G3 | DR/MC |  |  | verified COMPLETE | PKM | FNTP |  | Critical Path | Yes |  |  |  |  |  |  |  |  |  |  |  |  |  |  |  |  |  |  |  |
| PKM-0050 |  | PKM - Award Subcontract - CMCG | milestone | 0d | 2021-10-04 A | 2021-10-04 A | B-000-0025 | 100% |  |  |  |  |  |  | Yes |  | FL4 |  | 03 | FL4 |  |  | UDF_G3 | DR/MC |  |  | verified COMPLETE | PKM | FNTP |  |  |  |  |  |  |  |  |  |  |  |  |  |  |  |  |  |  |  |  |  |  |
| PKM-0060 |  | PKM - Complete Baseline Schedule | milestone | 0d | 2021-10-21 A | 2021-10-21 A | PKM-0005 FS+43d, PKM-0035 FS+43d | 100% |  |  |  |  |  | PMAR | Yes |  | FL4 |  | 03 | FL4 |  |  | UDF_G3 | DR/MC |  |  | verified COMPLETE | PKM | FNTP | Y |  |  |  |  |  |  |  |  |  |  |  |  |  |  |  |  |  |  |  |  |  |
| PKM-0065 |  | PKM - Award Subcontract - NUSCALE | milestone | 0d | 2021-11-12 A | 2021-11-12 A | B-000-0020 | 100% |  |  |  |  |  |  | Yes |  | FL4 |  | 03 | FL4 |  |  | UDF_G3 | DR/MC |  |  | verified COMPLETE | PKM | FNTP |  |  |  |  |  |  |  |  |  |  |  |  |  |  |  |  |  |  |  |  |  |  |
| PKM-0070 |  | PKM - Award Subcontract - S&L | milestone | 0d | 2021-11-12 A | 2021-11-12 A | B-000-0015 | 100% |  |  |  |  |  |  | Yes |  | FL4 |  | 03 | FL4 |  |  | UDF_G3 | DR/MC |  |  | verified COMPLETE | PKM | FNTP |  |  |  |  |  |  |  |  |  |  |  |  |  |  |  |  |  |  |  |  |  |  |
| PKM-0075 |  | PKM - Start MET Data Collection | milestone | 0d | 2021-12-08 A | 2021-12-08 A | CP-FI-MET-DC-0020 | 100% | 2022-01-03 | 2022-01-03 |  |  |  |  | Yes |  | RIZZO |  | 03 | RIZZO |  |  | UDF_G1 |  |  | Tmonth Seismic SI | 1 | PKM | FNTP |  | Near Critical Path #2 - Meteorological Report | Yes | CP-1 |  |  |  |  |  |  |  |  |  |  |  |  |  |  |  |  |  |  |
| PKM-0085 |  | PKM - Complete CERTREC Training & COLA Writing Guide | milestone | 0d | 2022-01-19 A | 2022-01-19 A | PKM-0065 FS+40d, B-000-0065 | 100% |  |  |  |  |  |  | Yes |  | FL4 |  | 03 | FL4 |  |  | UDF_G3 | DR/MC |  |  | verified COMPLETE | PKM | FNTP |  |  |  |  |  |  |  |  |  |  |  |  |  |  |  |  |  |  |  |  |  |  |
| PKM-0080 |  | PKM - Subsurface Drilling Complete | milestone | 0d | 2022-02-02 A | 2022-02-02 A | FI-GI-SSI-DR-0070, FI-GI-SSI-DR-0080 | 100% |  |  |  |  |  | PMAR | Yes |  | RIZZO |  | 03 | RIZZO |  |  | UDF_G1 |  | 9/11/20 |  | verified COMPLETE | PKM | FNTP | Y |  | Yes |  |  |  |  |  |  |  |  |  |  |  |  |  |  |  |  |  |  |  |
| PKM-0090 |  | PKM - Subsurface Investigation to INL PSHA Complete | milestone | 0d | 2022-02-15 A | 2022-02-15 A | FI-GI-SSI-RP-0025, PKM-0080 | 100% |  |  |  |  |  |  | Yes |  | RIZZO |  | 03 | RIZZO |  |  | UDF_G1 |  | 9/11/20 |  | 2 | PKM | FNTP |  |  | Yes |  | 1 |  |  |  |  |  |  |  |  |  |  |  |  |  |  |  |  |  |
| PKM-0205 |  | PKM - Complete CERTREC Training & COLA Writing Guide - Part 2 | milestone | 0d | 2022-03-16 A | 2022-03-16 A | PKM-0065 FS+70d, B-000-0065, PKM-0085 | 100% | 2022-03-01 | 2022-03-01 |  |  |  |  | Yes |  | FL4 |  | 03 | NuScale |  |  | UDF_G3 | DR/MC |  |  | verified COMPLETE | PKM | FNTP |  |  |  |  |  |  |  |  |  |  |  |  |  |  |  |  |  |  |  |  |  |  |
| PKM-0205a |  | PKM - Complete CERTREC Training & COLA Writing Guide - Part 3 | milestone | 0d | 2022-04-18 A | 2022-04-18 A | PKM-0205 | 100% |  |  |  |  |  |  | Yes |  | FL4 |  | 03 | NuScale |  |  | UDF_G3 | DR/MC |  |  | verified COMPLETE | PKM | FNTP |  |  |  |  |  |  |  |  |  |  |  |  |  |  |  |  |  |  |  |  |  |  |
| PKM-0205b |  | PKM - Complete CERTREC Training & COLA Writing Guide - Part 4 (training and writers guide) | milestone | 0d | 2022-10-14 A | 2022-10-14 A | PKM-0205a | 100% | 2022-10-31 | 2022-10-31 |  |  |  |  | Yes |  | FL4 |  | 03 | NuScale |  |  |  | DR/MC |  |  |  | PKM | FNTP |  |  |  |  |  | OCT | Oct | oct update finish as planned verify |  |  |  |  |  |  |  |  |  |  |  |  |  |  |
| PKM-0210 |  | PKM - NRC Onsite Engagement Meeting | milestone | 0d | 2022-10-26 A | 2022-10-26 A | PKM-0065 | 100% | 2022-10-31 | 2022-10-31 |  |  |  |  | Yes | New activity per Action Item List #21 (tie to VHA meeting?) | FL4 |  | 03 | NuScale |  |  |  | DR/MC |  |  |  | PKM | FNTP |  |  |  |  |  | OCT | Oct | oct update finish slip from 24oct22 |  |  |  |  |  |  |  |  |  |  |  |  |  |  |
| PKM-0220 |  | PKM - Turnover of the final data set from INL | milestone | 0d | 2022-12-08 A | 2022-12-08 A | CP-P2-02-05-SHC-0100, CP-P2-02-05-SHC-0105, FI-GI-SSI-DR-0080 FS+20d, CP-P2-02-05-SHC-0070 FS+100d | 100% | 2022-11-29 | 2022-11-29 |  |  |  |  | Yes |  | FL4 |  | 03 | INL | Y |  | UDF_G3 | DR/MC |  |  |  | PKM | FNTP |  |  | Yes | CP-5 | 1 |  |  |  | as of 30dec22 updated | PSHA |  |  |  |  |  |  |  |  |  |  |  |  |
| PKM-0125 |  | PKM - Nuscale provide final verification of SDA content to NRC | milestone | 0d | 2023-01-03 | 2023-01-03 | PKM-0065 FF |  |  |  | 41d | 0d | finish on or after 2023-01-03 |  | Yes |  | RIZZO |  | 03 | NuScale |  | 11x | UDF_G1 |  |  | Tmonth Seismic SI | 4 | PKM | FNTP |  | Near Critical Path #2 - Meteorological Report | Yes | CP-1 | 1 |  |  |  | as of 30dec22 updated 12/31/22 not valid date |  | 3.3 13.03 15 19 | as of 30dec22 updated 12/31/22 not valid date |  |  |  |  |  |  |  |  |  |  |
| PKM-0120 |  | PKM - Issue 1st Year Verified MET Data | milestone | 0d | 2023-01-06 | 2023-01-06 | CP-FI-MET-DC-0070 |  |  |  | 1d | 0d | finish on or after 2023-01-06 |  | Yes |  | RIZZO |  | 03 | RIZZO |  | 11x | UDF_G1 |  |  | Tmonth Seismic SI | 3 | PKM | FNTP |  | Near Critical Path #2 - Meteorological Report | Yes | CP-1 | 1 |  |  |  | As of 30dec22 verify date |  | 3.3 13.03 15 19 |  | nuscalex5.11 |  |  |  |  |  |  |  |  |  |
| PKM-0130 |  | PKM - Issue 1st Year Groundwater Monitoring Data Report | milestone | 0d | 2023-04-05 | 2023-04-05 | CP-FI-HYD-DC-0050, CP-FI-HYD-DC-0055 |  |  |  | 23d | 0d |  |  | Yes |  | RIZZO |  | 03 | RIZZO |  | 14x | UDF_G1 |  |  | Overview P1 | 5 | PKM | FNTP |  |  | Yes |  |  |  |  |  |  |  |  |  |  |  |  |  |  |  |  |  |  |  |
| PKM-0110 |  | PKM - NRC Approval of the EPZ Methodology Topical Report | milestone | 0d | 2023-04-28 | 2023-04-28 | PKM-0065 |  |  |  | 251d | 0d | finish on or after 2023-04-28 |  | Yes |  | FL4 |  | 03 | NuScale |  |  |  | DR/MC |  |  |  | PKM | FNTP |  | Critical Path |  |  |  |  |  |  |  |  |  |  |  | 2023-04-28 |  |  |  |  |  |  |  |  |
| PKM-0140 |  | PKM - Part 07 (Exemptions & Departures) - Complete | milestone | 0d | 2023-05-24 | 2023-05-24 | CP-FR-CC-0015 |  |  |  | 128d |  |  |  | Yes |  | FL4 |  | 03 | FL4 |  | 21 | UDF_G1 |  |  | Nate SI | 8 | PKM | FNTP |  |  |  |  |  |  |  |  |  |  |  |  |  |  | 5 |  |  |  |  |  |  |  |
| PKM-0135 |  | PKM - Part 05 (EP) - Complete | milestone | 0d | 2023-06-27 | 2023-06-27 | CP-FR-CC-0010 |  |  |  | 90d | 0d |  |  | Yes |  | FL4 |  | 03 | FL4 |  |  | UDF_G1 |  |  |  | 6 | PKM | FNTP |  |  |  |  |  |  |  |  |  |  |  |  |  |  | 5 |  |  |  |  |  |  |  |
| PKM-0160 |  | PKM - Part 11 (Supplemental Information) - LWA - Complete | milestone | 0d | 2023-08-08 | 2023-08-08 | CP-FR-CC-0035 |  |  |  | 76d |  |  |  | Yes |  | FL4 |  | 03 | FL4 |  |  | UDF_G1 |  |  | Nate | 7 | PKM | FNTP |  |  |  |  |  |  |  |  |  |  |  |  |  |  | 5 |  |  |  |  |  |  |  |
| PKM-0150 |  | PKM - Part 04 (Tech Specs) - Complete | milestone | 0d | 2023-08-29 | 2023-08-29 | CP-FR-CC-0025 |  |  |  | 61d |  |  |  | Yes |  | FL4 |  | 03 | FL4 |  |  | UDF_G3 |  |  |  | 14 | PKM | FNTP |  |  |  |  |  |  |  |  |  |  |  |  |  |  | 5 |  |  |  |  |  |  |  |
| PKM-0055 |  | PKM - Part 09 (Withheld Information) - Complete | milestone | 0d | 2023-08-30 | 2023-08-30 | CP-FR-CC-0000 |  |  |  | 60d |  |  |  | Yes |  | FL4 |  | 03 | FL4 |  |  | UDF_G1 |  |  | Nate | 9 | PKM | FNTP |  |  |  |  |  |  |  |  |  |  |  |  |  |  | 5 | oct update |  |  |  |  |  |  |
| PKM-0105 |  | PKM - Part 10 (QAPD) - Complete | milestone | 0d | 2023-09-08 | 2023-09-08 | CP-FR-CC-0005 |  |  |  | 39d | 0d |  |  | Yes |  | FL4 |  | 03 | FL4 |  |  | UDF_G3 |  |  |  | 11 | PKM | FNTP |  |  |  |  |  |  |  |  |  |  |  |  |  |  | 5 |  |  |  |  |  |  |  |
| PKM-0165 |  | PKM - Part 01 (General & Financial Information) - Complete | milestone | 0d | 2023-09-18 | 2023-09-18 | CP-FR-CC-0040 |  |  |  | 48d |  |  |  | Yes |  | FL4 |  | 03 | FL4 |  | 20 | UDF_G3 |  |  |  | 12 | PKM | FNTP |  |  |  |  |  |  |  |  |  |  |  |  |  |  | 5 |  |  |  |  |  |  |  |
| PKM-0145 |  | PKM - Part 06 (Security Plans) - Complete | milestone | 0d | 2023-09-27 | 2023-09-27 | CP-FR-CC-0020 |  |  |  | 41d |  |  |  | Yes |  | FL4 |  | 03 | FL4 |  |  | UDF_G1 |  |  |  | 10 | PKM | FNTP |  |  |  |  |  |  |  |  |  |  |  |  |  |  | 5 |  |  |  |  |  |  |  |
| PKM-0155 |  | PKM - Part 08 (ITAAC) - Complete | milestone | 0d | 2023-10-24 | 2023-10-24 | CP-FR-CC-0030 |  |  |  | 22d |  |  |  | Yes |  | FL4 |  | 03 | FL4 |  |  | UDF_G1 |  |  | Nate | 13 | PKM | FNTP |  | Critical Path |  |  |  |  |  |  |  |  |  |  |  |  | 5 |  |  |  |  |  |  |  |
| PKM-0170 |  | PKM - Part 03 (ER) - Complete | milestone | 0d | 2023-11-27 | 2023-11-27 | CP-FR-CC-0045 |  |  |  | 0d |  |  | PMAR | Yes |  | FL4 |  | 03 | FL4 |  | x | UDF_G1 |  |  |  | 16 | PKM | FNTP | Y |  | Yes |  |  |  |  |  |  |  |  |  |  |  | 5 |  | 1 | 1 | X |  |  |  |
| PKM-0175 |  | PKM - Part 02 (FSAR) - Complete | milestone | 0d | 2023-11-27 | 2023-11-27 | CP-FCR-CC-0100, CP-FCR-CC-0030, CP-FCR-CC-0055, CP-FCR-CC-0140, CP-FCR-CC-0135, CP-FCR-CC-0110, CP-FCR-CC-0080, CP-FCR-CC-0040, CP-FCR-CC-0025, CP-FCR-CC-0120, CP-FCR-CC-0045, CP-FCR-CC-0065, CP-FCR-CC-0090, CP-FCR-CC-0060, CP-FCR-CC-0050, CP-FCR-CC-0165, CP-FCR-CC-0035, CP-FCR-CC-0115, CP-FCR-CC-0105, CP-FR-CC-0050 |  |  |  | 0d |  |  | PMAR | Yes |  | FL4 |  | 03 | FL4 |  | 22 | UDF_G1 |  |  | Tmonth Seismic SI | 15 | PKM | FNTP | Y | Near Critical Path #1 - Probablistic Risk Analysis | Yes |  |  |  |  |  |  | PSHA |  |  |  |  | 5 |  | 1 | 2 |  | Yes |  |  |
| PKM-0180 |  | PKM - COLA Delivery | milestone | 0d | 2024-01-10 | 2024-01-10 | CP-FR-PT-0015 |  |  |  | 0d |  |  | PMAR | Yes |  | FL4 |  | 03 | FL4 |  |  | UDF_G1 |  | Reduced duration | Tmonth CP XXX ZZ COLA SI | 17 | PKM | FNTP | Y | Not Included | Yes | CP-1 | 1 |  |  |  |  |  |  |  |  |  |  |  | 1 | 1 |  |  | A143700 |  |
| PKM-0200 |  | PKM - Fluor Contract COLA Delivery | milestone | 0d | 2024-04-30 | 2024-04-30 | PKM-0180, CP-FR-PT-0020 |  |  |  | 0d |  | finish on or before 2024-04-30 |  | Yes |  | FL4 |  | 03 | FL4 |  |  | UDF_G1 | JP | OK |  | 18 | PKM | FNTP |  | Not Included | Yes | CP-1 |  |  |  |  |  |  |  |  |  |  |  |  |  |  |  | critical |  | NO |

Notes:
- CP-LWA-0100: 9A SEP EOM Notes: Sep Update start slip from 29 Aug possible split 1(15Sep) & 2(30 Sep) and add 3rd(Remove LWA #2 from act name)
- PKM-0120: Schedule Notes: Removed successor CP-P2-02-03-SD-0070
- PKM-0110: 9A SEP EOM Notes: Sep update
- PKM-0200: 9A SEP EOM Notes: Sep update PDN finalized

| ID | WBS | Activity | Type | Duration | Start | Finish | Predecessors | Complete | Planned start | Planned finish | UDF Text 01 | UDF Text 02 | zText_Level 3 Schedule | Milestone | Rebaseline details | CFPP, LLC WBS Structure | Author | Period of Performance | Critical Paths | zText_CFPP Look Ahead Notes | SDA cleanup notes | NEED UPDATE | Deliverable Owner | UDF Finish Date 01 | Other | nuscale comp | ETAP DETAILS | Comments | VERIFIED MONTHLY UPDATE |
| --- | --- | --- | --- | --- | --- | --- | --- | --- | --- | --- | --- | --- | --- | --- | --- | --- | --- | --- | --- | --- | --- | --- | --- | --- | --- | --- | --- | --- | --- |
|  | IM | **CFPP TO4 CLIN 2 - Project Milestones - Interface Milestones** |  |  | 2021-06-25 | 2023-04-28 |  |  |  |  |  |  |  |  |  |  |  |  |  |  |  |  |  |  |  |  |  |  |  |
|  | 1 | **Task Order #1 to Task Order #4 Interface Milestones** |  |  | 2021-06-25 | 2021-06-25 |  |  |  |  |  |  |  |  |  |  |  |  |  |  |  |  |  |  |  |  |  |  |  |
| IFM-TO1-TO4-0000 |  | TO #1 to TO #4 - Revise Plot Layout & Bore Hole Plan & Specs | milestone | 0d | 2021-06-25 A | 2021-06-25 A | IFM-TO1-TO4-0005 SS | 100% |  |  | FL/MM | Requires SASW, Cooling Technology decisions to be made | Yes | verified COMPLETE | FL1 | 03 | FL1 | LNTP |  |  |  |  |  |  |  |  |  |  |  |
| IFM-TO1-TO4-0005 |  | TO #1 to TO #4 - Revise Site Layout | milestone | 0d | 2021-06-25 A | 2021-06-25 A | B-000-0000 SS | 100% |  |  |  |  | Yes | verified COMPLETE | FL1 | 03 | FL1 | LNTP |  |  |  |  |  |  |  |  |  |  |  |
|  | 3 | **Task Order #3 to Task Order #4 Interface Milestones** |  |  | 2022-07-14 | 2022-08-31 |  |  |  |  |  |  |  |  |  |  |  |  |  |  |  |  |  |  |  |  |  |  |  |
| IFM-TO3-TO4-0015 |  | TO #3 to TO #4 - Issue/Receive Construction Plan | milestone | 0d | 2022-07-14 A | 2022-07-14 A |  | 100% | 2022-09-30 | 2022-09-30 |  |  | Yes | verified COMPLETE | FL3 | 03 | FL3 | FNTP | 4 |  |  |  |  |  |  |  |  |  |  |
| IFM-TO3-TO4-0020 |  | TO #3 to TO #4 - Issue/Receive Construction Schedule and Manpower Plans | milestone | 0d | 2022-07-14 A | 2022-07-14 A |  | 100% |  |  |  |  | Yes | verified COMPLETE | FL3 | 03 | FL3 | FNTP |  |  |  |  |  |  |  |  |  |  |  |
| IFM-TO3-TO4-0010 |  | TO #3 to TO #4 - Issue/Receive Level 2 EPC Schedule | milestone | 0d | 2022-08-26 A | 2022-08-26 A |  | 100% | 2022-09-02 | 2022-09-02 |  |  | Yes | verified COMPLETE | FL3 | 03 | FL3 | FNTP |  | Y | slid out from 31 may |  |  |  |  |  |  |  |  |
| IFM-TO3-TO4-0025 |  | TO #3 to TO #4 - Issue/Receive Class 3 Estimate | milestone | 0d | 2022-08-31 A | 2022-08-31 A |  | 100% | 2022-10-03 | 2022-10-03 |  |  | Yes |  | FL3 | 03 | FL3 | FNTP |  |  |  | OCT |  |  |  |  |  |  |  |
|  | 4 | **Task Order #4 to Task Order #3 Interface Milestones** |  |  | 2021-12-15 | 2021-12-15 |  |  |  |  |  |  |  |  |  |  |  |  |  |  |  |  |  |  |  |  |  |  |  |
| IFM-TO4-TO3-0000 |  | TO #4 to TO #3 - Issue/Receive Preliminary Geotech Data | milestone | 0d | 2021-12-15 A | 2021-12-15 A | FI-GI-SSI-RP-0010 | 100% | 2022-01-03 | 2022-01-03 |  |  | Yes | verified COMPLETE | FL4 | 03 | FL4 | FNTP |  |  |  |  |  |  |  |  |  |  |  |
|  | 5 | **Task Order #5 to Task Order #4 Interface Milestones** |  |  | 2022-01-26 | 2022-10-24 |  |  |  |  |  |  |  |  |  |  |  |  |  |  |  |  |  |  |  |  |  |  |  |
| IFM-TO5-TO4-0000 |  | TO #5 to TO #4 - Issue/Receive Updated Plot Plan | milestone | 0d | 2022-01-26 A | 2022-01-26 A |  | 100% | 2022-01-31 | 2022-01-31 |  |  | Yes | verified COMPLETE | FL5 | 03 | FL5 | FNTP |  |  |  |  |  |  |  |  |  |  |  |
| IFM-TO5-TO4-0045 |  | TO #5 to TO #4 - Issue/Receive Project BEDD | milestone | 0d | 2022-01-31 A | 2022-01-31 A |  | 100% | 2022-02-01 | 2022-02-01 |  |  | Yes | verified COMPLETE | FL5 | 03 | FL5 | FNTP |  |  |  |  | GJ |  |  |  |  |  |  |
| IFM-TO5-TO4-0035 |  | TO #5 to TO #4 - Issue/Receive Turbine System Design Description | milestone | 0d | 2022-02-08 A | 2022-02-08 A |  | 100% |  |  |  |  | Yes | verified COMPLETE | FL5 | 03 | FL5 | FNTP |  |  |  |  | GJ |  |  |  |  |  |  |
| IFM-TO5-TO4-0050 |  | TO #5 to TO #4 - Issue/Receive Turbine Gland Seal System Design Description | milestone | 0d | 2022-02-08 A | 2022-02-08 A |  | 100% |  |  |  |  | Yes | verified COMPLETE | FL5 | 03 | FL5 | FNTP |  |  |  |  | GJ |  |  |  |  |  |  |
| IFM-TO5-TO4-0060 |  | TO #5 to TO #4 - Issue/Receive Turbine Bypass System Design Description | milestone | 0d | 2022-02-08 A | 2022-02-08 A |  | 100% |  |  |  |  | Yes | verified COMPLETE | FL5 | 03 | FL5 | FNTP |  |  |  |  | GJ |  |  |  |  |  |  |
| IFM-TO5-TO4-0040 |  | TO #5 to TO #4 - Issue/Receive Turbine P&IDs | milestone | 0d | 2022-02-10 A | 2022-02-10 A |  | 100% |  |  |  |  | Yes | verified COMPLETE | FL5 | 03 | FL5 | FNTP |  |  |  |  | GJ |  |  |  |  |  |  |
| IFM-TO5-TO4-0055 |  | TO #5 to TO #4 - Issue/Receive Turbine Gland Seal P&IDs | milestone | 0d | 2022-02-10 A | 2022-02-10 A |  | 100% |  |  |  |  | Yes | verified COMPLETE | FL5 | 03 | FL5 | FNTP |  |  |  |  | GJ |  |  |  |  |  |  |
| IFM-TO5-TO4-0065 |  | TO #5 to TO #4 - Issue/Receive Turbine Bypass P&IDs | milestone | 0d | 2022-02-10 A | 2022-02-10 A |  | 100% |  |  |  |  | Yes | verified COMPLETE | FL5 | 03 | FL5 | FNTP |  |  |  |  | GJ |  |  |  |  |  |  |
| IFM-TO5-TO4-0005 |  | TO #5 to TO #4 - Issue/Receive Paving Plans (including Catch Basins) | milestone | 0d | 2022-03-31 A | 2022-03-31 A |  | 100% |  |  |  |  |  | verified COMPLETE | FL5 | 03 | FL5 | FNTP |  |  |  |  |  |  |  |  |  |  |  |
| IFM-TO5-TO4-0015 |  | TO #5 to TO #4 - Issue/Receive Seismic Monitoring SDD | milestone | 0d | 2022-04-29 A | 2022-04-29 A |  | 100% | 2022-05-20 | 2022-05-20 |  |  |  | verified COMPLETE | FL5 | 03 | FL5 | FNTP |  |  |  |  | GJ | 2022-04-15 |  |  |  |  |  |
| IFM-TO5-TO4-0020 |  | TO #5 to TO #4 - Issue/Receive Building/Structures Sizes and Elevations | milestone | 0d | 2022-04-29 A | 2022-04-29 A |  | 100% | 2022-05-20 | 2022-05-20 |  |  |  | verified COMPLETE | FL5 | 03 | FL5 | FNTP |  |  |  |  | GJ | 2022-04-25 |  |  |  |  |  |
| IFM-TO5-TO4-0100 |  | TO #5 to TO #4 - Issue/Receive Quantity Calc of Stored Hazardous Materials/Chemicals for Diesel Fuel | milestone | 0d | 2022-04-29 A | 2022-04-29 A |  | 100% | 2022-05-02 | 2022-05-02 |  |  | Yes | verified COMPLETE | FL5 | 03 | FL5 | FNTP |  |  |  |  | GJ |  |  |  |  |  |  |
| IFM-TO5-TO4-0115 |  | TO #5 to TO #4 - Issue/Receive Steam System Design Description | milestone | 0d | 2022-04-29 A | 2022-04-29 A |  | 100% | 2022-05-04 | 2022-05-04 |  |  | Yes | verified COMPLETE | FL5 | 03 | FL5 | FNTP |  |  |  |  | GJ |  |  |  |  |  |  |
| IFM-TO5-TO4-0120 |  | TO #5 to TO #4 - Issue/Receive Steam P&IDs | milestone | 0d | 2022-04-29 A | 2022-04-29 A |  | 100% | 2022-05-03 | 2022-05-03 |  |  | Yes | verified COMPLETE | FL5 | 03 | FL5 | FNTP |  |  |  |  | GJ |  |  |  |  |  |  |
| IFM-TO5-TO4-0130 |  | TO #5 to TO #4 - Issue/Receive ACC System Design Description | milestone | 0d | 2022-04-29 A | 2022-04-29 A |  | 100% | 2022-05-03 | 2022-05-03 |  |  | Yes | verified COMPLETE | FL5 | 03 | FL5 | FNTP |  |  |  |  | GJ |  |  |  |  |  |  |
| IFM-TO5-TO4-0135 |  | TO #5 to TO #4 - Issue/Receive ACC P&IDs | milestone | 0d | 2022-04-29 A | 2022-04-29 A |  | 100% | 2022-05-03 | 2022-05-03 |  |  | Yes | verified COMPLETE | FL5 | 03 | FL5 | FNTP |  |  |  |  | GJ |  |  |  |  |  |  |
| IFM-TO5-TO4-0145 |  | TO #5 to TO #4 - Issue/Receive Condensate Air Removal System Design Description | milestone | 0d | 2022-04-29 A | 2022-04-29 A |  | 100% | 2022-05-03 | 2022-05-03 |  |  | Yes | verified COMPLETE | FL5 | 03 | FL5 | FNTP |  |  |  |  | GJ |  |  |  |  |  |  |
| IFM-TO5-TO4-0150 |  | TO #5 to TO #4 - Issue/Receive Condensate Air Removal P&IDs | milestone | 0d | 2022-04-29 A | 2022-04-29 A |  | 100% | 2022-05-03 | 2022-05-03 |  |  | Yes | verified COMPLETE | FL5 | 03 | FL5 | FNTP |  |  |  |  | GJ |  |  |  |  |  |  |
| IFM-TO5-TO4-0170 |  | TO #5 to TO #4 - Issue/Receive Condensate & Feedwater System Design Description | milestone | 0d | 2022-04-29 A | 2022-04-29 A |  | 100% | 2022-05-03 | 2022-05-03 |  |  | Yes | verified COMPLETE | FL5 | 03 | FL5 | FNTP |  |  |  |  | GJ |  |  |  |  |  |  |
| IFM-TO5-TO4-0175 |  | TO #5 to TO #4 - Issue/Receive Condensate & Feedwater System P&IDs | milestone | 0d | 2022-04-29 A | 2022-04-29 A |  | 100% | 2022-05-03 | 2022-05-03 |  |  | Yes | verified COMPLETE | FL5 | 03 | FL5 | FNTP |  |  |  |  | GJ |  |  |  |  |  |  |
| IFM-TO5-TO4-0180 |  | TO #5 to TO #4 - Issue/Receive Aux Boiler System Design Description | milestone | 0d | 2022-04-29 A | 2022-04-29 A |  | 100% | 2022-05-03 | 2022-05-03 |  |  | Yes | verified COMPLETE | FL5 | 03 | FL5 | FNTP |  |  |  |  | GJ |  |  |  |  |  |  |
| IFM-TO5-TO4-0185 |  | TO #5 to TO #4 - Issue/Receive Aux Boiler P&IDs | milestone | 0d | 2022-04-29 A | 2022-04-29 A |  | 100% | 2022-05-03 | 2022-05-03 |  |  | Yes | verified COMPLETE | FL5 | 03 | FL5 | FNTP |  |  |  |  | GJ |  |  |  |  |  |  |
| IFM-TO5-TO4-0165 |  | TO #5 to TO #4 - Issue/Receive Condensate Polisher P&IDs (S&L) | milestone | 0d | 2022-05-02 A | 2022-05-02 A |  | 100% | 2022-06-03 | 2022-06-03 |  |  | Yes | verified COMPLETE | FL5 | 03 | S&L | FNTP |  | 1.7, 3.2 |  |  | GJ | 2022-10-07 |  |  |  |  |  |
| IFM-TO5-TO4-0200 |  | TO #5 to TO #4 - Issue/Receive Surface and Ground Water Balance | milestone | 0d | 2022-05-25 A | 2022-05-25 A |  | 100% |  |  |  |  | Yes | verified COMPLETE | FL5 | 03 | FL5 | FNTP |  | 4.2, 5.2 |  |  | GJ |  |  |  |  |  |  |
| IFM-TO5-TO4-0235 |  | TO #5 to TO #4 - Issue/Receive Radwaste Stack Emissions (S&L) | milestone | 0d | 2022-05-26 A | 2022-05-26 A |  | 100% | 2022-06-06 | 2022-06-06 |  |  | Yes | verified COMPLETE | FL5 | 03 | S&L | FNTP |  | 4.9,5.7 |  |  | GJ |  |  |  |  |  |  |
| IFM-TO5-TO4-0010 |  | TO #5 to TO #4 - Issue/Receive Pipe Stress for High Energy Pipe Evaluation (S&L) | milestone | 0d | 2022-05-27 A | 2022-05-27 A |  | 100% | 2022-05-31 | 2022-05-31 |  |  | Yes | verified COMPLETE | FL5 | 03 | S&L | FNTP |  | 3.6 |  |  | GJ | 2022-10-07 |  |  |  |  |  |
| IFM-TO5-TO4-0210 |  | TO #5 to TO #4 - Issue/Receive Liquid Waste Discharge Design | milestone | 0d | 2022-05-27 A | 2022-05-27 A |  | 100% | 2022-05-31 | 2022-05-31 |  |  | Yes | verified COMPLETE | FL5 | 03 | FL5 | FNTP |  | 11.2,11.4,3.4 |  |  | GJ |  |  |  |  |  |  |
| IFM-TO5-TO4-0265 |  | TO #5 to TO #4 - Issue/Receive Gaseous Radwaste System Leak or Failure | milestone | 0d | 2022-05-27 A | 2022-05-27 A |  | 100% | 2022-07-01 | 2022-07-01 |  |  | Yes | verified COMPLETE | FL5 | 03 | FL5 | FNTP |  | 11.3 |  |  | GJ |  |  |  |  |  |  |
| IFM-TO5-TO4-0270 |  | TO #5 to TO #4 - Issue/Receive Fire Hazard Analysis (FHA) Report | milestone | 0d | 2022-05-27 A | 2022-05-27 A |  | 100% | 2022-07-29 | 2022-07-29 |  |  | Yes | verified COMPLETE | FL5 | 03 | FL5 | FNTP |  | 9.5 |  |  | GJ |  |  |  |  |  |  |
| IFM-TO5-TO4-0105 |  | TO #5 to TO #4 - Issue/Receive S&L Site Specific Equipment List (S&L) | milestone | 0d | 2022-05-27 A | 2022-05-27 A |  | 100% | 2022-06-09 | 2022-06-09 |  |  | Yes | verified COMPLETE | FL5 | 03 | S&L | FNTP |  | 3.2 |  |  | GJ | 2022-10-07 |  |  |  |  |  |
| IFM-TO5-TO4-0190 |  | TO #5 to TO #4 - Issue/Receive Feedwater Treatment System Design Description | milestone | 0d | 2022-05-27 A | 2022-05-27 A |  | 100% |  |  |  |  | Yes | verified COMPLETE | FL5 | 03 | FL5 | FNTP |  | 1.2,3.4,3.2 |  |  | GJ |  |  |  |  |  |  |
| IFM-TO5-TO4-0195 |  | TO #5 to TO #4 - Issue/Receive Feedwater Treatment P&IDs | milestone | 0d | 2022-05-27 A | 2022-05-27 A |  | 100% |  |  |  |  | Yes | verified COMPLETE | FL5 | 03 | FL5 | FNTP |  | 1.7,3.2 |  |  | GJ |  |  |  |  |  |  |
| IFM-TO5-TO4-0230 |  | TO #5 to TO #4 - Issue/Receive Diesel Generator Emissions (S&L) | milestone | 0d | 2022-05-27 A | 2022-05-27 A |  | 100% | 2022-06-06 | 2022-06-06 |  |  | Yes | verified COMPLETE | FL5 | 03 | S&L | FNTP |  | 4.8,5.7 |  |  | GJ |  |  |  |  |  |  |
| IFM-TO5-TO4-0240 |  | TO #5 to TO #4 - Issue/Receive Noise Assessment SOW | milestone | 0d | 2022-06-01 A | 2022-06-01 A |  | 100% |  |  |  |  | Yes | verified COMPLETE | FL5 | 03 | FL5 | FNTP |  | 4.8,5.8 |  |  | GJ |  |  |  |  |  |  |
| IFM-TO5-TO4-0070 |  | TO #5 to TO #4 - Issue/Receive SSD Potable Water System Design Description (S&L) | milestone | 0d | 2022-06-01 A | 2022-06-01 A |  | 100% | 2022-06-30 | 2022-06-30 |  |  | Yes | verified COMPLETE | FL5 | 03 | S&L | FNTP |  | 1.2,9.2,14.2,3.2,3.4 |  |  | GJ | 2022-05-16 |  |  |  |  |  |
| IFM-TO5-TO4-0110 |  | TO #5 to TO #4 - Issue/Receive Fluor Site Specific Equipment List | milestone | 0d | 2022-06-07 A | 2022-06-07 A |  | 100% | 2022-06-20 | 2022-06-20 |  |  | Yes | verified COMPLETE | FL5 | 03 | FL5 | FNTP |  | 3.2 |  |  | GJ |  |  |  |  |  |  |
| IFM-TO5-TO4-0160 |  | TO #5 to TO #4 - Issue/Receive Condensate Polisher System Design Description | milestone | 0d | 2022-06-09 A | 2022-06-09 A |  | 100% |  |  |  |  | Yes | verified COMPLETE | FL5 | 03 | FL5 | FNTP |  | 1.2,3.4,3.2 |  |  | GJ | 2022-10-07 |  |  |  |  |  |
| IFM-TO5-TO4-0255 |  | TO #5 to TO #4 - Issue/Receive Remaining SSD SDDs (Heater, Vents & Drain Sys & Diesel Fuel Transfer Sys) | milestone | 0d | 2022-06-09 A | 2022-06-09 A |  | 100% |  |  |  |  |  | verified COMPLETE | FL5 |  | FL5 |  |  | 9.3,9.4,19.1 |  |  | GJ |  | cal |  |  |  |  |
| IFM-TO5-TO4-0260 |  | TO #5 to TO #4 - Issue/Receive Remaining SSD P&IDs (Heater, Vents & Drain Sys & Diesel Fuel Transfer Sys) | milestone | 0d | 2022-06-09 A | 2022-06-09 A |  | 100% |  |  |  |  |  | verified COMPLETE | FL5 |  | FL5 |  |  | 9.3,9.4,19.1 |  |  | GJ |  | cal |  |  |  |  |
| IFM-TO5-TO4-0295 |  | TO #5 to TO #4 - Issue/Receive On-site Communications System Design Description | milestone | 0d | 2022-06-16 A | 2022-06-16 A |  | 100% | 2022-06-13 | 2022-06-13 |  |  | Yes | verified COMPLETE | FL5 | 03 | FL5 | FNTP |  | 1.2,3.2 |  |  | GJ |  |  |  |  |  |  |
| IFM-TO5-TO4-0086 |  | SPD Design Input - ETAP Calc (D030E2410.54)(S&L) | milestone | 0d | 2022-06-21 A | 2022-06-21 A |  | 100% | 2022-06-29 | 2022-06-29 |  |  | Yes | verified COMPLETE | FL5 | 03 | S&L | FNTP |  | 8.1,8.2,8.3,14.2,19.1 |  |  | GJ | 2022-10-10 |  | etap | X |  |  |
| IFM-TO5-TO4-0225 |  | TO #5 to TO #4 - Issue/Receive CT Plume Characteristics | milestone | 0d | 2022-06-23 A | 2022-06-23 A |  | 100% | 2022-06-27 | 2022-06-27 |  |  | Yes | verified COMPLETE | FL5 | 03 | FL5 | FNTP |  | 3.4,5.7 |  |  | GJ |  |  |  |  |  |  |
| IFM-TO5-TO4-0085 |  | TO #5 to TO #4 - Issue/Receive Quantity Calc of Stored Hazardous Materials/Chemicals for Demin (S&L) | milestone | 0d | 2022-06-27 A | 2022-06-27 A |  | 100% | 2022-07-13 | 2022-07-13 |  |  | Yes | verified COMPLETE | FL5 | 03 | S&L | FNTP |  | 2.2 |  |  | GJ | 2022-05-31 |  |  |  |  |  |
| IFM-TO5-TO4-0090 |  | TO #5 to TO #4 - Issue/Receive Quantity Calc of Stored Hazardous Materials/Chemicals for Condensate Polisher (S&L) | milestone | 0d | 2022-06-27 A | 2022-06-27 A |  | 100% | 2022-07-13 | 2022-07-13 |  |  | Yes | verified COMPLETE | FL5 | 03 | S&L | FNTP |  | 2.2 |  |  | GJ | 2022-05-31 |  |  |  |  |  |
| IFM-TO5-TO4-0220 |  | TO #5 to TO #4 - Issue/Receive Process & Effluent P&IDs with Rad Monitoring | milestone | 0d | 2022-06-30 A | 2022-06-30 A |  | 100% | 2022-06-20 | 2022-06-20 |  |  | Yes | verified COMPLETE | FL5 | 03 | FL5 | FNTP |  | 11.5 |  |  | GJ |  |  |  |  |  |  |
| IFM-TO5-TO4-0095 |  | TO #5 to TO #4 - Issue/Receive Quantity Calc of Stored Hazardous Materials/Chemicals for Raw Water Treatment | milestone | 0d | 2022-07-05 A | 2022-07-05 A |  | 100% | 2022-11-02 | 2022-11-02 |  |  | Yes | verified COMPLETE | FL5 | 03 | S&L | FNTP |  | 2.2 |  |  | GJ | 2022-06-22 |  |  |  | x |  |
| IFM-TO5-TO4-0245 |  | TO #5 to TO #4 - Issue/Receive CT Etiological Agents Info | milestone | 0d | 2022-07-05 A | 2022-07-05 A |  | 100% | 2022-08-01 | 2022-08-01 |  |  | Yes | verified COMPLETE | FL5 | 03 | FL4 | FNTP |  | 3.4,4.8 |  |  | GJ | 2022-10-10 |  |  |  |  |  |
| IFM-TO5-TO4-0275 |  | TO #5 to TO #4 - Issue/Receive Site Cooling Tower Characteristics | milestone | 0d | 2022-07-05 A | 2022-07-05 A |  | 100% | 2022-08-03 | 2022-08-03 |  |  | Yes | verified COMPLETE | FL5 | 03 | FL5 | FNTP |  | 1.2,3.4,4.8 |  |  | GJ | 2022-11-04 |  |  |  |  |  |
| IFM-TO5-TO4-0025 |  | TO #5 to TO #4 - Issue/Receive SSD Ground Grid Layout and Calcs (S&L) | milestone | 0d | 2022-07-18 A | 2022-07-18 A |  | 100% | 2022-08-18 | 2022-08-18 |  |  | Yes | verified COMPLETE | FL5 | 03 | S&L | FNTP |  | 8.1,8.2,8.3,14.2,19.1 |  |  | GJ | 2022-10-17 |  |  |  |  |  |
| IFM-TO5-TO4-0030 |  | TO #5 to TO #4 - Issue/Receive SSD Lightning Protection Layout and Calcs (S&L) | milestone | 0d | 2022-07-18 A | 2022-07-18 A |  | 100% | 2022-08-18 | 2022-08-18 |  |  | Yes | verified COMPLETE | FL5 | 03 | S&L | FNTP |  | 8.1,8.2,8.3,14.2,19.1 |  |  | GJ | 2022-10-17 |  |  |  |  |  |
| IFM-TO5-TO4-0285 |  | TO #5 to TO #4 - Issue/Receive SSD Nuclear HVAC System Design Description (S&L) | milestone | 0d | 2022-07-29 A | 2022-07-29 A |  | 100% | 2022-10-03 | 2022-10-03 |  |  | Yes | verified COMPLETE | FL5 | 03 | S&L | FNTP |  | 1.2,9.3,9.4,3.2 |  |  | GJ |  |  |  |  |  |  |
| IFM-TO5-TO4-0250 |  | TO #5 to TO #4 - Issue/Receive SSD Single Lines (S&L) | milestone | 0d | 2022-08-04 A | 2022-08-04 A |  | 100% | 2022-09-01 | 2022-09-01 |  |  | Yes | verified COMPLETE | FL5 | 03 | S&L | FNTP |  | 1.7,8.1,8.2,8.3,14.2,19.1 | 1 of 3 issued |  | GJ | 2022-10-10 |  |  |  |  |  |
| IFM-TO5-TO4-0290 |  | TO #5 to TO #4 - Issue/Receive SSD Non-Nuclear HVAC System Design Description | milestone | 0d | 2022-08-12 A | 2022-08-12 A |  | 100% |  |  |  |  | Yes | verified COMPLETE | FL5 | 03 | FL5 | FNTP |  | 1.2,9.3,9.4,3.2 |  |  | GJ |  |  |  |  |  |  |
| IFM-TO3-TO4-0001 |  | TO #5 to TO #4 - Issue/Receive Nuclear Island Excavation Plans | milestone | 0d | 2022-09-30 A | 2022-09-30 A | PKM-0065 | 100% |  |  |  |  | Yes | verified COMPLETE | FL5 | 03 | FL5 | FNTP |  | 2.4 |  |  | GJ |  |  |  |  |  |  |
| IFM-TO5-TO4-0205 |  | TO #5 to TO #4 - Issue/Receive SSD ETAP (S&L) | milestone | 0d | 2022-10-24 A | 2022-10-24 A |  | 100% | 2022-10-20 | 2022-10-20 |  |  | Yes | verified | FL5 | 03 | S&L | FNTP |  | 8.1,8.2,8.3,14.2,19.1 |  | OCT | GJ | 2022-10-10 |  | etap | X |  | X |

Notes:
- IFM-TO5-TO4-0105: Remarks: T50MCLIN03.20
- IFM-TO5-TO4-0230: Remarks: T50MCLIN25.20
- IFM-TO5-TO4-0255: P3 Activity Log Info: ? / 4/16/20 - Removed Start constraint of 5/04/20 and let logic drive.
- IFM-TO5-TO4-0260: P3 Activity Log Info: ? / 4/16/20 - Removed Start constraint of 5/04/20 and let logic drive.
- IFM-TO5-TO4-0086: Remarks: SL-FL-0012 Added 06/2922
- IFM-TO5-TO4-0085: Remarks: T50MCLIN01.20
- IFM-TO5-TO4-0090: Remarks: T50MCLIN01.20
- IFM-TO5-TO4-0095: Remarks: Not S&L - UAMPS to raw wtr supply to UW Tank and all site Wastewater Treatment - new Forecast 11/1/22 / 9A SEP EOM Notes: Sep update (Not an S&L activity/CFPP owner) may need to add original 0015 activity back in
- IFM-TO5-TO4-0245: Remarks: T50MCLIN02.20
- IFM-TO5-TO4-0025: Remarks: T50ECLIN11.RWB.20 driving
- IFM-TO5-TO4-0030: Remarks: MS-021
- IFM-TO5-TO4-0285: Remarks: T50HCLIN14.20
- IFM-TO5-TO4-0250: Remarks: T50ECLIN24.20
- IFM-TO3-TO4-0001: 9A SEP EOM Notes: Sep update
- IFM-TO5-TO4-0205: Remarks: T50ECLIN10.20 / 9A SEP EOM Notes: Sep update

| ID | WBS | Activity | Type | Duration | Start | Finish | Predecessors | Complete | Planned start | Planned finish | Constraint | zText_02 | zText_Level 3 Schedule | Milestone | Nuscale activity Code | Rebaseline details | 9A SEP EOM Notes | CFPP, LLC WBS Structure | Author | Period of Performance | Part | Chapter | Section | SDA needed | Other | Reconcile Rev 0 Milestones | zText_RFI | NEED UPDATE | 10B OCT EOM Notes | 11A NOV MIDMONTH Notes | 11B NOV EOM Notes | 12B DEC EOM Notes | CFPP - Contractor's Remarks | UDF Text 02 |
| --- | --- | --- | --- | --- | --- | --- | --- | --- | --- | --- | --- | --- | --- | --- | --- | --- | --- | --- | --- | --- | --- | --- | --- | --- | --- | --- | --- | --- | --- | --- | --- | --- | --- | --- |
|  | 7 | **INL SHHAC to Task Order #4 Interface Milestones** |  |  |  |  |  |  |  |  |  |  |  |  |  |  |  |  |  |  |  |  |  |  |  |  |  |  |  |  |  |  |  |  |
|  | 9 | **NuScale SDA Interface Milestones** |  |  | 2022-09-27 | 2022-12-27 |  |  |  |  |  |  |  |  |  |  |  |  |  |  |  |  |  |  |  |  |  |  |  |  |  |  |  |  |
| IFM-SDA-TO4-0010 |  | NuScale SDA to TO#4 Receive Approved SDA Part 2, Chapter 03, Appendix 3B | milestone | 0d | 2022-09-27 A | 2022-09-27 A | PKM-0065 | 100% |  |  |  | Yes | Yes | verified COMPLETE | 11SDA.CM.030B.010 | NUSCALE | Sep update | 03 | NuScale | FNTP | P2 | 3 | 3B | SDA Tie |  |  |  |  |  |  |  |  |  |  |
| IFM-SDA-TO4-0020 |  | NuScale SDA to TO#4 Receive Approved SDA Part 2, Chapter 13, Section 2 | milestone | 0d | 2022-09-27 A | 2022-09-27 A | PKM-0065 | 100% |  |  |  | Yes | Yes | verified COMPLETE | 11SDA.CM.1302.010 | NUSCALE | Sep update | 03 | NuScale | FNTP | P2 | 13 | 2.0 | SDA Tie |  |  |  |  |  |  |  |  |  |  |
| IFM-SDA-TO4-0025 |  | NuScale SDA to TO#4 Receive Approved SDA Part 2, Chapter 13, Section 4 | milestone | 0d | 2022-09-27 A | 2022-09-27 A | PKM-0065 | 100% |  |  |  | Yes | Yes | verified COMPLETE | 11SDA.CM.1304.010 | NUSCALE | Sep update | 03 | NuScale | FNTP | P2 | 13 | 4.0 | SDA Tie |  |  |  |  |  |  |  |  |  |  |
| IFM-SDA-TO4-0030 |  | NuScale SDA to TO#4 Receive Approved SDA Part 2, Chapter 13, Section 7 | milestone | 0d | 2022-09-27 A | 2022-09-27 A | PKM-0065 | 100% |  |  |  | Yes | Yes | verified COMPLETE | 11SDA.CM.1307.010 | NUSCALE | Sep update | 03 | NuScale | FNTP | P2 | 13 | 7 | SDA Tie |  |  |  |  |  |  |  |  |  |  |
| IFM-SDA-TO4-0035 |  | NuScale SDA to TO#4 Receive Approved SDA Part 2, Chapter 17, Section 1 | milestone | 0d | 2022-09-27 A | 2022-09-27 A | PKM-0065 | 100% |  |  |  | Yes | Yes | verified COMPLETE | 11SDA.CM.1701.010 | NUSCALE | Sep update | 03 | NuScale | FNTP | P2 | 17 | 1 | SDA Tie |  |  |  |  |  |  |  |  |  |  |
| IFM-SDA-TO4-0037 |  | NuScale SDA to TO#4 Receive Approved SDA Part 2, Chapter 17, Section 2 | milestone | 0d | 2022-09-27 A | 2022-09-27 A | PKM-0065 | 100% |  |  |  | Yes | Yes | verified COMPLETE | 11SDA.CM.1701.010 | NUSCALE | Sep update | 03 | NuScale | FNTP | P2 | 17 | 2.0 | SDA Tie |  |  |  |  |  |  |  |  |  |  |
| IFM-SDA-TO4-0039 |  | NuScale SDA to TO#4 Receive Approved SDA Part 2, Chapter 17, Section 3 | milestone | 0d | 2022-09-27 A | 2022-09-27 A | PKM-0065 | 100% |  |  |  | Yes | Yes | verified COMPLETE | 11SDA.CM.1701.010 | NUSCALE | Sep update | 03 | NuScale | FNTP | P2 | 17 | 3.0 | SDA Tie |  |  |  |  |  |  |  |  |  |  |
| IFM-SDA-TO4-0040 |  | NuScale SDA to TO#4 Receive Approved SDA Part 2, Chapter 17, Section 5 | milestone | 0d | 2022-09-27 A | 2022-09-27 A | PKM-0065 | 100% |  |  |  | Yes | Yes | verified COMPLETE | 11SDA.CM.1705.010 | NUSCALE | Sep update | 03 | NuScale | FNTP | P2 | 17 | 5.0 | SDA Tie |  |  |  |  |  |  |  |  |  |  |
| IFM-SDA-TO4-0045 |  | NuScale SDA to TO#4 Receive Approved SDA Part 2, Chapter 17, Section 6 | milestone | 0d | 2022-09-27 A | 2022-09-27 A | PKM-0065 | 100% |  |  |  | Yes | Yes | verified COMPLETE | 11SDA.CM.1706.010 | NUSCALE | Sep update | 03 | NuScale | FNTP | P2 | 17 | 6.0 | SDA Tie |  |  |  |  |  |  |  |  |  |  |
| IFM-SDA-TO4-0050 |  | NuScale SDA to TO#4 Receive Approved SDA Part 2, Chapter 12, Section 2 | milestone | 0d | 2022-09-27 A | 2022-09-27 A | PKM-0065 | 100% |  |  |  | Yes | Yes | verified COMPLETE | 11SDA.CM.1202.010 | NUSCALE | Sep update | 03 | NuScale | FNTP | P2 | 12 | 2.0 | SDA Tie |  |  |  |  |  |  |  |  |  |  |
| IFM-SDA-TO4-0055 |  | NuScale SDA to TO#4 Receive Approved SDA Part 2, Chapter 09, Section 4 | milestone | 0d | 2022-09-27 A | 2022-09-27 A | PKM-0065 | 100% |  |  |  | Yes | Yes | verified COMPLETE | 11SDA.CM.0904.010 | NUSCALE | Sep update | 03 | NuScale | FNTP | P2 | 9 | 4.0 | SDA Tie |  |  |  |  |  |  |  |  |  |  |
| IFM-SDA-TO4-0060 |  | NuScale SDA to TO#4 Receive Approved SDA Part 2, Chapter 11, Section 4 | milestone | 0d | 2022-09-27 A | 2022-09-27 A | PKM-0065 | 100% |  |  |  | Yes | Yes | verified COMPLETE | 11SDA.CM.1104.010 | NUSCALE | Sep update | 03 | NuScale | FNTP | P2 | 11 | 4.0 | SDA Tie |  |  |  |  |  |  |  |  |  |  |
| IFM-SDA-TO4-0125 |  | NuScale SDA to TO#4 Receive Approved SDA Part 2, Chapter 11, Section 1 | milestone | 0d | 2022-09-27 A | 2022-09-27 A | PKM-0065 | 100% |  |  |  | Yes | Yes | verified COMPLETE | 11SDA.CM.1101.010 | NUSCALE | Sep update | 03 | NuScale | FNTP | P2 | 11 | 1 | SDA Tie |  |  |  |  |  |  |  |  |  |  |
| IFM-SDA-TO4-0170 |  | NuScale SDA to TO#4 Receive Approved SDA Part 2, Chapter 03, Section 3 | milestone | 0d | 2022-09-27 A | 2022-09-27 A | PKM-0065 | 100% |  |  |  |  |  | verified COMPLETE | 11SDA.CM.0303.010 | NUSCALE | Sep update | 03 | NuScale | FNTP | P2 | 3 | 3.0 | SDA Tie | cal |  |  |  |  |  |  |  |  |  |
| IFM-SDA-TO4-0175 |  | NuScale SDA to TO#4 Receive Approved SDA Part 2, Chapter 03, Section 4 | milestone | 0d | 2022-09-27 A | 2022-09-27 A | PKM-0065 | 100% |  |  |  |  |  | verified COMPLETE | 11SDA.CM.0304.010 | NUSCALE | Sep update | 03 | NuScale | FNTP | P2 | 3 | 4.0 | SDA Tie | cal |  |  |  |  |  |  |  |  |  |
| IFM-SDA-TO4-0195 |  | NuScale SDA to TO#4 Receive Approved SDA Part 2, Chapter 03, Section 10 | milestone | 0d | 2022-09-27 A | 2022-09-27 A | PKM-0065 | 100% |  |  |  |  |  | verified COMPLETE | 11SDA.CM.0310.010 | NUSCALE | Sep update | 03 | NuScale | FNTP | P2 | 3 | 10 | SDA Tie | cal | 3.10 |  |  |  |  |  |  |  |  |
| IFM-SDA-TO4-0225 |  | NuScale SDA to TO#4 Receive Approved SDA Part 2, Chapter 09, Section 5 | milestone | 0d | 2022-09-27 A | 2022-09-27 A | PKM-0065 | 100% |  |  |  |  |  | verified COMPLETE | 11SDA.CM.0905.010 | NUSCALE | Sep update | 03 | NuScale | FNTP | P2 | 9 | 5.0 | SDA Tie | cal |  |  |  |  |  |  |  |  |  |
| IFM-SDA-TO4-0255 |  | NuScale SDA to TO#4 Receive Approved SDA Part 2, Chapter 13, Section 5 | milestone | 0d | 2022-09-27 A | 2022-09-27 A | PKM-0065 | 100% |  |  |  |  |  | verified COMPLETE | 11SDA.CM.1305.010 | NUSCALE | Sep update | 03 | NuScale | FNTP | P2 | 13 | 5.0 | SDA Tie | cal |  |  |  |  |  |  |  |  |  |
| IFM-SDA-TO4-0260 |  | NuScale SDA to TO#4 Receive Approved SDA Part 2, Chapter 13, Section 6 | milestone | 0d | 2022-09-27 A | 2022-09-27 A | PKM-0065 | 100% |  |  |  |  |  | verified COMPLETE | 11SDA.CM.1306.010 | NUSCALE | Sep update | 03 | NuScale | FNTP | P2 | 13 | 6.0 | SDA Tie | cal |  |  |  |  |  |  |  |  |  |
| IFM-SDA-TO4-0280 |  | NuScale SDA to TO#4 Receive Approved SDA Part 2, Chapter 01, Section 1 | milestone | 0d | 2022-09-27 A | 2022-09-27 A | PKM-0065 | 100% |  |  |  | Yes | Yes | verified COMPLETE | 11SDA.CM.0109.010 | NUSCALE | Sep update | 03 | NuScale | FNTP | P2 | 1 | 1 | SDA Tie |  |  | RFI 102 / 202 |  |  |  |  |  |  |  |
| IFM-SDA-TO4-0290 |  | NuScale SDA to TO#4 Receive Approved SDA Part 2, Chapter 01, Section 3 | milestone | 0d | 2022-09-27 A | 2022-09-27 A | PKM-0065 | 100% |  |  |  | Yes | Yes | verified COMPLETE | 11SDA.CM.0109.010 | NUSCALE | Sep update | 03 | NuScale | FNTP | P2 | 1 | 3.0 | SDA Tie |  |  | RFI 102 / 202 |  |  |  |  |  |  |  |
| IFM-SDA-TO4-0300 |  | NuScale SDA to TO#4 Receive Approved SDA Part 2, Chapter 01, Section 4 | milestone | 0d | 2022-09-27 A | 2022-09-27 A | PKM-0065 | 100% |  |  |  | Yes | Yes | verified COMPLETE | 11SDA.CM.0109.010 | NUSCALE | Sep update | 03 | NuScale | FNTP | P2 | 1 | 4.0 | SDA Tie |  |  | RFI 102 / 202 |  |  |  |  |  |  |  |
| IFM-SDA-TO4-0330 |  | NuScale SDA to TO#4 Receive Approved SDA Part 2, Chapter 01, Section 7 | milestone | 0d | 2022-09-27 A | 2022-09-27 A | PKM-0065 | 100% |  |  |  | Yes | Yes | verified COMPLETE | 11SDA.CM.0109.010 | NUSCALE | Sep update | 03 | NuScale | FNTP | P2 | 1 | 7 | SDA Tie |  |  | RFI 102 / 202 |  |  |  |  |  |  |  |
| IFM-SDA-TO4-0350 |  | NuScale SDA to TO#4 Receive Approved SDA Part 2, Chapter 01, Section 10 | milestone | 0d | 2022-09-27 A | 2022-09-27 A | PKM-0065 | 100% |  |  |  | Yes | Yes | verified COMPLETE | 11SDA.CM.0109.010 | NUSCALE | Sep update | 03 | NuScale | FNTP | P2 | 1 | 10 | SDA Tie |  |  | RFI 102 / 202 |  |  |  |  |  |  |  |
| IFM-SDA-TO4-0360 |  | NuScale SDA to TO#4 Receive Approved SDA Part 2, Chapter 10, Section 1 | milestone | 0d | 2022-09-27 A | 2022-09-27 A | PKM-0065 | 100% |  |  |  | Yes | Yes | verified COMPLETE | 11SDA.CM.0109.010 | NUSCALE | Sep update | 03 | NuScale | FNTP | P2 | 10 | 1 | SDA Tie |  |  | RFI 102 / 202 |  |  |  |  |  |  |  |
| IFM-SDA-TO4-0370 |  | NuScale SDA to TO#4 Receive Approved SDA Part 2, Chapter 10, Section 2 | milestone | 0d | 2022-09-27 A | 2022-09-27 A | PKM-0065 | 100% |  |  |  | Yes | Yes | verified COMPLETE | 11SDA.CM.0109.010 | NUSCALE | Sep update | 03 | NuScale | FNTP | P2 | 10 | 2.0 | SDA Tie |  |  | RFI 102 / 202 |  |  |  |  |  |  |  |
| IFM-SDA-TO4-0380 |  | NuScale SDA to TO#4 Receive Approved SDA Part 2, Chapter 10, Section 3 | milestone | 0d | 2022-09-27 A | 2022-09-27 A | PKM-0065 | 100% |  |  |  | Yes | Yes | verified COMPLETE | 11SDA.CM.0109.010 | NUSCALE | Sep update | 03 | NuScale | FNTP | P2 | 10 | 3.0 | SDA Tie |  |  | RFI 102 / 202 |  |  |  |  |  |  |  |
| IFM-SDA-TO4-0390 |  | NuScale SDA to TO#4 Receive Approved SDA Part 2, Chapter 10, Section 4 | milestone | 0d | 2022-09-27 A | 2022-09-27 A | PKM-0065 | 100% |  |  |  | Yes | Yes | verified COMPLETE | 11SDA.CM.0109.010 | NUSCALE | Sep update | 03 | NuScale | FNTP | P2 | 10 | 4.0 | SDA Tie |  |  | RFI 102 / 202 |  |  |  |  |  |  |  |
| IFM-SDA-TO4-0000 |  | NuScale SDA to TO#4 Receive Approved SDA Part 2, Chapter 01, Section 9 | milestone | 0d | 2022-09-27 A | 2022-09-27 A | PKM-0065 | 100% |  |  |  | Yes | Yes | verified COMPLETE | 11SDA.CM.0109.010 | NUSCALE | Sep update | 03 | NuScale | FNTP | P2 | 1 | 9.0 | SDA Tie |  |  | RFI 102 / 202 |  |  |  |  |  |  |  |
| IFM-SDA-TO4-0235 |  | NuScale SDA to TO#4 Receive Approved SDA Part 2, Chapter 11, Section 5 | milestone | 0d | 2022-09-29 A | 2022-09-29 A | PKM-0065 | 100% |  |  |  |  |  | verified COMPLETE | 11SDA.CM.1105.010 | NUSCALE | Sep update | 03 | NuScale | FNTP | P2 | 11 | 5.0 | SDA Tie | cal |  |  |  |  |  |  |  |  |  |
| IFM-SDA-TO4-0230 |  | NuScale SDA to TO#4 Receive Approved SDA Part 2, Chapter 11, Section 2 | milestone | 0d | 2022-10-06 A | 2022-10-06 A | PKM-0065 | 100% | 2022-10-31 | 2022-10-31 |  |  |  |  | 11SDA.CM.1102.010 | NUSCALE |  | 03 | NuScale | FNTP | P2 | 11 | 2.0 | SDA Tie | cal |  |  | OCT | oct update |  |  |  |  |  |
| IFM-SDA-TO4-0205 |  | NuScale SDA to TO#4 Receive Approved SDA Part 2, Chapter 03, Section 13 | milestone | 0d | 2022-10-11 A | 2022-10-11 A | PKM-0065 | 100% | 2023-01-03 | 2023-01-03 |  |  |  |  | 11SDA.CM.0313.010 | NUSCALE |  | 03 | NuScale | FNTP | P2 | 3 | 13 | SDA Tie | cal |  |  | OCT | oct update |  |  |  |  |  |
| IFM-SDA-TO4-0065 |  | NuScale SDA to TO#4 Receive Approved SDA Part 2, Chapter 12, Section 5 | milestone | 0d | 2022-10-19 A | 2022-10-19 A | PKM-0065 | 100% | 2022-10-31 | 2022-10-31 |  | Yes | Yes |  | 11SDA.CM.1205.010 | NUSCALE |  | 03 | NuScale | FNTP | P2 | 12 | 5.0 | SDA Tie |  |  |  | OCT | oct update |  |  |  |  |  |
| IFM-SDA-TO4-0070 |  | NuScale SDA to TO#4 Receive Approved SDA Part 2, Chapter 03, Appendix 3C | milestone | 0d | 2022-10-19 A | 2022-10-19 A | PKM-0065 | 100% | 2022-10-31 | 2022-10-31 |  | Yes | Yes |  | 11SDA.CM.030C.010 | NUSCALE |  | 03 | NuScale | FNTP | P2 | 3 | 3C | SDA Tie |  |  |  | OCT | oct update |  |  |  |  |  |
| IFM-SDA-TO4-0320 |  | NuScale SDA to TO#4 Receive Approved SDA Part 2, Chapter 01, Section 6 | milestone | 0d | 2022-10-28 A | 2022-10-28 A | PKM-0065 | 100% | 2022-10-31 | 2022-10-31 |  | Yes | Yes |  | 11SDA.CM.0109.010 | NUSCALE |  | 03 | NuScale | FNTP | P2 | 1 | 6.0 | SDA Tie |  |  | RFI 102 / 202 | OCT | oct update |  |  |  |  |  |
| IFM-SDA-TO4-0240 |  | NuScale SDA to TO#4 Receive Approved SDA Part 2, Chapter 12, Section 1 | milestone | 0d | 2022-11-01 A | 2022-11-01 A | PKM-0065 | 100% |  |  |  |  |  |  | 11SDA.CM.1201.010 | NUSCALE |  | 03 | NuScale | FNTP | P2 | 12 | 1 |  | cal | 12.01 |  |  |  | As of 15nov22 | As of 29nov22 complete |  |  |  |
| IFM-SDA-TO4-0245 |  | NuScale SDA to TO#4 Receive Approved SDA Part 2, Chapter 12, Section 3 | milestone | 0d | 2022-11-01 A | 2022-11-01 A | PKM-0065 | 100% |  |  |  |  |  |  | 11SDA.CM.1203.010 | NUSCALE |  | 03 | NuScale | FNTP | P2 | 12 | 3.0 |  | cal |  |  |  |  | As of 15nov22 | As of 29nov22 complete |  |  |  |
| IFM-SDA-TO4-0090 |  | NuScale SDA to TO#4 Receive Approved SDA Part 2, Chapter 18 | milestone | 0d | 2022-11-02 A | 2022-11-02 A | PKM-0065 | 100% |  |  |  | Yes | Yes |  | 11SDA.CM.1800.010 | NUSCALE |  | 03 | NuScale | FNTP | P2 | 18 |  |  |  |  |  |  |  | As of 15nov22 | As of 29nov22 complete |  |  |  |
| IFM-SDA-TO4-0095 |  | NuScale SDA to TO#4 Receive Approved SDA Part 2, Chapter 09, Section 1 | milestone | 0d | 2022-11-02 A | 2022-11-02 A | PKM-0065 | 100% |  |  |  | Yes | Yes |  | 11SDA.CM.0901.010 | NUSCALE |  | 03 | NuScale | FNTP | P2 | 9 | 1 |  |  |  |  |  |  | As of 15nov22 | As of 29nov22 complete |  |  |  |
| IFM-SDA-TO4-0180 |  | NuScale SDA to TO#4 Receive Approved SDA Part 2, Chapter 03, Section 5 | milestone | 0d | 2022-11-04 A | 2022-11-04 A | PKM-0065 | 100% |  |  |  |  |  |  | 11SDA.CM.0305.010 | NUSCALE |  | 03 | NuScale | FNTP | P2 | 3 | 5.0 |  | cal |  |  |  |  | As of 15nov22 | As of 29nov22 complete |  |  |  |
| IFM-SDA-TO4-0005 |  | NuScale SDA to TO#4 Receive Approved SDA Part 2, Chapter 03, Appendix 3A | milestone | 0d | 2022-11-08 A | 2022-11-08 A | PKM-0065 | 100% |  |  |  | Yes | Yes |  | 11SDA.CM.030A.010 | NUSCALE |  | 03 | NuScale | FNTP | P2 | 3 | 3A |  |  |  |  |  |  | As of 15nov22 | As of 29nov22 complete |  |  |  |
| IFM-SDA-TO4-0075 |  | NuScale SDA to TO#4 Receive Approved SDA Part 2, Chapter 03, Section 8.4 | milestone | 0d | 2022-11-08 A | 2022-11-08 A | PKM-0065 | 100% |  |  |  | Yes | Yes |  | 11SDA.CM.03084.010 | NUSCALE |  | 03 | NuScale | FNTP | P2 | 3 | 8.4 |  |  |  |  |  |  | As of 15nov22 | As of 29nov22 complete |  |  |  |
| IFM-SDA-TO4-0190 |  | NuScale SDA to TO#4 Receive Approved SDA Part 2, Chapter 03, Section 8 | milestone | 0d | 2022-11-08 A | 2022-11-08 A | PKM-0065 | 100% |  |  |  |  |  |  | 11SDA.CM.0308.010 | NUSCALE |  | 03 | NuScale | FNTP | P2 | 3 | 8 |  | cal |  |  |  |  | As of 15nov22 | As of 29nov22 complete |  |  |  |
| IFM-SDA-TO4-0400 |  | NuScale SDA to TO#4 Receive Approved SDA Part 2, Chapter 03, Section 7 | milestone | 0d | 2022-11-08 A | 2022-11-08 A | PKM-0065 | 100% |  |  |  |  |  |  | 11SDA.CM.0308.010 | NUSCALE |  | 03 | NuScale | FNTP | P2 | 3 | 7 |  | cal | 3.7 |  |  |  | As of 15nov22 | As of 29nov22 complete |  |  |  |
| IFM-SDA-TO4-0080 |  | NuScale SDA to TO#4 Receive Approved SDA Part 2, Chapter 03, Section 11 | milestone | 0d | 2022-11-09 A | 2022-11-09 A | PKM-0065 | 100% |  |  |  | Yes | Yes |  | 11SDA.CM.0311.010 | NUSCALE |  | 03 | NuScale | FNTP | P2 | 3 | 11 |  |  |  |  |  |  | As of 15nov22 | As of 29nov22 complete |  |  |  |
| IFM-SDA-TO4-0100 |  | NuScale SDA to TO#4 Receive Approved SDA Part 2, Chapter 03, Section 2 | milestone | 0d | 2022-11-18 A | 2022-11-18 A | PKM-0065 | 100% |  |  |  | Yes | Yes |  | 11SDA.CM.0302.010 | NUSCALE |  | 03 | NuScale | FNTP | P2 | 3 | 2.0 |  |  |  |  |  |  | As of 15nov22 | As of 29nov22 complete |  |  |  |
| IFM-SDA-TO4-0015 |  | NuScale SDA to TO#4 Receive Approved SDA Part 2, Chapter 11, Section 6 | milestone | 0d | 2022-11-21 A | 2022-11-21 A | PKM-0065 | 100% |  |  |  | Yes | Yes |  | 11SDA.CM.1106.010 | NUSCALE |  | 03 | NuScale | FNTP | P2 | 11 | 6.0 |  |  |  |  |  |  | As of 15nov22 | As of 29nov22 complete |  |  |  |
| IFM-SDA-TO4-0220 |  | NuScale SDA to TO#4 Receive Approved SDA Part 2, Chapter 09, Section 2 | milestone | 0d | 2022-11-30 A | 2022-11-30 A | PKM-0065 | 100% |  |  | start on or after 2022-11-30 |  |  |  | 11SDA.CM.0902.010 | NUSCALE |  | 03 | NuScale | FNTP | P2 | 9 | 2.0 |  | cal |  |  |  |  | As of 15nov22 |  | as of 30dec22 updated | as of 30dec22 updated |  |
| IFM-SDA-TO4-0105 |  | NuScale SDA to TO#4 Receive Approved SDA Part 2, Chapter 03, Section 12 | milestone | 0d | 2022-12-02 A | 2022-12-02 A | PKM-0065 | 100% |  |  | start on or after 2022-12-02 | Yes | Yes |  | 11SDA.CM.0312.010 | NUSCALE |  | 03 | NuScale | FNTP | P2 | 3 | 12 |  |  |  |  |  |  |  |  | as of 30dec22 updated |  | Critical Path Item - FF |
| IFM-SDA-TO4-0250 |  | NuScale SDA to TO#4 Receive Approved SDA Part 2, Chapter 13, Section 3 | milestone | 0d | 2022-12-05 A | 2022-12-05 A | PKM-0065 | 100% |  |  | start on or after 2022-12-05 |  |  |  | 11SDA.CM.1303.010 | NUSCALE |  | 03 | NuScale | FNTP | P2 | 13 | 3.0 |  | cal |  |  |  |  |  |  | as of 30dec22 updated | as of 30dec22 updated |  |
| IFM-SDA-TO4-0115 |  | NuScale SDA to TO#4 Receive Approved SDA Part 2, Chapter 14, Section 0 | milestone | 0d | 2022-12-12 A | 2022-12-12 A | PKM-0065 | 100% |  |  | start on or after 2022-12-12 | Yes | Yes |  | 11SDA.CM.1400.010 | NUSCALE |  | 03 | NuScale | FNTP | P2 | 14 |  |  |  |  |  |  |  |  |  | as of 30dec22 updated | as of 30dec22 updated |  |
| IFM-SDA-TO4-0117 |  | NuScale SDA to TO#4 Receive Approved SDA Part 2, Chapter 14, Section 1 | milestone | 0d | 2022-12-12 A | 2022-12-12 A | PKM-0065 | 100% |  |  | start on or after 2022-12-12 | Yes | Yes |  | 11SDA.CM.1400.010 | NUSCALE |  | 03 | NuScale | FNTP | P2 | 14 | 1 |  |  |  |  |  |  |  |  | as of 30dec22 updated | as of 30dec22 updated |  |
| IFM-SDA-TO4-0120 |  | NuScale SDA to TO#4 Receive Approved SDA Part 2, Chapter 14, Section 3 | milestone | 0d | 2022-12-12 A | 2022-12-12 A | PKM-0065 | 100% |  |  | start on or after 2022-12-12 | Yes | Yes |  | 11SDA.CM.1403.010 | NUSCALE |  | 03 | NuScale | FNTP | P2 | 14 | 3.0 |  |  | 14.03 |  |  |  |  |  | as of 30dec22 updated | as of 30dec22 updated |  |
| IFM-SDA-TO4-0140 |  | NuScale SDA to TO#4 Receive Approved SDA Part 2, Chapter 05 | milestone | 0d | 2022-12-12 A | 2022-12-12 A | PKM-0065 | 100% |  |  | start on or after 2022-12-12 | Yes | Yes |  | 11SDA.CM.0500.010 | NUSCALE |  | 03 | NuScale | FNTP | P2 | 5 |  |  |  |  |  |  |  |  |  | as of 30dec22 updated | as of 30dec22 updated |  |
| IFM-SDA-TO4-0150 |  | NuScale SDA to TO#4 Receive Approved SDA Part 2, Chapter 09, Section 3 | milestone | 0d | 2022-12-12 A | 2022-12-12 A | PKM-0065 | 100% |  |  | start on or after 2022-12-12 | Yes | Yes |  | 11SDA.CM.0903.010 | NUSCALE |  | 03 | NuScale | FNTP | P2 | 9 | 3.0 |  |  |  |  |  |  |  |  | as of 30dec22 updated | as of 30dec22 updated |  |
| IFM-SDA-TO4-0155 |  | NuScale SDA to TO#4 Receive Approved SDA Part 2, Chapter 06 | milestone | 0d | 2022-12-12 A | 2022-12-12 A | PKM-0065 | 100% |  |  | start on or after 2022-12-12 | Yes | Yes |  | 11SDA.CM.0600.010 | NUSCALE |  | 03 | NuScale | FNTP | P2 | 6 |  |  |  |  |  |  |  |  |  | as of 30dec22 updated | as of 30dec22 updated |  |
| IFM-SDA-TO4-0210 |  | NuScale SDA to TO#4 Receive Approved SDA Part 2, Chapter 08, Section 1 | milestone | 0d | 2022-12-12 A | 2022-12-12 A | PKM-0065 | 100% |  |  | start on or after 2022-12-12 |  |  |  | 11SDA.CM.0801.010 | NUSCALE |  | 03 | NuScale | FNTP | P2 | 8 | 1 |  | cal |  |  |  |  |  |  | as of 30dec22 updated | as of 30dec22 updated |  |
| IFM-SDA-TO4-0215 |  | NuScale SDA to TO#4 Receive Approved SDA Part 2, Chapter 08, Section 3 | milestone | 0d | 2022-12-12 A | 2022-12-12 A | PKM-0065 | 100% |  |  | start on or after 2022-12-12 |  |  |  | 11SDA.CM.0803.010 | NUSCALE |  | 03 | NuScale | FNTP | P2 | 8 | 3.0 |  | cal |  |  |  |  |  |  | as of 30dec22 updated | as of 30dec22 updated |  |
| IFM-SDA-TO4-0265 |  | NuScale SDA to TO#4 Receive Approved SDA Part 2, Chapter 14, Section 2 | milestone | 0d | 2022-12-12 A | 2022-12-12 A | PKM-0065 | 100% |  |  | finish on or after 2022-12-12 |  |  |  | 11SDA.CM.1402.010 | NUSCALE |  | 03 | NuScale | FNTP | P2 | 14 | 2.0 |  | cal | 14.02 |  |  |  |  |  | as of 30dec22 updated | as of 30dec22 updated |  |
| IFM-SDA-TO4-0270 |  | NuScale SDA to TO#4 Receive Approved SDA Part 2, Chapter 19, Section 1 | milestone | 0d | 2022-12-12 A | 2022-12-12 A | PKM-0065 | 100% |  |  | finish on or after 2022-12-12 |  |  |  | 11SDA.CM.1900.010 | NUSCALE |  | 03 | NuScale | FNTP | P2 | 19 | 1 |  | cal |  |  |  |  |  |  | as of 30dec22 updated | as of 30dec22 updated |  |
| IFM-SDA-TO4-0145 |  | NuScale SDA to TO#4 Receive Approved SDA Part 2, Chapter 07 | milestone | 0d | 2022-12-16 A | 2022-12-16 A | PKM-0065 | 100% |  |  | start on or after 2022-12-16 | Yes | Yes |  | 11SDA.CM.0700.010 | NUSCALE |  | 03 | NuScale | FNTP | P2 | 7 |  |  |  |  |  |  |  |  |  | as of 30dec22 updated | as of 30dec22 updated |  |
| IFM-SDA-TO4-0185 |  | NuScale SDA to TO#4 Receive Approved SDA Part 2, Chapter 03, Section 6 | milestone | 0d | 2022-12-16 A | 2022-12-16 A | PKM-0065 | 100% |  |  | start on or after 2022-12-16 |  |  |  | 11SDA.CM.0306.010 | NUSCALE |  | 03 | NuScale | FNTP | P2 | 3 | 6.0 |  | cal |  |  |  |  |  |  | as of 30dec22 updated | as of 30dec22 updated |  |
| IFM-SDA-TO4-0110 |  | NuScale SDA to TO#4 Receive Approved SDA Part 2, Chapter 04 | milestone | 0d | 2022-12-19 A | 2022-12-19 A | PKM-0065 | 100% |  |  | start on or after 2022-12-19 | Yes | Yes |  | 11SDA.CM.0400.010 | NUSCALE |  | 03 | NuScale | FNTP | P2 | 4 |  |  |  |  |  |  |  |  |  | as of 30dec22 updated | as of 30dec22 updated |  |
| IFM-SDA-TO4-0135 |  | NuScale SDA to TO#4 Receive Approved SDA Part 2, Chapter 03, Section 1 | milestone | 0d | 2022-12-19 A | 2022-12-19 A | PKM-0065 | 100% |  |  | start on or after 2022-12-19 | Yes | Yes |  | 11SDA.CM.0301.010 | NUSCALE |  | 03 | NuScale | FNTP | P2 | 3 | 1 |  |  |  |  |  |  |  |  | as of 30dec22 updated | as of 30dec22 updated |  |
| IFM-SDA-TO4-0085 |  | NuScale SDA to TO#4 Receive Approved SDA Part 2, Chapter 03, Section 9 | milestone | 0d | 2022-12-20 A | 2022-12-20 A | PKM-0065 | 100% |  |  | start on or after 2022-12-20 | Yes | Yes |  | 11SDA.CM.0309.010 | NUSCALE |  | 03 | NuScale | FNTP | P2 | 3 | 9.0 |  |  |  |  |  |  |  |  | as of 30dec22 updated | as of 30dec22 updated |  |
| IFM-SDA-TO4-0310 |  | NuScale SDA to TO#4 Receive Approved SDA Part 2, Chapter 01, Section 5 | milestone | 0d | 2022-12-20 A | 2022-12-20 A | PKM-0065 | 100% |  |  | finish on or after 2022-12-20 | Yes | Yes |  | 11SDA.CM.0109.010 | NUSCALE |  | 03 | NuScale | FNTP | P2 | 1 | 5.0 |  |  |  | RFI 102 / 202 |  |  |  |  | as of 30dec22 updated | as of 30dec22 updated |  |
| IFM-SDA-TO4-0130 |  | NuScale SDA to TO#4 Receive Approved SDA Part 2, Chapter 17, Section 4 | milestone | 0d | 2022-12-21 A | 2022-12-21 A | PKM-0065 | 100% |  |  | start on or after 2022-12-21 | Yes | Yes |  | 11SDA.CM.1704.010 | NUSCALE |  | 03 | NuScale | FNTP | P2 | 17 | 4.0 |  |  |  |  |  |  |  |  | as of 30dec22 updated | as of 30dec22 updated |  |
| IFM-SDA-TO4-0160 |  | NuScale SDA to TO#4 Receive Approved SDA Part 2, Chapter 16 | milestone | 0d | 2022-12-21 A | 2022-12-21 A | PKM-0065 | 100% |  |  | start on or after 2022-12-21 | Yes | Yes |  | 11SDA.CM.1600.010 | NUSCALE |  | 03 | NuScale | FNTP | P2 | 16 |  |  |  |  |  |  |  |  |  | as of 30dec22 updated | as of 30dec22 updated |  |

| ID | WBS | Activity | Type | Duration | Start | Finish | Predecessors | Complete | Planned start | Planned finish | Total float | Free float | Constraint | zText_02 | zText_RFI | zText_Level 3 Schedule | Nuscale activity Code | Rebaseline details | 12B DEC EOM Notes | CFPP, LLC WBS Structure | Author | Period of Performance | Part | Chapter | Section | UDF Indicator 01 | UDF Text 02 | JLG - Generic Field | Milestone | VERIFIED MONTHLY UPDATE | TWG | 11A NOV MIDMONTH Notes | zText_33 | SDA cleanup notes | Forecast Finish | Deliverable Owner | NEED UPDATE | Monthly Variance | 12A DEC MIDMONTH Notes | UDF Text 01 | DOE MILESTONE | Other | PMAR | Comments | Critical Paths | Remarks |
| --- | --- | --- | --- | --- | --- | --- | --- | --- | --- | --- | --- | --- | --- | --- | --- | --- | --- | --- | --- | --- | --- | --- | --- | --- | --- | --- | --- | --- | --- | --- | --- | --- | --- | --- | --- | --- | --- | --- | --- | --- | --- | --- | --- | --- | --- | --- |
| IFM-SDA-TO4-0285 |  | NuScale SDA to TO#4 Receive Approved SDA Part 2, Chapter 01, Section 2 | milestone | 0d | 2022-12-21 A | 2022-12-21 A | PKM-0065 | 100% |  |  |  |  | finish on or after 2022-12-21 | Yes | RFI 102 / 202 | Yes | 11SDA.CM.0109.010 | NUSCALE | as of 30dec22 updated | 03 | NuScale | FNTP | P2 | 1 | 2.0 |  |  |  |  |  |  |  |  |  |  |  |  |  |  |  |  |  |  |  |  |  |
| IFM-SDA-TO4-0340 |  | NuScale SDA to TO#4 Receive Approved SDA Part 2, Chapter 01, Section 8 | milestone | 0d | 2022-12-27 A | 2022-12-27 A | PKM-0065 | 100% |  |  |  |  | finish on or after 2022-12-27 | Yes | RFI 102 / 202 | Yes | 11SDA.CM.0109.010 | NUSCALE | as of 30dec22 updated | 03 | NuScale | FNTP | P2 | 1 | 8 |  |  |  |  |  |  |  |  |  |  |  |  |  |  |  |  |  |  |  |  |  |
|  | 10 | **NuScale Design Finalization Interface Milestones** |  |  |  |  |  |  |  |  |  |  |  |  |  |  |  |  |  |  |  |  |  |  |  |  |  |  |  |  |  |  |  |  |  |  |  |  |  |  |  |  |  |  |  |  |
|  | 11 | **NuScale SPD / Design Finalization Interface Milestones** |  |  | 2022-02-17 | 2023-04-28 |  |  |  |  |  |  |  |  |  |  |  |  |  |  |  |  |  |  |  |  |  |  |  |  |  |  |  |  |  |  |  |  |  |  |  |  |  |  |  |  |
| IFM-SPD-TO4-0050 |  | NuScale SPD to TO #4 Receive Reactor Pool Liner Design / Confirmation | milestone | 0d | 2022-02-17 A | 2022-02-17 A | PKM-0065, CP-P2-02-01-SD-0000 | 100% | 2022-02-28 | 2022-02-28 |  |  |  | Yes |  |  |  | NUSCALE |  | 03 | NuScale | FNTP |  |  |  | UDF_G1 | Critical Path Item - FF | Tmonth CP XXX | verified COMPLETE |  |  |  |  |  |  |  |  |  |  |  |  |  |  |  |  |  |
| IFM-SPD-TO4-0080 |  | NuScale SPD to TO #4 Receive Turbine Vendor Selection | milestone | 0d | 2022-02-18 A | 2022-02-18 A | PKM-0065 | 100% | 2022-01-31 | 2022-01-31 |  |  |  |  |  | Yes |  | NUSCALE |  | 03 | NuScale | FNTP |  |  |  |  |  |  | verified COMPLETE |  |  |  |  |  |  |  |  |  |  |  |  |  |  |  |  |  |
| IFM-SPD-TO4-0005 |  | NuScale SPD to TO #4 Receive Reactor Flange Tool Design Confirmation | milestone | 0d | 2022-03-25 A | 2022-03-25 A | PKM-0065 | 100% | 2022-03-11 | 2022-03-11 |  |  |  | Yes |  |  |  | NUSCALE |  | 03 | NuScale | FNTP |  |  |  | UDF_G1 | Critical Path Item - FF | Tmonth CP XXX | verified COMPLETE |  |  |  |  |  |  |  |  |  |  |  |  |  |  |  |  |  |
| IFM-SPD-TO4-0000 |  | NuScale SPD to TO #4 Receive Seismic Monitoring System / Program | milestone | 0d | 2022-03-28 A | 2022-03-28 A | PKM-0065 | 100% | 2022-04-04 | 2022-04-04 |  |  |  | Yes |  |  |  | NUSCALE |  | 03 | NuScale | FNTP |  |  |  | UDF_G3 |  |  | verified COMPLETE |  |  |  |  |  |  |  |  |  |  |  |  |  |  |  |  |  |
| IFM-SPD-TO4-0010 |  | NuScale SPD to TO #4 Receive Main Steam System Acoustic Vibration Assessment | milestone | 0d | 2022-12-30 A | 2022-12-30 A | PKM-0065 | 100% | 2022-12-07 | 2022-12-07 |  |  | start on or after 2022-12-07 | Yes |  |  |  | NUSCALE | as of 30dec22 updated | 03 | NuScale | FNTP |  |  |  |  |  |  |  | X | 1 |  |  |  |  |  |  |  |  |  |  |  |  |  |  |  |
| IFM-SPD-TO4-0015 |  | NuScale SPD to TO #4 Receive COLA Commitment of Certified Overpressure Protection Report | milestone | 0d | 2022-12-30 A | 2022-12-30 A | PKM-0065 | 100% | 2022-11-30 | 2022-11-30 |  |  | start on or after 2022-11-30 | Yes |  | Yes |  | NUSCALE | as of 30dec22 updated | 03 | NuScale | FNTP |  |  |  |  |  |  |  |  |  | As of 15nov22 23nov22 new forecast finish |  |  |  |  |  |  |  |  |  |  |  |  |  |  |
| IFM-SPD-TO4-0040 |  | NuScale SPD to TO #4 Receive Security Report Update | milestone | 0d | 2023-01-02 | 2023-01-02 | PKM-0065 |  |  |  | 142d | 135d |  | Yes |  | Yes |  | NUSCALE | as of 30dec22 updated | 03 | NuScale | FNTP |  |  |  |  |  | P1 |  |  |  |  | Critical Path | COLA deliverable wrong section CHANGE TO ? SECTION - CONFIRM | 2023-04-07 |  |  |  |  |  |  |  |  |  |  |  |
| IFM-SPD-TO4-0070 |  | NuScale SPD to TO #4 Receive Piping Analysis Program | milestone | 0d | 2023-01-02 | 2023-01-02 | PKM-0065 |  |  |  | 131d | 21d |  | Yes |  | Yes |  | NUSCALE | As of 30dec22 delayed need update | 03 | NuScale | FNTP |  |  |  |  | Critical Path Item - FF |  |  |  |  |  |  |  |  | Paul/Beth |  |  |  |  |  |  |  |  |  |  |
| IFM-SPD-TO4-0035 |  | NuScale SPD to TO #4 Receive ASME In-Service Testing & Inspection Plans | milestone | 0d | 2023-01-06 | 2023-01-06 | PKM-0065 |  |  |  | 149d | 1d | start on or after 2023-01-06 | Yes |  | Yes |  | NUSCALE | As of 30dec22 pred delayed | 03 | NuScale | FNTP |  |  |  |  |  |  |  |  |  | As of 15nov22 28mar23 new forecast finish |  |  | 2023-01-06 |  |  |  |  |  |  |  |  |  |  |  |
| IFM-SPD-TO4-0065 |  | NuScale SPD to TO #4 Receive PRHA Inside Reactor Building SPD Activity | milestone | 0d | 2023-04-28 | 2023-04-28 | PKM-0065 |  |  |  | 58d | 0d | start on or after 2023-04-28 | Yes |  | Yes |  | NUSCALE | As of 30dec22 delayed | 03 | NuScale | FNTP |  |  |  |  |  |  |  |  |  | As of 15nov22 31jan23 new forecast finish |  |  | 2023-04-28 |  | OCT | Oct | As of 12dec22 start slip from 28nov22 |  |  |  |  |  |  |  |
|  | 8 | **CFPP to Task Order #4 Interface Milestones** |  |  | 2022-01-03 | 2023-01-31 |  |  |  |  |  |  |  |  |  |  |  |  |  |  |  |  |  |  |  |  |  |  |  |  |  |  |  |  |  |  |  |  |  |  |  |  |  |  |  |  |
| IFM-CFP-TO4-0065 |  | CFPP to TO #4 - Issue/Receive Task Order with BEA | milestone | 0d | 2022-01-03 A | 2022-01-03 A | PKM-0035 | 100% |  |  |  |  |  |  |  | Yes |  | CFPP |  | 03 | CFPP | FNTP |  |  |  |  |  |  | verified COMPLETE |  |  |  |  |  |  |  |  |  |  |  |  |  |  |  |  |  |
| IFM-CFP-TO4-0005 |  | CFPP to TO #4 - Issue/Receive Platt of Survey of Site | milestone | 0d | 2022-01-31 A | 2022-01-31 A | PKM-0035 | 100% |  |  |  |  |  |  |  | Yes |  | CFPP |  | 03 | CFPP | FNTP |  |  |  |  |  |  | verified COMPLETE |  |  |  |  |  |  |  |  |  |  |  |  |  |  |  |  |  |
| IFM-CFP-TO4-0075 |  | CFPP to TO #4 - CFPP Issue NTP | milestone | 0d | 2022-05-02 A | 2022-05-02 A | PKM-0035 | 100% |  |  |  |  |  |  |  | Yes |  | CFPP |  | 03 | CFPP | FNTP |  |  |  | UDF_G3 |  |  | verified COMPLETE |  |  |  |  |  |  |  |  |  |  | DR/MC | x |  |  |  |  |  |
| IFM-CFP-TO4-0055 |  | CFPP to TO #4 - Issue/Receive Owner Operator Selection | milestone | 0d | 2022-05-31 A | 2022-05-31 A | PKM-0035 | 100% |  |  |  |  |  |  |  | Yes |  | CFPP |  | 03 | CFPP | FNTP |  |  |  |  |  |  | verified COMPLETE |  |  |  |  | complete mar 16 |  |  |  |  |  |  | x | PMAR | Y |  |  |  |
| IFM-CFP-TO4-0077 |  | CFPP to TO #4 - CFPP Issue Final LWA Decision | milestone | 0d | 2022-07-29 A | 2022-07-29 A | PKM-0035 | 100% |  |  |  |  |  |  |  | Yes |  | CFPP |  | 03 | CFPP | FNTP |  |  |  | UDF_G3 |  |  | verified COMPLETE |  |  |  |  |  |  |  |  |  |  | DR/MC |  |  |  | x | 5 |  |
| IFM-CFP-TO4-0030 |  | CFPP to TO #4 - Issue/Receive Fire Protection Program Input from CFPP | milestone | 0d | 2022-09-06 A | 2022-09-06 A | PKM-0035 | 100% |  |  |  |  |  |  |  | Yes |  | CFPP |  | 03 | CFPP | FNTP |  |  |  |  |  |  | verified COMPLETE |  |  |  |  | revised |  |  |  |  |  |  |  |  |  | x |  |  |
| IFM-CFP-TO4-0020 |  | CFPP to TO #4 - Issue/Receive Grid Parameters, Transmission Line and Interconnection Design | milestone | 0d | 2022-09-23 A | 2022-09-23 A | PKM-0065 | 100% | 2022-10-04 | 2022-10-04 |  |  |  |  |  | Yes |  |  |  | 03 | CFPP |  |  |  |  |  |  |  | verified COMPLETE | X |  |  |  | confirm this date |  |  |  |  |  |  |  | cal |  | x |  |  |
| IFM-CFP-TO4-0025 |  | CFPP to TO #4 - Issue/Receive Off-Site Communications System Design Description | milestone | 0d | 2022-09-30 A | 2022-09-30 A | PKM-0035 | 100% |  |  |  |  |  |  |  | Yes |  | CFPP |  | 03 | CFPP | FNTP |  |  |  |  |  |  | verified COMPLETE |  |  |  |  | revised |  |  |  |  |  |  |  |  |  |  |  |  |
| IFM-CFP-TO4-0085 |  | CFPP to TO #4 - Energy Alternatives & Need for Power (ER) | milestone | 0d | 2022-10-17 A | 2022-10-17 A | PKM-0035 | 100% | 2022-12-09 | 2022-12-09 |  |  |  |  |  | Yes |  | CFPP | as of 30dec22 updated revised finish date | 03 | S&L | FNTP |  |  |  |  |  |  |  | X |  |  |  | revised |  |  | OCT | Oct |  |  |  |  |  | x |  | SL-FL-0012 Added 06/2922 |
| IFM-CFP-TO4-0050 |  | CFPP to TO #4 - Provide Description of Decommissioning Funding Assurance Method | milestone | 0d | 2022-11-15 A | 2022-11-15 A | PKM-0035 | 100% | 2022-11-21 | 2022-11-21 |  |  |  |  |  | Yes |  | CFPP |  | 03 | CFPP | FNTP |  |  |  |  |  |  |  |  |  |  |  | revised |  |  |  | Oct |  |  |  |  |  |  |  |  |
| IFM-CFP-TO4-0080 |  | CFPP to TO #4 - Issue/Receive 10 CFR 50.33(i) Information | milestone | 0d | 2023-01-11 | 2023-01-11 | PKM-0035 |  |  |  | 329d |  | start on or after 2023-01-11 |  |  | Yes |  | CFPP | As of 30dec22 delayed | 03 | CFPP | FNTP |  |  |  |  |  |  |  | X |  |  |  | revised |  |  |  | Oct |  |  |  |  |  |  |  |  |
| IFM-CFP-TO4-0060 |  | CFPP to TO #4 - Provide Corporate / Home Office Mgmt & Tech Support Organization | milestone | 0d | 2023-01-27 | 2023-01-27 | PKM-0035 |  |  |  | 147d | 33d | finish on or after 2023-01-27 |  |  | Yes |  | CFPP | As of 30dec22 delayed | 03 | CFPP | FNTP |  |  |  |  |  |  |  | X |  |  |  | revised |  |  | OCT | Oct |  |  |  |  |  | x |  |  |
| IFM-CFP-TO4-0000 |  | CFPP to TO #4 - Issue/Receive Financial Qualification Input | milestone | 0d | 2023-01-30 | 2023-01-30 | PKM-0035 |  |  |  | 316d |  | start on or after 2023-01-30 |  |  | Yes |  | CFPP | As of 30dec22 delayed | 03 | CFPP | FNTP |  |  |  |  |  |  |  |  |  |  |  | revised |  |  |  | Oct |  |  |  |  |  |  |  |  |
| IFM-CFP-TO4-0090 |  | CFPP to TO #4 - Issue Water Supply Location and Pipeline corridor route | milestone | 0d | 2023-01-31 | 2023-01-31 | PKM-0035 |  |  |  | 37d | 0d | finish on or after 2023-01-31 |  |  | Yes |  | CFPP |  | 03 | CFPP | FNTP |  |  |  |  |  |  |  | X |  |  |  | revised |  |  | OCT |  |  |  |  |  |  | x |  | SL-FL-0012 Added 06/2922 |

Notes:
- IFM-SDA-TO4-0285: CFPP - Contractor's Remarks: as of 30dec22 updated
- IFM-SDA-TO4-0340: CFPP - Contractor's Remarks: as of 30dec22 updated
- IFM-SPD-TO4-0010: 9A SEP EOM Notes: Sep update start slip from 30sep / CFPP - Contractor's Remarks: as of 30dec22 updated
- IFM-SPD-TO4-0015: 11B NOV EOM Notes: As of 29nov22 start slip from 17nov22 / CFPP - Contractor's Remarks: as of 30dec22 updated
- IFM-SPD-TO4-0040: Steps: NuScale; S&L / CFPP - Contractor's Remarks: as of 30dec22 updated
- IFM-SPD-TO4-0070: CFPP - Contractor's Remarks: as of 30dec22 successor moved out to 31jan23
- IFM-SPD-TO4-0035: 11B NOV EOM Notes: As of 29nov22 start slip from 8nov22 / CFPP - Contractor's Remarks: as of 30dec22 updated pred delayed
- IFM-SPD-TO4-0065: 10B OCT EOM Notes: oct update start slip out from 03oct22 / 11B NOV EOM Notes: As of 29nov22 coming from prefeed successor to fin milestone FF +25 / CFPP - Contractor's Remarks: as of 30dec22 updated item has moved out based on tentative pre-feed/TO 5b schedule
- IFM-CFP-TO4-0030: 9A SEP EOM Notes: Sep update
- IFM-CFP-TO4-0020: 9A SEP EOM Notes: Sep update from T. Bell may need to verify understanding from CFPP
- IFM-CFP-TO4-0025: 9A SEP EOM Notes: Sep update
- IFM-CFP-TO4-0085: 9A SEP EOM Notes: Sep update slip finish from / 10B OCT EOM Notes: oct update finish slip from 17oct22 (S&L shows complete 17oct22) / 11B NOV EOM Notes: As of 29nov22 start slip from 18nov22
- IFM-CFP-TO4-0050: 9A SEP EOM Notes: Sep update from T. Bell / 10B OCT EOM Notes: oct update start slip from 31oct22 / 11B NOV EOM Notes: As of 29nov22 complete
- IFM-CFP-TO4-0080: 9A SEP EOM Notes: Sep update from T.Bell may need to verify understanding from CFPP slip to 31oct pending confirmation / 10B OCT EOM Notes: oct update start slip from 31oct22 / 11B NOV EOM Notes: As of 29nov22 start slip from 21nov22
- IFM-CFP-TO4-0060: 9A SEP EOM Notes: Sep update slip finish from / 10B OCT EOM Notes: oct update finish slip from 27oct22 / 11B NOV EOM Notes: As of 29nov22 still need update fin 18nov22
- IFM-CFP-TO4-0000: 9A SEP EOM Notes: Sep update from T. Bell / 10B OCT EOM Notes: oct update start slip from 31oct22 no successor / 11B NOV EOM Notes: As of 29nov22 still need update start 21nov22
- IFM-CFP-TO4-0090: 9A SEP EOM Notes: Sep update slip finish from / 10B OCT EOM Notes: oct update new CFPP milestone from KK (Need Date) / 11B NOV EOM Notes: As of 29nov22 finish slip from 31oct22

| ID | WBS | Activity | Type | Duration | Start | Finish | Predecessors | Complete | Remaining | Planned start | Planned finish | Total float | Free float | Constraint | Expected finish | Resources | UDF Indicator 01 | zText_01 | zText_33 | UDF Text 01 | zText_02 | zText_03 | zText_Level 3 Schedule | HISTOGRAM DATES | TOTAL BUDGET | 11A NOV MIDMONTH Notes | Author | Part | CFPP, LLC WBS Structure | Period of Performance | Rebaseline details |
| --- | --- | --- | --- | --- | --- | --- | --- | --- | --- | --- | --- | --- | --- | --- | --- | --- | --- | --- | --- | --- | --- | --- | --- | --- | --- | --- | --- | --- | --- | --- | --- |
|  | RL | **CFPP - Resource Loading** |  |  | 2021-06-07 | 2024-03-28 |  |  |  |  |  |  |  |  |  |  |  |  |  |  |  |  |  |  |  |  |  |  |  |  |  |
|  | o | **CFPP - Resource Loading - Indirect Budgets** |  |  | 2021-06-07 | 2024-03-06 |  |  |  |  |  |  |  |  |  |  |  |  |  |  |  |  |  |  |  |  |  |  |  |  |  |
| RL-CP-IND-0020 |  | CFPP - Resource Loading - COLA Prep - Indirect Budget - Navton | level of effort | 238d | 2021-06-07 A | 2023-04-28 | RL-CP-IND-0120 SS, RL-CP-IND-0120 FF | 50% | 85d | 2023-01-27 | 2024-01-10 | 251d | 0d |  |  | Indirect Budget [516 h] | UDF_G1 | Drilling | Critical Path | JP/PM | Yes | NO | No | NOV23 - DEC23 | 2107.0 | remaining from oct 265 hours, reduce by 71 for CO | NAV | Pind |  |  |  |
| RL-CP-IND-0040 |  | CFPP - Resource Loading - COLA Prep - Indirect Budget - RIZZO | level of effort | 238d | 2021-06-07 A | 2022-08-31 A | RL-CP-IND-0140 SS, RL-CP-IND-0140 FF | 100% |  | 2023-01-27 | 2024-01-10 |  |  |  |  | Indirect Budget [366 h] | UDF_G1 | Drilling | Critical Path | JP/PM | Yes | NO | No | NOV23 - DEC23 | 3452.0 |  | RIZZO | Pind |  |  |  |
| RL-CP-IND-0050 |  | CFPP - Resource Loading - COLA Prep - Indirect Budget - S&ME | level of effort | 238d | 2021-06-07 A | 2024-03-06 | RL-CP-IND-0150 SS, RL-CP-IND-0150 FF | 50% | 296.88d | 2023-01-27 | 2024-01-10 | 39.12d | 0d |  |  | Indirect Budget [765 h] | UDF_G1 | Drilling | Critical Path | JP/PM | Yes | NO | No | NOV23 - DEC23 | 5994.0 |  | SNME | Pind |  |  |  |
| RL-CP-IND-0120 |  | CFPP - COLA Prep - Indirect Budget - Navton |  | 238d | 2021-06-07 A | 2023-04-28 |  | 50% | 85d | 2023-01-27 | 2024-01-10 | 251d | 0d |  | 2023-04-28 |  | UDF_G1 | Drilling | Critical Path | JP/PM | Yes | NO | No | NOV23 - DEC23 |  |  | NAV |  |  |  |  |
| RL-CP-IND-0140 |  | CFPP - COLA Prep - Indirect Budget - RIZZO |  | 238d | 2021-06-07 A | 2022-08-31 A |  | 100% |  | 2023-01-27 | 2024-01-10 |  |  |  |  |  | UDF_G1 | Drilling | Critical Path | JP/PM | Yes | NO | No | NOV23 - DEC23 |  |  | RIZZO |  |  |  |  |
| RL-CP-IND-0150 |  | CFPP - COLA Prep - Indirect Budget - S&ME |  | 23d | 2021-06-07 A | 2024-03-06 |  | 50% | 296.88d | 2023-01-27 | 2023-02-28 | 39.12d |  |  |  |  | UDF_G1 | Drilling | Critical Path | JP/PM | Yes | NO | No | NOV23 - DEC23 |  |  | SNME |  |  |  |  |
| RL-CP-IND-0010 |  | CFPP - Resource Loading - COLA Prep - Indirect Budget - Nuscale | level of effort | 238d | 2021-08-09 A | 2024-01-10 | RL-CP-IND-0110 SS, RL-CP-IND-0110 FF | 50% | 257d | 2023-01-27 | 2024-01-10 | 79d | 0d |  |  | Indirect Budget [11906 h] | UDF_G1 | Drilling | Critical Path | JP/PM | Yes | NO | No | NOV23 - DEC23 | 14128.0 |  | NuScale | Pind |  |  |  |
| RL-CP-IND-0110 |  | CFPP - COLA Prep - Indirect Budget - Nuscale |  | 238d | 2021-08-09 A | 2024-01-10 |  | 50% | 257d | 2023-01-27 | 2024-01-10 | 79d | 0d |  | 2024-01-10 |  | UDF_G1 | Drilling | Critical Path | JP/PM | Yes | NO | No | NOV23 - DEC23 |  |  | NuScale |  |  |  |  |
| RL-CP-IND-0030 |  | CFPP - Resource Loading - COLA Prep - Indirect Budget - Fluor | level of effort | 481d | 2021-08-09 A | 2024-01-10 | RL-CP-IND-0130 SS, RL-CP-IND-0130 FF |  | 257d | 2022-10-31 | 2024-09-24 | 79d | 0d |  |  | Indirect Budget [65905 h] | UDF_G1 | Drilling | Critical Path | JP/PM | Yes | NO | No | NOV23 - DEC23 | 99834.0 |  | FL4 | Pind |  |  |  |
| RL-CP-IND-0130 |  | CFPP - COLA Prep - Indirect Budget - Fluor |  | 481d | 2021-08-09 A | 2024-01-10 |  |  | 257d | 2022-10-31 | 2024-09-24 | 79d | 0d |  | 2024-01-10 |  | UDF_G1 | Drilling | Critical Path | JP/PM | Yes | NO | No | NOV23 - DEC23 |  |  | FL4 |  |  |  |  |
| RL-CP-IND-0060 |  | CFPP - Resource Loading - COLA Prep - Indirect Budget - S&L | level of effort | 185d | 2023-04-03 | 2023-12-22 | RL-CP-IND-0160 SS, RL-CP-IND-0160 FF |  |  |  |  | 86d | 0d |  |  | Indirect Budget [590 h] | UDF_G1 | Drilling | Critical Path | JP/PM | Yes | NO | No | NOV23 - DEC23 | 590.0 |  | S&L | Pind |  |  |  |
| RL-CP-IND-0160 |  | CFPP - COLA Prep - Indirect Budget - S&L |  | 185d | 2023-04-03 | 2023-12-22 |  |  |  |  |  | 86d |  | start on or after 2023-04-03 |  |  | UDF_G1 | Drilling | Critical Path | JP/PM | Yes | NO | No | NOV23 - DEC23 |  |  | S&L |  |  |  |  |
|  | a | **CFPP - Resource Loading - Field Investigations** |  |  | 2021-09-07 | 2024-03-28 |  |  |  |  |  |  |  |  |  |  |  |  |  |  |  |  |  |  |  |  |  |  |  |  |  |
| RL-FI-GI-0000 |  | CFPP - Resource Loading - Field Investigation - Geological Investigations - RIZZO | level of effort | 139d | 2021-09-07 A | 2022-10-28 A | FI-GI-SSI-DR-0000 SS, FI-GI-SSI-DR-0005 SS, FI-GI-SSI-DR-0010 SS, FI-GI-SSI-DR-0015 SS, FI-GI-SSI-DR-0020 SS, FI-GI-SSI-DR-0025 SS, FI-GI-SSI-DR-0030 SS, FI-GI-SSI-DR-0035 SS, FI-GI-SSI-DR-0040 SS, FI-GI-SSI-DR-0045 SS, FI-GI-SSI-DR-0050 SS, FI-GI-SSI-DR-0055 SS, FI-GI-SSI-DR-0060 SS, FI-GI-SSI-DR-0065 SS, FI-GI-SSI-DR-0070 SS, FI-GI-SSI-DR-0075 SS, FI-GI-SSI-DR-0080 SS, FI-GI-SSI-RP-0010 SS, FI-GI-SSI-RP-0000 SS, FI-GI-SSI-RP-0005 SS, FI-GI-SSI-RP-0025 SS, FI-GI-SSI-RP-0015 SS, FI-GI-SSI-RP-0020 SS, FI-GI-SSI-DR-0000 FF, FI-GI-SSI-DR-0005 FF, FI-GI-SSI-DR-0010 FF, FI-GI-SSI-DR-0015 FF, FI-GI-SSI-DR-0020 FF, FI-GI-SSI-DR-0025 FF, FI-GI-SSI-DR-0030 FF, FI-GI-SSI-DR-0035 FF, FI-GI-SSI-DR-0040 FF, FI-GI-SSI-DR-0045 FF, FI-GI-SSI-DR-0050 FF, FI-GI-SSI-DR-0055 FF, FI-GI-SSI-DR-0060 FF, FI-GI-SSI-DR-0065 FF, FI-GI-SSI-DR-0070 FF, FI-GI-SSI-DR-0075 FF, FI-GI-SSI-DR-0080 FF, FI-GI-SSI-RP-0010 FF, FI-GI-SSI-RP-0000 FF, FI-GI-SSI-RP-0005 FF, FI-GI-SSI-RP-0025 FF, FI-GI-SSI-RP-0015 FF, FI-GI-SSI-RP-0020 FF | 100% |  | 2021-09-07 | 2022-03-31 |  |  |  |  | Field Investigations [877 h] | UDF_G1 | Drilling | Critical Path | JP/PM | Yes | NO | No | SEP21 - JUL22 | 18440.0 |  | RIZZO | Pgeo | 03 | FNTP |  |
| RL-FI-GI-0010 |  | CFPP - Resource Loading - Field Investigation - Meteorology - RIZZO | level of effort | 552d | 2021-11-29 A | 2024-02-08 | CP-FI-MET-DC-0015 SS, CP-FI-MET-DC-0020 SS, CP-FI-MET-DC-0025 SS, CP-FI-MET-DC-0030 SS, CP-FI-MET-DC-0035 SS, CP-FI-MET-DC-0040 SS, CP-FI-MET-DC-0045 SS, CP-FI-MET-DC-0050 SS, CP-FI-MET-DC-0055 SS, CP-FI-MET-DC-0060 SS, CP-FI-MET-DC-0065 SS, CP-FI-MET-DC-0070 SS, CP-FI-MET-DC-0015 FF, CP-FI-MET-DC-0020 FF, CP-FI-MET-DC-0025 FF, CP-FI-MET-DC-0030 FF, CP-FI-MET-DC-0035 FF, CP-FI-MET-DC-0040 FF, CP-FI-MET-DC-0045 FF, CP-FI-MET-DC-0050 FF, CP-FI-MET-DC-0055 FF, CP-FI-MET-DC-0060 FF, CP-FI-MET-DC-0065 FF, CP-FI-MET-DC-0070 FF |  | 278d | 2021-11-29 | 2024-02-07 | 58d | 0d |  |  | Meteorology [737 h] | UDF_G1 | Drilling | Critical Path | JP/PM | Yes | NO | No | OCT21 - NOV23 | 1051.0 |  | RIZZO | Pmet | 03 | FNTP |  |
| RL-FI-GI-0015 |  | CFPP - Resource Loading - Field Investigation - Hydrology - RIZZO | level of effort | 533d | 2021-12-16 A | 2024-03-28 | CP-FI-HYD-DC-0000 SS, CP-FI-HYD-DC-0005 SS, CP-FI-HYD-DC-0010 SS, CP-FI-HYD-DC-0015 SS, CP-FI-HYD-DC-0020 SS, CP-FI-HYD-DC-0025 SS, CP-FI-HYD-DC-0030 SS, CP-FI-HYD-DC-0035 SS, CP-FI-HYD-DC-0040 SS, CP-FI-HYD-DC-0045 SS, CP-FI-HYD-DC-0050 SS, CP-FI-HYD-DC-0055 SS, CP-FI-HYD-DC-0060 SS, CP-FI-HYD-DC-0065 SS, CP-FI-HYD-DC-0070 SS, CP-FI-HYD-DC-0075 SS, CP-FI-HYD-DC-0080 SS, CP-FI-HYD-DC-0085 SS, CP-FI-HYD-DC-0090 SS, CP-FI-HYD-DC-0095 SS, CP-FI-HYD-DC-0100 SS, CP-FI-HYD-DC-0105 SS, CP-FI-HYD-DC-0110 SS, CP-FI-HYD-DC-0115 SS, CP-FI-HYD-DC-0000 FF, CP-FI-HYD-DC-0005 FF, CP-FI-HYD-DC-0010 FF, CP-FI-HYD-DC-0015 FF, CP-FI-HYD-DC-0020 FF, CP-FI-HYD-DC-0025 FF, CP-FI-HYD-DC-0030 FF, CP-FI-HYD-DC-0035 FF, CP-FI-HYD-DC-0040 FF, CP-FI-HYD-DC-0045 FF, CP-FI-HYD-DC-0050 FF, CP-FI-HYD-DC-0055 FF, CP-FI-HYD-DC-0060 FF, CP-FI-HYD-DC-0065 FF, CP-FI-HYD-DC-0070 FF, CP-FI-HYD-DC-0075 FF, CP-FI-HYD-DC-0080 FF, CP-FI-HYD-DC-0085 FF, CP-FI-HYD-DC-0090 FF, CP-FI-HYD-DC-0095 FF, CP-FI-HYD-DC-0100 FF, CP-FI-HYD-DC-0105 FF, CP-FI-HYD-DC-0110 FF, CP-FI-HYD-DC-0115 FF, CP-FI-HYD-DC-0003 SS, CP-FI-HYD-DC-0003 FF | 50% | 313d | 2021-12-14 | 2024-01-26 | 23d | 0d |  |  | Hydrology [962 h] | UDF_G1 | Drilling | Critical Path | JP/PM | Yes | NO | No | OCT21 - DEC23 | 1330.0 |  | RIZZO | Phyd | 03 | FNTP |  |
| RL-FI-GI-0005 |  | CFPP - Resource Loading - Field Investigation - Geological Investigations - Atlas | level of effort | 8d | 2022-04-20 A | 2022-06-01 A | FI-GI-SSI-ER-0000 SS, FI-GI-SSI-ER-0005 SS, FI-GI-SSI-ER-0000 FF, FI-GI-SSI-ER-0005 FF | 100% |  | 2022-04-20 | 2022-04-29 |  |  |  |  | Field Investigations [25 h] | UDF_G1 | Drilling | Critical Path | JP/PM | Yes | NO | No |  | 500.0 |  | AT | Pgeo | 03 | FNTP |  |
|  | b | **CFPP - Resource Loading - Part 1** |  |  | 2022-03-21 | 2023-09-01 |  |  |  |  |  |  |  |  |  |  |  |  |  |  |  |  |  |  |  |  |  |  |  |  |  |
| RL-CP-P1-0000 |  | CFPP - Resource Loading - COLA Prep - Part 1 - Fluor | level of effort | 341d | 2022-03-21 A | 2023-09-01 | CP-P1-01-01-SW-0000 SS, CP-P1-01-01-SW-0010 SS, CP-P1-01-01-SW-0015 SS, CP-P1-01-01-SW-0020 SS, CP-P1-01-01-SW-0025 SS, CP-P1-01-01-SW-0000 FF, CP-P1-01-01-SW-0010 FF, CP-P1-01-01-SW-0015 FF, CP-P1-01-01-SW-0020 FF, CP-P1-01-01-SW-0025 FF |  | 173d | 2022-03-21 | 2023-07-19 | 33d | 0d |  |  | Part 1 [634 h] | UDF_G1 | Drilling | Critical Path | JP/PM | Yes | NO | No |  | 662.0 |  | FL4 | P1 | 03 | FNTP | FL4 |
| RL-CP-P1-0005 |  | CFPP - Resource Loading - COLA Prep - Part1 - NuScale | level of effort | 139d | 2022-05-23 A | 2023-07-28 | CP-P1-01-01-SW-0010 SS, CP-P1-01-01-SW-0010 FF |  | 148d | 2022-09-30 | 2023-04-14 | 33d | 0d |  |  | Part 1 [220 h] | UDF_G1 | Drilling | Critical Path | JP/PM | Yes | NO | No | DEC 22 - OCT 23 | 220.0 |  | NuScale | P1 | 03 | FNTP |  |
|  | c | **CFPP - Resource Loading - Part 2** |  |  | 2021-09-21 | 2023-11-02 |  |  |  |  |  |  |  |  |  |  |  |  |  |  |  |  |  |  |  |  |  |  |  |  |  |
| RL-CP-P2-0010 |  | CFPP - Resource Loading - COLA Prep - Part 2 - RIZZO | level of effort | 491d | 2021-09-21 A | 2023-10-24 | CP-P2-02-03-SD-0015 SS, CP-P2-02-03-SD-0020 SS, CP-P2-02-03-SD-0030 SS, CP-P2-02-03-SD-0035 SS, CP-P2-02-03-SD-0045 SS, CP-P2-02-03-SD-0055 SS, CP-P2-02-03-SD-0060 SS, CP-P2-02-04-SD-0005 SS, CP-P2-02-04-SD-0010 SS, CP-P2-02-04-SD-0015 SS, CP-P2-02-04-SD-0020 SS, CP-P2-02-04-SD-0205 SS, CP-P2-02-04-SD-0210 SS, CP-P2-02-04-SD-0190 SS, CP-P2-02-04-SD-0215 SS, CP-P2-02-04-SD-0220 SS, CP-P2-02-04-SD-0230 SS, CP-P2-02-04-SD-0235 SS, CP-P2-02-04-SW-0245 SS, CP-P2-02-04-SW-0250 SS, CP-P2-02-04-SW-0255 SS, CP-P2-02-04-SW-0260 SS, CP-P2-02-04-SW-0265 SS, CP-P2-02-04-SW-0270 SS, CP-P2-02-04-SW-0275 SS, CP-P2-02-04-SW-0280 SS, CP-P2-02-05-SW-0000 SS, CP-P2-02-05-SW-0005 SS, CP-P2-02-05-SW-0010 SS, CP-P2-02-05-SW-0015 SS, CP-P2-02-05-SW-0020 SS, CP-P2-02-05-SW-0025 SS, CP-P2-02-05-SW-0030 SS, CP-P2-02-05-SW-0035 SS, CP-P2-02-05-SD-0025 SS, CP-P2-02-05-SD-0010 SS, CP-P2-02-05-SW-0040 SS, CP-P2-02-05-SW-0045 SS, CP-P2-02-05-SW-0050 SS, CP-P2-02-05-SW-0055 SS, CP-P2-02-05-PVH-0020 SS, CP-P2-02-05-PVH-1000 SS, CP-P2-02-05-PVH-0025 SS, CP-P2-02-05-PVH-1025 SS, CP-P2-02-05-PVH-1080 SS, CP-P2-02-05-PVH-1085 SS, CP-P2-02-05-PVH-1010 SS, CP-P2-02-05-PVH-1030 SS, CP-P2-02-05-PVH-1060 SS, CP-P2-02-05-PVH-1065 SS, CP-P2-02-05-PVH-1070 SS, CP-P2-02-05-PVH-1075 SS, CP-P2-02-05-PVH-1090 SS, CP-P2-02-05-PVH-1095 SS, CP-P2-02-05-PVH-1120 SS, CP-P2-02-05-PVH-1035 SS, CP-P2-02-05-PVH-1040 SS, CP-P2-02-05-PVH-1045 SS, CP-P2-02-05-PVH-1050 SS, CP-P2-02-05-PVH-1100 SS, CP-P2-02-05-PVH-1105 SS, CP-P2-02-05-PVH-1055 SS, CP-P2-02-05-PVH-1110 SS, CP-P2-02-05-PVH-1115 SS, CP-P2-02-05-PVH-1125 SS, CP-P2-02-05-PVH-1130 SS, CP-P2-02-05-PVH-1135 SS, CP-P2-02-05-PVH-1140 SS, CP-P2-02-05-PVH-1145 SS, CP-P2-02-05-PVH-1155 SS, CP-P2-02-05-SW-0060 SS, CP-P2-02-05-SW-0065 SS, CP-P2-02-05-SW-0070 SS, CP-P2-02-05-SW-0075 SS, CP-P2-02-05-BFS-0010 SS, CP-P2-02-05-SD-0030 SS, CP-P2-02-05-SW-0090 SS, CP-P2-02-05-SW-0095 SS, CP-P2-02-05-SW-0100 SS, CP-P2-02-05-SW-0105 SS, CP-P2-02-05-SD-0100 SS, CP-P2-02-05-SD-0105 SS, CP-P2-02-05-SD-0110 SS, CP-P2-02-05-SD-0090 SS, CP-P2-02-05-SD-0095 SS, CP-P2-02-05-SW-0110 SS, CP-P2-02-05-SW-0115 SS, CP-P2-02-05-SW-0120 SS, CP-P2-02-05-SW-0125 SS, CP-P2-02-05-SW-0130 SS, CP-P2-02-05-SW-0135 SS, CP-P2-02-05-SW-0140 SS, CP-P2-02-05-SW-0145 SS, CP-P2-03-07-SD-0005 SS, CP-P2-03-07-SD-0015 SS, CP-P2-03-07-SD-0040 SS, CP-P2-03-08-SD-0015 SS, CP-P2-02-03-SD-0015 FF, CP-P2-02-03-SD-0020 FF, CP-P2-02-03-SD-0030 FF, CP-P2-02-03-SD-0035 FF, CP-P2-02-03-SD-0045 FF, CP-P2-02-03-SD-0055 FF, CP-P2-02-03-SD-0060 FF, CP-P2-02-04-SD-0005 FF, CP-P2-02-04-SD-0010 FF, CP-P2-02-04-SD-0015 FF, CP-P2-02-04-SD-0020 FF, CP-P2-02-04-SD-0205 FF, CP-P2-02-04-SD-0210 FF, CP-P2-02-04-SD-0190 FF, CP-P2-02-04-SD-0215 FF, CP-P2-02-04-SD-0220 FF, CP-P2-02-04-SD-0230 FF, CP-P2-02-04-SD-0235 FF, CP-P2-02-04-SW-0245 FF, CP-P2-02-04-SW-0250 FF, CP-P2-02-04-SW-0255 FF, CP-P2-02-04-SW-0260 FF, CP-P2-02-04-SW-0265 FF, CP-P2-02-04-SW-0270 FF, CP-P2-02-04-SW-0275 FF, CP-P2-02-04-SW-0280 FF, CP-P2-02-05-SW-0000 FF, CP-P2-02-05-SW-0005 FF, CP-P2-02-05-SW-0010 FF, CP-P2-02-05-SW-0015 FF, CP-P2-02-05-SW-0020 FF, CP-P2-02-05-SW-0025 FF, CP-P2-02-05-SW-0030 FF, CP-P2-02-05-SW-0035 FF, CP-P2-02-05-SD-0025 FF, CP-P2-02-05-SD-0010 FF, CP-P2-02-05-SW-0040 FF, CP-P2-02-05-SW-0045 FF, CP-P2-02-05-SW-0050 FF, CP-P2-02-05-SW-0055 FF, CP-P2-02-05-PVH-0020 FF, CP-P2-02-05-PVH-1000 FF, CP-P2-02-05-PVH-0025 FF, CP-P2-02-05-PVH-1025 FF, CP-P2-02-05-PVH-1080 FF, CP-P2-02-05-PVH-1085 FF, CP-P2-02-05-PVH-1010 FF, CP-P2-02-05-PVH-1030 FF, CP-P2-02-05-PVH-1060 FF, CP-P2-02-05-PVH-1065 FF, CP-P2-02-05-PVH-1070 FF, CP-P2-02-05-PVH-1075 FF, CP-P2-02-05-PVH-1090 FF, CP-P2-02-05-PVH-1095 FF, CP-P2-02-05-PVH-1120 FF, CP-P2-02-05-PVH-1035 FF, CP-P2-02-05-PVH-1040 FF, CP-P2-02-05-PVH-1045 FF, CP-P2-02-05-PVH-1050 FF, CP-P2-02-05-PVH-1100 FF, CP-P2-02-05-PVH-1105 FF, CP-P2-02-05-PVH-1055 FF, CP-P2-02-05-PVH-1110 FF, CP-P2-02-05-PVH-1115 FF, CP-P2-02-05-PVH-1125 FF, CP-P2-02-05-PVH-1130 FF, CP-P2-02-05-PVH-1135 FF, CP-P2-02-05-PVH-1140 FF, CP-P2-02-05-PVH-1145 FF, CP-P2-02-05-PVH-1155 FF, CP-P2-02-05-SW-0060 FF, CP-P2-02-05-SW-0065 FF, CP-P2-02-05-SW-0070 FF, CP-P2-02-05-SW-0075 FF, CP-P2-02-05-BFS-0010 FF, CP-P2-02-05-SD-0030 FF, CP-P2-02-05-SW-0090 FF, CP-P2-02-05-SW-0095 FF, CP-P2-02-05-SW-0100 FF, CP-P2-02-05-SW-0105 FF, CP-P2-02-05-SD-0100 FF, CP-P2-02-05-SD-0105 FF, CP-P2-02-05-SD-0110 FF, CP-P2-02-05-SD-0090 FF, CP-P2-02-05-SD-0095 FF, CP-P2-02-05-SW-0110 FF, CP-P2-02-05-SW-0115 FF, CP-P2-02-05-SW-0120 FF, CP-P2-02-05-SW-0125 FF, CP-P2-02-05-SW-0130 FF, CP-P2-02-05-SW-0135 FF, CP-P2-02-05-SW-0140 FF, CP-P2-02-05-SW-0145 FF, CP-P2-03-07-SD-0005 FF, CP-P2-03-07-SD-0015 FF, CP-P2-03-07-SD-0040 FF, CP-P2-03-08-SD-0015 FF, CP-P2-02-05-BFS-0000 FF, CP-P2-02-05-BFS-0000 SS, CP-P2-02-05-BFS-0015 FF, CP-P2-02-05-BFS-0015 SS | 50% | 209d | 2021-09-21 | 2023-08-30 | 127d | 0d |  |  | Part 2 [11848 h] | UDF_G1 | Drilling | Critical Path | JP/PM | Yes | NO | No | OCT21 - FEB24 | 16249.0 |  | RIZZO | P2 | 03 | FNTP |  |
| RL-CP-P2-0005 |  | CFPP - Resource Loading - COLA Prep - Part 2 - NuScale | level of effort | 497d | 2021-11-15 A | 2023-10-26 | IFM-CFP-TO4-0055, IFM-CFP-TO4-0055 FF, CP-P2-03-07-SD-0040, CP-P2-03-07-SD-0040 FF, IFM-TO3-TO4-0015, IFM-TO3-TO4-0015 FF, CP-P2-02-01-SD-0000 SS, CP-P2-01-04-SD-0005 SS, CP-P2-01-06-SD-0000 SS, CP-P2-01-08-SD-0000 SS, CP-P2-01-09-SD-0000 SS, CP-P2-03-01-SW-0000 SS, CP-P2-03-01-SW-0005 SS, CP-P2-03-01-SW-0010 SS, CP-P2-03-01-SW-0015 SS, CP-P2-03-02-SW-0000 SS, CP-P2-03-02-SW-0005 SS, CP-P2-03-02-SW-0010 SS, CP-P2-03-02-SW-0015 SS, CP-P2-03-03-SW-0000 SS, CP-P2-03-03-SW-0005 SS, CP-P2-03-03-SW-0010 SS, CP-P2-03-03-SW-0015 SS, CP-P2-03-04-SD-0020 SS, CP-P2-03-04-SW-0000 SS, CP-P2-03-04-SW-0005 SS, CP-P2-03-04-SW-0010 SS, CP-P2-03-04-SW-0015 SS, CP-P2-03-05-SD-0015 SS, CP-P2-03-05-SW-0000 SS, CP-P2-03-05-SW-0005 SS, CP-P2-03-05-SW-0010 SS, CP-P2-03-05-SW-0015 SS, CP-P2-03-06-SW-0000 SS, CP-P2-03-06-SW-0005 SS, CP-P2-03-06-SW-0015 SS, CP-P2-03-06-SW-0020 SS, CP-P2-03-07-SD-0060 SS, CP-P2-03-07-SD-0065 SS, CP-P2-03-07-SD-0055 SS, CP-P2-03-07-SW-0025 SS, CP-P2-03-07-SW-0020 SS, CP-P2-03-07-SW-0005 SS, CP-P2-03-07-SW-0010 SS, CP-P2-03-07-SW-0015 SS, CP-P2-03-08-SD-0035 SS, CP-P2-03-08-SW-0000 SS, CP-P2-03-08-SW-0005 SS, CP-P2-03-08-SW-0010 SS, CP-P2-03-08-SW-0015 SS, CP-P2-03-09-SW-0000 SS, CP-P2-03-09-SW-0005 SS, CP-P2-03-09-SW-0010 SS, CP-P2-03-09-SW-0015 SS, CP-P2-03-10-SW-0000 SS, CP-P2-03-10-SW-0005 SS, CP-P2-03-10-SW-0010 SS, CP-P2-03-10-SW-0015 SS, CP-P2-03-11-SD-0000 SS, CP-P2-03-11-SW-0000 SS, CP-P2-03-11-SW-0005 SS, CP-P2-03-11-SW-0010 SS, CP-P2-03-11-SW-0015 SS, CP-P2-03-12-SW-0000 SS, CP-P2-03-12-SW-0005 SS, CP-P2-03-12-SW-0010 SS, CP-P2-03-12-SW-0015 SS, CP-P2-03-13-SW-0000 SS, CP-P2-03-13-SW-0005 SS, CP-P2-03-13-SW-0010 SS, CP-P2-03-13-SW-0015 SS, CP-P2-04-01-SW-0000 SS, CP-P2-04-01-SW-0005 SS, CP-P2-04-01-SW-0010 SS, CP-P2-04-01-SW-0015 SS, CP-P2-05-01-SD-0000 SS, CP-P2-05-01-SW-0000 SS, CP-P2-05-01-SW-0005 SS, CP-P2-05-01-SW-0010 SS, CP-P2-05-01-SW-0015 SS, CP-P2-06-01-SD-0005 SS, CP-P2-06-01-SW-0000 SS, CP-P2-06-01-SW-0005 SS, CP-P2-06-01-SW-0010 SS, CP-P2-06-01-SW-0015 SS, CP-P2-07-01-SD-0005 SS, CP-P2-07-01-SD-0000 SS, CP-P2-07-01-SW-0000 SS, CP-P2-07-01-SW-0005 SS, CP-P2-07-01-SW-0010 SS, CP-P2-07-01-SW-0015 SS, CP-P2-08-01-SW-0000 SS, CP-P2-08-01-SW-0005 SS, CP-P2-08-01-SW-0010 SS, CP-P2-08-01-SW-0015 SS, CP-P2-08-03-SW-0000 SS, CP-P2-08-03-SW-0005 SS, CP-P2-08-03-SW-0010 SS, CP-P2-08-03-SW-0015 SS, CP-P2-08-04-SW-0000 SS, CP-P2-08-04-SW-0005 SS, CP-P2-08-04-SW-0010 SS, CP-P2-08-04-SW-0015 SS, CP-P2-09-01-SD-0000 SS, CP-P2-09-01-SW-0000 SS, CP-P2-09-01-SW-0005 SS, CP-P2-09-01-SW-0010 SS, CP-P2-09-01-SW-0015 SS, CP-P2-09-02-SW-0000 SS, CP-P2-09-02-SW-0005 SS, CP-P2-09-02-SW-0010 SS, CP-P2-09-02-SW-0015 SS, CP-P2-09-03-SD-0005 SS, CP-P2-09-03-SW-0000 SS, CP-P2-09-03-SW-0005 SS, CP-P2-09-03-SW-0010 SS, CP-P2-09-03-SW-0015 SS, CP-P2-09-04-SW-0000 SS, CP-P2-09-04-SW-0005 SS, CP-P2-09-04-SW-0010 SS, CP-P2-09-04-SW-0015 SS, CP-P2-09-05-SW-0000 SS, CP-P2-09-05-SW-0005 SS, CP-P2-09-05-SW-0010 SS, CP-P2-09-05-SW-0015 SS, CP-P2-11-01-SW-0000 SS, CP-P2-11-01-SW-0005 SS, CP-P2-11-01-SW-0010 SS, CP-P2-11-01-SW-0015 SS, CP-P2-11-02-SD-0000 SS, CP-P2-11-02-SD-0010 SS, CP-P2-11-02-SD-0015 SS, CP-P2-11-02-SD-0005 SS, CP-P2-11-02-SW-0000 SS, CP-P2-11-02-SW-0005 SS, CP-P2-11-02-SW-0010 SS, CP-P2-11-02-SW-0015 SS, CP-P2-11-03-SD-0020 SS, CP-P2-11-03-SD-0015 SS, CP-P2-11-03-SD-0010 SS, CP-P2-11-04-SW-0000 SS, CP-P2-11-04-SW-0005 SS, CP-P2-11-04-SW-0010 SS, CP-P2-11-04-SW-0015 SS, CP-P2-11-05-SW-0000 SS, CP-P2-11-05-SW-0005 SS, CP-P2-11-05-SW-0010 SS, CP-P2-11-05-SW-0015 SS, CP-P2-11-06-SW-0000 SS, CP-P2-11-06-SW-0005 SS, CP-P2-11-06-SW-0010 SS, CP-P2-11-06-SW-0015 SS, CP-P2-12-01-SD-0000 SS, CP-P2-12-01-SW-0000 SS, CP-P2-12-01-SW-0005 SS, CP-P2-12-01-SW-0010 SS, CP-P2-12-01-SW-0015 SS, CP-P2-12-02-SD-0000 SS, CP-P2-12-02-SW-0000 SS, CP-P2-12-02-SW-0005 SS, CP-P2-12-02-SW-0010 SS, CP-P2-12-02-SW-0015 SS, CP-P2-12-03-SD-0015 SS, CP-P2-12-03-SW-0000 SS, CP-P2-12-03-SW-0005 SS, CP-P2-12-03-SW-0010 SS, CP-P2-12-03-SW-0015 SS, CP-P2-12-05-SD-0100 SS, CP-P2-12-05-SW-0000 SS, CP-P2-12-05-SW-0005 SS, CP-P2-12-05-SW-0010 SS, CP-P2-12-05-SW-0015 SS, CP-P2-13-01-SD-0000 SS, CP-P2-13-01-SW-0000 SS, CP-P2-13-01-SW-0005 SS, CP-P2-13-01-SW-0010 SS, CP-P2-13-01-SW-0015 SS, CP-P2-13-02-SD-0000 SS, CP-P2-13-02-SW-0000 SS, CP-P2-13-02-SW-0005 SS, CP-P2-13-02-SW-0010 SS, CP-P2-13-02-SW-0015 SS, CP-P2-13-03-SW-0000 SS, CP-P2-13-03-SW-0005 SS, CP-P2-13-03-SW-0010 SS, CP-P2-13-03-SW-0015 SS, CP-P2-13-04-SD-0000 SS, CP-P2-13-04-SW-0000 SS, CP-P2-13-04-SW-0005 SS, CP-P2-13-04-SW-0010 SS, CP-P2-13-04-SW-0015 SS, CP-P2-13-05-SD-0015 SS, CP-P2-13-05-SW-0000 SS, CP-P2-13-05-SW-0005 SS, CP-P2-13-05-SW-0010 SS, CP-P2-13-05-SW-0015 SS, CP-P2-13-06-SW-0000 SS, CP-P2-13-06-SW-0005 SS, CP-P2-13-06-SW-0010 SS, CP-P2-13-06-SW-0015 SS, CP-P2-13-07-SW-0000 SS, CP-P2-13-07-SW-0005 SS, CP-P2-13-07-SW-0010 SS, CP-P2-13-07-SW-0015 SS, CP-P2-14-01-SW-0000 SS, CP-P2-14-01-SW-0005 SS, CP-P2-14-01-SW-0010 SS, CP-P2-14-01-SW-0015 SS, CP-P2-14-02-SD-0000 SS, CP-P2-14-02-SW-0000 SS, CP-P2-14-02-SW-0005 SS, CP-P2-14-02-SW-0010 SS, CP-P2-14-02-SW-0015 SS, CP-P2-14-03-SD-0000 SS, CP-P2-14-03-SW-0000 SS, CP-P2-14-03-SW-0005 SS, CP-P2-14-03-SW-0010 SS, CP-P2-14-03-SW-0015 SS, CP-P2-15-01-SD-0000 SS, CP-P2-15-01-SD-0005 SS, CP-P2-15-01-SW-0000 SS, CP-P2-15-01-SW-0005 SS, CP-P2-15-01-SW-0010 SS, CP-P2-15-01-SW-0015 SS, CP-P2-16-01-SW-0000 SS, CP-P2-16-01-SW-0005 SS, CP-P2-16-01-SW-0010 SS, CP-P2-16-01-SW-0015 SS, CP-P2-17-01-SW-0000 SS, CP-P2-17-01-SW-0005 SS, CP-P2-17-01-SW-0010 SS, CP-P2-17-01-SW-0015 SS, CP-P2-17-04-SD-0000 SS, CP-P2-17-04-SW-0000 SS, CP-P2-17-04-SW-0005 SS, CP-P2-17-04-SW-0010 SS, CP-P2-17-04-SW-0015 SS, CP-P2-17-05-SW-0000 SS, CP-P2-17-05-SW-0005 SS, CP-P2-17-05-SW-0010 SS, CP-P2-17-05-SW-0015 SS, CP-P2-17-06-SW-0000 SS, CP-P2-17-06-SW-0005 SS, CP-P2-17-06-SW-0010 SS, CP-P2-17-06-SW-0015 SS, CP-P2-18-01-SD-0000 SS, CP-P2-18-01-SW-0000 SS, CP-P2-18-01-SW-0005 SS, CP-P2-18-01-SW-0010 SS, CP-P2-18-01-SW-0015 SS, CP-P2-19-01-SW-0000 SS, CP-P2-19-01-SW-0005 SS, CP-P2-19-01-SW-0010 SS, CP-P2-19-01-SW-0015 SS, CP-P2-02-01-SD-0000 FF, CP-P2-01-04-SD-0005 FF, CP-P2-01-06-SD-0000 FF, CP-P2-01-08-SD-0000 FF, CP-P2-01-09-SD-0000 FF, CP-P2-03-01-SW-0000 FF, CP-P2-03-01-SW-0005 FF, CP-P2-03-01-SW-0010 FF, CP-P2-03-01-SW-0015 FF, CP-P2-03-02-SW-0000 FF, CP-P2-03-02-SW-0005 FF, CP-P2-03-02-SW-0010 FF, CP-P2-03-02-SW-0015 FF, CP-P2-03-03-SW-0000 FF, CP-P2-03-03-SW-0005 FF, CP-P2-03-03-SW-0010 FF, CP-P2-03-03-SW-0015 FF, CP-P2-03-04-SD-0020 FF, CP-P2-03-04-SW-0000 FF, CP-P2-03-04-SW-0005 FF, CP-P2-03-04-SW-0010 FF, CP-P2-03-04-SW-0015 FF, CP-P2-03-05-SD-0015 FF, CP-P2-03-05-SW-0000 FF, CP-P2-03-05-SW-0005 FF, CP-P2-03-05-SW-0010 FF, CP-P2-03-05-SW-0015 FF, CP-P2-03-06-SW-0000 FF, CP-P2-03-06-SW-0005 FF, CP-P2-03-06-SW-0015 FF, CP-P2-03-06-SW-0020 FF, CP-P2-03-07-SD-0060 FF, CP-P2-03-07-SD-0065 FF, CP-P2-03-07-SD-0055 FF, CP-P2-03-07-SW-0025 FF, CP-P2-03-07-SW-0020 FF, CP-P2-03-07-SW-0005 FF, CP-P2-03-07-SW-0010 FF, CP-P2-03-07-SW-0015 FF, CP-P2-03-08-SD-0035 FF, CP-P2-03-08-SW-0000 FF, CP-P2-03-08-SW-0005 FF, CP-P2-03-08-SW-0010 FF, CP-P2-03-08-SW-0015 FF, CP-P2-03-09-SW-0000 FF, CP-P2-03-09-SW-0005 FF, CP-P2-03-09-SW-0010 FF, CP-P2-03-09-SW-0015 FF, CP-P2-03-10-SW-0000 FF, CP-P2-03-10-SW-0005 FF, CP-P2-03-10-SW-0010 FF, CP-P2-03-10-SW-0015 FF, CP-P2-03-11-SD-0000 FF, CP-P2-03-11-SW-0000 FF, CP-P2-03-11-SW-0005 FF, CP-P2-03-11-SW-0010 FF, CP-P2-03-11-SW-0015 FF, CP-P2-03-12-SW-0000 FF, CP-P2-03-12-SW-0005 FF, CP-P2-03-12-SW-0010 FF, CP-P2-03-12-SW-0015 FF, CP-P2-03-13-SW-0000 FF, CP-P2-03-13-SW-0005 FF, CP-P2-03-13-SW-0010 FF, CP-P2-03-13-SW-0015 FF, CP-P2-04-01-SW-0000 FF, CP-P2-04-01-SW-0005 FF, CP-P2-04-01-SW-0010 FF, CP-P2-04-01-SW-0015 FF, CP-P2-05-01-SD-0000 FF, CP-P2-05-01-SW-0000 FF, CP-P2-05-01-SW-0005 FF, CP-P2-05-01-SW-0010 FF, CP-P2-05-01-SW-0015 FF, CP-P2-06-01-SD-0005 FF, CP-P2-06-01-SW-0000 FF, CP-P2-06-01-SW-0005 FF, CP-P2-06-01-SW-0010 FF, CP-P2-06-01-SW-0015 FF, CP-P2-07-01-SD-0005 FF, CP-P2-07-01-SD-0000 FF, CP-P2-07-01-SW-0000 FF, CP-P2-07-01-SW-0005 FF, CP-P2-07-01-SW-0010 FF, CP-P2-07-01-SW-0015 FF, CP-P2-08-01-SW-0000 FF, CP-P2-08-01-SW-0005 FF, CP-P2-08-01-SW-0010 FF, CP-P2-08-01-SW-0015 FF, CP-P2-08-03-SW-0000 FF, CP-P2-08-03-SW-0005 FF, CP-P2-08-03-SW-0010 FF, CP-P2-08-03-SW-0015 FF, CP-P2-08-04-SW-0000 FF, CP-P2-08-04-SW-0005 FF, CP-P2-08-04-SW-0010 FF, CP-P2-08-04-SW-0015 FF, CP-P2-09-01-SD-0000 FF, CP-P2-09-01-SW-0000 FF, CP-P2-09-01-SW-0005 FF, CP-P2-09-01-SW-0010 FF, CP-P2-09-01-SW-0015 FF, CP-P2-09-02-SW-0000 FF, CP-P2-09-02-SW-0005 FF, CP-P2-09-02-SW-0010 FF, CP-P2-09-02-SW-0015 FF, CP-P2-09-03-SD-0005 FF, CP-P2-09-03-SW-0000 FF, CP-P2-09-03-SW-0005 FF, CP-P2-09-03-SW-0010 FF, CP-P2-09-03-SW-0015 FF, CP-P2-09-04-SW-0000 FF, CP-P2-09-04-SW-0005 FF, CP-P2-09-04-SW-0010 FF, CP-P2-09-04-SW-0015 FF, CP-P2-09-05-SW-0000 FF, CP-P2-09-05-SW-0005 FF, CP-P2-09-05-SW-0010 FF, CP-P2-09-05-SW-0015 FF, CP-P2-11-01-SW-0000 FF, CP-P2-11-01-SW-0005 FF, CP-P2-11-01-SW-0010 FF, CP-P2-11-01-SW-0015 FF, CP-P2-11-02-SD-0000 FF, CP-P2-11-02-SD-0010 FF, CP-P2-11-02-SD-0015 FF, CP-P2-11-02-SD-0005 FF, CP-P2-11-02-SW-0000 FF, CP-P2-11-02-SW-0005 FF, CP-P2-11-02-SW-0010 FF, CP-P2-11-02-SW-0015 FF, CP-P2-11-03-SD-0020 FF, CP-P2-11-03-SD-0015 FF, CP-P2-11-03-SD-0010 FF, CP-P2-11-04-SW-0000 FF, CP-P2-11-04-SW-0005 FF, CP-P2-11-04-SW-0010 FF, CP-P2-11-04-SW-0015 FF, CP-P2-11-05-SW-0000 FF, CP-P2-11-05-SW-0005 FF, CP-P2-11-05-SW-0010 FF, CP-P2-11-05-SW-0015 FF, CP-P2-11-06-SW-0000 FF, CP-P2-11-06-SW-0005 FF, CP-P2-11-06-SW-0010 FF, CP-P2-11-06-SW-0015 FF, CP-P2-12-01-SD-0000 FF, CP-P2-12-01-SW-0000 FF, CP-P2-12-01-SW-0005 FF, CP-P2-12-01-SW-0010 FF, CP-P2-12-01-SW-0015 FF, CP-P2-12-02-SD-0000 FF, CP-P2-12-02-SW-0000 FF, CP-P2-12-02-SW-0005 FF, CP-P2-12-02-SW-0010 FF, CP-P2-12-02-SW-0015 FF, CP-P2-12-03-SD-0015 FF, CP-P2-12-03-SW-0000 FF, CP-P2-12-03-SW-0005 FF, CP-P2-12-03-SW-0010 FF, CP-P2-12-03-SW-0015 FF, CP-P2-12-05-SD-0100 FF, CP-P2-12-05-SW-0000 FF, CP-P2-12-05-SW-0005 FF, CP-P2-12-05-SW-0010 FF, CP-P2-12-05-SW-0015 FF, CP-P2-13-01-SD-0000 FF, CP-P2-13-01-SW-0000 FF, CP-P2-13-01-SW-0005 FF, CP-P2-13-01-SW-0010 FF, CP-P2-13-01-SW-0015 FF, CP-P2-13-02-SD-0000 FF, CP-P2-13-02-SW-0000 FF, CP-P2-13-02-SW-0005 FF, CP-P2-13-02-SW-0010 FF, CP-P2-13-02-SW-0015 FF, CP-P2-13-03-SW-0000 FF, CP-P2-13-03-SW-0005 FF, CP-P2-13-03-SW-0010 FF, CP-P2-13-03-SW-0015 FF, CP-P2-13-04-SD-0000 FF, CP-P2-13-04-SW-0000 FF, CP-P2-13-04-SW-0005 FF, CP-P2-13-04-SW-0010 FF, CP-P2-13-04-SW-0015 FF, CP-P2-13-05-SD-0015 FF, CP-P2-13-05-SW-0000 FF, CP-P2-13-05-SW-0005 FF, CP-P2-13-05-SW-0010 FF, CP-P2-13-05-SW-0015 FF, CP-P2-13-06-SW-0000 FF, CP-P2-13-06-SW-0005 FF, CP-P2-13-06-SW-0010 FF, CP-P2-13-06-SW-0015 FF, CP-P2-13-07-SW-0000 FF, CP-P2-13-07-SW-0005 FF, CP-P2-13-07-SW-0010 FF, CP-P2-13-07-SW-0015 FF, CP-P2-14-01-SW-0000 FF, CP-P2-14-01-SW-0005 FF, CP-P2-14-01-SW-0010 FF, CP-P2-14-01-SW-0015 FF, CP-P2-14-02-SD-0000 FF, CP-P2-14-02-SW-0000 FF, CP-P2-14-02-SW-0005 FF, CP-P2-14-02-SW-0010 FF, CP-P2-14-02-SW-0015 FF, CP-P2-14-03-SD-0000 FF, CP-P2-14-03-SW-0000 FF, CP-P2-14-03-SW-0005 FF, CP-P2-14-03-SW-0010 FF, CP-P2-14-03-SW-0015 FF, CP-P2-15-01-SD-0000 FF, CP-P2-15-01-SD-0005 FF, CP-P2-15-01-SW-0000 FF, CP-P2-15-01-SW-0005 FF, CP-P2-15-01-SW-0010 FF, CP-P2-15-01-SW-0015 FF, CP-P2-16-01-SW-0000 FF, CP-P2-16-01-SW-0005 FF, CP-P2-16-01-SW-0010 FF, CP-P2-16-01-SW-0015 FF, CP-P2-17-01-SW-0000 FF, CP-P2-17-01-SW-0005 FF, CP-P2-17-01-SW-0010 FF, CP-P2-17-01-SW-0015 FF, CP-P2-17-04-SD-0000 FF, CP-P2-17-04-SW-0000 FF, CP-P2-17-04-SW-0005 FF, CP-P2-17-04-SW-0010 FF, CP-P2-17-04-SW-0015 FF, CP-P2-17-05-SW-0000 FF, CP-P2-17-05-SW-0005 FF, CP-P2-17-05-SW-0010 FF, CP-P2-17-05-SW-0015 FF, CP-P2-17-06-SW-0000 FF, CP-P2-17-06-SW-0005 FF, CP-P2-17-06-SW-0010 FF, CP-P2-17-06-SW-0015 FF, CP-P2-18-01-SD-0000 FF, CP-P2-18-01-SW-0000 FF, CP-P2-18-01-SW-0005 FF, CP-P2-18-01-SW-0010 FF, CP-P2-18-01-SW-0015 FF, CP-P2-19-01-SW-0000 FF, CP-P2-19-01-SW-0005 FF, CP-P2-19-01-SW-0010 FF, CP-P2-19-01-SW-0015 FF, CP-P2-03-07-SD-0070 SS, CP-P2-03-07-SD-0070 FF, CP-P2-03-07-SD-0075 SS, CP-P2-03-07-SD-0075 FF, CP-P2-03-07-SD-0080 SS, CP-P2-03-07-SD-0080 FF, CP-P2-02-05-PVH-1020 FF, CP-P2-02-05-PVH-1020 SS, CP-P2-03-APA-SW-0000 FF, CP-P2-03-APA-SW-0000 SS, CP-P2-03-APA-SW-0005 FF, CP-P2-03-APA-SW-0005 SS, CP-P2-03-APA-SW-0010 FF, CP-P2-03-APA-SW-0010 SS, CP-P2-03-APA-SW-0015 FF, CP-P2-03-APA-SW-0015 SS, CP-P2-03-APB-SW-0000 FF, CP-P2-03-APB-SW-0000 SS, CP-P2-03-APB-SW-0005 FF, CP-P2-03-APB-SW-0005 SS, CP-P2-03-APB-SW-0010 FF, CP-P2-03-APB-SW-0010 SS, CP-P2-03-APB-SW-0015 FF, CP-P2-03-APB-SW-0015 SS, CP-P2-03-APC-SW-0000 FF, CP-P2-03-APC-SW-0000 SS, CP-P2-03-APC-SW-0005 FF, CP-P2-03-APC-SW-0005 SS, CP-P2-03-APC-SW-0010 FF, CP-P2-03-APC-SW-0010 SS, CP-P2-03-APC-SW-0015 FF, CP-P2-03-APC-SW-0015 SS, CP-P2-10-04-SD-0010 FF, CP-P2-10-04-SD-0010 SS, CP-P2-13-03-SD-0040 FF, CP-P2-13-03-SD-0045 FF, CP-P2-13-03-SD-0050 FF, CP-P2-13-03-SD-0055 FF, CP-P2-13-03-SD-0060 FF, CP-P2-13-03-SD-0070 FF, CP-P2-13-03-SD-0075 FF, CP-P2-13-03-SD-0065 FF, CP-P2-13-03-SD-0080 FF, CP-P2-13-03-SD-0085 FF, CP-P2-13-03-SD-0090 FF, CP-P2-13-03-SD-0095 FF, CP-P2-13-03-SD-0100 FF, CP-P2-13-03-SD-0040 SS, CP-P2-13-03-SD-0045 SS, CP-P2-13-03-SD-0050 SS, CP-P2-13-03-SD-0055 SS, CP-P2-13-03-SD-0060 SS, CP-P2-13-03-SD-0070 SS, CP-P2-13-03-SD-0075 SS, CP-P2-13-03-SD-0065 SS, CP-P2-13-03-SD-0080 SS, CP-P2-13-03-SD-0085 SS, CP-P2-13-03-SD-0090 SS, CP-P2-13-03-SD-0095 SS, CP-P2-13-03-SD-0100 SS, CP-P2-19-01-SD-0200 FF, CP-P2-19-01-SD-0055 FF, CP-P2-19-01-SD-0050 FF, CP-P2-19-01-SD-0095 FF, CP-P2-19-01-SD-0080 FF, CP-P2-19-01-SD-0065 FF, CP-P2-19-01-SD-0070 FF, CP-P2-19-01-SD-0085 FF, CP-P2-19-01-SD-0100 FF, CP-P2-19-01-SD-0090 FF, CP-P2-19-01-SD-0105 FF, CP-P2-19-01-SD-0110 FF, CP-P2-19-01-SD-0140 FF, CP-P2-19-01-SD-0145 FF, CP-P2-19-01-SD-0115 FF, CP-P2-19-01-SD-0120 FF, CP-P2-19-01-SD-0125 FF, CP-P2-19-01-SD-0130 FF, CP-P2-19-01-SD-0075 FF, CP-P2-19-01-SD-0185 FF, CP-P2-19-01-SD-0150 FF, CP-P2-19-01-SD-0155 FF, CP-P2-19-01-SD-0160 FF, CP-P2-19-01-SD-0060 FF, CP-P2-19-01-SD-0165 FF, CP-P2-19-01-SD-0200 SS, CP-P2-19-01-SD-0055 SS, CP-P2-19-01-SD-0050 SS, CP-P2-19-01-SD-0095 SS, CP-P2-19-01-SD-0080 SS, CP-P2-19-01-SD-0065 SS, CP-P2-19-01-SD-0070 SS, CP-P2-19-01-SD-0085 SS, CP-P2-19-01-SD-0100 SS, CP-P2-19-01-SD-0090 SS, CP-P2-19-01-SD-0105 SS, CP-P2-19-01-SD-0110 SS, CP-P2-19-01-SD-0140 SS, CP-P2-19-01-SD-0145 SS, CP-P2-19-01-SD-0115 SS, CP-P2-19-01-SD-0120 SS, CP-P2-19-01-SD-0125 SS, CP-P2-19-01-SD-0130 SS, CP-P2-19-01-SD-0075 SS, CP-P2-19-01-SD-0185 SS, CP-P2-19-01-SD-0150 SS, CP-P2-19-01-SD-0155 SS, CP-P2-19-01-SD-0160 SS, CP-P2-19-01-SD-0060 SS, CP-P2-19-01-SD-0165 SS, CP-P2-10-01-SW-0005 FF, CP-P2-10-01-SW-0005 SS, CP-P2-10-02-SW-0005 FF, CP-P2-10-02-SW-0005 SS, CP-P2-10-03-SW-0005 FF, CP-P2-10-03-SW-0005 SS, CP-P2-10-04-SW-0005 FF, CP-P2-10-04-SW-0005 SS, CP-P2-03-09-SD-0120 SS, CP-P2-03-09-SD-0120 FF, CP-P2-03-09-SD-0140 SS, CP-P2-03-09-SD-0140 FF, CP-P2-03-09-SD-0150 SS, CP-P2-03-09-SD-0150 FF, CP-P2-03-09-SD-0180 SS, CP-P2-03-09-SD-0180 FF | 50% | 211d | 2021-11-15 | 2023-10-31 | 125d | 0d |  |  | Part 2 [82403 h] | UDF_G1 | Drilling | Critical Path | JP/PM | Yes | NO | No | AUG 21 - JAN 24 | 90844.0 |  | NuScale | P2 | 03 | FNTP |  |
| RL-CP-P2-0015 |  | CFPP - Resource Loading - COLA Prep - Part 2 - S&L | level of effort | 446d | 2022-01-05 A | 2023-11-02 | CP-P2-02-00-SD-0000 FF, CP-P2-02-00-SD-0005 FF, CP-P2-02-01-SW-0120 FF, CP-P2-02-01-SW-0125 FF, CP-P2-02-01-SW-0135 FF, CP-P2-02-01-SW-0145 FF, CP-P2-02-01-SW-0100 FF, CP-P2-02-01-SW-0105 FF, CP-P2-02-01-SW-0110 FF, CP-P2-02-01-SW-0115 FF, CP-P2-02-01-SD-0005 FF, CP-P2-02-01-SW-0000 FF, CP-P2-02-01-SW-0005 FF, CP-P2-02-01-SW-0010 FF, CP-P2-02-01-SW-0015 FF, CP-P2-02-01-SD-0020 FF, CP-P2-02-01-SW-0020 FF, CP-P2-02-01-SW-0025 FF, CP-P2-02-01-SW-0030 FF, CP-P2-02-01-SW-0035 FF, CP-P2-02-01-SD-0035 FF, CP-P2-02-01-SD-0025 FF, CP-P2-02-01-SD-0030 FF, CP-P2-02-01-SD-0050 FF, CP-P2-02-01-SD-0055 FF, CP-P2-02-01-SD-0045 FF, CP-P2-02-01-SW-0040 FF, CP-P2-02-01-SW-0045 FF, CP-P2-02-01-SW-0050 FF, CP-P2-02-01-SW-0055 FF, CP-P2-02-02-SD-0005 FF, CP-P2-02-02-SD-0020 FF, CP-P2-02-02-SD-0010 FF, CP-P2-02-02-SD-0015 FF, CP-P2-02-02-SD-0025 FF, CP-P2-02-02-SD-0030 FF, CP-P2-02-02-SD-0035 FF, CP-P2-02-02-SD-0040 FF, CP-P2-02-02-SW-0000 FF, CP-P2-02-02-SW-0005 FF, CP-P2-02-02-SW-0010 FF, CP-P2-02-02-SW-0015 FF, CP-P2-02-03-SD-0000 FF, CP-P2-02-03-SW-0000 FF, CP-P2-02-03-SW-0005 FF, CP-P2-02-03-SW-0010 FF, CP-P2-02-03-SW-0015 FF, CP-P2-02-03-SD-0070 FF, CP-P2-02-03-SD-0075 FF, CP-P2-02-03-SD-0080 FF, CP-P2-02-03-SD-0085 FF, CP-P2-02-03-SW-0020 FF, CP-P2-02-03-SW-0025 FF, CP-P2-02-03-SW-0030 FF, CP-P2-02-03-SW-0035 FF, CP-P2-02-03-SD-0090 FF, CP-P2-02-03-SD-0095 FF, CP-P2-02-03-SD-0100 FF, CP-P2-02-03-SW-0040 FF, CP-P2-02-03-SW-0045 FF, CP-P2-02-03-SW-0050 FF, CP-P2-02-03-SW-0055 FF, CP-P2-02-03-SW-0140 FF, CP-P2-02-03-SD-0105 FF, CP-P2-02-03-SD-0110 FF, CP-P2-02-03-SD-0115 FF, CP-P2-02-03-SD-0120 FF, CP-P2-02-03-SD-0125 FF, CP-P2-02-03-SW-0085 FF, CP-P2-02-03-SW-0090 FF, CP-P2-02-03-SW-0095 FF, CP-P2-02-03-SW-0100 FF, CP-P2-02-03-SD-0130 FF, CP-P2-02-03-SD-0135 FF, CP-P2-02-03-SW-0105 FF, CP-P2-02-03-SW-0110 FF, CP-P2-02-03-SW-0115 FF, CP-P2-02-03-SW-0120 FF, CP-P2-02-04-SD-0000 FF, CP-P2-02-04-SW-0000 FF, CP-P2-02-04-SW-0005 FF, CP-P2-02-04-SW-0010 FF, CP-P2-02-04-SW-0015 FF, CP-P2-02-04-SD-0025 FF, CP-P2-02-04-SD-0030 FF, CP-P2-02-04-SD-0035 FF, CP-P2-02-04-SW-0020 FF, CP-P2-02-04-SW-0025 FF, CP-P2-02-04-SW-0030 FF, CP-P2-02-04-SW-0035 FF, CP-P2-02-04-SD-0045 FF, CP-P2-02-04-SD-0050 FF, CP-P2-02-04-SD-0060 FF, CP-P2-02-04-SD-0055 FF, CP-P2-02-04-SD-0065 FF, CP-P2-02-04-SW-0040 FF, CP-P2-02-04-SW-0045 FF, CP-P2-02-04-SW-0050 FF, CP-P2-02-04-SW-0055 FF, CP-P2-02-04-SD-0070 FF, CP-P2-02-04-SD-0075 FF, CP-P2-02-04-SD-0080 FF, CP-P2-02-04-SW-0060 FF, CP-P2-02-04-SW-0065 FF, CP-P2-02-04-SW-0070 FF, CP-P2-02-04-SW-0075 FF, CP-P2-02-04-SD-0085 FF, CP-P2-02-04-SD-0090 FF, CP-P2-02-04-SD-0095 FF, CP-P2-02-04-SW-0080 FF, CP-P2-02-04-SW-0085 FF, CP-P2-02-04-SW-0090 FF, CP-P2-02-04-SW-0095 FF, CP-P2-02-04-SD-0105 FF, CP-P2-02-04-SD-0110 FF, CP-P2-02-04-SD-0115 FF, CP-P2-02-04-SW-0100 FF, CP-P2-02-04-SW-0105 FF, CP-P2-02-04-SW-0110 FF, CP-P2-02-04-SW-0115 FF, CP-P2-02-04-SD-0125 FF, CP-P2-02-04-SD-0130 FF, CP-P2-02-04-SW-0120 FF, CP-P2-02-04-SW-0125 FF, CP-P2-02-04-SW-0130 FF, CP-P2-02-04-SW-0135 FF, CP-P2-02-04-SD-0140 FF, CP-P2-02-04-SD-0135 FF, CP-P2-02-04-SW-0140 FF, CP-P2-02-04-SW-0145 FF, CP-P2-02-04-SW-0150 FF, CP-P2-02-04-SW-0155 FF, CP-P2-02-04-SD-0150 FF, CP-P2-02-04-SD-0155 FF, CP-P2-02-04-SD-0165 FF, CP-P2-02-04-SD-0160 FF, CP-P2-02-04-SD-0170 FF, CP-P2-02-04-SW-0185 FF, CP-P2-02-04-SW-0190 FF, CP-P2-02-04-SW-0195 FF, CP-P2-02-04-SW-0200 FF, CP-P2-02-04-SD-0175 FF, CP-P2-02-04-SW-0205 FF, CP-P2-02-04-SW-0210 FF, CP-P2-02-04-SW-0215 FF, CP-P2-02-04-SW-0220 FF, CP-P2-02-04-SD-0180 FF, CP-P2-02-04-SD-0185 FF, CP-P2-02-04-SW-0225 FF, CP-P2-02-04-SW-0230 FF, CP-P2-02-04-SW-0235 FF, CP-P2-02-04-SW-0240 FF, CP-P2-02-04-SD-0280 FF, CP-P2-02-04-SW-0285 FF, CP-P2-02-04-SW-0290 FF, CP-P2-02-04-SW-0295 FF, CP-P2-02-04-SW-0300 FF, CP-P2-03-03-SD-0000 FF, CP-P2-03-03-SD-0005 FF, CP-P2-03-04-SD-0000 FF, CP-P2-03-04-SD-0005 FF, CP-P2-03-05-SD-0020 FF, CP-P2-06-01-SD-0000 FF, CP-P2-08-02-SW-0000 FF, CP-P2-08-02-SW-0005 FF, CP-P2-08-02-SW-0010 FF, CP-P2-08-02-SW-0015 FF, CP-P2-11-03-SD-0000 FF, CP-P2-11-03-SW-0000 FF, CP-P2-11-03-SW-0005 FF, CP-P2-11-03-SW-0010 FF, CP-P2-11-03-SW-0015 FF, CP-P2-12-04-SD-0000 FF, CP-P2-12-04-SW-0000 FF, CP-P2-12-04-SW-0005 FF, CP-P2-12-04-SW-0010 FF, CP-P2-12-04-SW-0015 FF, CP-P2-02-00-SD-0000 SS, CP-P2-02-00-SD-0005 SS, CP-P2-02-01-SW-0120 SS, CP-P2-02-01-SW-0125 SS, CP-P2-02-01-SW-0135 SS, CP-P2-02-01-SW-0145 SS, CP-P2-02-01-SW-0100 SS, CP-P2-02-01-SW-0105 SS, CP-P2-02-01-SW-0110 SS, CP-P2-02-01-SW-0115 SS, CP-P2-02-01-SD-0005 SS, CP-P2-02-01-SW-0000 SS, CP-P2-02-01-SW-0005 SS, CP-P2-02-01-SW-0010 SS, CP-P2-02-01-SW-0015 SS, CP-P2-02-01-SD-0020 SS, CP-P2-02-01-SW-0020 SS, CP-P2-02-01-SW-0025 SS, CP-P2-02-01-SW-0030 SS, CP-P2-02-01-SW-0035 SS, CP-P2-02-01-SD-0035 SS, CP-P2-02-01-SD-0025 SS, CP-P2-02-01-SD-0030 SS, CP-P2-02-01-SD-0050 SS, CP-P2-02-01-SD-0055 SS, CP-P2-02-01-SD-0045 SS, CP-P2-02-01-SW-0040 SS, CP-P2-02-01-SW-0045 SS, CP-P2-02-01-SW-0050 SS, CP-P2-02-01-SW-0055 SS, CP-P2-02-02-SD-0005 SS, CP-P2-02-02-SD-0020 SS, CP-P2-02-02-SD-0010 SS, CP-P2-02-02-SD-0015 SS, CP-P2-02-02-SD-0025 SS, CP-P2-02-02-SD-0030 SS, CP-P2-02-02-SD-0035 SS, CP-P2-02-02-SD-0040 SS, CP-P2-02-02-SW-0000 SS, CP-P2-02-02-SW-0005 SS, CP-P2-02-02-SW-0010 SS, CP-P2-02-02-SW-0015 SS, CP-P2-02-03-SD-0000 SS, CP-P2-02-03-SW-0000 SS, CP-P2-02-03-SW-0005 SS, CP-P2-02-03-SW-0010 SS, CP-P2-02-03-SW-0015 SS, CP-P2-02-03-SD-0070 SS, CP-P2-02-03-SD-0075 SS, CP-P2-02-03-SD-0080 SS, CP-P2-02-03-SD-0085 SS, CP-P2-02-03-SW-0020 SS, CP-P2-02-03-SW-0025 SS, CP-P2-02-03-SW-0030 SS, CP-P2-02-03-SW-0035 SS, CP-P2-02-03-SD-0090 SS, CP-P2-02-03-SD-0095 SS, CP-P2-02-03-SD-0100 SS, CP-P2-02-03-SW-0040 SS, CP-P2-02-03-SW-0045 SS, CP-P2-02-03-SW-0050 SS, CP-P2-02-03-SW-0055 SS, CP-P2-02-03-SW-0140 SS, CP-P2-02-03-SD-0105 SS, CP-P2-02-03-SD-0110 SS, CP-P2-02-03-SD-0115 SS, CP-P2-02-03-SD-0120 SS, CP-P2-02-03-SD-0125 SS, CP-P2-02-03-SW-0085 SS, CP-P2-02-03-SW-0090 SS, CP-P2-02-03-SW-0095 SS, CP-P2-02-03-SW-0100 SS, CP-P2-02-03-SD-0130 SS, CP-P2-02-03-SD-0135 SS, CP-P2-02-03-SW-0105 SS, CP-P2-02-03-SW-0110 SS, CP-P2-02-03-SW-0115 SS, CP-P2-02-03-SW-0120 SS, CP-P2-02-04-SD-0000 SS, CP-P2-02-04-SW-0000 SS, CP-P2-02-04-SW-0005 SS, CP-P2-02-04-SW-0010 SS, CP-P2-02-04-SW-0015 SS, CP-P2-02-04-SD-0025 SS, CP-P2-02-04-SD-0030 SS, CP-P2-02-04-SD-0035 SS, CP-P2-02-04-SW-0020 SS, CP-P2-02-04-SW-0025 SS, CP-P2-02-04-SW-0030 SS, CP-P2-02-04-SW-0035 SS, CP-P2-02-04-SD-0045 SS, CP-P2-02-04-SD-0050 SS, CP-P2-02-04-SD-0060 SS, CP-P2-02-04-SD-0055 SS, CP-P2-02-04-SD-0065 SS, CP-P2-02-04-SW-0040 SS, CP-P2-02-04-SW-0045 SS, CP-P2-02-04-SW-0050 SS, CP-P2-02-04-SW-0055 SS, CP-P2-02-04-SD-0070 SS, CP-P2-02-04-SD-0075 SS, CP-P2-02-04-SD-0080 SS, CP-P2-02-04-SW-0060 SS, CP-P2-02-04-SW-0065 SS, CP-P2-02-04-SW-0070 SS, CP-P2-02-04-SW-0075 SS, CP-P2-02-04-SD-0085 SS, CP-P2-02-04-SD-0090 SS, CP-P2-02-04-SD-0095 SS, CP-P2-02-04-SW-0080 SS, CP-P2-02-04-SW-0085 SS, CP-P2-02-04-SW-0090 SS, CP-P2-02-04-SW-0095 SS, CP-P2-02-04-SD-0105 SS, CP-P2-02-04-SD-0110 SS, CP-P2-02-04-SD-0115 SS, CP-P2-02-04-SW-0100 SS, CP-P2-02-04-SW-0105 SS, CP-P2-02-04-SW-0110 SS, CP-P2-02-04-SW-0115 SS, CP-P2-02-04-SD-0125 SS, CP-P2-02-04-SD-0130 SS, CP-P2-02-04-SW-0120 SS, CP-P2-02-04-SW-0125 SS, CP-P2-02-04-SW-0130 SS, CP-P2-02-04-SW-0135 SS, CP-P2-02-04-SD-0140 SS, CP-P2-02-04-SD-0135 SS, CP-P2-02-04-SW-0140 SS, CP-P2-02-04-SW-0145 SS, CP-P2-02-04-SW-0150 SS, CP-P2-02-04-SW-0155 SS, CP-P2-02-04-SD-0150 SS, CP-P2-02-04-SD-0155 SS, CP-P2-02-04-SD-0165 SS, CP-P2-02-04-SD-0160 SS, CP-P2-02-04-SD-0170 SS, CP-P2-02-04-SW-0185 SS, CP-P2-02-04-SW-0190 SS, CP-P2-02-04-SW-0195 SS, CP-P2-02-04-SW-0200 SS, CP-P2-02-04-SD-0175 SS, CP-P2-02-04-SW-0205 SS, CP-P2-02-04-SW-0210 SS, CP-P2-02-04-SW-0215 SS, CP-P2-02-04-SW-0220 SS, CP-P2-02-04-SD-0180 SS, CP-P2-02-04-SD-0185 SS, CP-P2-02-04-SW-0225 SS, CP-P2-02-04-SW-0230 SS, CP-P2-02-04-SW-0235 SS, CP-P2-02-04-SW-0240 SS, CP-P2-02-04-SD-0280 SS, CP-P2-02-04-SW-0285 SS, CP-P2-02-04-SW-0290 SS, CP-P2-02-04-SW-0295 SS, CP-P2-02-04-SW-0300 SS, CP-P2-03-03-SD-0000 SS, CP-P2-03-03-SD-0005 SS, CP-P2-03-04-SD-0000 SS, CP-P2-03-04-SD-0005 SS, CP-P2-03-05-SD-0020 SS, CP-P2-06-01-SD-0000 SS, CP-P2-08-02-SW-0000 SS, CP-P2-08-02-SW-0005 SS, CP-P2-08-02-SW-0010 SS, CP-P2-08-02-SW-0015 SS, CP-P2-11-03-SD-0000 SS, CP-P2-11-03-SW-0000 SS, CP-P2-11-03-SW-0005 SS, CP-P2-11-03-SW-0010 SS, CP-P2-11-03-SW-0015 SS, CP-P2-12-04-SD-0000 SS, CP-P2-12-04-SW-0000 SS, CP-P2-12-04-SW-0005 SS, CP-P2-12-04-SW-0010 SS, CP-P2-12-04-SW-0015 SS, CP-P2-02-01-SD-0026 FF, CP-P2-02-01-SD-0026 SS, CP-P2-02-01-SD-0027 FF, CP-P2-02-01-SD-0027 SS, CP-P2-02-02-SD-0007 FF, CP-P2-02-02-SD-0007 SS, CP-P2-02-02-SD-0022 FF, CP-P2-02-02-SD-0022 SS, CP-P2-02-02-SD-0027 FF, CP-P2-02-02-SD-0027 SS, CP-P2-02-02-SD-0032 FF, CP-P2-02-02-SD-0032 SS, CP-P2-02-02-SD-0037 FF, CP-P2-02-02-SD-0037 SS, CP-P2-02-02-SD-0042 FF, CP-P2-02-02-SD-0042 SS, CP-P2-02-03-SD-0087 FF, CP-P2-02-03-SD-0087 SS, CP-P2-02-03-SD-0102 FF, CP-P2-02-03-SD-0102 SS, CP-P2-02-03-SW-0060 FF, CP-P2-02-03-SW-0060 SS, CP-P2-02-03-SW-0065 FF, CP-P2-02-03-SW-0065 SS, CP-P2-02-03-SW-0070 FF, CP-P2-02-03-SW-0070 SS, CP-P2-02-03-SW-0075 FF, CP-P2-02-03-SW-0075 SS, CP-P2-02-03-SD-0136 FF, CP-P2-02-03-SD-0136 SS, CP-P2-02-03-SD-0137 FF, CP-P2-02-03-SD-0137 SS, CP-P2-02-04-SD-0077 FF, CP-P2-02-04-SD-0077 SS, CP-P2-02-04-SD-0092 FF, CP-P2-02-04-SD-0092 SS, CP-P2-03-03-SD-0001 FF, CP-P2-03-03-SD-0001 SS, CP-P2-03-03-SD-0002 FF, CP-P2-03-03-SD-0002 SS, CP-P2-03-03-SD-0006 FF, CP-P2-03-03-SD-0006 SS, CP-P2-03-03-SD-0007 FF, CP-P2-03-03-SD-0007 SS, CP-P2-03-04-SD-0007 FF, CP-P2-03-04-SD-0007 SS, CP-P2-06-01-SD-0002 FF, CP-P2-06-01-SD-0002 SS, CP-P2-12-04-SD-0005 FF, CP-P2-12-04-SD-0005 SS, CP-P2-12-04-SD-0002 FF, CP-P2-12-04-SD-0002 SS, CP-P2-12-04-SD-0007 FF, CP-P2-12-04-SD-0007 SS, CP-P2-08-02-SD-0005 FF, CP-P2-08-02-SD-0005 SS, CP-P2-08-02-SD-0010 FF, CP-P2-08-02-SD-0010 SS, CP-P2-08-02-SD-0015 FF, CP-P2-08-02-SD-0015 SS, CP-P2-08-02-SD-0020 FF, CP-P2-08-02-SD-0020 SS, CP-P2-08-02-SD-0025 FF, CP-P2-08-02-SD-0025 SS, CP-P2-08-02-SD-0030 FF, CP-P2-08-02-SD-0030 SS, CP-P2-08-02-SD-0040 FF, CP-P2-08-02-SD-0040 SS, CP-P2-02-02-SD-0016 FF, CP-P2-02-02-SD-0016 SS, CP-P2-02-02-SD-0017 FF, CP-P2-02-02-SD-0017 SS, CP-P2-02-04-SD-0036 FF, CP-P2-02-04-SD-0036 SS, CP-P2-02-04-SD-0037 FF, CP-P2-02-04-SD-0037 SS |  | 216d | 2022-01-31 | 2023-10-26 | 120d | 0d |  |  | Part 2 [13572 h] | UDF_G1 | Drilling | Critical Path | JP/PM | Yes | NO | No | SEP21 - NOV23 | 16886.0 |  | S&L | P2 | 03 | FNTP |  |
| RL-CP-P2-0000 |  | CFPP - Resource Loading - COLA Prep - Part 2 - Fluor | level of effort | 380d | 2022-03-04 A | 2023-10-19 | CP-P2-01-01-SD-0005 SS, CP-P2-01-01-SW-0000 SS, CP-P2-01-01-SW-0010 SS, CP-P2-01-01-SW-0015 SS, CP-P2-01-02-SD-0000 SS, CP-P2-01-02-SD-0005 SS, CP-P2-01-02-SD-0010 SS, CP-P2-01-02-SD-0015 SS, CP-P2-01-02-SD-0020 SS, CP-P2-01-02-SD-0025 SS, CP-P2-01-02-SD-0030 SS, CP-P2-01-02-SW-0000 SS, CP-P2-01-02-SW-0010 SS, CP-P2-01-02-SW-0015 SS, CP-P2-01-03-SW-0000 SS, CP-P2-01-03-SW-0010 SS, CP-P2-01-03-SW-0015 SS, CP-P2-01-04-SD-0000 SS, CP-P2-01-04-SW-0000 SS, CP-P2-01-04-SW-0010 SS, CP-P2-01-04-SW-0015 SS, CP-P2-01-05-SW-0000 SS, CP-P2-01-05-SW-0010 SS, CP-P2-01-05-SW-0015 SS, CP-P2-01-06-SW-0000 SS, CP-P2-01-06-SW-0010 SS, CP-P2-01-06-SW-0015 SS, CP-P2-01-07-SD-0000 SS, CP-P2-01-07-SW-0000 SS, CP-P2-01-07-SW-0010 SS, CP-P2-01-07-SW-0015 SS, CP-P2-01-08-SW-0000 SS, CP-P2-01-08-SW-0010 SS, CP-P2-01-08-SW-0015 SS, CP-P2-01-09-SW-0000 SS, CP-P2-01-09-SW-0010 SS, CP-P2-01-09-SW-0015 SS, CP-P2-01-10-SW-0000 SS, CP-P2-01-10-SW-0010 SS, CP-P2-01-10-SW-0015 SS, CP-P2-03-04-SD-0015 SS, CP-P2-03-04-SD-0010 SS, CP-P2-03-APA-SW-0000 SS, CP-P2-03-APA-SW-0010 SS, CP-P2-03-APA-SW-0015 SS, CP-P2-03-APB-SW-0000 SS, CP-P2-03-APB-SW-0010 SS, CP-P2-03-APB-SW-0015 SS, CP-P2-03-APC-SW-0000 SS, CP-P2-03-APC-SW-0010 SS, CP-P2-03-APC-SW-0015 SS, CP-P2-10-01-SW-0000 SS, CP-P2-10-01-SW-0010 SS, CP-P2-10-01-SW-0015 SS, CP-P2-10-03-SW-0000 SS, CP-P2-10-03-SW-0010 SS, CP-P2-10-03-SW-0015 SS, CP-P2-10-04-SD-0000 SS, CP-P2-10-04-SD-0005 SS, CP-P2-10-04-SD-0015 SS, CP-P2-10-04-SW-0000 SS, CP-P2-10-04-SW-0010 SS, CP-P2-10-04-SW-0015 SS, CP-P2-12-05-SD-0000 SS, CP-P2-01-01-SD-0005 FF, CP-P2-01-01-SW-0000 FF, CP-P2-01-01-SW-0010 FF, CP-P2-01-01-SW-0015 FF, CP-P2-01-02-SD-0000 FF, CP-P2-01-02-SD-0005 FF, CP-P2-01-02-SD-0010 FF, CP-P2-01-02-SD-0015 FF, CP-P2-01-02-SD-0020 FF, CP-P2-01-02-SD-0025 FF, CP-P2-01-02-SD-0030 FF, CP-P2-01-02-SW-0000 FF, CP-P2-01-02-SW-0010 FF, CP-P2-01-02-SW-0015 FF, CP-P2-01-03-SW-0000 FF, CP-P2-01-03-SW-0010 FF, CP-P2-01-03-SW-0015 FF, CP-P2-01-04-SD-0000 FF, CP-P2-01-04-SW-0000 FF, CP-P2-01-04-SW-0010 FF, CP-P2-01-04-SW-0015 FF, CP-P2-01-05-SW-0000 FF, CP-P2-01-05-SW-0010 FF, CP-P2-01-05-SW-0015 FF, CP-P2-01-06-SW-0000 FF, CP-P2-01-06-SW-0010 FF, CP-P2-01-06-SW-0015 FF, CP-P2-01-07-SD-0000 FF, CP-P2-01-07-SW-0000 FF, CP-P2-01-07-SW-0010 FF, CP-P2-01-07-SW-0015 FF, CP-P2-01-08-SW-0000 FF, CP-P2-01-08-SW-0010 FF, CP-P2-01-08-SW-0015 FF, CP-P2-01-09-SW-0000 FF, CP-P2-01-09-SW-0010 FF, CP-P2-01-09-SW-0015 FF, CP-P2-01-10-SW-0000 FF, CP-P2-01-10-SW-0010 FF, CP-P2-01-10-SW-0015 FF, CP-P2-03-04-SD-0015 FF, CP-P2-03-04-SD-0010 FF, CP-P2-03-APA-SW-0000 FF, CP-P2-03-APA-SW-0010 FF, CP-P2-03-APA-SW-0015 FF, CP-P2-03-APB-SW-0000 FF, CP-P2-03-APB-SW-0010 FF, CP-P2-03-APB-SW-0015 FF, CP-P2-03-APC-SW-0000 FF, CP-P2-03-APC-SW-0010 FF, CP-P2-03-APC-SW-0015 FF, CP-P2-10-01-SW-0000 FF, CP-P2-10-01-SW-0010 FF, CP-P2-10-01-SW-0015 FF, CP-P2-10-03-SW-0000 FF, CP-P2-10-03-SW-0010 FF, CP-P2-10-03-SW-0015 FF, CP-P2-10-04-SD-0000 FF, CP-P2-10-04-SD-0005 FF, CP-P2-10-04-SD-0015 FF, CP-P2-10-04-SW-0000 FF, CP-P2-10-04-SW-0010 FF, CP-P2-10-04-SW-0015 FF, CP-P2-12-05-SD-0000 FF, CP-P2-10-02-SW-0000 SS, CP-P2-10-02-SW-0000 FF, CP-P2-10-02-SW-0010 SS, CP-P2-10-02-SW-0010 FF, CP-P2-10-02-SW-0015 SS, CP-P2-10-02-SW-0015 FF, CP-P2-01-07-SD-0005 SS, CP-P2-01-07-SD-0005 FF, CP-P2-01-01-SW-0012 SS, CP-P2-01-01-SW-0012 FF, CP-P2-01-03-SW-0012 SS, CP-P2-01-03-SW-0012 FF, CP-P2-01-04-SW-0012 SS, CP-P2-01-04-SW-0012 FF, CP-P2-01-06-SW-0012 SS, CP-P2-01-06-SW-0012 FF, CP-P2-01-07-SW-0012 SS, CP-P2-01-07-SW-0012 FF, CP-P2-02-01-SW-0012 SS, CP-P2-02-01-SW-0012 FF, CP-P2-02-01-SW-0011 SS, CP-P2-02-01-SW-0011 FF, CP-P2-02-04-SW-0012 SS, CP-P2-02-04-SW-0012 FF, CP-P2-02-04-SW-0011 SS, CP-P2-02-04-SW-0011 FF, CP-P2-02-04-SW-0134 SS, CP-P2-02-04-SW-0134 FF, CP-P2-02-04-SW-0094 SS, CP-P2-02-04-SW-0094 FF, CP-P2-02-04-SW-0199 SS, CP-P2-02-04-SW-0199 FF, CP-P2-02-05-SW-0012 SS, CP-P2-02-05-SW-0012 FF, CP-P2-03-APA-SW-0012 SS, CP-P2-03-APA-SW-0012 FF, CP-P2-03-APB-SW-0012 SS, CP-P2-03-APB-SW-0012 FF, CP-P2-08-04-SW-0012 SS, CP-P2-08-04-SW-0012 FF, CP-P2-09-04-SW-0012 SS, CP-P2-09-04-SW-0012 FF, CP-P2-10-01-SW-0012 SS, CP-P2-10-01-SW-0012 FF, CP-P2-10-02-SW-0012 SS, CP-P2-10-02-SW-0012 FF, CP-P2-10-03-SW-0012 SS, CP-P2-10-03-SW-0012 FF, CP-P2-10-04-SW-0012 SS, CP-P2-10-04-SW-0012 FF, CP-P2-11-01-SW-0012 SS, CP-P2-11-01-SW-0012 FF, CP-P2-11-04-SW-0012 SS, CP-P2-11-04-SW-0012 FF, CP-P2-13-02-SW-0012 SS, CP-P2-13-02-SW-0012 FF, CP-P2-13-07-SW-0012 SS, CP-P2-13-07-SW-0012 FF, CP-P2-17-01-SW-0012 SS, CP-P2-17-01-SW-0012 FF, CP-P2-17-06-SW-0012 SS, CP-P2-17-06-SW-0012 FF, CP-P2-02-04-SD-0225 SS, CP-P2-02-04-SD-0225 FF, CP-P2-02-03-SD-0137 FF, CP-P2-02-03-SD-0137 SS, CP-P2-01-01-SW-0005 FF, CP-P2-01-02-SW-0005 FF, CP-P2-01-03-SW-0005 FF, CP-P2-01-04-SW-0005 FF, CP-P2-01-05-SW-0005 FF, CP-P2-01-06-SW-0005 FF, CP-P2-01-07-SW-0005 FF, CP-P2-01-08-SW-0005 FF, CP-P2-01-09-SW-0005 FF, CP-P2-01-10-SW-0005 FF, CP-P2-02-01-SW-0125 FF, CP-P2-02-01-SW-0105 FF, CP-P2-02-01-SW-0005 FF, CP-P2-02-01-SW-0025 FF, CP-P2-02-01-SD-0026 FF, CP-P2-02-01-SW-0045 FF, CP-P2-02-02-SD-0006 FF, CP-P2-02-02-SD-0021 FF, CP-P2-02-02-SD-0026 FF, CP-P2-02-02-SD-0031 FF, CP-P2-02-02-SD-0036 FF, CP-P2-02-02-SD-0041 FF, CP-P2-02-02-SW-0005 FF, CP-P2-02-03-SW-0005 FF, CP-P2-02-03-SD-0086 FF, CP-P2-02-03-SW-0025 FF, CP-P2-02-03-SD-0101 FF, CP-P2-02-03-SW-0045 FF, CP-P2-02-03-SW-0145 FF, CP-P2-02-03-SW-0065 FF, CP-P2-02-03-SW-0090 FF, CP-P2-02-03-SD-0136 FF, CP-P2-02-03-SW-0110 FF, CP-P2-02-04-SW-0005 FF, CP-P2-02-04-SW-0025 FF, CP-P2-02-04-SW-0045 FF, CP-P2-02-04-SD-0076 FF, CP-P2-02-04-SW-0065 FF, CP-P2-02-04-SD-0091 FF, CP-P2-02-04-SW-0085 FF, CP-P2-02-04-SW-0105 FF, CP-P2-02-04-SW-0125 FF, CP-P2-02-04-SW-0145 FF, CP-P2-02-04-SW-0190 FF, CP-P2-02-04-SW-0210 FF, CP-P2-02-04-SW-0230 FF, CP-P2-02-04-SW-0250 FF, CP-P2-02-04-SW-0270 FF, CP-P2-02-04-SW-0290 FF, CP-P2-02-05-SW-0005 FF, CP-P2-02-05-SW-0025 FF, CP-P2-02-05-SW-0045 FF, CP-P2-02-05-SW-0065 FF, CP-P2-02-05-SW-0095 FF, CP-P2-02-05-SW-0115 FF, CP-P2-02-05-SW-0135 FF, CP-P2-03-01-SW-0005 FF, CP-P2-03-02-SW-0005 FF, CP-P2-03-03-SD-0001 FF, CP-P2-03-03-SD-0006 FF, CP-P2-03-03-SW-0005 FF, CP-P2-03-04-SD-0006 FF, CP-P2-03-04-SW-0005 FF, CP-P2-03-05-SW-0005 FF, CP-P2-03-06-SW-0005 FF, CP-P2-03-07-SW-0005 FF, CP-P2-03-08-SW-0005 FF, CP-P2-03-09-SW-0005 FF, CP-P2-03-10-SW-0005 FF, CP-P2-03-11-SW-0005 FF, CP-P2-03-12-SW-0005 FF, CP-P2-03-13-SW-0005 FF, CP-P2-03-APA-SW-0005 FF, CP-P2-03-APB-SW-0005 FF, CP-P2-03-APC-SW-0005 FF, CP-P2-04-01-SW-0005 FF, CP-P2-05-01-SW-0005 FF, CP-P2-06-01-SD-0001 FF, CP-P2-06-01-SW-0005 FF, CP-P2-07-01-SW-0005 FF, CP-P2-08-01-SW-0005 FF, CP-P2-08-02-SW-0005 FF, CP-P2-08-03-SW-0005 FF, CP-P2-08-04-SW-0005 FF, CP-P2-09-01-SW-0005 FF, CP-P2-09-02-SW-0005 FF, CP-P2-09-03-SW-0005 FF, CP-P2-09-04-SW-0005 FF, CP-P2-09-05-SW-0005 FF, CP-P2-10-01-SW-0005 FF, CP-P2-10-02-SW-0005 FF, CP-P2-10-03-SW-0005 FF, CP-P2-10-04-SW-0005 FF, CP-P2-11-01-SW-0005 FF, CP-P2-11-02-SW-0005 FF, CP-P2-11-03-SW-0005 FF, CP-P2-11-04-SW-0005 FF, CP-P2-11-05-SW-0005 FF, CP-P2-11-06-SW-0005 FF, CP-P2-12-02-SW-0005 FF, CP-P2-12-01-SW-0005 FF, CP-P2-12-03-SW-0005 FF, CP-P2-12-04-SD-0001 FF, CP-P2-12-04-SD-0006 FF, CP-P2-12-04-SW-0005 FF, CP-P2-12-05-SW-0005 FF, CP-P2-13-01-SW-0005 FF, CP-P2-13-02-SW-0005 FF, CP-P2-13-03-SW-0005 FF, CP-P2-13-04-SW-0005 FF, CP-P2-13-05-SW-0005 FF, CP-P2-13-06-SW-0005 FF, CP-P2-13-07-SW-0005 FF, CP-P2-14-01-SW-0005 FF, CP-P2-14-02-SW-0005 FF, CP-P2-14-03-SW-0005 FF, CP-P2-15-01-SW-0005 FF, CP-P2-16-01-SW-0005 FF, CP-P2-17-01-SW-0005 FF, CP-P2-17-04-SW-0005 FF, CP-P2-17-05-SW-0005 FF, CP-P2-17-06-SW-0005 FF, CP-P2-18-01-SW-0005 FF, CP-P2-19-01-SW-0005 FF, CP-P2-01-01-SW-0005 SS, CP-P2-01-02-SW-0005 SS, CP-P2-01-03-SW-0005 SS, CP-P2-01-04-SW-0005 SS, CP-P2-01-05-SW-0005 SS, CP-P2-01-06-SW-0005 SS, CP-P2-01-07-SW-0005 SS, CP-P2-01-08-SW-0005 SS, CP-P2-01-09-SW-0005 SS, CP-P2-01-10-SW-0005 SS, CP-P2-02-01-SW-0125 SS, CP-P2-02-01-SW-0105 SS, CP-P2-02-01-SW-0005 SS, CP-P2-02-01-SW-0025 SS, CP-P2-02-01-SD-0026 SS, CP-P2-02-01-SW-0045 SS, CP-P2-02-02-SD-0006 SS, CP-P2-02-02-SD-0021 SS, CP-P2-02-02-SD-0026 SS, CP-P2-02-02-SD-0031 SS, CP-P2-02-02-SD-0036 SS, CP-P2-02-02-SD-0041 SS, CP-P2-02-02-SW-0005 SS, CP-P2-02-03-SW-0005 SS, CP-P2-02-03-SD-0086 SS, CP-P2-02-03-SW-0025 SS, CP-P2-02-03-SD-0101 SS, CP-P2-02-03-SW-0045 SS, CP-P2-02-03-SW-0145 SS, CP-P2-02-03-SW-0065 SS, CP-P2-02-03-SW-0090 SS, CP-P2-02-03-SD-0136 SS, CP-P2-02-03-SW-0110 SS, CP-P2-02-04-SW-0005 SS, CP-P2-02-04-SW-0025 SS, CP-P2-02-04-SW-0045 SS, CP-P2-02-04-SD-0076 SS, CP-P2-02-04-SW-0065 SS, CP-P2-02-04-SD-0091 SS, CP-P2-02-04-SW-0085 SS, CP-P2-02-04-SW-0105 SS, CP-P2-02-04-SW-0125 SS, CP-P2-02-04-SW-0145 SS, CP-P2-02-04-SW-0190 SS, CP-P2-02-04-SW-0210 SS, CP-P2-02-04-SW-0230 SS, CP-P2-02-04-SW-0250 SS, CP-P2-02-04-SW-0270 SS, CP-P2-02-04-SW-0290 SS, CP-P2-02-05-SW-0005 SS, CP-P2-02-05-SW-0025 SS, CP-P2-02-05-SW-0045 SS, CP-P2-02-05-SW-0065 SS, CP-P2-02-05-SW-0095 SS, CP-P2-02-05-SW-0115 SS, CP-P2-02-05-SW-0135 SS, CP-P2-03-01-SW-0005 SS, CP-P2-03-02-SW-0005 SS, CP-P2-03-03-SD-0001 SS, CP-P2-03-03-SD-0006 SS, CP-P2-03-03-SW-0005 SS, CP-P2-03-04-SD-0006 SS, CP-P2-03-04-SW-0005 SS, CP-P2-03-05-SW-0005 SS, CP-P2-03-06-SW-0005 SS, CP-P2-03-07-SW-0005 SS, CP-P2-03-08-SW-0005 SS, CP-P2-03-09-SW-0005 SS, CP-P2-03-10-SW-0005 SS, CP-P2-03-11-SW-0005 SS, CP-P2-03-12-SW-0005 SS, CP-P2-03-13-SW-0005 SS, CP-P2-03-APA-SW-0005 SS, CP-P2-03-APB-SW-0005 SS, CP-P2-03-APC-SW-0005 SS, CP-P2-04-01-SW-0005 SS, CP-P2-05-01-SW-0005 SS, CP-P2-06-01-SD-0001 SS, CP-P2-06-01-SW-0005 SS, CP-P2-07-01-SW-0005 SS, CP-P2-08-01-SW-0005 SS, CP-P2-08-02-SW-0005 SS, CP-P2-08-03-SW-0005 SS, CP-P2-08-04-SW-0005 SS, CP-P2-09-01-SW-0005 SS, CP-P2-09-02-SW-0005 SS, CP-P2-09-03-SW-0005 SS, CP-P2-09-04-SW-0005 SS, CP-P2-09-05-SW-0005 SS, CP-P2-10-01-SW-0005 SS, CP-P2-10-02-SW-0005 SS, CP-P2-10-03-SW-0005 SS, CP-P2-10-04-SW-0005 SS, CP-P2-11-01-SW-0005 SS, CP-P2-11-02-SW-0005 SS, CP-P2-11-03-SW-0005 SS, CP-P2-11-04-SW-0005 SS, CP-P2-11-05-SW-0005 SS, CP-P2-11-06-SW-0005 SS, CP-P2-12-02-SW-0005 SS, CP-P2-12-01-SW-0005 SS, CP-P2-12-03-SW-0005 SS, CP-P2-12-04-SD-0001 SS, CP-P2-12-04-SD-0006 SS, CP-P2-12-04-SW-0005 SS, CP-P2-12-05-SW-0005 SS, CP-P2-13-01-SW-0005 SS, CP-P2-13-02-SW-0005 SS, CP-P2-13-03-SW-0005 SS, CP-P2-13-04-SW-0005 SS, CP-P2-13-05-SW-0005 SS, CP-P2-13-06-SW-0005 SS, CP-P2-13-07-SW-0005 SS, CP-P2-14-01-SW-0005 SS, CP-P2-14-02-SW-0005 SS, CP-P2-14-03-SW-0005 SS, CP-P2-15-01-SW-0005 SS, CP-P2-16-01-SW-0005 SS, CP-P2-17-01-SW-0005 SS, CP-P2-17-04-SW-0005 SS, CP-P2-17-05-SW-0005 SS, CP-P2-17-06-SW-0005 SS, CP-P2-18-01-SW-0005 SS, CP-P2-19-01-SW-0005 SS, CP-P2-02-04-SD-0036 FF, CP-P2-02-04-SD-0036 SS | 50% | 206d | 2022-04-04 | 2023-09-27 | 130d | 0d |  |  | Part 2 [8672 h] | UDF_G1 | Drilling | Critical Path | JP/PM | Yes | NO | No |  | 10128.0 |  | FL4 | P2 | 03 | FNTP | FL4 |
| RL-CP-P2-0025 |  | CFPP - Resource Loading - COLA Prep - Part 2 - CMCG | level of effort | 59d | 2023-04-24 | 2023-09-22 | CP-P2-05-01-SW-0005 FF, CP-P2-05-01-SW-0005 SS, CP-P2-03-03-SW-0005 FF, CP-P2-03-03-SW-0005 SS |  |  | 2023-04-24 | 2023-07-17 | 19d | 0d |  |  | Part 2 [150 h] | UDF_G1 | Drilling | Critical Path | JP/PM | Yes | NO | No |  | 150.0 |  | CMCG | P2 | 03 | FNTP |  |

| ID | WBS | Activity | Type | Duration | Start | Finish | Predecessors | Complete | Remaining | Planned start | Planned finish | Total float | Free float | Resources | UDF Indicator 01 | zText_01 | zText_33 | UDF Text 01 | zText_02 | zText_03 | zText_Level 3 Schedule | Rebaseline details | TOTAL BUDGET | CFPP, LLC WBS Structure | Author | Period of Performance | Part | HISTOGRAM DATES |
| --- | --- | --- | --- | --- | --- | --- | --- | --- | --- | --- | --- | --- | --- | --- | --- | --- | --- | --- | --- | --- | --- | --- | --- | --- | --- | --- | --- | --- |
|  | d | **CFPP - Resource Loading - Part 3** |  |  | 2022-01-24 | 2023-11-02 |  |  |  |  |  |  |  |  |  |  |  |  |  |  |  |  |  |  |  |  |  |  |
| RL-CP-P3-0000 |  | CFPP - Resource Loading - COLA Prep - Part 3 - Fluor | level of effort | 543d | 2022-01-24 A | 2023-11-02 | CP-P3-03-00-SW-0015 SS, CP-P3-03-00-SW-0015 FF, CP-P3-03-00-SW-0010 SS, CP-P3-03-00-SW-0010 FF, CP-P3-03-00-SW-0005 SS, CP-P3-03-00-SW-0005 FF, CP-P3-03-00-SW-0000 SS, CP-P3-03-00-SW-0000 FF, CP-P3-01-01-SW-0000 SS, CP-P3-01-01-SW-0005 SS, CP-P3-01-01-SW-0010 SS, CP-P3-01-01-SW-0015 SS, CP-P3-02-00-SD-0010 SS, CP-P3-02-00-SD-0000 SS, CP-P3-02-00-SD-0005 SS, CP-P3-02-00-SW-0000 SS, CP-P3-02-00-SW-0005 SS, CP-P3-02-00-SW-0010 SS, CP-P3-02-00-SW-0015 SS, CP-P3-02-01-SD-0000 SS, CP-P3-02-01-SD-0005 SS, CP-P3-02-01-SD-0015 SS, CP-P3-02-01-SW-0000 SS, CP-P3-02-01-SW-0005 SS, CP-P3-02-01-SW-0010 SS, CP-P3-02-01-SW-0015 SS, CP-P3-02-03-SW-0000 SS, CP-P3-02-03-SW-0005 SS, CP-P3-02-03-SW-0010 SS, CP-P3-02-03-SW-0015 SS, CP-P3-02-04-SD-0000 SS, CP-P3-02-04-SD-0005 SS, CP-P3-02-04-SD-0010 SS, CP-P3-02-04-SW-0000 SS, CP-P3-02-04-SW-0005 SS, CP-P3-02-04-SW-0010 SS, CP-P3-02-04-SW-0015 SS, CP-P3-02-05-SD-0000 SS, CP-P3-02-05-SD-0005 SS, CP-P3-02-05-SW-0000 SS, CP-P3-02-05-SW-0005 SS, CP-P3-02-05-SW-0010 SS, CP-P3-02-05-SW-0015 SS, CP-P3-02-06-SW-0000 SS, CP-P3-02-06-SW-0005 SS, CP-P3-02-06-SW-0010 SS, CP-P3-02-06-SW-0015 SS, CP-P3-02-08-SD-0005 SS, CP-P3-02-08-SD-0010 SS, CP-P3-02-08-SD-0025 SS, CP-P3-02-08-SD-0030 SS, CP-P3-02-08-SW-0000 SS, CP-P3-02-08-SW-0005 SS, CP-P3-02-08-SW-0010 SS, CP-P3-02-08-SW-0015 SS, CP-P3-02-09-SW-0000 SS, CP-P3-02-09-SW-0005 SS, CP-P3-02-09-SW-0010 SS, CP-P3-02-09-SW-0015 SS, CP-P3-03-01-SD-0015 SS, CP-P3-03-01-SW-0000 SS, CP-P3-03-01-SW-0005 SS, CP-P3-03-01-SW-0010 SS, CP-P3-03-01-SW-0015 SS, CP-P3-03-02-SD-0000 SS, CP-P3-03-02-SW-0000 SS, CP-P3-03-02-SW-0005 SS, CP-P3-03-02-SW-0010 SS, CP-P3-03-02-SW-0015 SS, CP-P3-03-03-SD-0005 SS, CP-P3-03-03-SD-0010 SS, CP-P3-03-03-SD-0000 SS, CP-P3-03-03-SW-0000 SS, CP-P3-03-03-SW-0005 SS, CP-P3-03-03-SW-0010 SS, CP-P3-03-03-SW-0015 SS, CP-P3-03-04-SD-0005 SS, CP-P3-03-04-SD-0000 SS, CP-P3-03-04-SD-0010 SS, CP-P3-03-04-SW-0000 SS, CP-P3-03-04-SW-0005 SS, CP-P3-03-04-SW-0010 SS, CP-P3-03-04-SW-0015 SS, CP-P3-04-01-SD-0000 SS, CP-P3-04-01-SD-0005 SS, CP-P3-04-01-SW-0000 SS, CP-P3-04-01-SW-0005 SS, CP-P3-04-01-SW-0010 SS, CP-P3-04-01-SW-0015 SS, CP-P3-04-03-SD-0000 SS, CP-P3-04-03-SW-0000 SS, CP-P3-04-03-SW-0005 SS, CP-P3-04-03-SW-0010 SS, CP-P3-04-03-SW-0015 SS, CP-P3-04-04-SD-0000 SS, CP-P3-04-04-SD-0005 SS, CP-P3-04-04-SW-0000 SS, CP-P3-04-04-SW-0005 SS, CP-P3-04-04-SW-0010 SS, CP-P3-04-04-SW-0015 SS, CP-P3-04-05-SD-0000 SS, CP-P3-04-05-SW-0000 SS, CP-P3-04-05-SW-0005 SS, CP-P3-04-05-SW-0010 SS, CP-P3-04-05-SW-0015 SS, CP-P3-04-06-SD-0000 SS, CP-P3-04-06-SW-0000 SS, CP-P3-04-06-SW-0005 SS, CP-P3-04-06-SW-0010 SS, CP-P3-04-06-SW-0015 SS, CP-P3-04-08-SD-0000 SS, CP-P3-04-08-SW-0000 SS, CP-P3-04-08-SW-0005 SS, CP-P3-04-08-SW-0010 SS, CP-P3-04-08-SW-0015 SS, CP-P3-04-09-SD-0000 SS, CP-P3-04-09-SW-0000 SS, CP-P3-04-09-SW-0005 SS, CP-P3-04-09-SW-0010 SS, CP-P3-04-09-SW-0015 SS, CP-P3-04-10-SD-0000 SS, CP-P3-04-10-SW-0000 SS, CP-P3-04-10-SW-0005 SS, CP-P3-04-10-SW-0015 SS, CP-P3-04-10-SW-0020 SS, CP-P3-04-11-SD-0000 SS, CP-P3-04-11-SW-0000 SS, CP-P3-04-11-SW-0005 SS, CP-P3-04-11-SW-0010 SS, CP-P3-04-11-SW-0015 SS, CP-P3-05-01-SD-0000 SS, CP-P3-05-01-SD-0005 SS, CP-P3-05-01-SW-0000 SS, CP-P3-05-01-SW-0005 SS, CP-P3-05-01-SW-0010 SS, CP-P3-05-01-SW-0015 SS, CP-P3-05-03-SD-0000 SS, CP-P3-05-03-SW-0000 SS, CP-P3-05-03-SW-0005 SS, CP-P3-05-03-SW-0010 SS, CP-P3-05-03-SW-0015 SS, CP-P3-05-04-SD-0000 SS, CP-P3-05-04-SW-0000 SS, CP-P3-05-04-SW-0005 SS, CP-P3-05-04-SW-0010 SS, CP-P3-05-04-SW-0015 SS, CP-P3-05-05-SD-0000 SS, CP-P3-05-05-SW-0000 SS, CP-P3-05-05-SW-0005 SS, CP-P3-05-05-SW-0010 SS, CP-P3-05-05-SW-0015 SS, CP-P3-05-06-SD-0000 SS, CP-P3-05-06-SW-0000 SS, CP-P3-05-06-SW-0005 SS, CP-P3-05-06-SW-0010 SS, CP-P3-05-06-SW-0015 SS, CP-P3-05-08-SD-0000 SS, CP-P3-05-08-SW-0000 SS, CP-P3-05-08-SW-0010 SS, CP-P3-05-08-SW-0015 SS, CP-P3-05-08-SW-0020 SS, CP-P3-05-10-SD-0000 SS, CP-P3-05-10-SW-0000 SS, CP-P3-05-10-SW-0005 SS, CP-P3-05-10-SW-0010 SS, CP-P3-05-10-SW-0015 SS, CP-P3-05-12-SD-0005 SS, CP-P3-05-12-SW-0000 SS, CP-P3-05-12-SW-0005 SS, CP-P3-05-12-SW-0010 SS, CP-P3-05-12-SW-0015 SS, CP-P3-06-01-SD-0000 SS, CP-P3-06-01-SD-0005 SS, CP-P3-06-01-SW-0000 SS, CP-P3-06-01-SW-0005 SS, CP-P3-06-01-SW-0010 SS, CP-P3-06-01-SW-0015 SS, CP-P3-06-03-SD-0000 SS, CP-P3-06-03-SD-0005 SS, CP-P3-06-03-SD-0010 SS, CP-P3-06-03-SW-0000 SS, CP-P3-06-03-SW-0005 SS, CP-P3-06-03-SW-0010 SS, CP-P3-06-03-SW-0015 SS, CP-P3-07-01-SD-0000 SS, CP-P3-07-01-SD-0005 SS, CP-P3-07-01-SW-0000 SS, CP-P3-07-01-SW-0005 SS, CP-P3-07-01-SW-0010 SS, CP-P3-07-01-SW-0015 SS, CP-P3-08-01-SW-0000 SS, CP-P3-08-01-SW-0005 SS, CP-P3-08-01-SW-0010 SS, CP-P3-08-01-SW-0015 SS, CP-P3-09-01-SD-0000 SS, CP-P3-09-01-SW-0000 SS, CP-P3-09-01-SW-0005 SS, CP-P3-09-01-SW-0010 SS, CP-P3-09-01-SW-0015 SS, CP-P3-09-02-SD-0000 SS, CP-P3-09-02-SD-0005 SS, CP-P3-09-02-SW-0000 SS, CP-P3-09-02-SW-0005 SS, CP-P3-09-02-SW-0010 SS, CP-P3-09-02-SW-0015 SS, CP-P3-09-03-SD-0000 SS, CP-P3-09-03-SW-0000 SS, CP-P3-09-03-SW-0005 SS, CP-P3-09-03-SW-0010 SS, CP-P3-09-03-SW-0015 SS, CP-P3-09-04-SD-0000 SS, CP-P3-09-04-SD-0005 SS, CP-P3-09-04-SW-0000 SS, CP-P3-09-04-SW-0005 SS, CP-P3-09-04-SW-0010 SS, CP-P3-09-04-SW-0015 SS, CP-P3-10-01-SD-0005 SS, CP-P3-10-01-SD-0015 SS, CP-P3-10-01-SD-0000 SS, CP-P3-10-01-SD-0010 SS, CP-P3-10-01-SD-0020 SS, CP-P3-10-01-SW-0000 SS, CP-P3-10-01-SW-0005 SS, CP-P3-10-01-SW-0010 SS, CP-P3-10-01-SW-0015 SS, CP-P3-11-01-SW-0000 SS, CP-P3-11-01-SW-0005 SS, CP-P3-11-01-SW-0010 SS, CP-P3-11-01-SW-0015 SS, CP-P3-APA-SW-0000 SS, CP-P3-APA-SW-0005 SS, CP-P3-APA-SW-0010 SS, CP-P3-APA-SW-0015 SS, CP-P3-APB-SD-0000 SS, CP-P3-APB-SD-0005 SS, CP-P3-APB-SW-0000 SS, CP-P3-APB-SW-0005 SS, CP-P3-APB-SW-0010 SS, CP-P3-APB-SW-0015 SS, CP-P3-01-01-SW-0000 FF, CP-P3-01-01-SW-0005 FF, CP-P3-01-01-SW-0010 FF, CP-P3-01-01-SW-0015 FF, CP-P3-02-00-SD-0010 FF, CP-P3-02-00-SD-0000 FF, CP-P3-02-00-SD-0005 FF, CP-P3-02-00-SW-0000 FF, CP-P3-02-00-SW-0005 FF, CP-P3-02-00-SW-0010 FF, CP-P3-02-00-SW-0015 FF, CP-P3-02-01-SD-0000 FF, CP-P3-02-01-SD-0005 FF, CP-P3-02-01-SD-0015 FF, CP-P3-02-01-SW-0000 FF, CP-P3-02-01-SW-0005 FF, CP-P3-02-01-SW-0010 FF, CP-P3-02-01-SW-0015 FF, CP-P3-02-03-SW-0000 FF, CP-P3-02-03-SW-0005 FF, CP-P3-02-03-SW-0010 FF, CP-P3-02-03-SW-0015 FF, CP-P3-02-04-SD-0000 FF, CP-P3-02-04-SD-0005 FF, CP-P3-02-04-SD-0010 FF, CP-P3-02-04-SW-0000 FF, CP-P3-02-04-SW-0005 FF, CP-P3-02-04-SW-0010 FF, CP-P3-02-04-SW-0015 FF, CP-P3-02-05-SD-0000 FF, CP-P3-02-05-SD-0005 FF, CP-P3-02-05-SW-0000 FF, CP-P3-02-05-SW-0005 FF, CP-P3-02-05-SW-0010 FF, CP-P3-02-05-SW-0015 FF, CP-P3-02-06-SW-0000 FF, CP-P3-02-06-SW-0005 FF, CP-P3-02-06-SW-0010 FF, CP-P3-02-06-SW-0015 FF, CP-P3-02-08-SD-0005 FF, CP-P3-02-08-SD-0010 FF, CP-P3-02-08-SD-0025 FF, CP-P3-02-08-SD-0030 FF, CP-P3-02-08-SW-0000 FF, CP-P3-02-08-SW-0005 FF, CP-P3-02-08-SW-0010 FF, CP-P3-02-08-SW-0015 FF, CP-P3-02-09-SW-0000 FF, CP-P3-02-09-SW-0005 FF, CP-P3-02-09-SW-0010 FF, CP-P3-02-09-SW-0015 FF, CP-P3-03-01-SD-0015 FF, CP-P3-03-01-SW-0000 FF, CP-P3-03-01-SW-0005 FF, CP-P3-03-01-SW-0010 FF, CP-P3-03-01-SW-0015 FF, CP-P3-03-02-SD-0000 FF, CP-P3-03-02-SW-0000 FF, CP-P3-03-02-SW-0005 FF, CP-P3-03-02-SW-0010 FF, CP-P3-03-02-SW-0015 FF, CP-P3-03-03-SD-0005 FF, CP-P3-03-03-SD-0010 FF, CP-P3-03-03-SD-0000 FF, CP-P3-03-03-SW-0000 FF, CP-P3-03-03-SW-0005 FF, CP-P3-03-03-SW-0010 FF, CP-P3-03-03-SW-0015 FF, CP-P3-03-04-SD-0005 FF, CP-P3-03-04-SD-0000 FF, CP-P3-03-04-SD-0010 FF, CP-P3-03-04-SW-0000 FF, CP-P3-03-04-SW-0005 FF, CP-P3-03-04-SW-0010 FF, CP-P3-03-04-SW-0015 FF, CP-P3-04-01-SD-0000 FF, CP-P3-04-01-SD-0005 FF, CP-P3-04-01-SW-0000 FF, CP-P3-04-01-SW-0005 FF, CP-P3-04-01-SW-0010 FF, CP-P3-04-01-SW-0015 FF, CP-P3-04-03-SD-0000 FF, CP-P3-04-03-SW-0000 FF, CP-P3-04-03-SW-0005 FF, CP-P3-04-03-SW-0010 FF, CP-P3-04-03-SW-0015 FF, CP-P3-04-04-SD-0000 FF, CP-P3-04-04-SD-0005 FF, CP-P3-04-04-SW-0000 FF, CP-P3-04-04-SW-0005 FF, CP-P3-04-04-SW-0010 FF, CP-P3-04-04-SW-0015 FF, CP-P3-04-05-SD-0000 FF, CP-P3-04-05-SW-0000 FF, CP-P3-04-05-SW-0005 FF, CP-P3-04-05-SW-0010 FF, CP-P3-04-05-SW-0015 FF, CP-P3-04-06-SD-0000 FF, CP-P3-04-06-SW-0000 FF, CP-P3-04-06-SW-0005 FF, CP-P3-04-06-SW-0010 FF, CP-P3-04-06-SW-0015 FF, CP-P3-04-08-SD-0000 FF, CP-P3-04-08-SW-0000 FF, CP-P3-04-08-SW-0005 FF, CP-P3-04-08-SW-0010 FF, CP-P3-04-08-SW-0015 FF, CP-P3-04-09-SD-0000 FF, CP-P3-04-09-SW-0000 FF, CP-P3-04-09-SW-0005 FF, CP-P3-04-09-SW-0010 FF, CP-P3-04-09-SW-0015 FF, CP-P3-04-10-SD-0000 FF, CP-P3-04-10-SW-0000 FF, CP-P3-04-10-SW-0005 FF, CP-P3-04-10-SW-0015 FF, CP-P3-04-10-SW-0020 FF, CP-P3-04-11-SD-0000 FF, CP-P3-04-11-SW-0000 FF, CP-P3-04-11-SW-0005 FF, CP-P3-04-11-SW-0010 FF, CP-P3-04-11-SW-0015 FF, CP-P3-05-01-SD-0000 FF, CP-P3-05-01-SD-0005 FF, CP-P3-05-01-SW-0000 FF, CP-P3-05-01-SW-0005 FF, CP-P3-05-01-SW-0010 FF, CP-P3-05-01-SW-0015 FF, CP-P3-05-03-SD-0000 FF, CP-P3-05-03-SW-0000 FF, CP-P3-05-03-SW-0005 FF, CP-P3-05-03-SW-0010 FF, CP-P3-05-03-SW-0015 FF, CP-P3-05-04-SD-0000 FF, CP-P3-05-04-SW-0000 FF, CP-P3-05-04-SW-0005 FF, CP-P3-05-04-SW-0010 FF, CP-P3-05-04-SW-0015 FF, CP-P3-05-05-SD-0000 FF, CP-P3-05-05-SW-0000 FF, CP-P3-05-05-SW-0005 FF, CP-P3-05-05-SW-0010 FF, CP-P3-05-05-SW-0015 FF, CP-P3-05-06-SD-0000 FF, CP-P3-05-06-SW-0000 FF, CP-P3-05-06-SW-0005 FF, CP-P3-05-06-SW-0010 FF, CP-P3-05-06-SW-0015 FF, CP-P3-05-08-SD-0000 FF, CP-P3-05-08-SW-0000 FF, CP-P3-05-08-SW-0010 FF, CP-P3-05-08-SW-0015 FF, CP-P3-05-08-SW-0020 FF, CP-P3-05-10-SD-0000 FF, CP-P3-05-10-SW-0000 FF, CP-P3-05-10-SW-0005 FF, CP-P3-05-10-SW-0010 FF, CP-P3-05-10-SW-0015 FF, CP-P3-05-12-SD-0005 FF, CP-P3-05-12-SW-0000 FF, CP-P3-05-12-SW-0005 FF, CP-P3-05-12-SW-0010 FF, CP-P3-05-12-SW-0015 FF, CP-P3-06-01-SD-0000 FF, CP-P3-06-01-SD-0005 FF, CP-P3-06-01-SW-0000 FF, CP-P3-06-01-SW-0005 FF, CP-P3-06-01-SW-0010 FF, CP-P3-06-01-SW-0015 FF, CP-P3-06-03-SD-0000 FF, CP-P3-06-03-SD-0005 FF, CP-P3-06-03-SD-0010 FF, CP-P3-06-03-SW-0000 FF, CP-P3-06-03-SW-0005 FF, CP-P3-06-03-SW-0010 FF, CP-P3-06-03-SW-0015 FF, CP-P3-07-01-SD-0000 FF, CP-P3-07-01-SD-0005 FF, CP-P3-07-01-SW-0000 FF, CP-P3-07-01-SW-0005 FF, CP-P3-07-01-SW-0010 FF, CP-P3-07-01-SW-0015 FF, CP-P3-08-01-SW-0000 FF, CP-P3-08-01-SW-0005 FF, CP-P3-08-01-SW-0010 FF, CP-P3-08-01-SW-0015 FF, CP-P3-09-01-SD-0000 FF, CP-P3-09-01-SW-0000 FF, CP-P3-09-01-SW-0005 FF, CP-P3-09-01-SW-0010 FF, CP-P3-09-01-SW-0015 FF, CP-P3-09-02-SD-0000 FF, CP-P3-09-02-SD-0005 FF, CP-P3-09-02-SW-0000 FF, CP-P3-09-02-SW-0005 FF, CP-P3-09-02-SW-0010 FF, CP-P3-09-02-SW-0015 FF, CP-P3-09-03-SD-0000 FF, CP-P3-09-03-SW-0000 FF, CP-P3-09-03-SW-0005 FF, CP-P3-09-03-SW-0010 FF, CP-P3-09-03-SW-0015 FF, CP-P3-09-04-SD-0000 FF, CP-P3-09-04-SD-0005 FF, CP-P3-09-04-SW-0000 FF, CP-P3-09-04-SW-0005 FF, CP-P3-09-04-SW-0010 FF, CP-P3-09-04-SW-0015 FF, CP-P3-10-01-SD-0005 FF, CP-P3-10-01-SD-0015 FF, CP-P3-10-01-SD-0000 FF, CP-P3-10-01-SD-0010 FF, CP-P3-10-01-SD-0020 FF, CP-P3-10-01-SW-0000 FF, CP-P3-10-01-SW-0005 FF, CP-P3-10-01-SW-0010 FF, CP-P3-10-01-SW-0015 FF, CP-P3-11-01-SW-0000 FF, CP-P3-11-01-SW-0005 FF, CP-P3-11-01-SW-0010 FF, CP-P3-11-01-SW-0015 FF, CP-P3-APA-SW-0000 FF, CP-P3-APA-SW-0005 FF, CP-P3-APA-SW-0010 FF, CP-P3-APA-SW-0015 FF, CP-P3-APB-SD-0000 FF, CP-P3-APB-SD-0005 FF, CP-P3-APB-SW-0000 FF, CP-P3-APB-SW-0005 FF, CP-P3-APB-SW-0010 FF, CP-P3-APB-SW-0015 FF, CP-P3-02-01-SD-0020 SS, CP-P3-02-01-SD-0020 FF, CP-P3-06-02-SW-0005 FF, CP-P3-06-02-SW-0005 SS, CP-P3-05-11-SW-0005 FF, CP-P3-05-11-SW-0005 SS, CP-P3-05-09-SW-0005 FF, CP-P3-05-09-SW-0005 SS, CP-P3-05-07-SW-0005 FF, CP-P3-05-07-SW-0005 SS, CP-P3-05-02-SW-0005 FF, CP-P3-05-02-SW-0005 SS, CP-P3-04-07-SW-0005 FF, CP-P3-04-07-SW-0005 SS, CP-P3-04-02-SW-0005 FF, CP-P3-04-02-SW-0005 SS, CP-P3-02-07-SW-0005 FF, CP-P3-02-07-SW-0005 SS, CP-P3-02-02-SW-0005 FF, CP-P3-02-02-SW-0005 SS, CP-P3-04-11-SD-0005 SS, CP-P3-04-11-SD-0005 FF, CP-P3-04-11-SD-0006 FF, CP-P3-04-11-SD-0006 SS, CP-P3-04-11-SD-0010 FF, CP-P3-04-11-SD-0010 SS, CP-P3-04-11-SD-0011 FF, CP-P3-04-11-SD-0011 SS | 50% | 216d | 2022-02-01 | 2024-03-22 | 0d |  | Part 3 [13293 h] | UDF_G1 | Drilling | Critical Path | JP/PM | Yes | NO | No | FL4 | 16297.0 | 03 | FL4 | FNTP | P3 |  |
| RL-CP-P3-0015 |  | CFPP - Resource Loading - COLA Prep - Part 3 - S&L | level of effort | 408d | 2022-01-31 A | 2023-08-18 | CP-P3-02-09-SD-0020 SS, CP-P3-02-09-SD-0000 SS, CP-P3-02-09-SD-0005 SS, CP-P3-02-09-SD-0015 SS, CP-P3-03-01-SD-0000 SS, CP-P3-03-01-SD-0005 SS, CP-P3-03-01-SD-0010 SS, CP-P3-03-01-SD-0020 SS, CP-P3-03-02-SD-0005 SS, CP-P3-03-02-SD-0010 SS, CP-P3-02-09-SD-0020 FF, CP-P3-02-09-SD-0000 FF, CP-P3-02-09-SD-0005 FF, CP-P3-02-09-SD-0015 FF, CP-P3-03-01-SD-0000 FF, CP-P3-03-01-SD-0005 FF, CP-P3-03-01-SD-0010 FF, CP-P3-03-01-SD-0020 FF, CP-P3-03-02-SD-0005 FF, CP-P3-03-02-SD-0010 FF, CP-P3-04-11-SD-0005 FF, CP-P3-04-11-SD-0005 SS, CP-P3-04-11-SD-0006 FF, CP-P3-04-11-SD-0006 SS, CP-P3-04-11-SD-0007 FF, CP-P3-04-11-SD-0007 SS, CP-P3-04-11-SD-0010 FF, CP-P3-04-11-SD-0010 SS, CP-P3-04-11-SD-0012 FF, CP-P3-04-11-SD-0012 SS, CP-P3-04-11-SD-0011 FF, CP-P3-04-11-SD-0011 SS |  | 163d | 2022-01-31 | 2023-09-01 | 33d | 0d | Part 3 [1118 h] | UDF_G1 | Drilling | Critical Path | JP/PM | Yes | NO | No |  | 1327.0 | 03 | S&L | FNTP | P3 | DEC21 - NOV23 |
| RL-CP-P3-0010 |  | CFPP - Resource Loading - COLA Prep - Part 3 - RIZZO | level of effort | 213d | 2022-12-19 A | 2023-09-07 | CP-P3-02-02-SD-0000 SS, CP-P3-02-02-SD-0005 SS, CP-P3-02-02-SD-0010 SS, CP-P3-02-02-SW-0000 SS, CP-P3-02-02-SW-0005 SS, CP-P3-02-02-SW-0010 SS, CP-P3-02-02-SW-0015 SS, CP-P3-02-07-SD-0000 SS, CP-P3-02-07-SD-0005 SS, CP-P3-02-07-SD-0010 SS, CP-P3-02-07-SW-0000 SS, CP-P3-02-07-SW-0005 SS, CP-P3-02-07-SW-0010 SS, CP-P3-02-07-SW-0015 SS, CP-P3-04-02-SD-0000 SS, CP-P3-04-02-SD-0005 SS, CP-P3-04-02-SW-0000 SS, CP-P3-04-02-SW-0005 SS, CP-P3-04-02-SW-0010 SS, CP-P3-04-02-SW-0015 SS, CP-P3-04-07-SD-0000 SS, CP-P3-04-07-SD-0005 SS, CP-P3-04-07-SW-0000 SS, CP-P3-04-07-SW-0005 SS, CP-P3-04-07-SW-0010 SS, CP-P3-04-07-SW-0015 SS, CP-P3-05-02-SD-0000 SS, CP-P3-05-02-SD-0005 SS, CP-P3-05-02-SW-0000 SS, CP-P3-05-02-SW-0005 SS, CP-P3-05-02-SW-0010 SS, CP-P3-05-02-SW-0015 SS, CP-P3-05-07-SD-0000 SS, CP-P3-05-07-SD-0005 SS, CP-P3-05-07-SW-0000 SS, CP-P3-05-07-SW-0005 SS, CP-P3-05-07-SW-0010 SS, CP-P3-05-07-SW-0015 SS, CP-P3-02-02-SD-0000 FF, CP-P3-02-02-SD-0005 FF, CP-P3-02-02-SD-0010 FF, CP-P3-02-02-SW-0000 FF, CP-P3-02-02-SW-0005 FF, CP-P3-02-02-SW-0010 FF, CP-P3-02-02-SW-0015 FF, CP-P3-02-07-SD-0000 FF, CP-P3-02-07-SD-0005 FF, CP-P3-02-07-SD-0010 FF, CP-P3-02-07-SW-0000 FF, CP-P3-02-07-SW-0005 FF, CP-P3-02-07-SW-0010 FF, CP-P3-02-07-SW-0015 FF, CP-P3-04-02-SD-0000 FF, CP-P3-04-02-SD-0005 FF, CP-P3-04-02-SW-0000 FF, CP-P3-04-02-SW-0005 FF, CP-P3-04-02-SW-0010 FF, CP-P3-04-02-SW-0015 FF, CP-P3-04-07-SD-0000 FF, CP-P3-04-07-SD-0005 FF, CP-P3-04-07-SW-0000 FF, CP-P3-04-07-SW-0005 FF, CP-P3-04-07-SW-0010 FF, CP-P3-04-07-SW-0015 FF, CP-P3-05-02-SD-0000 FF, CP-P3-05-02-SD-0005 FF, CP-P3-05-02-SW-0000 FF, CP-P3-05-02-SW-0005 FF, CP-P3-05-02-SW-0010 FF, CP-P3-05-02-SW-0015 FF, CP-P3-05-07-SD-0000 FF, CP-P3-05-07-SD-0005 FF, CP-P3-05-07-SW-0000 FF, CP-P3-05-07-SW-0005 FF, CP-P3-05-07-SW-0010 FF, CP-P3-05-07-SW-0015 FF | 50% | 176d | 2022-12-05 | 2023-10-03 | 40d | 0d | Part 3 [1481 h] | UDF_G1 | Drilling | Critical Path | JP/PM | Yes | NO | No |  | 1481.0 | 03 | RIZZO | FNTP | P3 | DEC22 - FEB24 |
| RL-CP-P3-0005 |  | CFPP - Resource Loading - COLA Prep - Part 3 - NuScale | level of effort | 228d | 2023-05-01 | 2023-10-24 | CP-P3-05-09-SW-0000 SS, CP-P3-05-09-SW-0005 SS, CP-P3-05-09-SW-0010 SS, CP-P3-05-09-SW-0015 SS, CP-P3-05-11-SW-0000 SS, CP-P3-05-11-SW-0005 SS, CP-P3-05-11-SW-0010 SS, CP-P3-05-11-SW-0015 SS, CP-P3-06-02-SW-0000 SS, CP-P3-06-02-SW-0005 SS, CP-P3-06-02-SW-0010 SS, CP-P3-06-02-SW-0015 SS, CP-P3-05-09-SW-0000 FF, CP-P3-05-09-SW-0005 FF, CP-P3-05-09-SW-0010 FF, CP-P3-05-09-SW-0015 FF, CP-P3-05-11-SW-0000 FF, CP-P3-05-11-SW-0005 FF, CP-P3-05-11-SW-0010 FF, CP-P3-05-11-SW-0015 FF, CP-P3-06-02-SW-0000 FF, CP-P3-06-02-SW-0005 FF, CP-P3-06-02-SW-0010 FF, CP-P3-06-02-SW-0015 FF |  |  | 2023-05-01 | 2024-03-28 | 7d | 0d | Part 3 [1362 h] | UDF_G1 | Drilling | Critical Path | JP/PM | Yes | NO | No |  | 1371.0 | 03 | NuScale | FNTP | P3 | OCT 21 - NOV 23 |
|  | e | **CFPP - Resource Loading - Part 4** |  |  | 2022-08-25 | 2023-08-15 |  |  |  |  |  |  |  |  |  |  |  |  |  |  |  |  |  |  |  |  |  |  |
| RL-CP-P4-0000 |  | CFPP - Resource Loading - COLA Prep - Part 4 - NuScale | level of effort | 235d | 2022-08-25 A | 2023-08-15 | CP-P4-01-01-SD-0000 SS, CP-P4-01-01-SD-0005 SS, CP-P4-01-01-SW-0000 SS, CP-P4-01-01-SW-0005 SS, CP-P4-01-01-SW-0010 SS, CP-P4-01-01-SW-0015 SS, CP-P4-01-01-SD-0000 FF, CP-P4-01-01-SD-0005 FF, CP-P4-01-01-SW-0000 FF, CP-P4-01-01-SW-0005 FF, CP-P4-01-01-SW-0010 FF, CP-P4-01-01-SW-0015 FF | 50% | 160d | 2022-08-25 | 2023-07-26 | 46d | 0d | Part 4 [1319 h] | UDF_G1 | Drilling | Critical Path | JP/PM | Yes | NO | No |  | 1319.0 | 03 | NuScale | FNTP | P4 | AUG 22 - AUG 23 |
| RL-CP-P4-0005 |  | CFPP - Resource Loading - COLA Prep - Part 4 - Fluor | level of effort | 20d | 2023-07-19 | 2023-08-15 | CP-P4-01-01-SW-0005 FF, CP-P4-01-01-SW-0005 SS, CP-P4-01-01-SW-0010 FF, CP-P4-01-01-SW-0010 SS, CP-P4-01-01-SW-0015 FF, CP-P4-01-01-SW-0015 SS |  |  |  |  | 46d | 0d | Part 4 [90 h] | UDF_G1 | Drilling | Critical Path | JP/PM | Yes | NO | No |  | 90.0 |  | FL4 |  | P4 | AUG 22 - AUG 23 |
|  | f | **CFPP - Resource Loading - Part 5** |  |  | 2021-10-12 | 2023-05-22 |  |  |  |  |  |  |  |  |  |  |  |  |  |  |  |  |  |  |  |  |  |  |
| RL-CP-P5-0005 |  | CFPP - Resource Loading - COLA Prep - Part 5 - CMCG | level of effort | 329d | 2021-10-12 A | 2023-05-22 | CP-P5-01-01-SD-0000 SS, CP-P5-01-01-SD-0005 SS, CP-P5-01-01-SD-0010 SS, CP-P5-01-01-SD-0015 SS, CP-P5-01-01-SD-0020 SS, CP-P5-01-01-SD-0025 SS, CP-P5-01-01-SD-0035 SS, CP-P5-01-01-SD-0040 SS, CP-P5-01-01-SD-0045 SS, CP-P5-01-01-SD-0050 SS, CP-P5-01-01-SD-0055 SS, CP-P5-01-01-SD-0060 SS, CP-P5-01-01-SD-0065 SS, CP-P5-01-01-SD-0070 SS, CP-P5-01-01-SD-0075 SS, CP-P5-01-01-SD-0080 SS, CP-P5-01-01-SD-0085 SS, CP-P5-01-01-SD-0090 SS, CP-P5-01-01-SD-0095 SS, CP-P5-01-01-SD-0100 SS, CP-P5-01-01-SD-0105 SS, CP-P5-01-01-SD-0110 SS, CP-P5-01-01-SD-0115 SS, CP-P5-01-01-SD-0120 SS, CP-P5-01-01-SD-0125 SS, CP-P5-01-01-SD-0130 SS, CP-P5-01-01-SD-0135 SS, CP-P5-01-01-SD-0140 SS, CP-P5-01-01-SD-0145 SS, CP-P5-01-01-SD-0150 SS, CP-P5-01-01-SD-0155 SS, CP-P5-01-01-SD-0160 SS, CP-P5-01-01-SD-0165 SS, CP-P5-01-01-SD-0170 SS, CP-P5-01-01-SD-0175 SS, CP-P5-01-01-SD-0180 SS, CP-P5-01-01-SD-0190 SS, CP-P5-01-01-SD-0000 FF, CP-P5-01-01-SD-0005 FF, CP-P5-01-01-SD-0010 FF, CP-P5-01-01-SD-0015 FF, CP-P5-01-01-SD-0020 FF, CP-P5-01-01-SD-0025 FF, CP-P5-01-01-SD-0035 FF, CP-P5-01-01-SD-0040 FF, CP-P5-01-01-SD-0045 FF, CP-P5-01-01-SD-0050 FF, CP-P5-01-01-SD-0055 FF, CP-P5-01-01-SD-0060 FF, CP-P5-01-01-SD-0065 FF, CP-P5-01-01-SD-0070 FF, CP-P5-01-01-SD-0075 FF, CP-P5-01-01-SD-0080 FF, CP-P5-01-01-SD-0085 FF, CP-P5-01-01-SD-0090 FF, CP-P5-01-01-SD-0095 FF, CP-P5-01-01-SD-0100 FF, CP-P5-01-01-SD-0105 FF, CP-P5-01-01-SD-0110 FF, CP-P5-01-01-SD-0115 FF, CP-P5-01-01-SD-0120 FF, CP-P5-01-01-SD-0125 FF, CP-P5-01-01-SD-0130 FF, CP-P5-01-01-SD-0135 FF, CP-P5-01-01-SD-0140 FF, CP-P5-01-01-SD-0145 FF, CP-P5-01-01-SD-0150 FF, CP-P5-01-01-SD-0155 FF, CP-P5-01-01-SD-0160 FF, CP-P5-01-01-SD-0165 FF, CP-P5-01-01-SD-0170 FF, CP-P5-01-01-SD-0175 FF, CP-P5-01-01-SD-0180 FF, CP-P5-01-01-SD-0190 FF, CP-P5-01-01-SD-0016 SS, CP-P5-01-01-SD-0016 FF, CP-P5-01-01-SD-0017 SS, CP-P5-01-01-SD-0017 FF, CP-P5-01-01-SD-0018 SS, CP-P5-01-01-SD-0018 FF, CP-P5-01-01-SD-0019 SS, CP-P5-01-01-SD-0019 FF, CP-P5-01-01-SD-0600 FF, CP-P5-01-01-SD-0610 FF, CP-P5-01-01-SD-0600 SS, CP-P5-01-01-SD-0610 SS, CP-P5-01-01-SD-0620 FF, CP-P5-01-01-SD-0620 SS, CP-P5-01-01-SD-0630 FF, CP-P5-01-01-SD-0630 SS, CP-P5-01-01-SD-0640 FF, CP-P5-01-01-SD-0640 SS, CP-P5-01-01-SD-0540 FF, CP-P5-01-01-SD-0540 SS, CP-P5-01-01-SD-0550 FF, CP-P5-01-01-SD-0550 SS, CP-P5-01-01-SD-0560 FF, CP-P5-01-01-SD-0560 SS, CP-P5-01-01-SD-0650 FF, CP-P5-01-01-SD-0650 SS, CP-P5-01-01-SD-0570 FF, CP-P5-01-01-SD-0570 SS, CP-P5-01-01-SD-0580 FF, CP-P5-01-01-SD-0580 SS, CP-P5-01-01-SD-0660 FF, CP-P5-01-01-SD-0660 SS, CP-P5-01-01-SD-0330 FF, CP-P5-01-01-SD-0330 SS, CP-P5-01-01-SD-0590 FF, CP-P5-01-01-SD-0590 SS, CP-P5-01-01-SD-0350 FF, CP-P5-01-01-SD-0350 SS, CP-P5-01-01-SD-0670 FF, CP-P5-01-01-SD-0670 SS, CP-P5-01-01-SD-0370 FF, CP-P5-01-01-SD-0370 SS, CP-P5-01-01-SD-0680 FF, CP-P5-01-01-SD-0680 SS, CP-P5-01-01-SD-0390 FF, CP-P5-01-01-SD-0390 SS, CP-P5-01-01-SD-0690 FF, CP-P5-01-01-SD-0690 SS, CP-P5-01-01-SD-0410 FF, CP-P5-01-01-SD-0410 SS, CP-P5-01-01-SD-0210 FF, CP-P5-01-01-SD-0210 SS, CP-P5-01-01-SD-0230 FF, CP-P5-01-01-SD-0230 SS, CP-P5-01-01-SD-0250 FF, CP-P5-01-01-SD-0250 SS, CP-P5-01-01-SD-0430 FF, CP-P5-01-01-SD-0430 SS, CP-P5-01-01-SD-0270 FF, CP-P5-01-01-SD-0270 SS, CP-P5-01-01-SD-0290 FF, CP-P5-01-01-SD-0290 SS, CP-P5-01-01-SD-0450 FF, CP-P5-01-01-SD-0450 SS, CP-P5-01-01-SD-0310 FF, CP-P5-01-01-SD-0310 SS, CP-P5-01-01-SD-0470 FF, CP-P5-01-01-SD-0470 SS, CP-P5-01-01-SD-0780 FF, CP-P5-01-01-SD-0780 SS, CP-P5-01-01-SD-0490 FF, CP-P5-01-01-SD-0490 SS, CP-P5-01-01-SD-0510 FF, CP-P5-01-01-SD-0510 SS, CP-P5-01-01-SD-0700 FF, CP-P5-01-01-SD-0700 SS | 50% | 101d | 2021-10-12 | 2023-02-01 | 41d | 0d | Part 5 [1271 h] | UDF_G1 | Drilling | Critical Path | JP/PM | Yes | NO | No |  | 1840.0 | 03 | CMCG | FNTP | P5 |  |
| RL-CP-P5-0000 |  | CFPP - Resource Loading - COLA Prep - Part 5 - NuScale | level of effort | 10d | 2023-04-25 | 2023-05-22 | CP-P5-01-01-SD-0490 FF, CP-P5-01-01-SD-0490 SS |  |  | 2023-04-25 | 2023-05-08 | 41d | 0d | Part 5 [10 h] | UDF_G1 | Drilling | Critical Path | JP/PM | Yes | NO | No |  | 220.0 | 03 | NuScale | FNTP | P5 | FEB 22 - MAY22 |
| RL-CP-P5-0010 |  | CFPP - Resource Loading - COLA Prep - Part 5 - Fluor | level of effort | 10d | 2023-04-25 | 2023-05-22 | CP-P5-01-01-SD-0490 FF, CP-P5-01-01-SD-0490 SS |  |  | 2023-04-25 | 2023-05-08 | 41d | 0d | Part 5 [182 h] | UDF_G1 | Drilling | Critical Path | JP/PM | Yes | NO | No |  | 237.0 |  | FL4 |  | P5 | FEB 22 - MAY22 |
|  | g | **CFPP - Resource Loading - Part 6** |  |  | 2022-12-12 | 2023-09-13 |  |  |  |  |  |  |  |  |  |  |  |  |  |  |  |  |  |  |  |  |  |  |
| RL-CP-P6-0000 |  | CFPP - Resource Loading - COLA Prep - Part 6 - NuScale | level of effort | 320d | 2022-12-12 A | 2023-09-13 | CP-P6-01-01-SD-0000 SS, CP-P6-01-01-SD-0005 SS, CP-P6-01-01-SD-0010 SS, CP-P6-01-01-SD-0015 SS, CP-P6-01-01-SW-0000 SS, CP-P6-01-01-SW-0005 SS, CP-P6-01-01-SW-0015 SS, CP-P6-01-01-SD-0000 FF, CP-P6-01-01-SD-0005 FF, CP-P6-01-01-SD-0010 FF, CP-P6-01-01-SD-0015 FF, CP-P6-01-01-SW-0000 FF, CP-P6-01-01-SW-0005 FF, CP-P6-01-01-SW-0015 FF | 50% | 180d | 2022-12-12 | 2024-03-19 | 156d | 0d | Part 6 [2577 h] | UDF_G1 | Drilling | Critical Path | JP/PM | Yes | NO | No |  | 2577.0 | 03 | NuScale | FNTP | P6 | JUN 22 - SEP 23 |
| RL-CP-P6-0010 |  | CFPP - Resource Loading - COLA Prep - Part 6 - Fluor | level of effort | 10d | 2023-08-16 | 2023-08-29 | CP-P6-01-01-SW-0005 FF, CP-P6-01-01-SW-0005 SS |  |  |  |  | 26d | 0d | Part 6 [220 h] | UDF_G1 | Drilling | Critical Path | JP/PM | Yes | NO | No |  | 220.0 |  | FL4 |  | P6 | JUN 22 - OCT 23 |
|  | h | **CFPP - Resource Loading - Part 7** |  |  | 2023-03-30 | 2023-05-10 |  |  |  |  |  |  |  |  |  |  |  |  |  |  |  |  |  |  |  |  |  |  |
| RL-CP-P7-0000 |  | CFPP - Resource Loading - COLA Prep - Part 7 - NuScale | level of effort | 30d | 2023-03-30 | 2023-05-10 | CP-P7-01-01-SW-0000 SS, CP-P7-01-01-SW-0005 SS, CP-P7-01-01-SW-0010 SS, CP-P7-01-01-SW-0015 SS, CP-P7-01-01-SW-0000 FF, CP-P7-01-01-SW-0005 FF, CP-P7-01-01-SW-0010 FF, CP-P7-01-01-SW-0015 FF |  |  |  |  | 113d | 0d | Part 7 [306 h] | UDF_G1 | Drilling | Critical Path | JP/PM | Yes | NO | No |  | 308.0 | 03 | NuScale | FNTP | P7 | MAY 22 - OCT 23 |
| RL-CP-P7-0010 |  | CFPP - Resource Loading - COLA Prep - Part 7 - Fluor | level of effort | 10d | 2023-04-13 | 2023-04-26 | CP-P7-01-01-SW-0005 FF, CP-P7-01-01-SW-0005 SS |  |  |  |  | 113d | 0d | Part 7 [84 h] | UDF_G1 | Drilling | Critical Path | JP/PM | Yes | NO | No |  | 84.0 |  | FL4 |  | P7 | JUL 23 - AUG 23 |
|  | i | **CFPP - Resource Loading - Part 8** |  |  | 2023-04-03 | 2023-10-10 |  |  |  |  |  |  |  |  |  |  |  |  |  |  |  |  |  |  |  |  |  |  |
| RL-CP-P8-0000 |  | CFPP - Resource Loading - COLA Prep - Part 8 - NuScale | level of effort | 120d | 2023-04-03 | 2023-10-10 | CP-P8-01-01-SD-0005 SS, CP-P8-01-01-SD-0015 SS, CP-P8-01-01-SD-0020 SS, CP-P8-01-01-SD-0025 SS, CP-P8-01-01-SW-0000 SS, CP-P8-01-01-SW-0005 SS, CP-P8-01-01-SW-0010 SS, CP-P8-01-01-SW-0015 SS, CP-P8-01-01-SD-0005 FF, CP-P8-01-01-SD-0015 FF, CP-P8-01-01-SD-0020 FF, CP-P8-01-01-SD-0025 FF, CP-P8-01-01-SW-0000 FF, CP-P8-01-01-SW-0005 FF, CP-P8-01-01-SW-0010 FF, CP-P8-01-01-SW-0015 FF |  |  | 2023-04-03 | 2023-09-20 | 7d | 0d | Part 8 [1319 h] | UDF_G1 | Drilling | Critical Path | JP/PM | Yes | NO | No |  | 1319.0 | 03 | NuScale | FNTP | P8 | MAR 23 - OCT 23 |
| RL-CP-P8-0005 |  | CFPP - Resource Loading - COLA Prep - Part 8 - CMCG | level of effort | 100d | 2023-04-03 | 2023-08-22 | CP-P8-01-01-SW-0000 SS, CP-P8-01-01-SW-0000 FF |  |  |  |  | 7d | 0d | Part 8 [80 h] | UDF_G1 | Drilling | Critical Path | JP/PM | Yes | NO | No |  | 80.0 | 03 | CMCG | FNTP | P8 |  |
| RL-CP-P8-0010 |  | CFPP - Resource Loading - COLA Prep - Part 8 - Fluor | level of effort | 10d | 2023-08-23 | 2023-09-26 | CP-P8-01-01-SW-0005 FF, CP-P8-01-01-SW-0005 SS |  |  | 2023-08-23 | 2023-09-06 | 7d | 0d | Part 8 [105 h] | UDF_G1 | Drilling | Critical Path | JP/PM | Yes | NO | No |  | 105.0 |  | FL4 |  | P8 |  |
|  | j | **CFPP - Resource Loading - Part 9** |  |  | 2023-07-06 | 2023-08-16 |  |  |  |  |  |  |  |  |  |  |  |  |  |  |  |  |  |  |  |  |  |  |
| RL-CP-P9-0000 |  | CFPP - Resource Loading - COLA Prep - Part 9 - NuScale | level of effort | 30d | 2023-07-06 | 2023-08-16 | CP-P9-01-01-SW-0000 SS, CP-P9-01-01-SW-0005 SS, CP-P9-01-01-SW-0010 SS, CP-P9-01-01-SW-0015 SS, CP-P9-01-01-SW-0000 FF, CP-P9-01-01-SW-0005 FF, CP-P9-01-01-SW-0010 FF, CP-P9-01-01-SW-0015 FF |  |  |  |  | 45d | 0d | Part 9 [306 h] | UDF_G1 | Drilling | Critical Path | JP/PM | Yes | NO | No |  | 306.0 | 03 | NuScale | FNTP | P9 | APR 23 - DEC 23 |
| RL-CP-P9-0010 |  | CFPP - Resource Loading - COLA Prep - Part 9 - Fluor | level of effort | 10d | 2023-07-20 | 2023-08-02 | CP-P9-01-01-SW-0005 FF, CP-P9-01-01-SW-0005 SS |  |  |  |  | 45d | 0d | Part 9 [82 h] | UDF_G1 | Drilling | Critical Path | JP/PM | Yes | NO | No |  | 82.0 |  | FL4 |  | P9 | JUL 23 - AUG 23 |

| ID | WBS | Activity | Type | Duration | Start | Finish | Predecessors | Complete | Remaining | Planned start | Planned finish | Total float | Free float | Expected finish | Resources | UDF Indicator 01 | zText_01 | zText_33 | UDF Text 01 | zText_02 | zText_03 | zText_Level 3 Schedule | HISTOGRAM DATES | TOTAL BUDGET | CFPP, LLC WBS Structure | Author | Period of Performance | Part | Rebaseline details | LWA development |
| --- | --- | --- | --- | --- | --- | --- | --- | --- | --- | --- | --- | --- | --- | --- | --- | --- | --- | --- | --- | --- | --- | --- | --- | --- | --- | --- | --- | --- | --- | --- |
|  | k | **CFPP - Resource Loading - Part 10** |  |  | 2022-07-13 | 2023-08-24 |  |  |  |  |  |  |  |  |  |  |  |  |  |  |  |  |  |  |  |  |  |  |  |  |
| RL-CP-P10-0000 |  | CFPP - Resource Loading - COLA Prep - Part 10 - NuScale | level of effort | 250d | 2022-07-13 A | 2023-08-24 | CP-P10-01-01-SD-0000 SS, CP-P10-01-01-SW-0000 SS, CP-P10-01-01-SW-0005 SS, CP-P10-01-01-SW-0010 SS, CP-P10-01-01-SW-0015 SS, CP-P10-01-01-SD-0000 FF, CP-P10-01-01-SW-0000 FF, CP-P10-01-01-SW-0005 FF, CP-P10-01-01-SW-0010 FF, CP-P10-01-01-SW-0015 FF | 50% | 167d | 2022-07-13 | 2023-07-03 | 39d | 0d |  | Part 10 [1209 h] | UDF_G1 | Drilling | Critical Path | JP/PM | Yes | NO | No | MAY 22 - JUL 23 | 1211.0 | 03 | NuScale | FNTP | P10 |  |  |
| RL-CP-P10-0010 |  | CFPP - Resource Loading - COLA Prep - Part 10 - Fluor | level of effort | 10d | 2023-07-12 | 2023-07-25 | CP-P10-01-01-SW-0005 FF, CP-P10-01-01-SW-0005 SS |  |  |  |  | 51d | 0d |  | Part 10 [55 h] | UDF_G1 | Drilling | Critical Path | JP/PM | Yes | NO | No | AUG 23 - SEP 23 | 55.0 |  | FL4 |  | P10 |  |  |
|  | l | **CFPP - Resource Loading - Part 11** |  |  | 2023-02-06 | 2023-07-25 |  |  |  |  |  |  |  |  |  |  |  |  |  |  |  |  |  |  |  |  |  |  |  |  |
| RL-CP-P11-0000 |  | CFPP - Resource Loading - COLA Prep - Part 11 - Fluor | level of effort | 325d | 2023-02-06 | 2023-07-25 | CP-P11-01-01-SW-0000 SS, CP-P11-01-01-SW-0005 SS, CP-P11-01-01-SW-0010 SS, CP-P11-01-01-SW-0015 SS, CP-P11-01-01-SW-0000 FF, CP-P11-01-01-SW-0005 FF, CP-P11-01-01-SW-0010 FF, CP-P11-01-01-SW-0015 FF |  |  | 2023-02-06 | 2024-05-20 | 61d | 0d |  | Part 11 [55 h] | UDF_G1 | Drilling | Critical Path | JP/PM | Yes | NO | No | NOV 23 - JAN 24 | 55.0 | 03 | FL4 | FNTP | P11 | FL4 |  |
| RL-CP-P11-0005 |  | CFPP - Resource Loading - COLA Prep - Part 11 - NuScale | level of effort | 325d | 2023-02-06 | 2023-07-25 | CP-P11-01-01-SW-0015 SS, CP-P11-01-01-SW-0000 SS, CP-P11-01-01-SW-0005 SS, CP-P11-01-01-SW-0010 SS, CP-P11-01-01-SW-0015 FF, CP-P11-01-01-SW-0000 FF, CP-P11-01-01-SW-0005 FF, CP-P11-01-01-SW-0010 FF |  |  | 2023-02-06 | 2024-05-20 | 61d | 0d |  | Part 11 [440 h] | UDF_G1 | Drilling | Critical Path | JP/PM | Yes | NO | No | JUN 22 - DEC 23 | 440.0 | 03 | NuScale | FNTP | P11 |  |  |
|  | m | **CFPP - Resource Loading - Topical Reports and Integration** |  |  | 2022-06-01 | 2023-11-02 |  |  |  |  |  |  |  |  |  |  |  |  |  |  |  |  |  |  |  |  |  |  |  |  |
| RL-CP-TR-0000 |  | CFPP - Resource Loading - COLA Prep - Topical Reports & Integration - NuScale | level of effort | 401d | 2022-06-01 A | 2023-11-02 | CP-P12-TP-GEN-0115 SS, CP-P12-TP-GEN-0105 FF, CP-P12-TP-GEN-0115 FF, CP-P12-TP-VHA-0100 FF, CP-P12-TP-VHA-0105 FF, CP-P12-TP-VHA-0110 FF, CP-P12-TP-VHA-0115 FF, CP-P12-TP-VHA-0120 FF, CP-P12-TP-VHA-0125 FF, CP-P12-TP-VHA-0130 FF, CP-P12-TP-VHA-0140 FF, CP-P12-TP-VHA-0145 FF, CP-P12-TP-EAL-0120 FF, CP-P12-TP-EAL-0125 FF, CP-P12-TP-EAL-0130 FF, CP-P12-TP-EAL-0135 FF, CP-P12-TP-EAL-0140 FF, CP-P12-TP-EAL-0145 FF, CP-P12-TP-EAL-0150 FF, CP-P12-TP-EAL-0155 FF, CP-P12-TP-GEN-0105 SS, CP-P12-TP-VHA-0100 SS, CP-P12-TP-VHA-0105 SS, CP-P12-TP-VHA-0110 SS, CP-P12-TP-VHA-0115 SS, CP-P12-TP-VHA-0120 SS, CP-P12-TP-VHA-0125 SS, CP-P12-TP-VHA-0130 SS, CP-P12-TP-VHA-0140 SS, CP-P12-TP-VHA-0145 SS, CP-P12-TP-EAL-0120 SS, CP-P12-TP-EAL-0125 SS, CP-P12-TP-EAL-0130 SS, CP-P12-TP-EAL-0135 SS, CP-P12-TP-EAL-0140 SS, CP-P12-TP-EAL-0145 SS, CP-P12-TP-EAL-0150 SS, CP-P12-TP-EAL-0155 SS |  | 216d | 2022-06-01 | 2024-01-03 | 120d | 0d |  | Topical Reports & Integration [26402 h] | UDF_G1 | Drilling | Critical Path | JP/PM | Yes | NO | No | AUG 21 - JAN 24 | 28740.0 | 03 | NuScale | FNTP | Ptop |  |  |
|  | n | **CFPP - Resource Loading - Final Review & Publications** |  |  | 2023-05-11 | 2024-01-10 |  |  |  |  |  |  |  |  |  |  |  |  |  |  |  |  |  |  |  |  |  |  |  |  |
| RL-CP-FR-0000 |  | CFPP - Resource Loading - COLA Prep - Final Reviews and Publications - Fluor | level of effort | 397d | 2023-05-11 | 2024-01-10 | CP-FR-CC-0010 SS, CP-FR-CC-0005 SS, CP-FR-CC-0020 SS, CP-FR-CC-0025 SS, CP-FR-CC-0000 SS, CP-FR-CC-0015 SS, CP-FR-CC-0035 SS, CP-FR-CC-0030 SS, CP-FR-CC-0040 SS, CP-FR-CC-0045 SS, CP-FR-CC-0050 SS, CP-FR-PT-0000 SS, CP-FR-PT-0005 SS, CP-FR-PT-0015 SS, CP-FR-CC-0010 FF, CP-FR-CC-0005 FF, CP-FR-CC-0020 FF, CP-FR-CC-0025 FF, CP-FR-CC-0000 FF, CP-FR-CC-0015 FF, CP-FR-CC-0035 FF, CP-FR-CC-0030 FF, CP-FR-CC-0040 FF, CP-FR-CC-0045 FF, CP-FR-CC-0050 FF, CP-FR-PT-0000 FF, CP-FR-PT-0005 FF, CP-FR-PT-0015 FF |  |  | 2023-05-11 | 2024-12-09 | 0d |  |  | Final Reviews & Publications [171 h] | UDF_G1 | Drilling | Critical Path | JP/PM | Yes | NO | No |  | 171.0 | 03 | FL4 | FNTP | Pfr | FL4 |  |
| RL-CP-FR-0005 |  | CFPP - Resource Loading - COLA Prep - Final Reviews and Publications - NuScale | level of effort | 397d | 2023-05-11 | 2024-01-10 | CP-FR-CC-0035 SS, CP-FR-CC-0005 SS, CP-FR-CC-0000 SS, CP-FR-CC-0030 SS, CP-FR-CC-0015 SS, CP-FR-CC-0020 SS, CP-FR-CC-0010 SS, CP-FR-CC-0025 SS, CP-FR-CC-0045 SS, CP-FR-CC-0040 SS, CP-FR-PT-0015 SS, CP-FR-CC-0050 SS, CP-FR-PT-0005 SS, CP-FR-PT-0000 SS, CP-FR-CC-0035 FF, CP-FR-CC-0005 FF, CP-FR-CC-0000 FF, CP-FR-CC-0030 FF, CP-FR-CC-0015 FF, CP-FR-CC-0020 FF, CP-FR-CC-0010 FF, CP-FR-CC-0025 FF, CP-FR-CC-0045 FF, CP-FR-CC-0040 FF, CP-FR-PT-0015 FF, CP-FR-CC-0050 FF, CP-FR-PT-0005 FF, CP-FR-PT-0000 FF |  |  | 2023-05-11 | 2024-12-09 | 0d |  |  | Final Reviews & Publications [766 h] | UDF_G1 | Drilling | Critical Path | JP/PM | Yes | NO | No | JUL 23 - JAN 24 | 766.0 | 03 | NuScale | FNTP | Pfr |  |  |
| RL-CP-FR-0010 |  | CFPP - Resource Loading - COLA Prep - Final Reviews and Publications - S&L | level of effort | 397d | 2023-05-11 | 2024-01-10 | CP-FR-CC-0035 SS, CP-FR-CC-0005 SS, CP-FR-CC-0000 SS, CP-FR-CC-0030 SS, CP-FR-CC-0015 SS, CP-FR-CC-0020 SS, CP-FR-CC-0010 SS, CP-FR-CC-0025 SS, CP-FR-CC-0045 SS, CP-FR-CC-0040 SS, CP-FR-PT-0015 SS, CP-FR-CC-0050 SS, CP-FR-PT-0005 SS, CP-FR-PT-0000 SS, CP-FR-CC-0035 FF, CP-FR-CC-0005 FF, CP-FR-CC-0000 FF, CP-FR-CC-0030 FF, CP-FR-CC-0015 FF, CP-FR-CC-0020 FF, CP-FR-CC-0010 FF, CP-FR-CC-0025 FF, CP-FR-CC-0045 FF, CP-FR-CC-0040 FF, CP-FR-PT-0015 FF, CP-FR-CC-0050 FF, CP-FR-PT-0005 FF, CP-FR-PT-0000 FF |  |  | 2023-05-11 | 2024-12-09 | 0d |  |  | Final Reviews & Publications [98 h] | UDF_G1 | Drilling | Critical Path | JP/PM | Yes | NO | No | NOV23 - DEC23 | 98.0 | 03 | S&L | FNTP | Pfr |  |  |
|  | p | **CFPP - Resource Loading - LWA** |  |  | 2022-03-07 | 2022-08-31 |  |  |  |  |  |  |  |  |  |  |  |  |  |  |  |  |  |  |  |  |  |  |  |  |
| RL-CP-IND-160 |  | CFPP - Resource Loading - COLA Prep - Indirect Budget - LWA - Fluor | level of effort | 185d | 2022-03-07 A | 2022-08-31 A | RL-CP-IND-210 SS, RL-CP-IND-210 FF | 100% |  | 2023-04-03 | 2023-12-22 |  |  |  | LWA [104 h] | UDF_G1 | Drilling | Critical Path | JP/PM | Yes | NO | No | NOV23 - DEC23 | 281.0 |  | FL4 |  | PLWA |  |  |
| RL-CP-IND-210 |  | CFPP - COLA Prep - Indirect Budget - LWA |  | 185d | 2022-03-07 A | 2022-08-31 A |  | 100% |  | 2023-04-03 | 2023-12-22 |  |  |  |  | UDF_G1 | Drilling | Critical Path | JP/PM | Yes | NO | No | NOV23 - DEC23 |  |  | FL4 |  |  |  |  |
|  | q | **CFPP - Resource Loading - Covid Attestation** |  |  | 2021-09-30 | 2024-01-10 |  |  |  |  |  |  |  |  |  |  |  |  |  |  |  |  |  |  |  |  |  |  |  |  |
| RL-CP-IND-170 |  | CFPP - Resource Loading - COLA Prep - Indirect Budget - Covid Attestation - Fluor | level of effort | 422d | 2021-09-30 A | 2024-01-10 | RL-CP-IND-180 FF, RL-CP-IND-180 SS |  | 257d | 2022-05-31 | 2024-01-31 | 79d | 0d |  | Covid Attestation | UDF_G1 | Drilling | Critical Path | JP/PM | Yes | NO | No | NOV23 - DEC23 | 27 |  | FL4 |  | PCvd |  |  |
| RL-CP-IND-175 |  | CFPP - Resource Loading - COLA Prep - Indirect Budget - Covid Attestation - Nuscale | level of effort | 417d | 2021-09-30 A | 2024-01-10 | RL-CP-IND-180 FF, RL-CP-IND-180 SS |  | 257d | 2022-05-31 | 2024-01-24 | 79d | 0d |  | Covid Attestation [42 h] | UDF_G1 | Drilling | Critical Path | JP/PM | Yes | NO | No | NOV23 - DEC23 | 70.0 |  | NuScale |  | PCvd |  |  |
| RL-CP-IND-180 |  | CFPP - COLA Prep - Indirect Budget - Covid Attestation |  | 417d | 2021-09-30 A | 2024-01-10 |  |  | 257d | 2022-05-31 | 2024-01-24 | 79d | 0d | 2024-01-10 |  | UDF_G1 | Drilling | Critical Path | JP/PM | Yes | NO | No | NOV23 - DEC23 |  |  |  |  |  |  |  |
|  | 1 | **CFPP - Resource Loading - LWA Indirect Budgets** |  |  |  |  |  |  |  |  |  |  |  |  |  |  |  |  |  |  |  |  |  |  |  |  |  |  |  |  |
|  | 7 | **CFPP - Resource Loading - LWA General Licensing & Support** |  |  | 2022-11-01 | 2023-10-13 |  |  |  |  |  |  |  |  |  |  |  |  |  |  |  |  |  |  |  |  |  |  |  |  |
| RL-CP-LWA-0200 |  | CFPP - Resource Loading - LWA Prep - General Support - Fluor | level of effort | 10d | 2022-11-01 A | 2023-07-28 | CP-LWA-APP-0140 SS, CP-LWA-APP-0140 FF, CP-LWA-APP-200 FF, CP-LWA-APP-200 SS | 50% | 148d | 2022-11-01 | 2022-11-14 | 188d | 0d |  | Part 7 [84 h] | UDF_G1 | Drilling | Critical Path | JP/PM | Yes | NO | No | JUL 23 - AUG 23 | 84.0 |  | FL4 |  | PLWA |  |  |
| RL-CP-LWA-0210 |  | CFPP - Resource Loading - LWA Prep - General Support - Nuscale | level of effort | 10d | 2022-11-01 A | 2023-10-13 | CP-LWA-MIL-130 FF, CP-LWA-APP-210 SS, CP-LWA-APP-210 FF, CP-LWA-APP-200 SS, CP-LWA-APP-200 FF, CP-LWA-EN4-0120 SS, CP-LWA-EN4-0130 SS, CP-LWA-EN4-0120 FF, CP-LWA-EN4-0130 FF, CP-LWA-EN3-0120 SS, CP-LWA-EN3-0130 SS, CP-LWA-EN3-0120 FF, CP-LWA-EN3-0130 FF, CP-LWA-EN1-0130 SS, CP-LWA-EN1-0120 SS, CP-LWA-EN1-0130 FF, CP-LWA-EN1-0120 FF, CP-LWA-APP-0120 SS, CP-LWA-APP-0130 SS, CP-LWA-APP-0120 FF, CP-LWA-APP-0130 FF, CP-LWA-APP-0200 SS, CP-LWA-APP-0200 FF, CP-LWA-MIL-0120 FF, CP-LWA-APP-0160 SS, CP-LWA-APP-0140 SS, CP-LWA-APP-0140 FF, CP-LWA-APP-0150 SS, CP-LWA-APP-0150 FF, CP-LWA-APP-0160 FF, CP-LWA-MIL-0120 SS, CP-LWA-MIL-130 SS | 50% | 202d | 2022-11-01 | 2022-11-14 | 134d | 0d |  | Part 7 [84 h] | UDF_G1 | Drilling | Critical Path | JP/PM | Yes | NO | No | JUL 23 - AUG 23 | 84.0 |  | NuScale |  | PLWA |  | Nuscale has this start in aug22 |
| RL-CP-LWA-0220 |  | CFPP - Resource Loading - LWA Prep - General Support - RIZZO | level of effort | 10d | 2023-09-26 | 2023-10-09 | CP-LWA-APP-0200 SS, CP-LWA-APP-0200 FF |  |  |  |  | -53d | 0d |  | Part 7 [84 h] | UDF_G1 | Drilling | Critical Path | JP/PM | Yes | NO | No | JUL 23 - AUG 23 | 84.0 |  | RIZZO |  | PLWA |  | Need activity in Gen Support |

| ID | WBS | Activity | Type | Duration | Start | Finish | Predecessors | Complete | Remaining | Planned start | Planned finish | Total float | Free float | Resources | UDF Indicator 01 | zText_01 | zText_33 | UDF Text 01 | zText_02 | zText_03 | zText_Level 3 Schedule | HISTOGRAM DATES | TOTAL BUDGET | Author | Part | LWA development | Rebaseline details | CFPP, LLC WBS Structure | Period of Performance | UDF Text 02 |
| --- | --- | --- | --- | --- | --- | --- | --- | --- | --- | --- | --- | --- | --- | --- | --- | --- | --- | --- | --- | --- | --- | --- | --- | --- | --- | --- | --- | --- | --- | --- |
|  | 8 | **CFPP - Resource Loading - LWA Prepare LWA Application** |  |  | 2022-10-10 | 2023-09-18 |  |  |  |  |  |  |  |  |  |  |  |  |  |  |  |  |  |  |  |  |  |  |  |  |
| RL-CP-LWA-0300 |  | CFPP - Resource Loading - LWA Prep - Prep LWA Application - Fluor | level of effort | 10d | 2022-10-10 A | 2023-06-23 | CP-LWA-CON-0440 SS, CP-LWA-CON-0440 FF, CP-LWA-CON-0430 SS, CP-LWA-CON-0430 FF, CP-LWA-CON-0420 SS, CP-LWA-CON-0420 FF, CP-LWA-CON-0410 SS, CP-LWA-CON-0410 FF, CP-LWA-CON-0400 SS, CP-LWA-CON-0400 FF, CP-LWA-CON-0390 SS, CP-LWA-CON-0390 FF, CP-LWA-CON-0380 SS, CP-LWA-CON-0350 SS, CP-LWA-CON-0330 SS, CP-LWA-CON-0370 SS, CP-LWA-CON-0360 SS, CP-LWA-CON-0320 SS, CP-LWA-CON-0310 SS, CP-LWA-CON-0380 FF, CP-LWA-CON-0350 FF, CP-LWA-CON-0330 FF, CP-LWA-CON-0370 FF, CP-LWA-CON-0360 FF, CP-LWA-CON-0320 FF, CP-LWA-CON-0310 FF, CP-LWA-CON-0300 SS, CP-LWA-CON-0300 FF, CP-LWA-APP-0100 SS, CP-LWA-APP-0110 SS, CP-LWA-APP-0100 FF, CP-LWA-APP-0110 FF, CP-LWA-APP-0130 SS, CP-LWA-APP-0130 FF, CP-LWA-APP-0120 SS, CP-LWA-APP-0120 FF | 50% | 124d | 2022-11-07 | 2022-11-18 | 11d | 0d | Part 7 [84 h] | UDF_G1 | Drilling | Critical Path | JP/PM | Yes | NO | No | JUL 23 - AUG 23 | 84.0 | FL4 | PLWA |  |  |  |  |  |
| RL-CP-LWA-0320 |  | CFPP - Resource Loading - LWA Prep - Prep LWA Application - RIZZO | level of effort | 10d | 2023-03-10 | 2023-09-18 | CP-LWA-EN4-0120 SS, CP-LWA-EN4-0120 FF, CP-LWA-EN4-0130 SS, CP-LWA-EN4-0130 FF, CP-LWA-EN3-0110 SS, CP-LWA-EN3-0110 FF, CP-LWA-EN3-0120 SS, CP-LWA-EN3-0120 FF, CP-LWA-EN1-0110 SS, CP-LWA-EN1-0110 FF, CP-LWA-EN1-0120 SS, CP-LWA-EN1-0120 FF, CP-LWA-APP-0130 SS, CP-LWA-APP-0130 FF, CP-LWA-APP-0120 SS, CP-LWA-APP-0120 FF |  |  | 2023-03-10 | 2023-03-23 | -48d | 0d | Part 7 [84 h] | UDF_G1 | Drilling | Critical Path | JP/PM | Yes | NO | No | JUL 23 - AUG 23 | 84.0 | RIZZO | PLWA |  |  |  |  |  |
|  | 2 | **CFPP - Resource Loading - LWA Enclosure 1** |  |  | 2022-12-01 | 2023-04-13 |  |  |  |  |  |  |  |  |  |  |  |  |  |  |  |  |  |  |  |  |  |  |  |  |
| RL-CP-LWA-0400 |  | CFPP - Resource Loading - LWA Prep - Enclosure 1 - Fluor | level of effort | 10d | 2022-12-01 A | 2023-04-13 | CP-LWA-EN1-0120 SS, CP-LWA-EN1-0120 FF, CP-LWA-EN1-0130 SS, CP-LWA-EN1-0110 SS, CP-LWA-EN1-0100 SS, CP-LWA-EN1-0130 FF, CP-LWA-EN1-0110 FF, CP-LWA-EN1-0100 FF | 50% | 74d | 2022-12-01 | 2022-12-14 | 61d | 0d | Part 7 [84 h] | UDF_G1 | Drilling | Critical Path | JP/PM | Yes | NO | No | JUL 23 - AUG 23 | 84.0 | FL4 | PLWA |  |  |  |  |  |
|  | 3 | **CFPP - Resource Loading - LWA Enclosure 2** |  |  | 2022-12-15 | 2023-07-12 |  |  |  |  |  |  |  |  |  |  |  |  |  |  |  |  |  |  |  |  |  |  |  |  |
| RL-CP-LWA-0520 |  | CFPP - Resource Loading - LWA Prep - Enclosure 2 - RIZZO | level of effort | 10d | 2022-12-15 A | 2023-07-12 | CP-LWA-EN2-0120 SS, CP-LWA-EN2-0120 FF, CP-LWA-EN2-0110 SS, CP-LWA-EN2-0110 FF, CP-LWA-EN2-0260 SS, CP-LWA-EN2-0150 SS, CP-LWA-EN2-0250 SS, CP-LWA-EN2-0240 SS, CP-LWA-EN2-0230 SS, CP-LWA-EN2-0220 SS, CP-LWA-EN2-0200 SS, CP-LWA-EN2-0260 FF, CP-LWA-EN2-0270 FF, CP-LWA-EN2-0150 FF, CP-LWA-EN2-0250 FF, CP-LWA-EN2-0240 FF, CP-LWA-EN2-0230 FF, CP-LWA-EN2-0220 FF, CP-LWA-EN2-0200 FF | 50% | 136d | 2022-11-28 | 2022-12-09 | -1d | 0d | Part 7 [84 h] | UDF_G1 | Drilling | Critical Path | JP/PM | Yes | NO | No | JUL 23 - AUG 23 | 84.0 | RIZZO | PLWA |  |  |  |  |  |
| RL-CP-LWA-0510 |  | CFPP - Resource Loading - LWA Prep - Enclosure 2 - Nuscale | level of effort | 10d | 2023-01-03 | 2023-07-12 | CP-LWA-EN2-0620 SS, CP-LWA-EN2-0190 SS, CP-LWA-EN2-0610 SS, CP-LWA-EN2-0600 SS, CP-LWA-EN2-0120 SS, CP-LWA-EN2-0110 SS, CP-LWA-EN2-0100 SS, CP-LWA-EN2-0620 FF, CP-LWA-EN2-0190 FF, CP-LWA-EN2-0610 FF, CP-LWA-EN2-0600 FF, CP-LWA-EN2-0120 FF, CP-LWA-EN2-0110 FF, CP-LWA-EN2-0100 FF |  |  | 2023-01-03 | 2023-01-16 | -1d | 0d | Part 7 [84 h] | UDF_G1 | Drilling | Critical Path | JP/PM | Yes | NO | No | JUL 23 - AUG 23 | 84.0 | NuScale | PLWA | Histogram has this into May23 |  |  |  |  |
| RL-CP-LWA-0500 |  | CFPP - Resource Loading - LWA Prep - Enclosure 2 - Fluor | level of effort | 10d | 2023-02-16 | 2023-07-12 | CP-LWA-EN2-0180 SS, CP-LWA-EN2-0180 FF, CP-LWA-EN2-0120 SS, CP-LWA-EN2-0120 FF, CP-LWA-EN2-0110 SS, CP-LWA-EN2-0110 FF, CP-LWA-EN2-0170 SS, CP-LWA-EN2-0170 FF |  |  | 2023-02-16 | 2023-03-01 | 200d | 0d | Part 7 [84 h] | UDF_G1 | Drilling | Critical Path | JP/PM | Yes | NO | No | JUL 23 - AUG 23 | 84.0 | FL4 | PLWA |  |  |  |  |  |
| RL-CP-LWA-0530 |  | CFPP - Resource Loading - LWA Prep - Enclosure 2 - S&L | level of effort | 10d | 2023-06-14 | 2023-07-12 | CP-LWA-EN2-0120 SS, CP-LWA-EN2-0120 FF, CP-LWA-EN2-0110 SS, CP-LWA-EN2-0110 FF |  |  | 2023-06-14 | 2023-06-27 | -1d | 0d | Part 7 [100 h] | UDF_G1 | Drilling | Critical Path | JP/PM | Yes | NO | No | JUL 23 - AUG 23 | 84.0 | S&L | PLWA |  |  |  |  |  |
|  | 4 | **CFPP - Resource Loading - LWA Enclosure 3** |  |  | 2022-11-01 | 2023-10-02 |  |  |  |  |  |  |  |  |  |  |  |  |  |  |  |  |  |  |  |  |  |  |  |  |
| RL-CP-LWA-0600 |  | CFPP - Resource Loading - LWA Prep - Enclosure 3 - Fluor | level of effort | 10d | 2022-11-01 A | 2023-10-02 | CP-LWA-EN3-0120 SS, CP-LWA-EN3-0120 FF, CP-LWA-EN3-0900 SS, CP-LWA-EN3-0800 SS, CP-LWA-EN3-0700 SS, CP-LWA-EN3-0600 SS, CP-LWA-EN3-0920 SS, CP-LWA-EN3-0500 SS, CP-LWA-EN3-0400 SS, CP-LWA-EN3-0910 SS, CP-LWA-EN3-0300 SS, CP-LWA-EN3-0130 SS, CP-LWA-EN3-0110 SS, CP-LWA-EN3-0100 SS, CP-LWA-EN3-0900 FF, CP-LWA-EN3-0800 FF, CP-LWA-EN3-0700 FF, CP-LWA-EN3-0600 FF, CP-LWA-EN3-0920 FF, CP-LWA-EN3-0500 FF, CP-LWA-EN3-0400 FF, CP-LWA-EN3-0910 FF, CP-LWA-EN3-0300 FF, CP-LWA-EN3-0130 FF, CP-LWA-EN3-0110 FF, CP-LWA-EN3-0100 FF, CP-LWA-EN3-0050 SS, CP-LWA-EN3-0050 FF | 50% | 193d | 2022-10-31 | 2022-11-11 | 143d | 0d | Part 7 [84 h] | UDF_G1 | Drilling | Critical Path | JP/PM | Yes | NO | No | JUL 23 - AUG 23 | 84.0 | FL4 | PLWA |  |  |  |  |  |
| RL-CP-LWA-0620 |  | CFPP - Resource Loading - LWA Prep - Enclosure 3 - RIZZO | level of effort | 10d | 2023-05-18 | 2023-10-02 | CP-LWA-EN3-0130 SS, CP-LWA-EN3-0130 FF, CP-LWA-EN3-0120 SS, CP-LWA-EN3-0120 FF, CP-LWA-EN3-0150 SS, CP-LWA-EN3-0150 FF |  |  | 2023-05-18 | 2023-06-01 | -53d | 0d | Part 7 [84 h] | UDF_G1 | Drilling | Critical Path | JP/PM | Yes | NO | No | JUL 23 - AUG 23 | 84.0 | RIZZO | PLWA |  |  |  |  |  |
|  | 5 | **CFPP - Resource Loading - LWA Enclosure 4** |  |  | 2022-10-10 | 2023-08-09 |  |  |  |  |  |  |  |  |  |  |  |  |  |  |  |  |  |  |  |  |  |  |  |  |
| RL-CP-LWA-0700 |  | CFPP - Resource Loading - LWA Prep - Enclosure 4 - Fluor | level of effort | 10d | 2022-10-10 A | 2023-08-09 | CP-LWA-EN4-0120 SS, CP-LWA-EN4-0120 FF, CP-LWA-EN4-0130 SS, CP-LWA-EN4-0110 SS, CP-LWA-EN4-0100 SS, CP-LWA-EN4-0130 FF, CP-LWA-EN4-0110 FF, CP-LWA-EN4-0100 FF | 50% | 156d | 2022-10-31 | 2022-11-11 | -21d | 0d | Part 7 [84 h] | UDF_G1 | Drilling | Critical Path | JP/PM | Yes | NO | No | JUL 23 - AUG 23 | 84.0 | FL4 | PLWA |  |  |  |  |  |
|  | 6 | **CFPP - Resource Loading - LWA Enclosure 5** |  |  | 2023-01-26 | 2023-04-19 |  |  |  |  |  |  |  |  |  |  |  |  |  |  |  |  |  |  |  |  |  |  |  |  |
| RL-CP-LWA-0810 |  | CFPP - Resource Loading - LWA Prep - Enclosure 5 - Nuscale | level of effort | 10d | 2023-01-26 | 2023-04-19 | CP-LWA-EN5-0130 SS, CP-LWA-EN5-0120 SS, CP-LWA-EN5-0100 SS, CP-LWA-EN5-0130 FF, CP-LWA-EN5-0120 FF, CP-LWA-EN5-0100 FF |  |  | 2023-01-26 | 2023-02-08 | 57d | 0d | Part 7 [84 h] | UDF_G1 | Drilling | Critical Path | JP/PM | Yes | NO | No | JUL 23 - AUG 23 | 84.0 | NuScale | PLWA |  |  |  |  |  |
| RL-CP-LWA-0800 |  | CFPP - Resource Loading - LWA Prep - Enclosure 5 - Fluor | level of effort | 10d | 2023-03-23 | 2023-04-19 | CP-LWA-EN5-0130 SS, CP-LWA-EN5-0130 FF, CP-LWA-EN5-0120 SS, CP-LWA-EN5-0120 FF |  |  | 2023-03-23 | 2023-04-05 | 57d | 0d | Part 7 [84 h] | UDF_G1 | Drilling | Critical Path | JP/PM | Yes | NO | No | JUL 23 - AUG 23 | 84.0 | FL4 | PLWA |  |  |  |  |  |
|  | PS | **CFPP - Project Support** |  |  | 2021-05-24 | 2022-07-27 |  |  |  |  |  |  |  |  |  |  |  |  |  |  |  |  |  |  |  |  |  |  |  |  |
|  | PM | **CFPP TO4 CLIN 2 - Project Support - Project Management** |  |  |  |  |  |  |  |  |  |  |  |  |  |  |  |  |  |  |  |  |  |  |  |  |  |  |  |  |
|  | PC | **CFPP TO4 CLIN 2 - Project Support - Project Controls** |  |  |  |  |  |  |  |  |  |  |  |  |  |  |  |  |  |  |  |  |  |  |  |  |  |  |  |  |
|  | EM | **CFPP TO4 CLIN 2 - Project Support - Engineering Management** |  |  |  |  |  |  |  |  |  |  |  |  |  |  |  |  |  |  |  |  |  |  |  |  |  |  |  |  |
|  | QT | **CFPP TO4 CLIN 2 - Project Support - Quality** |  |  |  |  |  |  |  |  |  |  |  |  |  |  |  |  |  |  |  |  |  |  |  |  |  |  |  |  |
|  | CM | **CFPP TO4 CLIN 2 - Project Support - Construction Management** |  |  | 2021-05-24 | 2022-07-27 |  |  |  |  |  |  |  |  |  |  |  |  |  |  |  |  |  |  |  |  |  |  |  |  |
|  | 01 | **CFPP TO4 CLIN 2 - Project Support - Cons MGMT - INL Site Control** |  |  | 2021-05-24 | 2022-07-27 |  |  |  |  |  |  |  |  |  |  |  |  |  |  |  |  |  |  |  |  |  |  |  |  |
| A-000-0000 |  | Assume Site Control |  | 33d | 2021-05-24 A | 2021-07-09 A | PKM-0005 | 100% |  |  |  |  |  |  | UDF_G3 |  |  | DR/MC |  |  | Yes |  |  | FL4 |  |  | FL4 | 03 | LNTP |  |
| A-000-0045 |  | Develop Davis Bacon Determinations |  | 25d | 2021-05-24 A | 2021-07-30 A | PKM-0000 | 100% |  | 2021-05-24 | 2021-06-28 |  |  |  | UDF_G1 |  |  | JP |  |  | Yes |  |  | FL4 |  |  | FL4 | 03 | LNTP | 3/15/20 |
| A-000-0055 |  | Develop Health & Safety and Badging Roster |  | 25d | 2021-05-24 A | 2021-07-30 A | PKM-0000 | 100% |  | 2021-05-24 | 2021-06-28 |  |  |  | UDF_G1 |  |  | JP |  |  | Yes |  |  | FL4 |  |  | FL4 | 03 | LNTP | 3/15/20 |
| A-000-0075.a |  | Prepare / Submit Final Work Products to Support Work Authorization for Site Access Improvements |  | 53d | 2021-05-24 A | 2021-08-06 A | B-000-0005 SS | 100% |  |  |  |  |  |  | UDF_G1 |  |  | JP |  |  | Yes |  |  | RIZZO |  |  | RIZZO | 03 | LNTP | 3/15/20 |
| A-000-0065.a |  | Prepare / Submit Final Work Products to Support Work Authorization for Surface Geophysical Surveys |  | 36d | 2021-06-03 A | 2021-07-19 A | B-000-0005 SS+7d | 100% |  | 2021-06-03 | 2021-07-23 |  |  |  | UDF_G1 |  |  | JP |  |  | Yes |  |  | RIZZO |  |  | RIZZO | 03 | LNTP | 3/15/20 |
| A-000-0070.a |  | Prepare / Submit Final Work Products to Support Work Authorization for New Temporary Infrastructure Installations |  | 43d | 2021-06-07 A | 2021-07-26 A | B-000-0005 SS+9d | 100% |  | 2021-06-07 | 2021-08-05 |  |  |  | UDF_G1 |  |  | JP |  |  | Yes |  |  | RIZZO |  |  | RIZZO | 03 | LNTP | 3/15/20 |
| A-000-0060 |  | DOE Approval Health & Safety and Badging Roster |  | 12d | 2021-07-20 A | 2021-08-06 A | A-000-0055 FF | 100% |  | 2021-07-20 | 2021-08-04 |  |  |  | UDF_G1 |  |  | JP |  |  | Yes |  |  | FL4 |  |  | FL4 | 03 | LNTP | 3/15/20 |
| A-000-0065.b |  | Receive / Fluor Review Work Authorization for Surface Geophysical Surveys |  | 5d | 2021-07-20 A | 2021-07-23 A | A-000-0065.a | 100% |  | 2021-07-20 | 2021-07-26 |  |  |  | UDF_G1 |  |  | JP |  |  | Yes |  |  | FL4 |  |  | FL4 | 03 | LNTP | 3/15/20 |
| A-000-0065.c |  | INL / DOE Review Work Authorization for Surface Geophysical Surveys |  | 4d | 2021-07-26 A | 2021-07-29 A | A-000-0065.b | 100% |  |  |  |  |  |  | UDF_G1 |  |  | JP |  |  | Yes |  |  | FL4 |  |  | FL4 | 03 | LNTP | 3/15/20 |
| A-000-0070.b |  | Receive / Fluor Review Work Authorization for New Temporary Infrastructure Installations |  | 2d | 2021-07-27 A | 2021-07-28 A | A-000-0070.a | 100% |  |  |  |  |  |  | UDF_G1 |  |  | JP |  |  | Yes |  |  | FL4 |  |  | FL4 | 03 | LNTP | 3/15/20 |
| A-000-0070.c |  | INL / DOE Review Work Authorization for New Temporary Infrastructure Installations |  | 5d | 2021-07-29 A | 2021-08-04 A | A-000-0070.b | 100% |  |  |  |  |  |  | UDF_G1 |  |  | JP |  |  | Yes |  |  | FL4 |  |  | FL4 | 03 | LNTP | 3/15/20 |
| A-000-0065.d |  | Finalize Work Authorization for Surface Geophysical Surveys |  | 1d | 2021-07-30 A | 2021-07-30 A | A-000-0065.c | 100% |  |  |  |  |  |  | UDF_G1 |  |  | JP |  |  | Yes |  |  | RIZZO |  |  | RIZZO | 03 | LNTP | 3/15/20 |
| A-000-0035 |  | Mobilize / Perform / Demobilize - SASW Survey |  | 9d | 2021-08-02 A | 2021-08-12 A | A-000-0065.d | 100% |  |  |  |  |  |  | UDF_G1 |  |  | JP |  |  | Yes |  |  | RIZZO |  |  | RIZZO | 03 | LNTP | 3/15/20 |
| A-000-0050 |  | DOE Approval Davis Bacon Determinations |  | 7d | 2021-08-02 A | 2021-08-06 A | A-000-0045 | 100% |  | 2021-08-02 | 2021-08-10 |  |  |  | UDF_G1 |  |  | JP |  |  | Yes |  |  | FL4 |  |  | FL4 | 03 | LNTP | 3/15/20 |
| A-000-0070.d |  | Finalize Work Authorization for New Temporary Infrastructure Installations |  | 2d | 2021-08-05 A | 2021-08-06 A | A-000-0070.c | 100% |  |  |  |  |  |  | UDF_G1 |  |  | JP |  |  | Yes |  |  | RIZZO |  |  | RIZZO | 03 | LNTP | 3/15/20 |
| A-000-0030 |  | Install Temporary Office Trailers and Facilities |  | 20d | 2021-08-09 A | 2021-09-07 A | A-000-0070.d | 100% |  | 2021-08-09 | 2021-09-03 |  |  |  | UDF_G1 |  |  | JP |  |  | Yes |  |  | RIZZO |  |  | RIZZO | 03 | LNTP | 3/15/20 |
| A-000-0075.b |  | Receive / Fluor Review Work Authorization for Site Access Improvements |  | 2d | 2021-08-09 A | 2021-08-10 A | A-000-0075.a | 100% |  |  |  |  |  |  | UDF_G1 |  |  | JP |  |  | Yes |  |  | FL4 |  |  | FL4 | 03 | LNTP | 3/15/20 |
| A-000-0075.c |  | INL / DOE Review Work Authorization for Site Access Improvements |  | 5d | 2021-08-11 A | 2021-08-16 A | A-000-0075.b | 100% |  | 2021-08-11 | 2021-08-17 |  |  |  | UDF_G1 |  |  | JP |  |  | Yes |  |  | FL4 |  |  | FL4 | 03 | LNTP | 3/15/20 |
| A-000-0075.d |  | Finalize - INL / DOE Work Authorization for Site Access Improvements |  | 2d | 2021-08-16 A | 2021-08-17 A | A-000-0075.b | 100% |  |  |  |  |  |  | UDF_G1 |  |  | JP |  |  | Yes |  |  | RIZZO |  |  | RIZZO | 03 | LNTP | 3/15/20 |
| A-000-0015 |  | Mobilize / Perform / Demobilize - Road Improvements to Road T-11 |  | 3d | 2021-08-18 A | 2021-08-20 A | C-000-0000, A-000-0000, A-000-0050, A-000-0075.c, A-000-0075.d | 100% |  |  |  |  |  |  | UDF_G3 |  |  | DR/MC |  |  | Yes |  |  | FL4 |  |  | FL4 | 03 | LNTP |  |
| A-000-0025 |  | Mobilize / Perform / Demobilize - Reflection Survey and Mark Site |  | 13d | 2022-07-11 A | 2022-07-27 A | A-000-0065.d FS+6d, FI-GI-SSI-DR-0080 | 100% |  |  |  |  |  |  | UDF_G1 |  |  | JP |  |  |  |  |  | RIZZO |  |  | RIZZO | 03 | LNTP | 3/15/20 |

| ID | WBS | Activity | Type | Duration | Start | Finish | Predecessors | Complete | Planned start | Planned finish | zText_Level 3 Schedule | Rebaseline details | CFPP, LLC WBS Structure | Author | Period of Performance | UDF Indicator 01 | UDF Text 01 | zText_02 | JLG - Generic Field | zText_01 | UDF Text 02 | z_Text-4 |
| --- | --- | --- | --- | --- | --- | --- | --- | --- | --- | --- | --- | --- | --- | --- | --- | --- | --- | --- | --- | --- | --- | --- |
|  | SC | **CFPP TO4 CLIN 2 - Project Support - Supply Chain** |  |  | 2021-05-24 | 2022-04-18 |  |  |  |  |  |  |  |  |  |  |  |  |  |  |  |  |
|  | 01 | **CFPP TO4 CLIN 2 - Project Support - Supply Chain - Subcontract Development** |  |  | 2021-05-24 | 2022-04-18 |  |  |  |  |  |  |  |  |  |  |  |  |  |  |  |  |
| B-000-0000 |  | CFPP COLA MOBILIZATION |  | 10d | 2021-05-24 A | 2021-06-08 A | PKM-0005 SS | 100% | 2021-05-24 | 2021-06-07 | Yes | FL4 | 03 | FL4 | LNTP |  |  |  |  |  |  |  |
| B-000-0005 |  | Develop RFP / Bid Cycle / Award Contract - RIZZO LNTP |  | 18d | 2021-05-24 A | 2021-06-17 A | PKM-0005 | 100% |  |  | Yes | FL4 | 03 | FL4 | LNTP | UDF_G3 | DR/MC |  |  |  |  |  |
| B-000-0010 |  | Develop RFP / Bid Cycle / Award Contract - S&ME |  | 13d | 2021-05-24 A | 2021-06-10 A | PKM-0005 | 100% | 2021-05-24 | 2021-06-11 | Yes | FL4 | 03 | FL4 | LNTP | UDF_G3 | DR/MC |  |  |  |  |  |
| B-000-0030 |  | Develop RFP / Bid Cycle / Award Contract - NAVTON |  | 14d | 2021-05-24 A | 2021-06-11 A | PKM-0005 | 100% | 2021-05-24 | 2021-06-14 | Yes | FL4 | 03 | FL4 | LNTP | UDF_G3 | DR/MC |  |  |  |  |  |
| B-000-0035 |  | Develop Mod RFP / Bid Cycle - Rizzo |  | 25d | 2021-07-26 A | 2021-09-20 A | PKM-0005 | 100% | 2021-08-02 | 2021-09-07 | Yes | FL4 | 03 | FL4 | LNTP | UDF_G3 | DR/MC |  |  |  |  |  |
| B-000-0040 |  | Develop Mod RFP / Bid Cycle - S&ME |  | 25d | 2021-07-26 A | 2021-09-10 A | PKM-0005 | 100% | 2021-08-02 | 2021-09-07 | Yes | FL4 | 03 | FL4 | LNTP | UDF_G3 | DR/MC |  |  |  |  |  |
| B-000-0055 |  | Develop RFP / Bid Cycle - NuScale |  | 25d | 2021-07-26 A | 2021-09-30 A | PKM-0005 | 100% | 2021-08-02 | 2021-09-07 | Yes | FL4 | 03 | FL4 | LNTP | UDF_G3 | DR/MC |  |  |  |  |  |
| B-000-0060 |  | Develop RFP / Bid Cycle - S&L |  | 25d | 2021-07-26 A | 2021-10-05 A | PKM-0005 | 100% | 2021-08-02 | 2021-09-07 | Yes | FL4 | 03 | FL4 | LNTP | UDF_G3 | DR/MC |  |  |  |  |  |
| B-000-0025 |  | Develop RFP / Bid Cycle / Award Contract - CMCG |  | 30d | 2021-08-23 A | 2021-10-04 A | PKM-0035 | 100% |  |  | Yes | FL4 | 03 | FL4 | FNTP | UDF_G3 | DR/MC | Yes |  |  |  |  |
| B-000-0070 |  | Develop RFP / Bid Cycle / Award Contract - Atlas |  | 54d | 2021-09-29 A | 2022-04-18 A | PKM-0035 FS+27d | 100% | 2021-09-29 | 2021-12-17 | Yes | FL4 | 03 | FL4 | FNTP | UDF_G3 | DR/MC | Yes |  |  |  |  |
| B-000-0020 |  | Award Contract - NuScale |  | 29d | 2021-10-01 A | 2021-11-12 A | B-000-0055 | 100% |  |  | Yes | FL4 | 03 | FL4 | FNTP | UDF_G3 | DR/MC | Yes |  |  |  |  |
| B-000-0015 |  | Award Contract - S&L |  | 26d | 2021-10-06 A | 2021-11-12 A | PKM-0035, B-000-0060 | 100% |  |  | Yes | FL4 | 03 | FL4 | FNTP | UDF_G3 | DR/MC | Yes |  |  |  |  |
| B-000-0065 |  | Configure Style Guides / Project Setup |  | 22d | 2021-11-15 A | 2022-01-25 A | B-000-0015, B-000-0020 | 100% | 2021-11-15 | 2021-12-16 | Yes | NUSCALE | 03 | NuScale | FNTP | UDF_G3 | DR/MC | Yes |  |  |  |  |
| B-000-0075 |  | Develop RFP / Bid Cycle / Award Contract - Turbine Missile Analysis |  | 40d | 2021-12-23 A | 2022-04-01 A | IFM-SPD-TO4-0080 | 100% | 2021-12-23 | 2022-02-23 | Yes | FL4 | 03 | FL4 | FNTP | UDF_G3 | DR/MC | Yes |  |  |  |  |
|  | LC | **CFPP TO4 CLIN 2 - Project Support - Licensing** |  |  |  |  |  |  |  |  |  |  |  |  |  |  |  |  |  |  |  |  |
|  | FI | **CFPP - Field Investigations** |  |  | 2021-06-21 | 2024-03-28 |  |  |  |  |  |  |  |  |  |  |  |  |  |  |  |  |
|  | GI | **CFPP - Field Investigations - Geological Investigations** |  |  | 2021-06-21 | 2022-10-28 |  |  |  |  |  |  |  |  |  |  |  |  |  |  |  |  |
|  | 01 | **CFPP - Field Invest - Geological Invest - Site Layout** |  |  | 2021-06-25 | 2021-07-09 |  |  |  |  |  |  |  |  |  |  |  |  |  |  |  |  |
| C-000-0000 |  | Receive and Finalize Bore Hole Plan |  | 5d | 2021-06-25 A | 2021-07-09 A | IFM-TO1-TO4-0000 | 100% | 2021-06-25 | 2021-07-01 | Yes | RIZZO | 03 | RIZZO | LNTP | UDF_G1 | NH/MB |  | P1 SI |  |  |  |
|  | 02 | **CFPP - Field Invest - Geological Invest - Subsuface Investigation** |  |  | 2021-06-21 | 2022-10-28 |  |  |  |  |  |  |  |  |  |  |  |  |  |  |  |  |
|  | 01 | **CFPP - Field Invest - Geo Invest - Subsuface Investigation - Work Plans** |  |  | 2021-06-21 | 2021-09-03 |  |  |  |  |  |  |  |  |  |  |  |  |  |  |  |  |
| C-100-0000 |  | Prepare / Review / Finalize - Project Execution Plan |  | 39d | 2021-06-21 A | 2021-08-16 A | PKM-0020 FS+1d | 100% | 2021-06-21 | 2021-08-13 | Yes | RIZZO | 03 | RIZZO | LNTP |  | JP/HB/PM |  |  |  |  |  |
| C-100-0005 |  | Prepare / Review / Finalize - Quality Assurance Project Plan (QAPP) Plan |  | 15d | 2021-06-21 A | 2021-07-13 A | PKM-0020 FS+1d | 100% | 2021-06-21 | 2021-07-12 | Yes | RIZZO | 03 | RIZZO | LNTP |  | JP/HB/PM |  |  |  |  |  |
| C-100-0010 |  | Prepare / Review / Finalize - COVID-19 Safety Plan |  | 15d | 2021-06-21 A | 2021-07-21 A | PKM-0020 FS+1d | 100% | 2021-06-21 | 2021-07-12 | Yes | RIZZO | 03 | RIZZO | LNTP |  | JP/HB/PM |  |  |  |  |  |
| C-100-0015 |  | Prepare / Review / Finalize - Health and Safety (HASP) Plan |  | 15d | 2021-06-21 A | 2021-07-21 A | PKM-0020 FS+1d | 100% | 2021-06-21 | 2021-07-12 | Yes | RIZZO | 03 | RIZZO | LNTP |  | JP/HB/PM |  |  |  |  |  |
| C-100-0020 |  | Prepare / Review / Finalize - Borehole Completion / Well Install / Aquifer Testing Work Plan |  | 22d | 2021-06-23 A | 2021-08-04 A | PKM-0020 FS+3d | 100% | 2021-06-23 | 2021-07-23 | Yes | RIZZO | 03 | RIZZO | LNTP |  | JP/HB/PM |  |  |  |  |  |
| C-100-0025 |  | Prepare / Review / Finalize - In-Situ Borehole Testing Work Plan |  | 19d | 2021-06-28 A | 2021-09-03 A | PKM-0020 FS+6d | 100% | 2021-06-28 | 2021-07-23 | Yes | RIZZO | 03 | RIZZO | LNTP |  | JP/HB/PM |  |  |  |  |  |
| C-100-0030 |  | Prepare / Review / Finalize - Index and Static Properties Laboratory Testing Work Plan |  | 19d | 2021-06-28 A | 2021-09-03 A | PKM-0020 FS+6d | 100% | 2021-06-28 | 2021-07-23 | Yes | RIZZO | 03 | RIZZO | LNTP |  | JP/HB/PM |  |  |  |  |  |
| C-100-0035 |  | Prepare / Review / Finalize - Laboratory Dynamic Testing Work Plan |  | 19d | 2021-06-28 A | 2021-09-03 A | PKM-0020 FS+6d | 100% | 2021-06-28 | 2021-07-23 | Yes | RIZZO | 03 | RIZZO | LNTP |  | JP/HB/PM |  |  |  |  |  |
| C-100-0040 |  | Prepare / Review / Finalize - Borehole Completion / Well Install / Aquifer Testing HASP |  | 19d | 2021-06-28 A | 2021-08-04 A | PKM-0020 FS+6d | 100% | 2021-06-28 | 2021-07-23 | Yes | RIZZO | 03 | RIZZO | LNTP |  | JP/HB/PM |  |  |  |  |  |
| C-100-0045 |  | Prepare / Review / Finalize - Borehole Completion / Well Install / Aquifer Testing Permits |  | 31d | 2021-07-09 A | 2021-08-04 A | PKM-0020 FS+6d, A-000-0050 FF | 100% | 2021-07-22 | 2021-09-02 | Yes | RIZZO | 03 | RIZZO | LNTP |  | JP/HB/PM |  |  |  |  |  |
| C-100-0050 |  | Prepare to Mobilize Rigs and Conduct Training |  | 15d | 2021-08-02 A | 2021-09-03 A | C-000-0000 FF, C-100-0005, PKM-0020 FS+1d, C-100-0000 FF, C-100-0010, C-100-0015, C-100-0020 FF, C-100-0025 FF, C-100-0030 FF, C-100-0035 FF, C-100-0040 FF, C-100-0045 FF, A-000-0065.d | 100% | 2021-08-02 | 2021-08-20 | Yes | RIZZO | 03 | RIZZO | LNTP | UDF_G1 | JP |  |  | Drilling | 3/15/20 | CP-5 |
| C-100-0055 |  | Drill Rigs on Site & Core Boring Drilling Initiated | milestone | 0d | 2021-09-03 A | 2021-09-03 A | C-100-0050 | 100% |  |  | Yes | RIZZO | 03 | RIZZO | LNTP | UDF_G1 | JP |  |  | Drilling | 3/15/20 | CP-5 |

| ID | WBS | Activity | Type | Duration | Start | Finish | Predecessors | Complete | Planned start | Planned finish | UDF Indicator 01 | zText_01 | zText_33 | UDF Text 01 | zText_02 | z_Text-4 | zText_Level 3 Schedule | Rebaseline details | CFPP, LLC WBS Structure | Author | Period of Performance | UDF Text 02 | 10B OCT EOM Notes | 9A SEP EOM Notes | TWG | DOE MILESTONE |
| --- | --- | --- | --- | --- | --- | --- | --- | --- | --- | --- | --- | --- | --- | --- | --- | --- | --- | --- | --- | --- | --- | --- | --- | --- | --- | --- |
|  | 03 | **CFPP - Field Invest - Geo Invest - Subsuface Investigation - Drilling** |  |  | 2021-09-07 | 2022-02-15 |  |  |  |  |  |  |  |  |  |  |  |  |  |  |  |  |  |  |  |  |
| FI-GI-SSI-DR-0000 |  | Perform Field Shift 1 - Bore Holes |  | 8d | 2021-09-07 A | 2021-09-16 A | C-100-0055, A-000-0015, A-000-0030, A-000-0035, A-000-0060 | 100% |  |  | UDF_G1 | Drilling | Critical Path | JP/PM | Yes | CP-5 | Yes | RIZZO | 03 | RIZZO | FNTP |  |  |  |  |  |
| FI-GI-SSI-DR-0005 |  | Phase 1 Bore Holes | level of effort | 31d | 2021-09-07 A | 2021-10-20 A | FI-GI-SSI-DR-0000 SS, FI-GI-SSI-DR-0010 SS, FI-GI-SSI-DR-0015 SS, FI-GI-SSI-DR-0020 SS, FI-GI-SSI-DR-0025 SS, FI-GI-SSI-DR-0030 SS, FI-GI-SSI-DR-0000 FF, FI-GI-SSI-DR-0010 FF, FI-GI-SSI-DR-0015 FF, FI-GI-SSI-DR-0020 FF, FI-GI-SSI-DR-0025 FF, FI-GI-SSI-DR-0030 FF | 100% |  |  | UDF_G1 |  |  | JP/PM | Yes |  | Yes |  | 03 | RIZZO | FNTP |  |  |  |  |  |
| FI-GI-SSI-DR-0010 |  | Complete 1st Shift Break |  | 2d | 2021-09-17 A | 2021-09-20 A | FI-GI-SSI-DR-0000 | 100% |  |  | UDF_G1 | Drilling | Critical Path | JP/PM | Yes | CP-5 | Yes | RIZZO | 03 | RIZZO | FNTP |  |  |  |  |  |
| FI-GI-SSI-DR-0015 |  | Perform Field Shift 2 - Bore Holes / Seismic Logging |  | 8d | 2021-09-21 A | 2021-09-30 A | FI-GI-SSI-DR-0010 | 100% |  |  | UDF_G1 | Drilling | Critical Path | JP/PM | Yes | CP-5 | Yes | RIZZO | 03 | RIZZO | FNTP |  |  |  |  |  |
| FI-GI-SSI-DR-0020 |  | Complete 2nd Shift Break |  | 2d | 2021-10-01 A | 2021-10-04 A | FI-GI-SSI-DR-0015 | 100% |  |  | UDF_G1 | Drilling | Critical Path | JP/PM | Yes | CP-5 | Yes | RIZZO | 03 | RIZZO | FNTP |  |  |  |  |  |
| FI-GI-SSI-DR-0025 |  | Perform Field Shift 3 - Bore Holes / Seismic Logging |  | 9d | 2021-10-05 A | 2021-10-18 A | FI-GI-SSI-DR-0020 | 100% |  |  | UDF_G1 | Drilling | Critical Path | JP/PM | Yes | CP-5 | Yes | RIZZO | 03 | RIZZO | FNTP |  |  |  |  |  |
| FI-GI-SSI-DR-0030 |  | Complete 3rd Shift Break |  | 2d | 2021-10-19 A | 2021-10-20 A | FI-GI-SSI-DR-0025 | 100% |  |  | UDF_G1 | Drilling | Critical Path | JP/PM | Yes | CP-5 | Yes | RIZZO | 03 | RIZZO | FNTP |  |  |  |  |  |
| FI-GI-SSI-DR-0035 |  | Perform Field Shift 4 - Bore Holes / PS Suspension Logging |  | 10d | 2021-10-19 A | 2021-11-01 A | FI-GI-SSI-DR-0030 SS, FI-GI-SSI-DR-0025, FI-GI-SSI-DR-0000 | 100% |  |  | UDF_G1 | Drilling | Critical Path | JP/PM | Yes | CP-5 | Yes | RIZZO | 03 | RIZZO | FNTP |  |  |  |  |  |
| FI-GI-SSI-DR-0040 |  | Phase 2 Bore Holes | level of effort | 35d | 2021-10-19 A | 2021-12-09 A | FI-GI-SSI-DR-0035 SS, FI-GI-SSI-DR-0050 SS, FI-GI-SSI-DR-0060 SS, FI-GI-SSI-DR-0070 SS, FI-GI-SSI-DR-0035 FF, FI-GI-SSI-DR-0050 FF, FI-GI-SSI-DR-0060 FF, FI-GI-SSI-DR-0070 FF | 100% |  |  | UDF_G1 |  |  | JP/PM | Yes |  | Yes |  | 03 | RIZZO | FNTP |  |  |  |  |  |
| FI-GI-SSI-DR-0045 |  | Complete 4th Shift Break |  | 2d | 2021-11-02 A | 2021-11-03 A | FI-GI-SSI-DR-0035 | 100% |  |  | UDF_G1 | Drilling | Critical Path | JP/PM | Yes | CP-5 | Yes | RIZZO | 03 | RIZZO | FNTP |  |  |  |  |  |
| FI-GI-SSI-DR-0050 |  | Perform Field Shift 5 - Bore Holes |  | 7d | 2021-11-02 A | 2021-11-10 A | FI-GI-SSI-DR-0045 SS, FI-GI-SSI-DR-0035 | 100% |  |  | UDF_G1 | Drilling | Critical Path | JP/PM | Yes | CP-5 | Yes | RIZZO | 03 | RIZZO | FNTP |  |  |  |  |  |
| FI-GI-SSI-DR-0055 |  | Complete 5th Shift Break |  | 2d | 2021-11-12 A | 2021-11-15 A | FI-GI-SSI-DR-0050 | 100% |  |  | UDF_G1 | Drilling | Critical Path | JP/PM | Yes | CP-5 | Yes | RIZZO | 03 | RIZZO | FNTP |  |  |  |  |  |
| FI-GI-SSI-DR-0060 |  | Perform Field Shift 6 - Bore Holes / Aquifer Testing |  | 6d | 2021-11-16 A | 2021-11-23 A | FI-GI-SSI-DR-0055 | 100% |  |  | UDF_G1 | Drilling | Critical Path | JP/PM | Yes | CP-5 | Yes | RIZZO | 03 | RIZZO | FNTP |  |  |  |  |  |
| FI-GI-SSI-DR-0065 |  | Complete 6th Shift Break |  | 2d | 2021-11-24 A | 2021-11-29 A | FI-GI-SSI-DR-0060 | 100% |  |  | UDF_G1 | Drilling | Critical Path | JP/PM | Yes | CP-5 | Yes | RIZZO | 03 | RIZZO | FNTP |  |  |  |  |  |
| FI-GI-SSI-DR-0070 |  | Perform Field Shift 7 - Bore Holes / Aquifer Testing |  | 8d | 2021-11-30 A | 2021-12-09 A | FI-GI-SSI-DR-0065 | 100% |  |  | UDF_G1 | Drilling | Critical Path | JP/PM | Yes | CP-5 | Yes | RIZZO | 03 | RIZZO | FNTP |  |  |  |  |  |
| FI-GI-SSI-DR-0075 |  | Complete 7th Shift Break |  | 2d | 2021-12-10 A | 2021-12-13 A | FI-GI-SSI-DR-0070 | 100% |  |  | UDF_G1 | Drilling |  | JP/PM | Yes |  | Yes | RIZZO | 03 | RIZZO | FNTP |  |  |  |  |  |
| FI-GI-SSI-DR-0080 |  | Perform Field Shift 8 - Field Closing |  | 3d | 2022-01-04 A | 2022-02-02 A | FI-GI-SSI-DR-0070, FI-GI-SSI-DR-0075 | 100% | 2022-01-31 | 2022-02-02 | UDF_G1 |  | Critical Path | JP/PM | Yes |  | Yes | RIZZO | 03 | RIZZO | FNTP |  |  |  |  |  |
| FI-GI-SSI-DR-0085 |  | Perform Field Shift 9 - Field Closing - Aquifer Testing / Close Out / Demobilization |  | 9d | 2022-02-03 A | 2022-02-15 A | FI-GI-SSI-DR-0080 | 100% |  |  | UDF_G1 |  | Critical Path | JP/PM | Yes |  | Yes | RIZZO | 03 | RIZZO | FNTP |  |  |  |  |  |
|  | 04 | **CFPP - Field Invest - Geo Invest - Subsuface Investigation - Reports** |  |  | 2021-10-01 | 2022-10-28 |  |  |  |  |  |  |  |  |  |  |  |  |  |  |  |  |  |  |  |  |
| FI-GI-SSI-RP-0010 |  | Prepare Preliminary Data Report - to Support Task Order #3 |  | 50d | 2021-10-01 A | 2021-12-15 A | FI-GI-SSI-DR-0015 | 100% |  |  | UDF_G1 |  |  |  | Yes |  | Yes | RIZZO | 03 | RIZZO | FNTP | 9/11/20 |  |  |  |  |
| FI-GI-SSI-RP-0000 |  | Perform Dynamic Testing |  | 50d | 2021-11-02 A | 2022-10-28 A | FI-GI-SSI-DR-0000, FI-GI-SSI-DR-0035 FF+50d, FI-GI-SSI-DR-0085 FF+20d | 100% | 2021-11-02 | 2022-01-20 | UDF_G1 |  |  |  | Yes | CP-5 | Yes | RIZZO | 03 | RIZZO | FNTP | 9/11/20 | oct update finish on time (update to 28oct22) |  |  |  |
| FI-GI-SSI-RP-0005 |  | Perform Index & Static Testing |  | 50d | 2021-11-02 A | 2022-08-26 A | FI-GI-SSI-DR-0025, FI-GI-SSI-DR-0070 FF+25d | 100% | 2021-11-02 | 2022-01-20 | UDF_G1 |  |  |  | Yes | CP-5 | Yes | RIZZO | 03 | RIZZO | FNTP | 9/11/20 |  | Sep update |  |  |
| FI-GI-SSI-RP-0025 |  | Prepare INL / DOE PSHA Input - Geotech |  | 40d | 2021-11-30 A | 2022-02-15 A |  | 100% | 2021-11-30 | 2022-01-31 | UDF_G1 |  |  |  | Yes | CP-5 | Yes | RIZZO | 03 | RIZZO | FNTP | 9/11/20 |  |  | 1 |  |
| FI-GI-SSI-RP-0015 |  | Prepare Draft Report - Geotech |  | 20d | 2022-02-03 A | 2022-05-09 A | FI-GI-SSI-DR-0080 | 100% | 2022-02-03 | 2022-03-02 | UDF_G1 |  |  |  | Yes |  | Yes | RIZZO | 03 | RIZZO | FNTP | 9/11/20 |  |  |  |  |
| FI-GI-SSI-RP-0020 |  | Prepare Final Report - Geotech |  | 30d | 2022-05-10 A | 2022-07-06 A | FI-GI-SSI-RP-0015 | 100% | 2022-05-10 | 2022-06-21 | UDF_G1 |  |  |  | Yes |  |  | RIZZO | 03 | RIZZO | FNTP | 9/11/20 |  |  |  | x |

| ID | WBS | Activity | Duration | Start | Finish | Predecessors | Complete | Remaining | Planned start | Planned finish | Total float | Free float | Expected finish | UDF Indicator 01 | UDF Text 02 | zText_02 | Rebaseline details | CFPP, LLC WBS Structure | Author | Period of Performance | DOE MILESTONE | zText_33 | UDF Text 01 | z_Text-4 | zText_Level 3 Schedule | TWG | Other | Reconcile Rev 0 Milestones | PMAR | nuscale comp | SDA cleanup notes | JLG - Generic Field | Comments | VERIFIED MONTHLY UPDATE | 9A SEP EOM Notes | NEED UPDATE | Monthly Variance | 10B OCT EOM Notes | 11A NOV MIDMONTH Notes | zText_CFPP Look Ahead Notes |
| --- | --- | --- | --- | --- | --- | --- | --- | --- | --- | --- | --- | --- | --- | --- | --- | --- | --- | --- | --- | --- | --- | --- | --- | --- | --- | --- | --- | --- | --- | --- | --- | --- | --- | --- | --- | --- | --- | --- | --- | --- |
|  | 05 | **CFPP - Field Invest - Geo Invest - Subsurface Investigation - Electrical Resistivity** |  | 2022-04-20 | 2022-06-01 |  |  |  |  |  |  |  |  |  |  |  |  |  |  |  |  |  |  |  |  |  |  |  |  |  |  |  |  |  |  |  |  |  |  |  |
| FI-GI-SSI-ER-0000 |  | Perform Electrical Resistivity | 10d | 2022-04-20 A | 2022-04-28 A | B-000-0070 | 100% |  | 2022-04-19 | 2022-05-02 |  |  |  | UDF_G1 | 9/11/20 | Yes | AT | 03 | AT | FNTP | 2 |  |  |  |  |  |  |  |  |  |  |  |  |  |  |  |  |  |  |  |
| FI-GI-SSI-ER-0005 |  | Develop / Issue Electrical Resistivity Report | 20d | 2022-04-29 A | 2022-06-01 A | FI-GI-SSI-ER-0000 | 100% |  | 2022-05-03 | 2022-05-31 |  |  |  | UDF_G1 | 9/11/20 | Yes | AT | 03 | AT | FNTP |  |  |  |  |  |  |  |  |  |  |  |  |  |  |  |  |  |  |  |  |
|  | MT | **CFPP - Field Invest - Geological Invest - Meteorology** |  | 2021-09-21 | 2024-02-08 |  |  |  |  |  |  |  |  |  |  |  |  |  |  |  |  |  |  |  |  |  |  |  |  |  |  |  |  |  |  |  |  |  |  |  |
|  | 01 | **CFPP - Field Invest - GI - Meteorology - Data Collection & Reporting** |  | 2021-09-21 | 2024-02-08 |  |  |  |  |  |  |  |  |  |  |  |  |  |  |  |  |  |  |  |  |  |  |  |  |  |  |  |  |  |  |  |  |  |  |  |
| CP-FI-MET-DC-0000 |  | Meteorology - Approve Work Authorization by INL | 45d | 2021-09-21 A | 2021-11-24 A | CP-FI-MET-DC-0010 FF+7d, C-100-0005, C-100-0000, C-100-0010, C-100-0015, PKM-0040 | 100% |  |  |  |  |  |  |  |  | Yes | RIZZO | 03 | RIZZO | FNTP |  | Near Critical Path #2 - Meteorological Report | JP/HB/PM | CP-1 | Yes |  |  |  |  |  |  |  |  |  |  |  |  |  |  |  |
| CP-FI-MET-DC-0010 |  | Meteorology - Prepare / Review / Finalize - Meteorological Work Plans | 19d | 2021-10-01 A | 2021-10-28 A | PKM-0040, PKM-0045, FI-GI-SSI-DR-0015 | 100% |  |  |  |  |  |  |  |  | Yes | RIZZO | 03 | RIZZO | FNTP |  | Near Critical Path #2 - Meteorological Report | JP/HB/PM |  | Yes |  |  |  |  |  |  |  |  |  |  |  |  |  |  |  |
| CP-FI-MET-DC-0005 |  | Meteorology - Mobilize and Conduct In-Field Training | 20d | 2021-10-27 A | 2021-11-24 A | PKM-0035, PKM-0040, PKM-0045, CP-FI-MET-DC-0000 FF | 100% |  |  |  |  |  |  |  |  | Yes | RIZZO | 03 | RIZZO | FNTP |  |  | JP/HB/PM | CP-1 | Yes |  |  |  |  |  |  |  |  |  |  |  |  |  |  |  |
| CP-FI-MET-DC-0015 |  | Meteorology - Review / Replace Existing Tower Equipment | 5d | 2021-11-29 A | 2021-12-03 A | CP-FI-MET-DC-0005 | 100% |  |  |  |  |  |  |  |  | Yes | RIZZO | 03 | RIZZO | FNTP |  |  | JP/HB/PM | CP-1 | Yes |  |  |  |  |  |  |  |  |  |  |  |  |  |  |  |
| CP-FI-MET-DC-0020 |  | Meteorology - Re-install / Test / Calibrate Instrumentation | 2d | 2021-12-06 A | 2021-12-07 A | CP-FI-MET-DC-0000, CP-FI-MET-DC-0015 | 100% |  |  |  |  |  |  |  |  | Yes | RIZZO | 03 | RIZZO | FNTP |  | Near Critical Path #2 - Meteorological Report | JP/HB/PM | CP-1 | Yes |  |  |  |  |  |  |  |  |  |  |  |  |  |  |  |
| CP-FI-MET-DC-0025 |  | Meteorology - Collect Data - 1st Six Months | 125d | 2021-12-08 A | 2022-06-30 A | PKM-0075 | 100% |  | 2021-12-08 | 2022-06-08 |  |  |  |  |  | Yes | RIZZO | 03 | RIZZO | FNTP | x | Near Critical Path #2 - Meteorological Report | JP/HB/PM | CP-1 | Yes | 1 |  |  |  |  |  |  |  |  |  |  |  |  |  |  |
| CP-FI-MET-DC-0030 |  | Meteorology - Prepare / Finalize 1st Biannual Data Collection Report | 33d | 2022-07-01 A | 2022-08-02 A | CP-FI-MET-DC-0025 | 100% |  | 2022-06-09 | 2022-07-26 |  |  |  |  |  | Yes | RIZZO | 03 | RIZZO | FNTP |  |  | JP/HB/PM |  | Yes |  |  |  |  |  |  |  |  |  |  |  |  |  |  |  |
| CP-FI-MET-DC-0035 |  | Meteorology - Collect Data - 2nd Six Months | 127d | 2022-07-01 A | 2022-12-03 A | CP-FI-MET-DC-0025 | 100% |  | 2022-06-06 | 2022-12-02 |  |  |  |  |  | Yes | RIZZO | 03 | RIZZO | FNTP |  | Near Critical Path #2 - Meteorological Report | JP/HB/PM | CP-1 | Yes | 1 | PMAR | 3.3 13.03 15 19 | Y | nuscalex5.11 15 |  |  |  |  |  |  |  |  |  |  |
| CP-FI-MET-DC-0045 |  | Meteorology - Annual Full System Test / Tower Inspection | 2d | 2022-11-09 A | 2022-11-10 A | CP-FI-MET-DC-0035 | 100% |  | 2022-12-09 | 2022-12-12 |  |  |  |  |  | Yes | RIZZO | 03 | RIZZO | FNTP |  |  | JP/HB/PM |  | Yes |  |  |  |  |  |  |  |  |  |  |  |  |  |  |  |
| CP-FI-MET-DC-0040 |  | Meteorology - Prepare / Finalize 2nd Biannual Data Collection Report | 42d | 2022-12-04 A | 2023-02-07 | CP-FI-MET-DC-0035, CP-FI-MET-DC-0030 |  | 27d | 2022-12-09 | 2023-02-07 | 309d | 0d | 2023-02-07 |  |  | Yes | RIZZO | 03 | RIZZO | FNTP |  | Near Critical Path #2 - Meteorological Report | JP/HB/PM |  | Yes |  |  |  |  |  |  |  |  |  |  |  |  |  |  |  |
| CP-FI-MET-DC-0070 |  | Meteorology - Prepare Verified Data | 15d | 2022-12-09 A | 2022-12-12 A | CP-FI-MET-DC-0035, CP-FI-MET-DC-0030 | 100% |  | 2022-12-09 | 2022-12-30 |  |  |  |  |  | Yes | RIZZO | 03 | RIZZO | FNTP |  | Near Critical Path #2 - Meteorological Report | JP/HB/PM | CP-1 | Yes | 1 |  | 3.3 13.03 15 19 |  | nuscalex5.11 | reduced from 27d to 15d Near Critical Path |  |  |  |  |  |  |  |  |  |
| CP-FI-MET-DC-0050 |  | Meteorology - Collect Data - 3rd Six Months | 125d | 2022-12-13 A | 2023-06-07 | CP-FI-MET-DC-0045 |  | 112d |  |  | 58d | 0d | 2023-06-07 |  |  | Yes | RIZZO | 03 | RIZZO | FNTP |  |  | JP/HB/PM |  | Yes |  |  |  |  |  |  |  |  |  |  |  |  |  |  |  |
| CP-FI-MET-DC-0055 |  | Meteorology - Prepare / Finalize 3rd Biannual Data Collection Report | 32d | 2023-06-08 | 2023-07-24 | CP-FI-MET-DC-0050 |  |  |  |  | 152d | 94d |  |  |  | Yes | RIZZO | 03 | RIZZO | FNTP |  |  | JP/HB/PM |  | Yes |  |  |  |  |  |  |  |  |  |  |  |  |  |  |  |
| CP-FI-MET-DC-0060 |  | Meteorology - Collect Data - 4th Six Months | 126d | 2023-06-08 | 2023-12-06 | CP-FI-MET-DC-0050 |  |  |  |  | 58d | 0d |  |  |  | Yes | RIZZO | 03 | RIZZO | FNTP |  |  | JP/HB/PM |  | Yes |  |  |  |  |  |  |  |  |  |  |  |  |  |  |  |
| CP-FI-MET-DC-0065 |  | Meteorology - Prepare / Finalize 4th Biannual Data Collection Report | 40d | 2023-12-07 | 2024-02-08 | CP-FI-MET-DC-0055, CP-FI-MET-DC-0060 |  |  |  |  | 58d |  |  |  |  | Yes | RIZZO | 03 | RIZZO | FNTP | x | Not Included | JP/HB/PM |  | Yes |  |  |  |  |  |  |  |  |  |  |  |  |  |  |  |
|  | HY | **CFPP - Field Invest - Geological Invest - Hydrology** |  | 2021-12-16 | 2024-03-28 |  |  |  |  |  |  |  |  |  |  |  |  |  |  |  |  |  |  |  |  |  |  |  |  |  |  |  |  |  |  |  |  |  |  |  |
|  | 1 | **CFPP - Field Invest - GI - Hydrology - Data Collection & Reporting** |  | 2021-12-16 | 2024-03-28 |  |  |  |  |  |  |  |  |  |  |  |  |  |  |  |  |  |  |  |  |  |  |  |  |  |  |  |  |  |  |  |  |  |  |  |
| CP-FI-HYD-DC-0000 |  | Hydrology - Equipment Setup | 60d | 2021-12-16 A | 2022-02-15 A | FI-GI-SSI-DR-0025, FI-GI-SSI-DR-0065, FI-GI-SSI-DR-0075 | 100% |  | 2021-12-14 | 2022-03-14 |  |  |  | UDF_G1 |  | Yes | RIZZO | 03 | RIZZO | FNTP |  |  |  |  | Yes |  |  |  |  |  |  | Overview P1 |  |  |  |  |  |  |  |  |
| CP-FI-HYD-DC-0003 |  | Hydrology - 1st Quarter Groundwater Level Measurements | 60d | 2022-02-16 A | 2022-05-16 A | FI-GI-SSI-DR-0025, FI-GI-SSI-DR-0065, FI-GI-SSI-DR-0075, CP-FI-HYD-DC-0000 | 100% |  | 2021-12-14 | 2022-03-14 |  |  |  | UDF_G1 |  | Yes | RIZZO | 03 | RIZZO | FNTP |  |  |  |  | Yes |  |  |  |  |  |  | Overview P1 |  |  |  |  |  |  |  |  |
| CP-FI-HYD-DC-0015 |  | Hydrology - 2nd Quarter Groundwater Level Measurements | 65d | 2022-05-17 A | 2022-08-18 A | CP-FI-HYD-DC-0000, CP-FI-HYD-DC-0003 | 100% |  | 2022-05-16 | 2022-08-16 |  |  |  | UDF_G1 |  | Yes | RIZZO | 03 | RIZZO | FNTP |  |  |  |  | Yes |  |  |  |  |  |  | Overview P1 |  |  |  |  |  |  |  |  |
| CP-FI-HYD-DC-0005 |  | Hydrology - 1st Quarter Groundwater Level Measurements Reporting | 44d | 2022-05-17 A | 2023-01-20 | CP-FI-HYD-DC-0000, CP-FI-HYD-DC-0003 | 66% | 15d | 2022-05-17 | 2022-07-19 | 31d | 0d | 2023-01-20 | UDF_G1 |  | Yes | RIZZO | 03 | RIZZO | FNTP |  |  |  |  | Yes |  |  |  |  |  |  | Overview P1 | 1 | X | Sep update finish slip from 16sep | OCT | Oct | oct update finish slip from 28oct22 | As of 22Nov |  |
| CP-FI-HYD-DC-0010 |  | Hydrology - 1st Quarter Groundwater Quality Sampling, Testing, & Reporting | 39d | 2022-07-19 A | 2023-01-20 | CP-FI-HYD-DC-0000, CP-FI-HYD-DC-0003 FS+24d | 62% | 15d | 2022-07-18 | 2022-09-09 | 6d | 0d | 2023-01-20 | UDF_G1 |  | Yes | RIZZO | 03 | RIZZO | FNTP |  |  |  |  | Yes |  |  |  |  |  |  | Overview P1 |  | X | Sep update finish slip from 16sep | OCT | Oct | oct update finish slip from 28oct22 | As of 22Nov | Y |
| CP-FI-HYD-DC-0030 |  | Hydrology - 3rd Quarter Groundwater Level Measurements | 65d | 2022-08-19 A | 2022-11-16 A | CP-FI-HYD-DC-0015 | 100% |  | 2022-08-29 | 2022-11-29 |  |  |  | UDF_G1 |  | Yes | RIZZO | 03 | RIZZO | FNTP |  |  |  |  | Yes |  |  |  |  |  |  | Overview P1 |  |  |  |  |  |  | As of 22Nov |  |
| CP-FI-HYD-DC-0020 |  | Hydrology - 2nd Quarter Groundwater Level Measurements Reporting | 31d | 2022-09-19 A | 2023-01-20 | CP-FI-HYD-DC-0015, CP-FI-HYD-DC-0005 FF | 52% | 15d | 2022-09-19 | 2022-10-31 | 31d | 0d | 2023-01-20 | UDF_G1 |  | Yes | RIZZO | 03 | RIZZO | FNTP |  |  |  |  | Yes |  |  |  |  |  |  | Overview P1 |  | X | Sep update |  |  |  | As of 22Nov |  |
| CP-FI-HYD-DC-0025 |  | Hydrology - 2nd Quarter Groundwater Quality Sampling, Testing, & Reporting | 28d | 2022-11-08 A | 2023-02-01 | CP-FI-HYD-DC-0015, CP-FI-HYD-DC-0010 SS | 18% | 23d | 2022-11-08 | 2022-12-16 | 24d | 0d | 2023-02-01 | UDF_G1 |  | Yes | RIZZO | 03 | RIZZO | FNTP |  |  |  |  | Yes |  |  |  |  |  |  | Overview P1 |  | X | Sep update start slip from 12sep |  |  | oct update start slip out to 08nov22 | As of 22Nov |  |
| CP-FI-HYD-DC-0035 |  | Hydrology - 3rd Quarter Groundwater Level Measurements Reporting | 31d | 2022-11-17 A | 2023-01-20 | CP-FI-HYD-DC-0030, CP-FI-HYD-DC-0020 SS | 52% | 15d | 2022-11-17 | 2023-01-02 | 31d | 0d | 2023-01-20 | UDF_G1 |  | Yes | RIZZO | 03 | RIZZO | FNTP |  |  |  |  | Yes |  |  |  |  |  |  | Overview P1 |  |  |  |  | Oct |  | As of 22Nov |  |
| CP-FI-HYD-DC-0045 |  | Hydrology - 4th Quarter Groundwater Level Measurements | 62d | 2022-11-17 A | 2023-02-14 | CP-FI-HYD-DC-0030 | 48% | 32d |  |  | 23d | 0d | 2023-02-14 | UDF_G1 |  | Yes | RIZZO | 03 | RIZZO | FNTP |  |  |  |  | Yes |  |  |  |  |  |  | Overview P1 |  |  |  |  |  |  | As of 22Nov |  |
| CP-FI-HYD-DC-0040 |  | Hydrology - 3rd Quarter Groundwater Quality Sampling, Testing, & Reporting | 23d | 2023-02-02 | 2023-03-02 | CP-FI-HYD-DC-0030, CP-FI-HYD-DC-0025 |  |  | 2023-02-02 | 2023-03-06 | 24d | 0d |  | UDF_G1 |  | Yes | RIZZO | 03 | RIZZO | FNTP |  |  |  |  | Yes |  |  |  |  |  |  | Overview P1 |  |  |  |  | Oct |  | As of 22Nov |  |
| CP-FI-HYD-DC-0050 |  | Hydrology - 4th Quarter Groundwater Level Measurements Reporting | 36d | 2023-02-15 | 2023-04-05 | CP-FI-HYD-DC-0045, CP-FI-HYD-DC-0035 |  |  |  |  | 23d | 0d |  | UDF_G1 |  | Yes | RIZZO | 03 | RIZZO | FNTP |  |  |  |  | Yes |  |  |  |  |  |  | Overview P1 |  |  |  |  |  |  |  |  |
| CP-FI-HYD-DC-0060 |  | Hydrology - 5th Quarter Groundwater Level Measurements | 58d | 2023-02-15 | 2023-05-05 | CP-FI-HYD-DC-0045 |  |  |  |  | 23d | 0d |  | UDF_G1 |  | Yes | RIZZO | 03 | RIZZO | FNTP |  |  |  |  | Yes |  |  |  |  |  |  | Overview P1 |  |  |  |  |  |  |  |  |
| CP-FI-HYD-DC-0055 |  | Hydrology - 4th Quarter Groundwater Quality Sampling, Testing, & Reporting | 23d | 2023-03-03 | 2023-04-04 | CP-FI-HYD-DC-0045, CP-FI-HYD-DC-0040 |  |  |  |  | 24d | 1d |  | UDF_G1 |  | Yes | RIZZO | 03 | RIZZO | FNTP |  |  |  |  | Yes |  |  |  |  |  |  | Overview P1 |  |  |  |  |  |  |  |  |
| CP-FI-HYD-DC-0065 |  | Hydrology - 5th Quarter Groundwater Level Measurements Reporting | 32d | 2023-05-08 | 2023-06-21 | CP-FI-HYD-DC-0060, CP-FI-HYD-DC-0050 |  |  |  |  | 121d | 33d |  | UDF_G1 |  | Yes | RIZZO | 03 | RIZZO | FNTP |  |  |  |  | Yes |  |  |  |  |  |  | Overview P1 |  |  |  |  |  |  |  |  |
| CP-FI-HYD-DC-0070 |  | Hydrology - 5th Quarter Groundwater Quality Sampling, Testing, & Reporting | 24d | 2023-05-08 | 2023-06-09 | CP-FI-HYD-DC-0060, CP-FI-HYD-DC-0055 |  |  |  |  | 145d | 41d |  | UDF_G1 |  | Yes | RIZZO | 03 | RIZZO | FNTP |  |  |  |  | Yes |  |  |  |  |  |  | Overview P1 |  |  |  |  |  |  |  |  |
| CP-FI-HYD-DC-0075 |  | Hydrology - 6th Quarter Groundwater Level Measurements | 65d | 2023-05-08 | 2023-08-08 | CP-FI-HYD-DC-0060 |  |  |  |  | 23d | 0d |  | UDF_G1 |  | Yes | RIZZO | 03 | RIZZO | FNTP |  |  |  |  | Yes |  |  |  |  |  |  | Overview P1 |  |  |  |  |  |  |  |  |
| CP-FI-HYD-DC-0080 |  | Hydrology - 6th Quarter Groundwater Level Measurements Reporting | 31d | 2023-08-09 | 2023-09-21 | CP-FI-HYD-DC-0075, CP-FI-HYD-DC-0065 |  |  |  |  | 88d | 34d |  | UDF_G1 |  | Yes | RIZZO | 03 | RIZZO | FNTP |  |  |  |  | Yes |  |  |  |  |  |  | Overview P1 |  |  |  |  |  |  |  |  |
| CP-FI-HYD-DC-0085 |  | Hydrology - 6th Quarter Groundwater Quality Sampling, Testing, & Reporting | 23d | 2023-08-09 | 2023-09-11 | CP-FI-HYD-DC-0075, CP-FI-HYD-DC-0070 |  |  |  |  | 104d | 42d |  | UDF_G1 |  | Yes | RIZZO | 03 | RIZZO | FNTP |  |  |  |  | Yes |  |  |  |  |  |  | Overview P1 |  |  |  |  |  |  |  |  |
| CP-FI-HYD-DC-0090 |  | Hydrology - 7th Quarter Groundwater Level Measurements | 65d | 2023-08-09 | 2023-11-08 | CP-FI-HYD-DC-0075 |  |  |  |  | 23d | 0d |  | UDF_G1 |  | Yes | RIZZO | 03 | RIZZO | FNTP |  |  |  |  | Yes |  |  |  |  |  |  | Overview P1 |  |  |  |  |  |  |  |  |
| CP-FI-HYD-DC-0095 |  | Hydrology - 7th Quarter Groundwater Level Measurements Reporting | 31d | 2023-11-09 | 2024-01-02 | CP-FI-HYD-DC-0090, CP-FI-HYD-DC-0080 |  |  |  |  | 54d | 31d |  | UDF_G1 |  | Yes | RIZZO | 03 | RIZZO | FNTP |  |  |  |  | Yes |  |  |  |  |  |  | Overview P1 |  |  |  |  |  |  |  |  |
| CP-FI-HYD-DC-0100 |  | Hydrology - 7th Quarter Groundwater Quality Sampling, Testing, & Reporting | 23d | 2023-11-09 | 2023-12-13 | CP-FI-HYD-DC-0090, CP-FI-HYD-DC-0085 |  |  |  |  | 62d | 39d |  | UDF_G1 |  | Yes | RIZZO | 03 | RIZZO | FNTP |  |  |  |  | Yes |  |  |  |  |  |  | Overview P1 |  |  |  |  |  |  |  |  |
| CP-FI-HYD-DC-0105 |  | Hydrology - 8th Quarter Groundwater Level Measurements | 62d | 2023-11-09 | 2024-02-14 | CP-FI-HYD-DC-0090 |  |  |  |  | 23d | 0d |  | UDF_G1 |  | Yes | RIZZO | 03 | RIZZO | FNTP |  |  |  |  | Yes |  |  |  |  |  |  | Overview P1 |  |  |  |  |  |  |  |  |
| CP-FI-HYD-DC-0110 |  | Hydrology - 8th Quarter Groundwater Level Measurements Reporting | 31d | 2024-02-15 | 2024-03-28 | CP-FI-HYD-DC-0105, CP-FI-HYD-DC-0095 |  |  |  |  | 23d |  |  | UDF_G1 |  | Yes | RIZZO | 03 | RIZZO | FNTP |  | Not Included |  |  | Yes |  |  |  |  |  |  | Overview P1 |  |  |  |  |  |  |  |  |
| CP-FI-HYD-DC-0115 |  | Hydrology - 8th Quarter Groundwater Quality Sampling, Testing, & Reporting | 31d | 2024-02-15 | 2024-03-28 | CP-FI-HYD-DC-0105, CP-FI-HYD-DC-0100 |  |  |  |  | 23d |  |  | UDF_G1 |  | Yes | RIZZO | 03 | RIZZO | FNTP | x | Not Included |  |  | Yes |  |  |  |  |  |  | Overview P1 |  |  |  |  |  |  |  |  |

Notes:
- CP-FI-MET-DC-0035: 12B DEC EOM Notes: as of 30dec22 updated / CFPP - Contractor's Remarks: as of 30dec22 updated
- CP-FI-MET-DC-0045: 12B DEC EOM Notes: as of 30dec22 updated This was completed during the last field calibration effort, but was missed as an update in November 2022 reporting. / CFPP - Contractor's Remarks: as of 30dec22 updated This was completed during the last field calibration effort, but was missed as an update in November 2022 reporting.
- CP-FI-MET-DC-0040: 12B DEC EOM Notes: as of 30dec22 updated / CFPP - Contractor's Remarks: as of 30dec22 updated
- CP-FI-MET-DC-0070: 12B DEC EOM Notes: as of 30dec22 updated
- CP-FI-MET-DC-0050: 12B DEC EOM Notes: as of 30dec22 updated / CFPP - Contractor's Remarks: as of 30dec22 updated
- CP-FI-HYD-DC-0005: 11B NOV EOM Notes: As of 29nov22 finish slip from 4nov22 / 12B DEC EOM Notes: As of 30dec22 delayed
- CP-FI-HYD-DC-0010: 11B NOV EOM Notes: As of 29nov22 finish slip from 4nov22 / 12B DEC EOM Notes: As of 30dec22 delayed
- CP-FI-HYD-DC-0030: 11B NOV EOM Notes: As of 29nov22 complete
- CP-FI-HYD-DC-0020: 11B NOV EOM Notes: As of 29nov22 finish slip from 14nov22 / 12B DEC EOM Notes: As of 30dec22 delayed
- CP-FI-HYD-DC-0025: 11B NOV EOM Notes: As of 29nov22 finish slip from 16nov22
- CP-FI-HYD-DC-0035: 11B NOV EOM Notes: As of 29nov22 finish slip from 2jan23
- CP-FI-HYD-DC-0045: 11B NOV EOM Notes: As of 29nov22 started (Is this driving CP-P2-02-04-SD-0220 Prepare Groundwater Computer Model Calculation)
- CP-FI-HYD-DC-0040: 11B NOV EOM Notes: As of 29nov22 start slip from 17nov22

| ID | WBS | Activity | Duration | Start | Finish | Predecessors | Complete | Remaining | Planned start | Planned finish | Total float | Free float | Expected finish | UDF Indicator 01 | zText_02 | zText_Level 3 Schedule | Deliverable Owner | VERIFIED MONTHLY UPDATE | Rebaseline details | 9A SEP EOM Notes | Monthly Variance | doc type | 10B OCT EOM Notes | 12B DEC EOM Notes | CFPP, LLC WBS Structure | Author | Period of Performance | DOE MILESTONE | PREPDRFTREVA | activity step | Part | SDA ACT | REV0 - SDA | SDA cleanup notes | Chapter | Section | SDA needed | SDA ties | zText_RFI | JLG - Generic Field |
| --- | --- | --- | --- | --- | --- | --- | --- | --- | --- | --- | --- | --- | --- | --- | --- | --- | --- | --- | --- | --- | --- | --- | --- | --- | --- | --- | --- | --- | --- | --- | --- | --- | --- | --- | --- | --- | --- | --- | --- | --- |
|  | CP | **CFPP - COLA Preparation** |  | 2021-09-21 | 2024-04-30 |  |  |  |  |  |  |  |  |  |  |  |  |  |  |  |  |  |  |  |  |  |  |  |  |  |  |  |  |  |  |  |  |  |  |  |
|  | 01 | **CFPP - COLA Prep - Part 01 General & Financial Information** |  | 2022-03-21 | 2023-09-01 |  |  |  |  |  |  |  |  |  |  |  |  |  |  |  |  |  |  |  |  |  |  |  |  |  |  |  |  |  |  |  |  |  |  |  |
|  | 01 | **CFPP - COLA Prep - Part 01 -General & Financial Information** |  | 2022-03-21 | 2023-09-01 |  |  |  |  |  |  |  |  |  |  |  |  |  |  |  |  |  |  |  |  |  |  |  |  |  |  |  |  |  |  |  |  |  |  |  |
|  | 01 | **CFPP - COLA Prep - Part 01** |  | 2022-03-21 | 2023-09-01 |  |  |  |  |  |  |  |  |  |  |  |  |  |  |  |  |  |  |  |  |  |  |  |  |  |  |  |  |  |  |  |  |  |  |  |
|  | a | **CFPP - COLA Prep - Part 01 - Support Documents** |  | 2022-11-16 | 2022-12-02 |  |  |  |  |  |  |  |  |  |  |  |  |  |  |  |  |  |  |  |  |  |  |  |  |  |  |  |  |  |  |  |  |  |  |  |
| CP-P1-01-01-SD-0005 |  | Develop Decommissioning Funding Strategy | 30d | 2022-11-16 A | 2022-12-02 A | PKM-0000, IFM-CFP-TO4-0050 | 100% |  | 2022-12-12 | 2023-01-23 |  |  |  | UDF_G3 | Yes | Yes | Matt | X | CFPP | Sep update start slip from 30sep | Oct | supt | oct update start slip from 31oct22 | as of 30dec22 updated | 03 | CFPP | FNTP |  |  |  |  |  |  |  |  |  |  |  |  |  |
|  | b | **CFPP - COLA Prep - Part 01 - Section Writing** |  | 2022-03-21 | 2023-09-01 |  |  |  |  |  |  |  |  |  |  |  |  |  |  |  |  |  |  |  |  |  |  |  |  |  |  |  |  |  |  |  |  |  |  |  |
| CP-P1-01-01-SW-0000 |  | Prepare Outline - Part 01 | 166d | 2022-03-21 A | 2022-07-28 A | PKM-0060 | 100% |  | 2022-03-21 | 2022-11-10 |  |  |  | UDF_G3 | Yes |  | Matt |  | FL4 |  |  | deliv |  |  | 03 | FL4 | FNTP | 3 |  |  |  |  |  |  |  |  |  |  |  |  |
| CP-P1-01-01-SW-0010 |  | Prepare Draft Rev A -Check Updated Supporting Documents -Part 01 | 139d | 2022-05-23 A | 2023-07-28 | CP-P1-01-01-SW-0000 SS |  | 148d | 2022-09-30 | 2023-04-14 | 33d | 0d | 2023-07-28 | UDF_G1 | Yes | Yes | Matt |  | FL4 |  |  | deliv |  |  | 03 | FL4 | FNTP |  | FL4-REVA | 1 |  |  |  |  |  |  |  |  |  |  |
| CP-P1-01-01-SW-0015 |  | Review Draft Rev A - Part 01 (TO4 Team Review) | 10d | 2023-07-31 | 2023-08-11 | CP-P1-01-01-SW-0010 |  |  |  |  | 33d | 0d |  | UDF_G1 | Yes | Yes | Matt |  | FL4 |  |  | deliv |  |  | 03 | TO4 | FNTP |  |  | 2 | P1 |  |  |  |  |  |  |  |  |  |
| CP-P1-01-01-SW-0020 |  | Resolve Rev A Comments - Part 01 | 5d | 2023-08-14 | 2023-08-18 | CP-P1-01-01-SW-0015 |  |  |  |  | 33d | 0d |  | UDF_G1 | Yes | Yes | Matt |  | FL4 |  |  | deliv |  |  | 03 | FL4 | FNTP |  |  | 3 |  |  |  |  |  |  |  |  |  |  |
| CP-P1-01-01-SW-0025 |  | Issue Rev 0 - Part 01 General & Financial Information | 10d | 2023-08-21 | 2023-09-01 | CP-P1-01-01-SW-0020 |  |  |  |  | 33d | 0d |  | UDF_G1 | Yes | Yes | Matt |  | FL4 |  |  | deliv |  |  | 03 | FL4 | FNTP | x |  | 5 |  | NONE | FL4-REV0 |  |  |  |  |  |  |  |
|  | 02 | **CFPP - COLA Prep - Part 02 Final Safety Analysis Report** |  | 2021-09-21 | 2023-11-02 |  |  |  |  |  |  |  |  |  |  |  |  |  |  |  |  |  |  |  |  |  |  |  |  |  |  |  |  |  |  |  |  |  |  |  |
|  | 01 | **CFPP - COLA Prep - Part 02 - Chapter 01 Intro & Gen Plant Description** |  | 2022-03-28 | 2023-10-19 |  |  |  |  |  |  |  |  |  |  |  |  |  |  |  |  |  |  |  |  |  |  |  |  |  |  |  |  |  |  |  |  |  |  |  |
|  | 01 | **CFPP - COLA Prep - Part 02 - Chapter 01 - Section 1 - Introduction** |  | 2022-03-28 | 2023-04-04 |  |  |  |  |  |  |  |  |  |  |  |  |  |  |  |  |  |  |  |  |  |  |  |  |  |  |  |  |  |  |  |  |  |  |  |
|  | 01 | **CFPP - COLA Prep - Part 02 - Chapter 01 - Section 1 - Support Documents** |  | 2022-08-29 | 2023-02-21 |  |  |  |  |  |  |  |  |  |  |  |  |  |  |  |  |  |  |  |  |  |  |  |  |  |  |  |  |  |  |  |  |  |  |  |
| CP-P2-01-01-SD-0005 |  | Receive & Review Construction & Operation Schedule Sequence | 30d | 2022-08-29 A | 2023-02-21 | IFM-TO3-TO4-0010 |  | 37d | 2022-08-29 | 2022-10-10 | 74d | 0d | 2023-02-21 | UDF_G3 | Yes | Yes | Matt-TBD | X | FL4 | Sep update finish slip from 10oct |  | supt | oct update may push finish out |  | 03 | FL4 | FNTP |  |  |  | P2 |  |  | checked pushed out by pred IFM-TO3-TO4-0010 | 1 | 1.1 |  |  |  |  |
|  | 02 | **CFPP - COLA Prep - Part 02 - Chapter 01 - Section 1 - Section Writing** |  | 2022-03-28 | 2023-04-04 |  |  |  |  |  |  |  |  |  |  |  |  |  |  |  |  |  |  |  |  |  |  |  |  |  |  |  |  |  |  |  |  |  |  |  |
| CP-P2-01-01-SW-0000 |  | Prepare Draft Rev A -Check Updated Supporting Documents -FSAR Section 1.1 | 20d | 2022-03-28 A | 2023-02-28 | CP-P2-02-01-SD-0000, CP-P2-01-01-SD-0005 FF, IFM-SDA-TO4-0280 FF |  | 42d | 2022-08-29 | 2022-09-26 | 69d | 0d | 2023-02-28 | UDF_G3 | Yes | Yes | Matt-TBD | X | FL4 | Sep update finish slip from 10oct |  | deliv | oct update may push finish out |  | 03 | FL4 | FNTP |  | FL4-REVA | 1 | P2 |  |  | checked pushed out by pred | 1 | 1.1 | SDA Tie |  |  |  |
| CP-P2-01-01-SW-0005 |  | Review Draft Rev A - FSAR Section 1.1 (TO4 Team Review) | 10d | 2023-03-01 | 2023-03-14 | CP-P2-01-01-SW-0000 |  |  |  |  | 69d | 0d |  | UDF_G1 | Yes | Yes | Matt-TBD |  | FL4 |  |  | deliv |  |  | 03 | TO4 | FNTP |  |  | 2 | P2 |  |  | checked pushed out by pred | 1 | 1.1 |  | FIX |  |  |
| CP-P2-01-01-SW-0010 |  | Resolve Rev A Comments - FSAR Section 1.1 | 5d | 2023-03-15 | 2023-03-21 | CP-P2-01-01-SW-0005 |  |  |  |  | 149d | 0d |  | UDF_G1 | Yes | Yes | Matt-TBD |  | FL4 |  |  | deliv |  |  | 03 | FL4 | FNTP |  |  | 3 | P2 |  |  | checked pushed out by pred | 1 | 1.1 |  |  |  |  |
| CP-P2-01-01-SW-0012 |  | Confirm SDA Information and Inform Reviewers - FSAR Section 1.1 | 5d | 2023-03-22 | 2023-03-22 | CP-P2-01-01-SW-0010, PKM-0125 |  |  | 2023-03-22 | 2023-03-28 | 149d | 0d |  | UDF_G1 | Yes | Yes | Matt-TBD |  | FL4 |  |  | deliv |  | In parallel with Team Review (hold duration at 5d) | 03 | FL4 | FNTP |  |  | 4 | P2 | F | FL4-REV0 | checked pushed out by pred | 1 | 1.1 | SDA Tie | FIX |  |  |
| CP-P2-01-01-SW-0015 |  | Issue Rev 0 - FSAR Section 1.1 | 10d | 2023-03-22 | 2023-04-04 | CP-P2-01-01-SW-0012 |  |  |  |  | 149d | 139d |  | UDF_G1 | Yes | Yes | Matt-TBD |  | FL4 |  |  | deliv |  |  | 03 | FL4 | FNTP |  |  | 5 | P2 | F | FL4-REV0 | checked pushed out by pred | 1 | 1.1 | SDA Tie |  |  |  |
|  | 02 | **CFPP - COLA Prep - Part 02 - Chapter 01 - Section 2 - General Plant Description** |  | 2022-04-13 | 2023-04-27 |  |  |  |  |  |  |  |  |  |  |  |  |  |  |  |  |  |  |  |  |  |  |  |  |  |  |  |  |  |  |  |  |  |  |  |
|  | 01 | **CFPP - COLA Prep - Part 02 - Chapter 01 - Section 2 - Support Documents** |  | 2022-05-02 | 2023-01-27 |  |  |  |  |  |  |  |  |  |  |  |  |  |  |  |  |  |  |  |  |  |  |  |  |  |  |  |  |  |  |  |  |  |  |  |
| CP-P2-01-02-SD-0030 |  | Receive and Review General Description of CFPP Plant | 30d | 2022-05-02 A | 2022-05-09 A | IFM-TO5-TO4-0035, IFM-TO5-TO4-0050, IFM-TO5-TO4-0060, IFM-TO5-TO4-0115, IFM-TO5-TO4-0130, IFM-TO5-TO4-0145, IFM-TO5-TO4-0170, IFM-TO5-TO4-0180, IFM-TO5-TO4-0190 | 100% |  | 2022-09-30 | 2022-11-10 |  |  |  | UDF_G3 | Yes | Yes | Matt-TBD |  | FL4 |  |  | supt |  |  | 03 | FL4 | FNTP |  |  |  | P2 |  |  |  | 1 | 1.2 |  |  |  |  |
| CP-P2-01-02-SD-0000 |  | Receive and Review GA Drawings for Turbine & Annex Buildings | 30d | 2022-05-02 A | 2022-11-17 A | IFM-TO5-TO4-0020 | 100% |  | 2022-05-02 | 2022-06-13 |  |  |  | UDF_G3 | Yes |  |  | X | FL4 | Sep update finish slip from 30sep |  | supt |  |  | 03 | FL4 | FNTP |  |  |  | P2 |  |  |  | 1 | 1.2 |  |  |  |  |
| CP-P2-01-02-SD-0005 |  | Receive and Review CDI - Nonsafety-related Central Utilities Building (CUB) | 30d | 2022-05-02 A | 2023-01-27 | PKM-0035, IFM-TO5-TO4-0020 |  | 20d | 2022-05-02 | 2022-06-13 | 176d | 0d | 2023-01-27 | UDF_G3 | Yes |  | Matt/Chris/Mo? | X | FL4 | Sep update finish slip from 30sep |  | supt |  | As of 30dec22 delayed | 03 | FL4 | FNTP |  |  |  | P2 |  |  |  | 1 | 1.2 |  |  | RFI 402 |  |
| CP-P2-01-02-SD-0010 |  | Receive and Review CDI - Nonsafety-related Annex Building (ANB) | 30d | 2022-05-02 A | 2022-11-17 A | PKM-0035, IFM-TO5-TO4-0020 | 100% |  | 2022-05-02 | 2022-06-13 |  |  |  | UDF_G3 | Yes |  |  | X | FL4 | Sep update finish slip from 30sep |  | supt |  |  | 03 | FL4 | FNTP |  |  |  | P2 |  |  |  | 1 | 1.2 |  |  | RFI 302 |  |
| CP-P2-01-02-SD-0015 |  | Receive and Review CFPP Site Plan | 30d | 2022-05-02 A | 2022-05-09 A | PKM-0035, IFM-TO5-TO4-0000 | 100% |  | 2022-05-02 | 2022-06-13 |  |  |  | UDF_G3 | Yes |  | Matt-TBD |  | FL4 |  |  | supt |  |  | 03 | FL4 | FNTP |  |  |  | P2 |  |  |  | 1 | 1.2 |  |  |  | P1 |
| CP-P2-01-02-SD-0020 |  | Receive and Review ACC Information | 30d | 2022-05-02 A | 2022-06-30 A | IFM-TO5-TO4-0130 | 100% |  | 2022-05-02 | 2022-06-13 |  |  |  | UDF_G3 | Yes | Yes |  |  | FL4 |  |  | supt |  |  | 03 | FL4 | FNTP |  |  |  | P2 |  |  |  | 1 | 1.2 |  |  | RFI 202 |  |
| CP-P2-01-02-SD-0025 |  | Receive and Review CDI- Site Cooling Water System | 30d | 2022-08-03 A | 2022-08-26 A | PKM-0035, IFM-TO5-TO4-0275 | 100% |  | 2022-08-03 | 2022-09-14 |  |  |  | UDF_G3 | Yes | Yes | Matt-TBD |  | FL4 |  |  | supt |  |  | 03 | FL4 | FNTP |  |  |  | P2 |  |  |  | 1 | 1.2 |  |  | RFI 602 |  |

Notes:
- CP-P1-01-01-SD-0005: 11B NOV EOM Notes: As of 29nov22 start slip from 21nov22
- CP-P1-01-01-SW-0025: 10A OCT MIDMONTH Notes: oct update revised relationship (rev drft a tied ss to prep draft a)
- CP-P2-01-01-SD-0005: 11B NOV EOM Notes: As of 29nov22 finish slip from 17nov22
- CP-P2-01-01-SW-0000: 11B NOV EOM Notes: As of 29nov22 finish slip from 23nov22
- CP-P2-01-01-SW-0005: 11B NOV EOM Notes: As of 29nov22 pred start slip out
- CP-P2-01-01-SW-0015: 10A OCT MIDMONTH Notes: oct update "Confirm SDA date" driving out
- CP-P2-01-02-SD-0000: 11B NOV EOM Notes: As of 29nov22 complete
- CP-P2-01-02-SD-0005: 11B NOV EOM Notes: As of 29nov22 finish slip from 17nov22 Should be actual per Mo(Matt)
- CP-P2-01-02-SD-0010: 11B NOV EOM Notes: As of 29nov22 complete

| ID | WBS | Activity | Duration | Start | Finish | Predecessors | Remaining | Planned start | Planned finish | Total float | Free float | Constraint | Expected finish | UDF Indicator 01 | zText_02 | zText_Level 3 Schedule | Deliverable Owner | Rebaseline details | doc type | PREPDRFTREVA | CFPP, LLC WBS Structure | Author | Period of Performance | Part | Chapter | Section | SDA needed | activity step | SDA ties | SDA cleanup notes | SDA ACT | REV0 - SDA | 12B DEC EOM Notes | 11B NOV EOM Notes | Comments | VERIFIED MONTHLY UPDATE | 9A SEP EOM Notes | Forecast Finish | Forecast Start | 10A OCT MIDMONTH Notes |
| --- | --- | --- | --- | --- | --- | --- | --- | --- | --- | --- | --- | --- | --- | --- | --- | --- | --- | --- | --- | --- | --- | --- | --- | --- | --- | --- | --- | --- | --- | --- | --- | --- | --- | --- | --- | --- | --- | --- | --- | --- |
|  | 02 | **CFPP - COLA Prep - Part 02 - Chapter 01 - Section 2 - Section Writing** |  | 2022-04-13 | 2023-04-27 |  |  |  |  |  |  |  |  |  |  |  |  |  |  |  |  |  |  |  |  |  |  |  |  |  |  |  |  |  |  |  |  |  |  |  |
| CP-P2-01-02-SW-0000 |  | Prepare Draft Rev A -Check Updated Supporting Documents -FSAR Section 1.2 | 190d | 2022-04-13 A | 2023-03-30 | CP-P2-01-02-SD-0030 FF, CP-P2-01-02-SD-0000 FF, IFM-SDA-TO4-0285 FF+20d | 64d | 2022-04-13 | 2023-01-10 | 132d | 0d |  | 2023-03-30 | UDF_G3 | Yes | Yes | Matt-TBD | FL4 | deliv | FL4-REVA | 03 | FL4 | FNTP | P2 | 1 | 1.2 | SDA Tie | 1 |  |  |  |  |  |  |  |  |  |  |  |  |
| CP-P2-01-02-SW-0005 |  | Review Draft Rev A - FSAR Section 1.2 (TO4 Team Review) | 10d | 2023-03-31 | 2023-04-13 | CP-P2-01-02-SW-0000, CP-P2-01-02-SD-0005, CP-P2-01-02-SD-0010, CP-P2-01-02-SD-0015, CP-P2-01-02-SD-0020, CP-P2-01-02-SD-0025, CP-P2-01-02-SD-0030 |  |  |  | 132d | 0d |  |  | UDF_G3 | Yes | Yes | Matt-TBD | FL4 | deliv |  | 03 | TO4 | FNTP | P2 | 1 | 1.2 |  | 2 | FIX |  |  |  |  |  |  |  |  |  |  |  |
| CP-P2-01-02-SW-0010 |  | Resolve Rev A Comments - FSAR Section 1.2 | 5d | 2023-04-14 | 2023-04-20 | CP-P2-01-02-SW-0005 |  |  |  | 132d | 0d |  |  | UDF_G3 | Yes | Yes | Matt-TBD | FL4 | deliv |  | 03 | FL4 | FNTP | P2 | 1 | 1.2 |  | 3 |  |  |  |  |  |  |  |  |  |  |  |  |
| CP-P2-01-02-SW-0012 |  | Confirm SDA Information and Inform Reviewers - FSAR Section 1.2 | 5d | 2023-04-21 | 2023-04-21 | CP-P2-01-02-SW-0010, PKM-0125 |  | 2023-04-21 | 2023-04-27 | 132d | 0d |  |  | UDF_G1 | Yes | Yes | Matt-TBD | FL4 | deliv |  | 03 | FL4 | FNTP | P2 | 1 | 1.1 | SDA Tie | 4 | FIX | checked pushed out by pred | F | FL4-REV0 | In parallel with Team Review (hold duration at 5d) |  |  |  |  |  |  |  |
| CP-P2-01-02-SW-0015 |  | Issue Rev 0 - FSAR Section 1.2 | 5d | 2023-04-21 | 2023-04-27 | CP-P2-01-02-SW-0012 |  |  |  | 132d | 122d |  |  | UDF_G3 | Yes | Yes | Matt-TBD | FL4 | deliv |  | 03 | FL4 | FNTP | P2 | 1 | 1.2 | SDA Tie | 5 |  |  | F | FL4-REV0 |  |  |  |  |  |  |  |  |
|  | 03 | **CFPP - COLA Prep - Part 02 - Chapter 01 - Section 3 - Comp w/ Other Facilities** |  | 2022-04-07 | 2023-03-07 |  |  |  |  |  |  |  |  |  |  |  |  |  |  |  |  |  |  |  |  |  |  |  |  |  |  |  |  |  |  |  |  |  |  |  |
|  | 01 | **CFPP - COLA Prep - Part 02 - Chapter 01 - Section 3 - Support Documents** |  |  |  |  |  |  |  |  |  |  |  |  |  |  |  |  |  |  |  |  |  |  |  |  |  |  |  |  |  |  |  |  |  |  |  |  |  |  |
|  | 02 | **CFPP - COLA Prep - Part 02 - Chapter 01 - Section 3 - Section Writing** |  | 2022-04-07 | 2023-03-07 |  |  |  |  |  |  |  |  |  |  |  |  |  |  |  |  |  |  |  |  |  |  |  |  |  |  |  |  |  |  |  |  |  |  |  |
| CP-P2-01-03-SW-0000 |  | Prepare Draft Rev A -Check Updated Supporting Documents -FSAR Section 1.3 | 164d | 2022-04-07 A | 2023-01-31 | IFM-SDA-TO4-0290 FF+20d | 22d | 2022-04-07 | 2022-11-28 | 169d | 0d |  | 2023-01-31 | UDF_G3 | Yes | Yes | Matt-TBD | FL4 | deliv | FL4-REVA | 03 | FL4 | FNTP | P2 | 1 | 1.3 | SDA Tie | 1 |  |  |  |  |  | As of 29nov22 finish slip from 22dec22 (Need SDA) |  |  |  |  |  |  |
| CP-P2-01-03-SW-0005 |  | Review Draft Rev A - FSAR Section 1.3 (TO4 Team Review) | 10d | 2023-02-01 | 2023-02-14 | CP-P2-01-03-SW-0000 |  |  |  | 169d | 0d |  |  | UDF_G1 | Yes | Yes | Matt-TBD | FL4 | deliv |  | 03 | TO4 | FNTP | P2 | 1 | 1.3 |  | 2 | FIX |  |  |  |  |  |  |  |  |  |  |  |
| CP-P2-01-03-SW-0010 |  | Resolve Rev A Comments - FSAR Section 1.3 | 5d | 2023-02-15 | 2023-02-21 | CP-P2-01-03-SW-0005 |  |  |  | 169d | 0d |  |  | UDF_G1 | Yes | Yes | Matt-TBD | FL4 | deliv |  | 03 | FL4 | FNTP | P2 | 1 | 1.3 |  | 3 |  |  |  |  |  |  |  |  |  |  |  |  |
| CP-P2-01-03-SW-0012 |  | Confirm SDA Information and Inform Reviewers - FSAR Section 1.3 | 5d | 2023-02-22 | 2023-02-22 | CP-P2-01-03-SW-0010, PKM-0125 |  | 2023-02-22 | 2023-02-28 | 169d | 0d |  |  | UDF_G1 | Yes | Yes | Matt-TBD | FL4 | deliv |  | 03 | FL4 | FNTP | P2 | 1 | 1.3 | SDA Tie | 4 | FIX |  | F | FL4-REV0 | In parallel with Team Review (hold duration at 5d) |  |  |  |  |  |  |  |
| CP-P2-01-03-SW-0015 |  | Issue Rev 0 - FSAR Section 1.3 | 10d | 2023-02-22 | 2023-03-07 | CP-P2-01-03-SW-0012 |  |  |  | 169d | 159d |  |  | UDF_G1 | Yes | Yes | Matt-TBD | FL4 | deliv |  | 03 | FL4 | FNTP | P2 | 1 | 1.3 | SDA Tie | 5 |  |  | F | FL4-REV0 |  |  |  |  |  |  |  |  |
|  | 04 | **CFPP - COLA Prep - Part 02 - Chapter 01 - Section 4 - Identify Agents & Contractors** |  | 2022-04-07 | 2023-05-18 |  |  |  |  |  |  |  |  |  |  |  |  |  |  |  |  |  |  |  |  |  |  |  |  |  |  |  |  |  |  |  |  |  |  |  |
|  | 01 | **CFPP - COLA Prep - Part 02 - Chapter 01 - Section 4 - Supporting Documents** |  | 2022-07-28 | 2023-02-21 |  |  |  |  |  |  |  |  |  |  |  |  |  |  |  |  |  |  |  |  |  |  |  |  |  |  |  |  |  |  |  |  |  |  |  |
| CP-P2-01-04-SD-0000 |  | Receive & Review Plant Agents / Contractors for Construction & Operation | 30d | 2022-07-28 A | 2023-02-21 | PKM-0035, IFM-CFP-TO4-0055 FS+40d | 37d | 2022-07-28 | 2022-09-08 | 154d | 0d |  | 2023-02-21 | UDF_G3 | Yes | Yes | Matt-TBD | FL4 | supt |  | 03 | FL4 | FNTP | P2 | 1 | 1.4 |  |  |  |  |  |  |  | As of 29nov22 finish slip from 17nov22 | 1 | X | Sep update finish slip from 8sep |  |  |  |
| CP-P2-01-04-SD-0005 |  | Develop Experience & Capabilities Write-up from NuScale | 30d | 2023-01-03 | 2023-02-13 | CP-P2-02-01-SD-0000 |  |  |  | 160d | 43d | start on or after 2023-01-03 |  |  | Yes | Yes | Matt-TBD | NUSCALE | supt |  | 03 | NuScale | FNTP | P2 | 1 | 1.4 |  |  |  | Nuscale looking for clarification |  |  |  |  |  |  |  | 2023-02-13 | 2023-01-03 |  |
|  | 02 | **CFPP - COLA Prep - Part 02 - Chapter 01 - Section 4 - Section Writing** |  | 2022-04-07 | 2023-05-18 |  |  |  |  |  |  |  |  |  |  |  |  |  |  |  |  |  |  |  |  |  |  |  |  |  |  |  |  |  |  |  |  |  |  |  |
| CP-P2-01-04-SW-0000 |  | Prepare Draft Rev A -Check Updated Supporting Documents -FSAR Section 1.4 | 140d | 2022-04-07 A | 2023-04-13 | CP-P2-01-04-SD-0000 FF, CP-P2-01-04-SD-0005 FF, IFM-SDA-TO4-0300 FF+20d | 74d | 2022-04-07 | 2022-10-24 | 117d | 0d |  | 2023-02-13 | UDF_G3 | Yes | Yes | Matt-TBD | FL4 | deliv | FL4-REVA | 03 | FL4 | FNTP | P2 | 1 | 1.4 | SDA Tie | 1 |  |  |  |  |  |  |  |  |  |  |  |  |
| CP-P2-01-04-SW-0005 |  | Review Draft Rev A - FSAR Section 1.4 (TO4 Team Review) | 10d | 2023-04-14 | 2023-04-27 | CP-P2-01-04-SW-0000 |  |  |  | 117d | 0d |  |  | UDF_G1 | Yes | Yes | Matt-TBD | FL4 | deliv |  | 03 | TO4 | FNTP | P2 | 1 | 1.4 |  | 2 | FIX |  |  |  |  |  |  |  |  |  |  |  |
| CP-P2-01-04-SW-0010 |  | Resolve Rev A Comments - FSAR Section 1.4 | 5d | 2023-04-28 | 2023-05-04 | CP-P2-01-04-SW-0005 |  |  |  | 117d | 0d |  |  | UDF_G1 | Yes | Yes | Matt-TBD | FL4 | deliv |  | 03 | FL4 | FNTP | P2 | 1 | 1.4 |  | 3 |  |  |  |  |  |  |  |  |  |  |  |  |
| CP-P2-01-04-SW-0012 |  | Confirm SDA Information and Inform Reviewers - FSAR Section 1.4 | 5d | 2023-05-05 | 2023-05-05 | CP-P2-01-04-SW-0010, PKM-0125 |  | 2023-05-05 | 2023-05-11 | 117d | 0d |  |  | UDF_G1 | Yes | Yes | Matt-TBD | FL4 | deliv |  | 03 | FL4 | FNTP | P2 | 1 | 1.4 | SDA Tie | 4 | FIX |  | F | FL4-REV0 | In parallel with Team Review (hold duration at 5d) |  |  |  |  |  |  |  |
| CP-P2-01-04-SW-0015 |  | Issue Rev 0 - FSAR Section 1.4 | 10d | 2023-05-05 | 2023-05-18 | CP-P2-01-04-SW-0012 |  |  |  | 117d | 107d |  |  | UDF_G1 | Yes | Yes | Matt-TBD | FL4 | deliv |  | 03 | FL4 | FNTP | P2 | 1 | 1.4 | SDA Tie | 5 |  |  | F | FL4-REV0 |  |  |  |  |  |  |  | oct update Draft Rev A finish date moved out |

| ID | WBS | Activity | Duration | Start | Finish | Predecessors | Complete | Remaining | Planned start | Planned finish | Total float | Free float | Expected finish | UDF Indicator 01 | zText_02 | zText_Level 3 Schedule | Deliverable Owner | Rebaseline details | doc type | PREPDRFTREVA | CFPP, LLC WBS Structure | Author | Period of Performance | Part | Chapter | Section | SDA needed | activity step | SDA ties | SDA ACT | REV0 - SDA | 12B DEC EOM Notes | zText_CFPP Look Ahead Notes | VERIFIED MONTHLY UPDATE | 9A SEP EOM Notes | NEED UPDATE | Monthly Variance | 11A NOV MIDMONTH Notes | zText_33 | 10A OCT MIDMONTH Notes | zText_RFI | Comments |
| --- | --- | --- | --- | --- | --- | --- | --- | --- | --- | --- | --- | --- | --- | --- | --- | --- | --- | --- | --- | --- | --- | --- | --- | --- | --- | --- | --- | --- | --- | --- | --- | --- | --- | --- | --- | --- | --- | --- | --- | --- | --- | --- |
|  | 05 | **CFPP - COLA Prep - Part 02 - Chapter 01 - Section 5 - Requirements for Additional Tech Info** |  | 2022-04-07 | 2023-03-07 |  |  |  |  |  |  |  |  |  |  |  |  |  |  |  |  |  |  |  |  |  |  |  |  |  |  |  |  |  |  |  |  |  |  |  |  |  |
|  | 01 | **CFPP - COLA Prep - Part 02 - Chapter 01 - Section 5 - Support Documents** |  |  |  |  |  |  |  |  |  |  |  |  |  |  |  |  |  |  |  |  |  |  |  |  |  |  |  |  |  |  |  |  |  |  |  |  |  |  |  |  |
|  | 02 | **CFPP - COLA Prep - Part 02 - Chapter 01 - Section 5 - Section Writing** |  | 2022-04-07 | 2023-03-07 |  |  |  |  |  |  |  |  |  |  |  |  |  |  |  |  |  |  |  |  |  |  |  |  |  |  |  |  |  |  |  |  |  |  |  |  |  |
| CP-P2-01-05-SW-0000 |  | Prepare Draft Rev A -Check Updated Supporting Documents -FSAR Section 1.5 | 140d | 2022-04-07 A | 2023-01-31 | IFM-SDA-TO4-0310 FF |  | 22d | 2022-04-07 | 2022-10-24 | 169d | 0d | 2023-01-31 | UDF_G3 | Yes | Yes | Matt-TBD | FL4 | deliv | FL4-REVA | 03 | FL4 | FNTP | P2 | 1 | 1.5 | SDA Tie | 1 |  |  |  |  |  |  |  |  |  |  |  |  |  |  |
| CP-P2-01-05-SW-0005 |  | Review Draft Rev A - FSAR Section 1.5 (TO4 Team Review) | 10d | 2023-02-01 | 2023-02-14 | CP-P2-01-05-SW-0000 |  |  |  |  | 169d | 0d |  | UDF_G1 | Yes | Yes | Matt-TBD | FL4 | deliv |  | 03 | TO4 | FNTP | P2 | 1 | 1.5 |  | 2 | FIX |  |  |  |  |  |  |  |  |  |  |  |  |  |
| CP-P2-01-05-SW-0010 |  | Resolve Rev A Comments - FSAR Section 1.5 | 5d | 2023-02-15 | 2023-02-21 | CP-P2-01-05-SW-0005 |  |  |  |  | 169d | 0d |  | UDF_G1 | Yes | Yes | Matt-TBD | FL4 | deliv |  | 03 | FL4 | FNTP | P2 | 1 | 1.5 |  | 3 |  |  |  |  |  |  |  |  |  |  |  |  |  |  |
| CP-P2-01-05-SW-0012 |  | Confirm SDA Information and Inform Reviewers - FSAR Section 1.5 | 5d | 2023-02-22 | 2023-02-22 | CP-P2-01-05-SW-0010, PKM-0125 |  |  | 2023-02-22 | 2023-02-28 | 169d | 0d |  | UDF_G1 | Yes | Yes | Matt-TBD | FL4 | deliv |  | 03 | FL4 | FNTP | P2 | 1 | 1.1 | SDA Tie | 4 | FIX | F | FL4-REV0 | In parallel with Team Review (hold duration at 5d) |  |  |  |  |  |  |  |  |  |  |
| CP-P2-01-05-SW-0015 |  | Issue Rev 0 - FSAR Section 1.5 | 10d | 2023-02-22 | 2023-03-07 | CP-P2-01-05-SW-0012 |  |  |  |  | 169d | 159d |  | UDF_G1 | Yes | Yes | Matt-TBD | FL4 | deliv |  | 03 | FL4 | FNTP | P2 | 1 | 1.5 | SDA Tie | 5 |  | F | FL4-REV0 |  |  |  |  |  |  |  |  |  |  |  |
|  | 06 | **CFPP - COLA Prep - Part 02 - Chapter 01 - Section 6 - Material Referenced** |  | 2022-04-25 | 2023-10-10 |  |  |  |  |  |  |  |  |  |  |  |  |  |  |  |  |  |  |  |  |  |  |  |  |  |  |  |  |  |  |  |  |  |  |  |  |  |
|  | 01 | **CFPP - COLA Prep - Part 02 - Chapter 01 - Section 6 - Supporting Documentation** |  | 2022-09-22 | 2023-08-22 |  |  |  |  |  |  |  |  |  |  |  |  |  |  |  |  |  |  |  |  |  |  |  |  |  |  |  |  |  |  |  |  |  |  |  |  |  |
| CP-P2-01-06-SD-0000 |  | Develop Description Discussing IBR Documents w/ Cross-references to COLA Sections | 30d | 2022-09-22 A | 2023-08-22 | CP-P2-02-01-SD-0000 |  | 165d | 2022-09-08 | 2022-10-19 | 26d | 0d | 2023-08-22 |  | Yes |  | Matt-TBD | NUSCALE | supt |  | 03 | NuScale | FNTP | P2 | 1 | 1.6 |  |  |  |  |  |  | Y | X | Sep update finish slip from 19oct | OCT | Oct | As of 15nov22 22sep23 new forecast finish |  |  |  |  |
|  | 02 | **CFPP - COLA Prep - Part 02 - Chapter 01 - Section 6 - Prepare Section** |  | 2022-04-25 | 2023-10-10 |  |  |  |  |  |  |  |  |  |  |  |  |  |  |  |  |  |  |  |  |  |  |  |  |  |  |  |  |  |  |  |  |  |  |  |  |  |
| CP-P2-01-06-SW-0000 |  | Prepare Draft Rev A -Check Updated Supporting Documents -FSAR Section 1.6 | 128d | 2022-04-25 A | 2023-09-05 | CP-P2-01-06-SD-0000 FF, IFM-SDA-TO4-0320 FF |  | 174d | 2022-04-25 | 2022-10-24 | 17d | 0d | 2023-09-05 | UDF_G1 | Yes | Yes | Matt-TBD | FL4 | deliv | FL4-REVA | 03 | FL4 | FNTP | P2 | 1 | 1.6 | SDA Tie | 1 |  |  |  |  |  |  |  | OCT | Oct |  | Critical Path |  |  |  |
| CP-P2-01-06-SW-0005 |  | Review Draft Rev A - FSAR Section 1.6 (TO4 Team Review) | 10d | 2023-09-06 | 2023-09-19 | CP-P2-01-06-SW-0000 |  |  |  |  | 17d | 0d |  | UDF_G1 | Yes | Yes | Matt-TBD | FL4 | deliv |  | 03 | TO4 | FNTP | P2 | 1 | 1.6 |  | 2 | FIX |  |  |  |  |  |  |  |  |  |  |  |  |  |
| CP-P2-01-06-SW-0010 |  | Resolve Rev A Comments - FSAR Section 1.6 | 5d | 2023-09-20 | 2023-09-26 | CP-P2-01-06-SW-0005 |  |  |  |  | 17d | 0d |  | UDF_G1 | Yes | Yes | Matt-TBD | FL4 | deliv |  | 03 | FL4 | FNTP | P2 | 1 | 1.6 |  | 3 |  |  |  |  |  |  |  |  |  |  |  |  |  |  |
| CP-P2-01-06-SW-0012 |  | Confirm SDA Information and Inform Reviewers - FSAR Section 1.6 | 5d | 2023-09-27 | 2023-09-27 | CP-P2-01-06-SW-0010, PKM-0125 |  |  | 2023-09-27 | 2023-10-03 | 17d | 0d |  | UDF_G1 | Yes | Yes | Matt-TBD | FL4 | deliv |  | 03 | FL4 | FNTP | P2 | 1 | 1.6 | SDA Tie | 4 | FIX | F | FL4-REV0 | In parallel with Team Review (hold duration at 5d) |  |  |  |  |  |  |  |  |  |  |
| CP-P2-01-06-SW-0015 |  | Issue Rev 0 - FSAR Section 1.6 | 10d | 2023-09-27 | 2023-10-10 | CP-P2-01-06-SW-0012 |  |  |  |  | 17d | 7d |  | UDF_G1 | Yes | Yes | Matt-TBD | FL4 | deliv |  | 03 | FL4 | FNTP | P2 | 1 | 1.6 | SDA Tie | 5 |  | F | FL4-REV0 |  |  |  |  |  |  |  |  | oct update "Confirm SDA date" driving out |  |  |
|  | 07 | **CFPP - COLA Prep - Part 02 - Chapter 01 - Section 7 - Drwg's & Other Detailed Info** |  | 2022-04-25 | 2023-04-26 |  |  |  |  |  |  |  |  |  |  |  |  |  |  |  |  |  |  |  |  |  |  |  |  |  |  |  |  |  |  |  |  |  |  |  |  |  |
|  | 01 | **CFPP - COLA Prep - Part 02 - Chapter 01 - Section 7 - Support Documents** |  | 2022-08-01 | 2022-09-13 |  |  |  |  |  |  |  |  |  |  |  |  |  |  |  |  |  |  |  |  |  |  |  |  |  |  |  |  |  |  |  |  |  |  |  |  |  |
| CP-P2-01-07-SD-0005 |  | Receive & Review List of Electrical 1 Line Drawings | 30d | 2022-08-01 A | 2022-09-13 A | IFM-TO5-TO4-0250 | 100% |  | 2022-09-01 | 2022-10-13 |  |  |  | UDF_G1 | Yes | Yes | Matt-TBD | FL4 | supt |  | 03 | FL4 | FNTP | P2 | 1 | 1.7 |  |  |  |  |  |  |  |  | Sep update |  |  |  |  |  | RFI 102 / 202 |  |
| CP-P2-01-07-SD-0000 |  | Receive & Review List of Site Specific P&IDs | 30d | 2022-08-01 A | 2022-09-12 A | IFM-TO5-TO4-0040, IFM-TO5-TO4-0055, IFM-TO5-TO4-0065, IFM-TO5-TO4-0120, IFM-TO5-TO4-0135, IFM-TO5-TO4-0150, IFM-TO5-TO4-0165, IFM-TO5-TO4-0175, IFM-TO5-TO4-0185, IFM-TO5-TO4-0195, IFM-TO5-TO4-0045 | 100% |  |  |  |  |  |  | UDF_G1 | Yes | Yes | Matt-TBD | FL4 | supt |  | 03 | FL4 | FNTP | P2 | 1 | 1.7 |  |  |  |  |  |  |  |  | Sep update |  |  |  |  |  | RFI 102 / 202 | 1 |
|  | 02 | **CFPP - COLA Prep - Part 02 - Chapter 01 - Section 7 - Section Writing** |  | 2022-04-25 | 2023-04-26 |  |  |  |  |  |  |  |  |  |  |  |  |  |  |  |  |  |  |  |  |  |  |  |  |  |  |  |  |  |  |  |  |  |  |  |  |  |
| CP-P2-01-07-SW-0000 |  | Prepare Draft Rev A -Check Updated Supporting Documents -FSAR Section 1.7 | 128d | 2022-04-25 A | 2023-03-22 | CP-P2-01-07-SD-0000 FF, IFM-SDA-TO4-0330 FF, CP-P2-01-07-SD-0005 FF |  | 58d | 2022-04-25 | 2022-10-24 | 133d | 0d | 2023-03-22 | UDF_G1 | Yes | Yes | Matt-TBD | FL4 | deliv | FL4-REVA | 03 | FL4 | FNTP | P2 | 1 | 1.7 | SDA Tie | 1 |  |  |  |  |  |  |  | OCT | Oct |  |  |  |  |  |
| CP-P2-01-07-SW-0005 |  | Review Draft Rev A - FSAR Section 1.7 (TO4 Team Review) | 10d | 2023-03-23 | 2023-04-05 | CP-P2-01-07-SW-0000 |  |  |  |  | 133d | 0d |  | UDF_G1 | Yes | Yes | Matt-TBD | FL4 | deliv |  | 03 | TO4 | FNTP | P2 | 1 | 1.7 |  | 2 | FIX |  |  |  |  |  |  | OCT |  |  |  |  |  |  |
| CP-P2-01-07-SW-0010 |  | Resolve Rev A Comments - FSAR Section 1.7 | 5d | 2023-04-06 | 2023-04-12 | CP-P2-01-07-SW-0005 |  |  |  |  | 133d | 0d |  | UDF_G1 | Yes | Yes | Matt-TBD | FL4 | deliv |  | 03 | FL4 | FNTP | P2 | 1 | 1.7 |  | 3 |  |  |  |  |  |  |  |  |  |  |  |  |  |  |
| CP-P2-01-07-SW-0012 |  | Confirm SDA Information and Inform Reviewers - FSAR Section 1.7 | 5d | 2023-04-13 | 2023-04-13 | CP-P2-01-07-SW-0010, PKM-0125 |  |  | 2023-04-13 | 2023-04-19 | 133d | 0d |  | UDF_G1 | Yes | Yes | Matt-TBD | FL4 | deliv |  | 03 | FL4 | FNTP | P2 | 1 | 1.7 | SDA Tie | 4 | FIX | F | FL4-REV0 | In parallel with Team Review (hold duration at 5d) |  |  |  |  |  |  |  |  |  |  |
| CP-P2-01-07-SW-0015 |  | Issue Rev 0 - FSAR Section 1.7 | 10d | 2023-04-13 | 2023-04-26 | CP-P2-01-07-SW-0012 |  |  |  |  | 133d | 123d |  | UDF_G1 | Yes | Yes | Matt-TBD | FL4 | deliv |  | 03 | FL4 | FNTP | P2 | 1 | 1.7 | SDA Tie | 5 |  | F | FL4-REV0 |  |  |  |  |  |  |  |  | oct update "Confirm SDA date" driving out |  |  |

Notes:
- CP-P2-01-05-SW-0000: 11B NOV EOM Notes: As of 29nov22 finish slip from 20dec22 (Need SDA)
- CP-P2-01-05-SW-0012: SDA cleanup notes: checked pushed out by pred
- CP-P2-01-06-SD-0000: SDA cleanup notes: Fluor topical technical report needed to support COLA from Nuscale / 10B OCT EOM Notes: oct update finish slip out from 21oct22 to 22sep23 dur from 15 to 230(verify this slip) / 11B NOV EOM Notes: As of 29nov22 finish slip from 28nov22 to 22sep23 new forecast finish Driving out COLA finish reduce to 22Aug23 Driven by FSAR section completions / 12A DEC MIDMONTH Notes: As of 12dec22 finish slip from 28nov22 to 22sep23 new forecast finish Driving out COLA finish Driven by FSAR section completions I have moved the forecast finish back to 22aug23 to issue the monthly update pending mitigation
- CP-P2-01-06-SW-0000: 10B OCT EOM Notes: oct update finish slip from 28oct22 / 11B NOV EOM Notes: As of 29nov22 finish slip from 01jun23 Link to NS input not avail until sept23
- CP-P2-01-06-SW-0010: 11B NOV EOM Notes: As of 29nov22 start slip from 16jun23 Link to NS input not avail until sept23
- CP-P2-01-07-SW-0000: 10B OCT EOM Notes: oct update finish slip from 28oct22 (new pred from S&L /Nuscale )
- CP-P2-01-07-SW-0005: 10B OCT EOM Notes: oct update

| ID | WBS | Activity | Duration | Start | Finish | Predecessors | Remaining | Planned start | Planned finish | Total float | Free float | Expected finish | JLG - Generic Field | zText_02 | z_Text-4 | zText_Level 3 Schedule | Deliverable Owner | Rebaseline details | doc type | 11B NOV EOM Notes | CFPP, LLC WBS Structure | Author | Period of Performance | Part | Chapter | Section | PSHA | UDF Indicator 01 | PREPDRFTREVA | SDA needed | activity step | SDA ties | SDA cleanup notes | SDA ACT | REV0 - SDA | 12B DEC EOM Notes | zText_RFI | zText_33 | 10A OCT MIDMONTH Notes |
| --- | --- | --- | --- | --- | --- | --- | --- | --- | --- | --- | --- | --- | --- | --- | --- | --- | --- | --- | --- | --- | --- | --- | --- | --- | --- | --- | --- | --- | --- | --- | --- | --- | --- | --- | --- | --- | --- | --- | --- |
|  | 08 | **CFPP - COLA Prep - Part 02 - Chapter 01 - Section 8 - Interfaces with Certified Design** |  | 2022-04-29 | 2023-09-26 |  |  |  |  |  |  |  |  |  |  |  |  |  |  |  |  |  |  |  |  |  |  |  |  |  |  |  |  |  |  |  |  |  |  |
|  | 01 | **CFPP - COLA Prep - Part 02 - Chapter 01 - Section 8 - Support Documents** |  | 2023-03-02 | 2023-04-12 |  |  |  |  |  |  |  |  |  |  |  |  |  |  |  |  |  |  |  |  |  |  |  |  |  |  |  |  |  |  |  |  |  |  |
| CP-P2-01-08-SD-0000 |  | Develop Table Identifying Departures from Approved Design | 30d | 2023-03-02 | 2023-04-12 | PKM-0065, CP-P7-01-01-SW-0015 FF |  |  |  | 98d | 71d |  | Tmonth CP XXX | Yes | CP-5 | Yes | Matt-TBD | NUSCALE | supt | As of 29nov22 pred start slip out forecast finish 22sep23 | 03 | NuScale | FNTP | P2 | 1 | 1.8 | PSHA |  |  |  |  |  |  |  |  |  |  |  |  |
|  | 02 | **CFPP - COLA Prep - Part 02 - Chapter 01 - Section 8 - Section Writing** |  | 2022-04-29 | 2023-09-26 |  |  |  |  |  |  |  |  |  |  |  |  |  |  |  |  |  |  |  |  |  |  |  |  |  |  |  |  |  |  |  |  |  |  |
| CP-P2-01-08-SW-0000 |  | Prepare Draft Rev A -Check Updated Supporting Documents -FSAR Section 1.8 | 331d | 2022-04-29 A | 2023-08-21 | CP-P2-01-08-SD-0000 FF+20d, IFM-SDA-TO4-0340 FF | 164d | 2022-04-25 | 2023-08-09 | 27d | 0d | 2023-08-21 | Tmonth CP XXX | Yes | CP-5 | Yes | Matt-TBD | FL4 | deliv |  | 03 | FL4 | FNTP | P2 | 1 | 1.8 | PSHA | UDF_G1 | FL4-REVA | SDA Tie | 1 |  |  |  |  |  |  |  |  |
| CP-P2-01-08-SW-0005 |  | Review Draft Rev A - FSAR Section 1.8 (TO4 Team Review) | 10d | 2023-08-22 | 2023-09-05 | CP-P2-01-08-SW-0000 |  |  |  | 27d | 0d |  | Tmonth CP XXX SI | Yes | CP-5 | Yes | Matt-TBD | FL4 | deliv |  | 03 | TO4 | FNTP | P2 | 1 | 1.8 | PSHA | UDF_G1 |  |  | 2 | FIX |  |  |  |  |  |  |  |
| CP-P2-01-08-SW-0010 |  | Resolve Rev A Comments - FSAR Section 1.8 | 5d | 2023-09-06 | 2023-09-12 | CP-P2-01-08-SW-0005 |  |  |  | 27d | 0d |  | CP XXX | Yes | CP-5 | Yes | Matt-TBD | FL4 | deliv |  | 03 | FL4 | FNTP | P2 | 1 | 1.8 | PSHA | UDF_G1 |  |  | 3 |  |  |  |  |  |  |  |  |
| CP-P2-01-08-SW-0012 |  | Confirm SDA Information and Inform Reviewers - FSAR Section 1.8 | 5d | 2023-09-13 | 2023-09-13 | CP-P2-01-08-SW-0010, PKM-0125 |  | 2023-09-13 | 2023-09-19 | 27d | 0d |  |  | Yes |  | Yes | Matt-TBD | FL4 | deliv |  | 03 | FL4 | FNTP | P2 | 1 | 1.1 |  | UDF_G1 |  | SDA Tie | 4 | FIX | checked pushed out by pred | F | FL4-REV0 | In parallel with Team Review (hold duration at 5d) |  |  |  |
| CP-P2-01-08-SW-0015 |  | Issue Rev 0 - FSAR Section 1.8 | 10d | 2023-09-13 | 2023-09-26 | CP-P2-01-08-SW-0012 |  |  |  | 27d | 17d |  |  | Yes | CP-5 | Yes | Matt-TBD | FL4 | deliv |  | 03 | FL4 | FNTP | P2 | 1 | 1.8 | PSHA | UDF_G1 |  | SDA Tie | 5 |  |  | F | FL4-REV0 |  |  |  |  |
|  | 09 | **CFPP - COLA Prep - Part 02 - Chapter 01 - Section 9 Conformance with Regulatory Criteria** |  | 2022-04-21 | 2023-10-19 |  |  |  |  |  |  |  |  |  |  |  |  |  |  |  |  |  |  |  |  |  |  |  |  |  |  |  |  |  |  |  |  |  |  |
|  | 01 | **CFPP - COLA Prep - Part 02 - Chapter 01 - Section 9 - Support Documents** |  | 2023-03-02 | 2023-04-12 |  |  |  |  |  |  |  |  |  |  |  |  |  |  |  |  |  |  |  |  |  |  |  |  |  |  |  |  |  |  |  |  |  |  |
| CP-P2-01-09-SD-0000 |  | Provide Input on Regulatory Criteria Conformance Site Specific Disposition Tables for COLA | 30d | 2023-03-02 | 2023-04-12 | CP-P7-01-01-SW-0015 FF |  |  |  | 108d | 98d |  |  | Yes |  | Yes | Matt-TBD | NUSCALE | supt | As of 29nov22 pred start slip out forecast finish 5oct23 | 03 | NuScale | FNTP | P2 | 1 | 1.9 |  |  |  |  |  |  |  |  |  |  | RFI 102 / 202 |  |  |
|  | 02 | **CFPP - COLA Prep - Part 02 - Chapter 01 - Section 9 - Section Writing** |  | 2022-04-21 | 2023-10-19 |  |  |  |  |  |  |  |  |  |  |  |  |  |  |  |  |  |  |  |  |  |  |  |  |  |  |  |  |  |  |  |  |  |  |
| CP-P2-01-09-SW-0000 |  | Prepare Draft Rev A -Check Updated Supporting Documents -FSAR Section 1.9 | 356d | 2022-04-21 A | 2023-09-14 | CP-P2-01-09-SD-0000 FF+10d, IFM-SDA-TO4-0000 FF+20d | 181d | 2022-04-18 | 2023-09-07 | 10d | 0d | 2023-09-14 | Tmonth CP XXX SI | Yes |  | Yes | Matt-TBD | FL4 | deliv |  | 03 | FL4 | FNTP | P2 | 1 | 1.9 |  | UDF_G1 | FL4-REVA | SDA Tie | 1 |  |  |  |  |  |  | Critical Path | oct update check with Matt for remaining duration |
| CP-P2-01-09-SW-0005 |  | Review Draft Rev A - FSAR Section 1.9 (TO4 Team Review) | 10d | 2023-09-15 | 2023-09-28 | CP-P2-01-09-SW-0000 |  |  |  | 10d | 0d |  | Tmonth CP XXX | Yes |  | Yes | Matt-TBD | FL4 | deliv |  | 03 | TO4 | FNTP | P2 | 1 | 1.9 |  | UDF_G1 |  |  | 2 | FIX |  |  |  |  |  |  |  |
| CP-P2-01-09-SW-0010 |  | Resolve Rev A Comments - FSAR Section 1.9 | 5d | 2023-09-29 | 2023-10-05 | CP-P2-01-09-SW-0005 |  |  |  | 10d | 0d |  | Tmonth CP XXX | Yes |  | Yes | Matt-TBD | FL4 | deliv |  | 03 | FL4 | FNTP | P2 | 1 | 1.9 |  | UDF_G1 |  |  | 3 |  |  |  |  |  |  |  |  |
| CP-P2-01-09-SW-0012 |  | Confirm SDA Information and Inform Reviewers - FSAR Section 1.9 | 5d | 2023-10-06 | 2023-10-06 | CP-P2-01-09-SW-0010, PKM-0125 |  | 2023-10-06 | 2023-10-12 | 10d | 0d |  |  | Yes |  | Yes | Matt-TBD | FL4 | deliv |  | 03 | FL4 | FNTP | P2 | 1 | 1.1 |  | UDF_G1 |  | SDA Tie | 4 | FIX | checked pushed out by pred | F | FL4-REV0 | In parallel with Team Review (hold duration at 5d) |  |  |  |
| CP-P2-01-09-SW-0015 |  | Issue Rev 0 - FSAR Section 1.9 | 10d | 2023-10-06 | 2023-10-19 | CP-P2-01-09-SW-0012 |  |  |  | 10d | 0d |  | Tmonth | Yes |  | Yes | Matt-TBD | FL4 | deliv |  | 03 | FL4 | FNTP | P2 | 1 | 1.9 |  | UDF_G1 |  | SDA Tie | 5 |  |  | F | FL4-REV0 |  |  |  |  |
|  | 10 | **CFPP - COLA Prep - Part 02 - Chapter 01 - Section10 - Nuke Pwr Plants Operated on Multi-Unit Sites** |  | 2022-04-04 | 2023-02-17 |  |  |  |  |  |  |  |  |  |  |  |  |  |  |  |  |  |  |  |  |  |  |  |  |  |  |  |  |  |  |  |  |  |  |
|  | 01 | **CFPP - COLA Prep - Part 02 - Chapter 01 - Section 10 - Support Documents** |  |  |  |  |  |  |  |  |  |  |  |  |  |  |  |  |  |  |  |  |  |  |  |  |  |  |  |  |  |  |  |  |  |  |  |  |  |
|  | 02 | **CFPP - COLA Prep - Part 02 - Chapter 01 - Section 10 - Section Writing** |  | 2022-04-04 | 2023-02-17 |  |  |  |  |  |  |  |  |  |  |  |  |  |  |  |  |  |  |  |  |  |  |  |  |  |  |  |  |  |  |  |  |  |  |
| CP-P2-01-10-SW-0000 |  | Prepare Draft Rev A -Check Updated Supporting Documents -FSAR Section 1.10 | 375d | 2022-04-04 A | 2023-01-13 | IFM-SDA-TO4-0350 FF+20d | 10d | 2022-04-28 | 2023-10-16 | 181d | 0d | 2023-01-13 |  | Yes |  | Yes | Matt-TBD | FL4 | deliv | As of 29nov22 finish moved forward from 7sep23 | 03 | FL4 | FNTP | P2 | 1 | 1.10 |  | UDF_G3 | FL4-REVA | SDA Tie | 1 |  |  |  |  |  |  |  | oct update check with Matt for remaining duration |
| CP-P2-01-10-SW-0005 |  | Review Draft Rev A - FSAR Section 1.10 (TO4 Team Review) | 10d | 2023-01-16 | 2023-01-27 | CP-P2-01-10-SW-0000 |  |  |  | 181d | 0d |  |  | Yes |  | Yes | Matt-TBD | FL4 | deliv |  | 03 | TO4 | FNTP | P2 | 1 | 1.10 |  | UDF_G1 |  |  | 2 | FIX |  |  |  |  |  |  |  |
| CP-P2-01-10-SW-0010 |  | Resolve Rev A Comments - FSAR Section 1.10 | 5d | 2023-01-30 | 2023-02-03 | CP-P2-01-10-SW-0005 |  |  |  | 181d | 0d |  |  | Yes |  | Yes | Matt-TBD | FL4 | deliv |  | 03 | FL4 | FNTP | P2 | 1 | 1.10 |  | UDF_G1 |  |  | 3 |  |  |  |  |  |  |  |  |
| CP-P2-01-10-SW-0012 |  | Confirm SDA Information and Inform Reviewers - FSAR Section 1.10 | 5d | 2023-02-06 | 2023-02-06 | CP-P2-01-10-SW-0010, CP-P2-01-10-SW-0010 FF, PKM-0125 |  | 2023-02-06 | 2023-02-10 | 181d | 0d |  |  | Yes |  | Yes | Matt-TBD | FL4 | deliv |  | 03 | FL4 | FNTP | P2 | 1 | 1.1 |  | UDF_G1 |  | SDA Tie | 4 | FIX | checked pushed out by pred | F | FL4-REV0 | In parallel with Team Review (hold duration at 5d) |  |  |  |
| CP-P2-01-10-SW-0015 |  | Issue Rev 0 - FSAR Section 1.10 | 10d | 2023-02-06 | 2023-02-17 | CP-P2-01-10-SW-0012 |  |  |  | 181d | 171d |  |  | Yes |  | Yes | Matt-TBD | FL4 | deliv |  | 03 | FL4 | FNTP | P2 | 1 | 1.10 |  | UDF_G1 |  | SDA Tie | 5 |  |  | F | FL4-REV0 |  |  |  |  |

Notes:
- CP-P2-01-08-SD-0000: 12A DEC MIDMONTH Notes: As of 12dec22 start slip from 19may23
- CP-P2-01-09-SD-0000: 12A DEC MIDMONTH Notes: As of 12dec22 start slip from 3jul23, finish driven by pred p7-01-01-sw-0015 FF +30d (Revised pred to FF+0d to reduce neg float)
- CP-P2-01-09-SW-0000: 12A DEC MIDMONTH Notes: As of 12dec22 finish driven by pred 01-09-sd-0000 FF+10d

| ID | WBS | Activity | Type | Duration | Start | Finish | Predecessors | Complete | Remaining | Planned start | Planned finish | Total float | Free float | Expected finish | UDF Indicator 01 | zText_02 | zText_RFI | zText_Level 3 Schedule | Rebaseline details | TWG | doc type | 12A DEC MIDMONTH Notes | Forecast Finish | CFPP, LLC WBS Structure | Author | Period of Performance | Part | Chapter | Section | Progress Deliv Sheet Milestone # | zText_33 | UDF Text 01 | JLG - Generic Field | COLA Critical Path Sched | Critcal Path | z_Text-4 | 10B OCT EOM Notes | PREPDRFTREVA | SDA needed | activity step | SDA ties | 10A OCT MIDMONTH Notes | Deliverable Owner | SDA cleanup notes | 9A SEP EOM Notes | SDA ACT | REV0 - SDA | PSHA | UDF Text 02 | VERIFIED MONTHLY UPDATE | 11B NOV EOM Notes |
| --- | --- | --- | --- | --- | --- | --- | --- | --- | --- | --- | --- | --- | --- | --- | --- | --- | --- | --- | --- | --- | --- | --- | --- | --- | --- | --- | --- | --- | --- | --- | --- | --- | --- | --- | --- | --- | --- | --- | --- | --- | --- | --- | --- | --- | --- | --- | --- | --- | --- | --- | --- |
|  | 02 | **CFPP - COLA Prep - Part 02 - Chapter 02 Site Characteristics and Site Parameters** |  |  | 2021-09-21 | 2023-10-31 |  |  |  |  |  |  |  |  |  |  |  |  |  |  |  |  |  |  |  |  |  |  |  |  |  |  |  |  |  |  |  |  |  |  |  |  |  |  |  |  |  |  |  |  |  |
|  | 0 | **CFPP - COLA Prep - Part 02 - Chapter 02 Site Characteristics and Site Parameters** |  |  | 2022-07-21 | 2023-10-31 |  |  |  |  |  |  |  |  |  |  |  |  |  |  |  |  |  |  |  |  |  |  |  |  |  |  |  |  |  |  |  |  |  |  |  |  |  |  |  |  |  |  |  |  |  |
|  | 0 | **CFPP - COLA Prep - Part 02 - Chapter 02 Site Characteristics and Site Parameters** |  |  | 2022-07-21 | 2023-10-31 |  |  |  |  |  |  |  |  |  |  |  |  |  |  |  |  |  |  |  |  |  |  |  |  |  |  |  |  |  |  |  |  |  |  |  |  |  |  |  |  |  |  |  |  |  |
|  | 1 | **CFPP - COLA Prep - Part 02 - Chapter 02 - Support Documents** |  |  | 2022-07-21 | 2023-06-30 |  |  |  |  |  |  |  |  |  |  |  |  |  |  |  |  |  |  |  |  |  |  |  |  |  |  |  |  |  |  |  |  |  |  |  |  |  |  |  |  |  |  |  |  |  |
| CP-P2-02-00-SD-0000 |  | Confirm NuScale Design Parameters - Prepare |  | 71d | 2022-07-21 A | 2022-12-02 A | PKM-0070, PKM-0220 FF, CP-P2-03-07-MS-0000, FI-GI-SSI-DR-0080 SS+20d, CP-P2-02-05-SHC-0070 FS+100d | 100% |  | 2022-12-01 | 2023-03-10 |  |  |  | UDF_G3 | Yes | RFI 102 | Yes | S&L | 1 | supt | As of 12dec22 revised to show not finished | 2022-12-08 | 03 | S&L | FNTP | P2 | 2 | 2.0 | 9 |  |  |  |  |  |  |  |  |  |  |  |  |  |  |  |  |  |  |  |  |  |
| CP-P2-02-00-SD-0005 |  | Define CFPP Site Characteristics - Prepare |  | 241d | 2022-07-21 A | 2023-06-30 | CP-P2-02-00-SD-0000 FF, CP-P2-02-03-SW-0110 FF, CP-P2-02-03-SW-0090 FF, CP-P2-02-04-SW-0265 FF, CP-P2-02-05-SW-0020 FF, CP-P2-02-02-SW-0005 FF, CP-P2-02-01-SW-0040 FF, PKM-0120 FF, PKM-0130 FF | 50% | 129d | 2023-05-19 | 2024-05-06 | 2d | 0d | 2023-06-30 | UDF_G1 | Yes |  | Yes | S&L | 1 | supt | As of 12dec22 updated as per S&L | 2023-06-30 | 03 | S&L | FNTP | P2 | 2 | 2.0 | 10 | Near Critical Path #2 - Meteorological Report | NuS | SI | 1 | 3 | CP-4 | oct update break tie p2-02-05-sw-0005 ff |  |  |  |  |  |  |  |  |  |  |  |  |  |  |
|  | 2 | **CFPP - COLA Prep - Part 02 - Chapter 02 - Section Writing** |  |  | 2023-07-03 | 2023-10-31 |  |  |  |  |  |  |  |  |  |  |  |  |  |  |  |  |  |  |  |  |  |  |  |  |  |  |  |  |  |  |  |  |  |  |  |  |  |  |  |  |  |  |  |  |  |
| CP-P2-02-01-SW-0120 |  | Prepare Draft Rev A - FSAR Section 2.0 |  | 55d | 2023-07-03 | 2023-09-19 | CP-P2-02-00-SD-0005 |  |  |  |  | 2d | 0d |  | UDF_G1 | Yes |  | Yes | S&L |  | deliv |  |  | 03 | S&L | FNTP | P2 | 2 | 2.0 |  | Near Critical Path #2 - Meteorological Report |  |  | 1 |  | CP-4 |  | S&L-REVA | No SDA | 1 |  |  |  |  |  |  |  |  |  |  |  |
| CP-P2-02-01-SW-0125 |  | Review Draft Rev A - FSAR Section 2.0 (TO4 Team Review) |  | 10d | 2023-09-20 | 2023-10-03 | CP-P2-02-01-SW-0120 |  |  |  |  | 2d | 0d |  | UDF_G1 | Yes |  | Yes | S&L |  | deliv |  |  | 03 | TO4 | FNTP | P2 | 2 | 2.0 |  | Near Critical Path #2 - Meteorological Report |  |  | 1 |  | CP-4 |  |  |  | 2 | FIX | oct update removed 2 day lag from pred |  |  |  |  |  |  |  |  |  |
| CP-P2-02-01-SW-0135 |  | Resolve Rev A Comments - FSAR Section 2.0 |  | 10d | 2023-10-04 | 2023-10-17 | CP-P2-02-01-SW-0125 |  |  |  |  | 2d | 0d |  | UDF_G1 | Yes |  | Yes | S&L |  | deliv |  |  | 03 | S&L | FNTP | P2 | 2 | 2.0 |  | Near Critical Path #2 - Meteorological Report |  |  | 1 |  | CP-4 |  |  |  | 3 |  |  |  |  |  |  |  |  |  |  |  |
| CP-P2-02-01-SW-0140 |  | Confirm SDA Information and Inform Reviewers - FSAR Section 2.0 |  | 5d | 2023-10-18 | 2023-10-18 | PKM-0125, CP-P2-02-01-SW-0135 |  |  | 2023-10-18 | 2023-10-24 | 2d | 0d |  | UDF_G1 | Yes |  | Yes | FL4 |  | deliv |  |  | 03 | FL4 | FNTP | P2 | 1 | 1.1 |  |  |  |  |  |  |  |  |  | SDA Tie | 4 | FIX |  | Matt-TBD | checked pushed out by pred | added pred | S | S&L-REV0 |  |  |  |  |
| CP-P2-02-01-SW-0145 |  | Issue Rev 0 - FSAR Section 2.0 |  | 10d | 2023-10-18 | 2023-10-31 | CP-P2-02-01-SW-0140, CP-P2-02-01-SW-0135 |  |  |  |  | 2d | 0d |  | UDF_G1 | Yes |  | Yes | S&L |  | deliv |  |  | 03 | S&L | FNTP | P2 | 2 | 2.0 |  | Near Critical Path #2 - Meteorological Report |  |  | 1 |  | CP-4 |  |  | SDA Tie | 5 |  |  |  |  |  | S | S&L-REV0 | NPSHA |  |  |  |
|  | 01 | **CFPP - COLA Prep - Part 02 - Chapter 02 - Section 1 - Geography & Demography** |  |  | 2021-11-15 | 2023-10-31 |  |  |  |  |  |  |  |  |  |  |  |  |  |  |  |  |  |  |  |  |  |  |  |  |  |  |  |  |  |  |  |  |  |  |  |  |  |  |  |  |  |  |  |  |  |
| CP-P2-02-01-SD-0000 |  | Develop Licensing Strategy Document |  | 59d | 2021-11-15 A | 2022-01-25 A | PKM-0065 | 100% |  | 2021-11-15 | 2022-02-14 |  |  |  | UDF_G3 | Yes | RFI 202 / 322 | Yes | NUSCALE |  | supt |  |  | 03 | NuScale | FNTP | P2 | 2 | 1 |  |  |  |  |  |  |  |  |  |  |  |  |  |  |  |  |  |  |  |  |  |  |
|  | 00 | **CFPP - COLA Prep - Part 02 - Chapter 02 - Section 1 - Geography & Demography** |  |  | 2023-07-03 | 2023-10-31 |  |  |  |  |  |  |  |  |  |  |  |  |  |  |  |  |  |  |  |  |  |  |  |  |  |  |  |  |  |  |  |  |  |  |  |  |  |  |  |  |  |  |  |  |  |
|  | 01 | **CFPP - COLA Prep - Part 02 - Chapter 02 - Section 1 - Support Documents** |  |  |  |  |  |  |  |  |  |  |  |  |  |  |  |  |  |  |  |  |  |  |  |  |  |  |  |  |  |  |  |  |  |  |  |  |  |  |  |  |  |  |  |  |  |  |  |  |  |
|  | 02 | **CFPP - COLA Prep - Part 02 - Chapter 02 - Section 1 - Section Writing** |  |  | 2023-07-03 | 2023-10-31 |  |  |  |  |  |  |  |  |  |  |  |  |  |  |  |  |  |  |  |  |  |  |  |  |  |  |  |  |  |  |  |  |  |  |  |  |  |  |  |  |  |  |  |  |  |
| CP-P2-02-01-SW-0100 |  | Prepare Draft Rev A - FSAR Section 2.1 |  | 55d | 2023-07-03 | 2023-09-19 | CP-P2-02-00-SD-0005 |  |  |  |  | 2d | 0d |  | UDF_G1 | Yes |  | Yes | S&L |  | deliv |  |  | 03 | S&L | FNTP | P2 | 2 | 2.1 | 11 | Near Critical Path #2 - Meteorological Report |  |  |  | 3 |  |  | S&L-REVA | No SDA | 1 |  |  |  |  |  |  |  |  |  |  |  |
| CP-P2-02-01-SW-0105 |  | Review Draft Rev A - FSAR Section 2.1 (TO4 Team Review) |  | 10d | 2023-09-20 | 2023-10-03 | CP-P2-02-01-SW-0100 |  |  |  |  | 2d | 0d |  | UDF_G1 | Yes |  | Yes | S&L |  | deliv |  |  | 03 | TO4 | FNTP | P2 | 2 | 2.1 | 11 | Near Critical Path #2 - Meteorological Report |  |  |  | 3 |  |  |  |  | 2 | FIX |  |  |  |  |  |  |  |  |  |  |
| CP-P2-02-01-SW-0110 |  | Resolve Rev A Comments - FSAR Section 2.1 |  | 10d | 2023-10-04 | 2023-10-17 | CP-P2-02-01-SW-0105 |  |  |  |  | 2d | 0d |  | UDF_G1 | Yes |  | Yes | S&L |  | deliv |  |  | 03 | S&L | FNTP | P2 | 2 | 2.1 | 11 | Near Critical Path #2 - Meteorological Report |  |  |  | 3 |  |  |  |  | 3 |  |  |  |  |  |  |  |  |  |  |  |
| CP-P2-02-01-SW-0111 |  | Confirm SDA Information and Inform Reviewers - FSAR Section 2.1 |  | 1d | 2023-10-18 | 2023-10-18 | PKM-0125, CP-P2-02-01-SW-0110 |  |  |  |  | 2d | 0d |  | UDF_G1 | Yes |  | Yes | FL4 |  | deliv |  |  | 03 | S&L | FNTP | P2 | 1 | 1.1 |  |  |  |  |  | 3 |  |  |  | SDA Tie | 4 | FIX |  | Matt-TBD | checked pushed out by pred | added pred | S | S&L-REV0 |  |  |  |  |
| CP-P2-02-01-SW-0115 |  | Issue Rev 0 - FSAR Section 2.1 |  | 10d | 2023-10-18 | 2023-10-31 | CP-P2-02-01-SW-0110, CP-P2-02-01-SW-0111 |  |  |  |  | 2d | 0d |  | UDF_G1 | Yes |  | Yes | S&L |  | deliv |  |  | 03 | S&L | FNTP | P2 | 2 | 2.1 | 11 | Near Critical Path #2 - Meteorological Report |  |  |  | 3 |  |  |  | SDA Tie | 5 |  |  |  |  |  | S | S&L-REV0 | NPSHA |  |  |  |
|  | 01 | **CFPP - COLA Prep - Part 02 - Chapter 02 - Section 1.1 - Location & Description** |  |  | 2022-08-26 | 2023-10-31 |  |  |  |  |  |  |  |  |  |  |  |  |  |  |  |  |  |  |  |  |  |  |  |  |  |  |  |  |  |  |  |  |  |  |  |  |  |  |  |  |  |  |  |  |  |
|  | 01 | **CFPP - COLA Prep - Part 02 - Chapter 02 - Section 1.1 - Support Documents** |  |  | 2022-08-26 | 2022-11-22 |  |  |  |  |  |  |  |  |  |  |  |  |  |  |  |  |  |  |  |  |  |  |  |  |  |  |  |  |  |  |  |  |  |  |  |  |  |  |  |  |  |  |  |  |  |
| CP-P2-02-01-SD-0010 |  | Provide Effluent (Dose) Release Locations | milestone | 0d | 2022-08-26 A | 2022-08-26 A | PKM-0065, IFM-CFP-TO4-0005, IFM-TO5-TO4-0000 | 100% |  | 2022-08-29 | 2022-08-29 |  |  |  |  | Yes |  | Yes | NUSCALE |  | supt |  |  | 03 | NuScale | FNTP | P2 | 2 | 2.1.1 |  |  |  |  |  |  |  |  |  |  |  |  |  |  |  | Sep update |  |  |  | Is S&L requesting info for this from anyone? S& L does this. | X |  |
| CP-P2-02-01-SD-0005 |  | Determine Reactor Coordinates / Site Center Point Calculation - Prepare |  | 30d | 2022-11-22 A | 2022-11-22 A | IFM-TO5-TO4-0000, CP-P2-02-00-SD-0000 SS | 100% |  | 2022-11-30 | 2023-01-11 |  |  |  | UDF_G1 | Yes |  | Yes | S&L |  | supt |  |  | 03 | S&L | FNTP | P2 | 2 | 2.1.1 | 55 | Near Critical Path #2 - Meteorological Report | NuS | SI |  |  |  |  |  |  |  |  |  |  |  |  |  |  |  |  |  | As of Nov 29 no requirement for this activity |

Notes:
- CP-P2-02-00-SD-0000: 12B DEC EOM Notes: as of 30dec22 updated Forecast Date not incorporated PDL AF 12/2 / CFPP - Contractor's Remarks: as of 30dec22 updated Forecast Date not incorporated PDL AF 12/2
- CP-P2-02-00-SD-0005: 12B DEC EOM Notes: RFI issued to Fluor 10Jan23 / CFPP - Contractor's Remarks: as of 30dec22 updated Actual Start 7/17 never incorporated
- CP-P2-02-01-SW-0140: 12B DEC EOM Notes: In parallel with Team Review (hold duration at 5d)
- CP-P2-02-01-SW-0111: 12B DEC EOM Notes: In parallel with Team Review (hold duration at 5d)
- CP-P2-02-01-SD-0010: Schedule Notes: Jan 2022 Month End - NuScale Will Issue from SPD on / 02-Aug-2022
- CP-P2-02-01-SD-0005: 12B DEC EOM Notes: as of 30dec22 updated Calc not needed. Center point provided by FL. / CFPP - Contractor's Remarks: as of 30dec22 updated Calc not needed. Center point provided by FL.

| ID | WBS | Activity | Duration | Start | Finish | Predecessors | Complete | Remaining | Planned start | Planned finish | Total float | Free float | Expected finish | UDF Indicator 01 | zText_33 | zText_02 | Critcal Path | zText_Level 3 Schedule | Rebaseline details | TWG | doc type | PREPDRFTREVA | 11B NOV EOM Notes | Forecast Finish | CFPP, LLC WBS Structure | Author | Period of Performance | Part | Chapter | Section | Progress Deliv Sheet Milestone # | SDA needed | activity step | SDA ties | Deliverable Owner | SDA cleanup notes | 9A SEP EOM Notes | SDA ACT | REV0 - SDA | 12B DEC EOM Notes | PSHA | zText_RFI | Remarks | zText_CFPP Look Ahead Notes | 10A OCT MIDMONTH Notes | UDF Text 02 | Other |
| --- | --- | --- | --- | --- | --- | --- | --- | --- | --- | --- | --- | --- | --- | --- | --- | --- | --- | --- | --- | --- | --- | --- | --- | --- | --- | --- | --- | --- | --- | --- | --- | --- | --- | --- | --- | --- | --- | --- | --- | --- | --- | --- | --- | --- | --- | --- | --- |
|  | 02 | **CFPP - COLA Prep - Part 02 - Chapter 02 - Section 1.1 - Section Writing** |  | 2022-11-04 | 2023-10-31 |  |  |  |  |  |  |  |  |  |  |  |  |  |  |  |  |  |  |  |  |  |  |  |  |  |  |  |  |  |  |  |  |  |  |  |  |  |  |  |  |  |  |
| CP-P2-02-01-SW-0000 |  | Prepare Draft Rev A - FSAR Section 2.1.1 | 55d | 2022-11-04 A | 2023-09-19 | CP-P2-02-00-SD-0005 FF, CP-P2-02-00-SD-0000 SS, CP-P2-02-01-SD-0005 SS, IFM-CFP-TO4-0005, CP-P2-02-01-SD-0010 | 15% | 184d | 2023-07-03 | 2023-09-19 | 2d | 0d | 2023-09-19 | UDF_G1 | Near Critical Path #2 - Meteorological Report | Yes | 3 | Yes | S&L | 1 | deliv | S&L-REVA | As of 29nov22 started | 2023-09-19 | 03 | S&L | FNTP | P2 | 2 | 2.1.1 | 54 | No SDA | 1 |  |  |  |  |  |  |  |  |  |  |  |  |  |  |
| CP-P2-02-01-SW-0005 |  | Review Draft Rev A - FSAR Section 2.1.1 (TO4 Team Review) | 10d | 2023-09-20 | 2023-10-03 | CP-P2-02-01-SW-0000 |  |  |  |  | 2d | 0d |  | UDF_G1 | Near Critical Path #2 - Meteorological Report | Yes | 3 | Yes | S&L | 1 | deliv |  |  |  | 03 | TO4 | FNTP | P2 | 2 | 2.1.1 | 54 |  | 2 | FIX |  |  |  |  |  |  |  |  |  |  |  |  |  |
| CP-P2-02-01-SW-0010 |  | Resolve Rev A Comments - FSAR Section 2.1.1 | 10d | 2023-10-04 | 2023-10-17 | CP-P2-02-01-SW-0005 |  |  |  |  | 2d | 0d |  | UDF_G1 | Near Critical Path #2 - Meteorological Report | Yes | 3 | Yes | S&L | 1 | deliv |  |  |  | 03 | S&L | FNTP | P2 | 2 | 2.1.1 | 54 |  | 3 |  |  |  |  |  |  |  |  |  |  |  |  |  |  |
| CP-P2-02-01-SW-0013 |  | Confirm SDA Information and Inform Reviewers - FSAR Section 2.1.1 | 1d | 2023-10-18 | 2023-10-18 | PKM-0125, CP-P2-02-01-SW-0010 |  |  |  |  | 2d | 0d |  | UDF_G1 |  | Yes | 3 | Yes | FL4 |  | deliv |  |  |  | 03 | S&L | FNTP | P2 | 1 | 1.1 |  | SDA Tie | 4 | FIX | Matt-TBD | checked pushed out by pred | added pred | S | S&L-REV0 | In parallel with Team Review (hold duration at 5d) |  |  |  |  |  |  |  |
| CP-P2-02-01-SW-0015 |  | Issue Rev 0 - FSAR Section 2.1.1 | 10d | 2023-10-18 | 2023-10-31 | CP-P2-02-01-SW-0013, CP-P2-02-01-SW-0010 |  |  |  |  | 2d | 0d |  | UDF_G3 | Near Critical Path #2 - Meteorological Report | Yes | 3 | Yes | S&L | 1 | deliv |  |  |  | 03 | S&L | FNTP | P2 | 2 | 2.1.1 | 54 | SDA Tie | 5 |  |  |  |  | S | S&L-REV0 |  | NPSHA |  |  |  |  |  |  |
|  | 02 | **CFPP - COLA Prep - Part 02 - Chapter 02 - Section 1.2 - Exclusion Area Authority & Control** |  | 2022-02-11 | 2023-01-27 |  |  |  |  |  |  |  |  |  |  |  |  |  |  |  |  |  |  |  |  |  |  |  |  |  |  |  |  |  |  |  |  |  |  |  |  |  |  |  |  |  |  |
|  | 01 | **CFPP - COLA Prep - Part 02 - Chapter 02 - Section 1.2 - Support Documents** |  | 2022-02-11 | 2022-03-30 |  |  |  |  |  |  |  |  |  |  |  |  |  |  |  |  |  |  |  |  |  |  |  |  |  |  |  |  |  |  |  |  |  |  |  |  |  |  |  |  |  |  |
| CP-P2-02-01-SD-0020 |  | Provide Legal Description of the Exclusion Area Authority & Control | 30d | 2022-02-11 A | 2022-03-30 A | PKM-0070, IFM-CFP-TO4-0005 | 100% |  | 2022-01-31 | 2022-03-11 |  |  |  | UDF_G3 |  | Yes |  | Yes | S&L |  | supt |  |  |  | 03 | S&L | FNTP | P2 | 2 | 2.1.2 |  |  |  |  |  |  |  |  |  |  |  | RFI 102 |  |  |  |  |  |
|  | 02 | **CFPP - COLA Prep - Part 02 - Chapter 02 - Section 1.2 - Section Writing** |  | 2022-03-18 | 2023-01-27 |  |  |  |  |  |  |  |  |  |  |  |  |  |  |  |  |  |  |  |  |  |  |  |  |  |  |  |  |  |  |  |  |  |  |  |  |  |  |  |  |  |  |
| CP-P2-02-01-SW-0020 |  | Prepare Draft Rev A - FSAR Section 2.1.2 | 20d | 2022-03-18 A | 2022-04-08 A | IFM-CFP-TO4-0005, CP-P2-02-01-SD-0020 | 100% |  | 2022-03-14 | 2022-04-08 |  |  |  | UDF_G1 | Near Critical Path #2 - Meteorological Report | Yes |  |  | S&L |  | deliv | S&L-REVA |  |  | 03 | S&L | FNTP | P2 | 2 | 2.1.2 | 56 | No SDA | 1 |  |  |  |  |  |  |  |  |  |  |  |  |  |  |
| CP-P2-02-01-SW-0025 |  | Review Draft Rev A - FSAR Section 2.1.2 (TO4 Team Review) | 10d | 2022-04-11 A | 2022-09-01 A | CP-P2-02-01-SW-0020 | 100% |  | 2022-04-11 | 2022-04-22 |  |  |  | UDF_G1 | Near Critical Path #2 - Meteorological Report | Yes |  |  | S&L |  | deliv |  |  |  | 03 | S&L | FNTP | P2 | 2 | 2.1.2 | 56 |  | 2 | NFIX |  |  | Sep update |  |  |  |  |  | Awaiting certrec new date 7/25 +10days |  |  |  |  |
| CP-P2-02-01-SW-0030 |  | Resolve Rev A Comments - FSAR Section 2.1.2 | 10d | 2022-08-09 A | 2022-09-02 A | CP-P2-02-01-SW-0025 FF | 100% |  | 2022-08-09 | 2022-08-22 |  |  |  | UDF_G1 | Near Critical Path #2 - Meteorological Report | Yes |  |  | S&L |  | deliv |  |  |  | 03 | S&L | FNTP | P2 | 2 | 2.1.2 | 56 |  | 3 |  |  |  | Sep update |  |  |  |  |  |  | Y |  |  |  |
| CP-P2-02-01-SW-0012 |  | Confirm SDA Information and Inform Reviewers - FSAR Section | 5d | 2023-01-04 | 2023-01-10 | PKM-0125, CP-P2-02-01-SW-0030 |  |  |  |  | 196d | 0d |  | UDF_G1 |  | Yes |  | Yes | FL4 |  | deliv |  |  |  | 03 | S&L | FNTP | P2 | 2 | 2.1.2 |  | No SDA | 4 | NFIX | Matt-TBD |  |  | S | S&L-REV0 |  |  |  |  |  |  |  |  |
| CP-P2-02-01-SW-0035 |  | Issue Rev 0 - FSAR Section 2.1.2 | 10d | 2023-01-11 | 2023-01-27 | CP-P2-02-01-SW-0012 |  |  | 2023-01-11 | 2023-01-24 | 196d | 0d | 2023-01-27 | UDF_G1 | Near Critical Path #2 - Meteorological Report | Yes |  | Yes | S&L |  | deliv |  |  | 2023-01-27 | 03 | S&L | FNTP | P2 | 2 | 2.1.2 | 56 | No SDA | 5 |  |  |  |  | S | S&L-REV0 |  |  |  |  |  | oct update "Confirm SDA date" driving out |  |  |
|  | 03 | **CFPP - COLA Prep - Part 02 - Chapter 02 - Section 1.3 - Population** |  | 2022-01-24 | 2023-01-17 |  |  |  |  |  |  |  |  |  |  |  |  |  |  |  |  |  |  |  |  |  |  |  |  |  |  |  |  |  |  |  |  |  |  |  |  |  |  |  |  |  |  |
|  | 01 | **CFPP - COLA Prep - Part 02 - Chapter 02 - Section 1.3 - Support Documents** |  | 2022-01-24 | 2022-07-25 |  |  |  |  |  |  |  |  |  |  |  |  |  |  |  |  |  |  |  |  |  |  |  |  |  |  |  |  |  |  |  |  |  |  |  |  |  |  |  |  |  |  |
| CP-P2-02-01-SD-0035 |  | Request from INL / Provide Demographic Info for the INL Site | 16d | 2022-01-24 A | 2022-03-21 A | PKM-0070, B-000-0065 FF+8d | 100% |  | 2022-01-31 | 2022-02-21 |  |  |  | UDF_G3 |  | Yes |  | Yes | S&L |  | supt |  |  |  | 03 | S&L | FNTP | P2 | 2 | 2.1.3 |  |  |  |  |  |  |  |  |  |  |  | RFI 102 |  |  |  |  |  |
| CP-P2-02-01-SD-0055 |  | Conduct Demographic Analysis (COL Item 2.1-1) | 30d | 2022-01-24 A | 2022-07-25 A | CP-P2-02-01-SD-0050 FF, CP-P2-02-01-SD-0035 SS | 100% |  | 2022-03-21 | 2022-04-29 |  |  |  | UDF_G3 |  | Yes |  | Yes | S&L |  | supt |  |  |  | 03 | S&L | FNTP | P2 | 2 | 2.1.3 |  |  |  |  |  |  |  |  |  |  |  |  |  |  |  |  |  |
| CP-P2-02-01-SD-0050 |  | Review Population Census Data | 5d | 2022-02-04 A | 2022-03-21 A | CP-P2-02-01-SD-0035 SS | 100% |  | 2022-02-16 | 2022-02-22 |  |  |  | UDF_G3 |  | Yes |  | Yes | S&L |  | supt |  |  |  | 03 | S&L | FNTP | P2 | 2 | 2.1.3 |  |  |  |  |  |  |  |  |  |  |  |  |  |  |  |  |  |
| CP-P2-02-01-SD-0030 |  | Provide Description of the EAB & control | 30d | 2022-02-11 A | 2022-03-30 A | PKM-0070, IFM-TO5-TO4-0000, IFM-CFP-TO4-0005 | 100% |  | 2022-01-31 | 2022-03-11 |  |  |  | UDF_G3 |  | Yes |  | Yes | S&L |  | supt |  |  |  | 03 | S&L | FNTP | P2 | 2 | 2.1.3 |  |  |  |  |  |  |  |  |  |  |  |  |  |  |  |  |  |
| CP-P2-02-01-SD-0025 |  | Prepare Site Location & Site Plan Figures based on NuScale Design - Prepare | 20d | 2022-02-21 A | 2022-04-01 A | PKM-0070, IFM-TO5-TO4-0000, IFM-CFP-TO4-0005 | 100% |  | 2022-01-31 | 2022-02-25 |  |  |  | UDF_G3 |  | Yes |  | Yes | S&L |  | supt |  |  |  | 03 | S&L | FNTP | P2 | 2 | 2.1.3 |  |  |  |  |  |  |  |  |  |  |  |  |  |  |  | This should point to 2.5.4? |  |
| CP-P2-02-01-SD-0045 |  | Prepare GIS Figures - Population Maps | 40d | 2022-03-23 A | 2022-07-25 A | CP-P2-02-01-SD-0025, CP-P2-02-02-SD-0025 FF, CP-P2-02-01-SD-0050 FF, CP-P2-02-01-SD-0055 FF | 100% |  | 2022-04-18 | 2022-06-13 |  |  |  | UDF_G3 |  | Yes |  |  | S&L |  | supt |  |  |  | 03 | S&L | FNTP | P2 | 2 | 2.1.3 |  |  |  |  |  |  |  |  |  |  |  |  |  |  |  |  |  |
| CP-P2-02-01-SD-0026 |  | Prepare Site Location & Site Plan Figures based on NuScale Design - TO4 External Review / Comments Received | 5d | 2022-05-02 A | 2022-06-22 A | CP-P2-02-01-SD-0025 | 100% |  | 2022-05-02 | 2022-05-06 |  |  |  |  |  |  |  |  |  |  | supt |  |  |  |  | TO4 |  |  | 2 | 2.1.3 |  |  |  |  |  |  |  |  |  |  |  |  |  |  |  |  | cal |
| CP-P2-02-01-SD-0027 |  | Prepare Site Location & Site Plan Figures based on NuScale Design - Comment Resolution / Issue Final | 10d | 2022-06-23 A | 2022-06-30 A | CP-P2-02-01-SD-0026 | 100% |  | 2022-06-13 | 2022-06-24 |  |  |  |  |  |  |  |  |  |  | supt |  |  |  |  | S&L |  | P2 | 2 | 2.1.3 |  |  |  |  |  |  |  |  |  |  |  |  |  |  |  |  | cal |

| ID | WBS | Activity | Duration | Start | Finish | Predecessors | Complete | Remaining | Planned start | Planned finish | Total float | Free float | Expected finish | UDF Indicator 01 | zText_02 | zText_Level 3 Schedule | VERIFIED MONTHLY UPDATE | Rebaseline details | NEED UPDATE | Monthly Variance | doc type | 10B OCT EOM Notes | PREPDRFTREVA | 10C OCT Monthly Report Notes | CFPP, LLC WBS Structure | Author | Period of Performance | Part | Chapter | Section | SDA needed | activity step | SDA ties | 11A NOV MIDMONTH Notes | 11B NOV EOM Notes | Deliverable Owner | SDA ACT | REV0 - SDA | 10A OCT MIDMONTH Notes | Progress Deliv Sheet Milestone # | Other | Comments | SDA cleanup notes | Forecast Finish | CFPP Eval | 12A DEC MIDMONTH Notes | Forecast Start | zText_CFPP Look Ahead Notes |
| --- | --- | --- | --- | --- | --- | --- | --- | --- | --- | --- | --- | --- | --- | --- | --- | --- | --- | --- | --- | --- | --- | --- | --- | --- | --- | --- | --- | --- | --- | --- | --- | --- | --- | --- | --- | --- | --- | --- | --- | --- | --- | --- | --- | --- | --- | --- | --- | --- |
|  | 02 | **CFPP - COLA Prep - Part 02 - Chapter 02 - Section 1.3 - Section Writing** |  | 2022-07-20 | 2023-01-17 |  |  |  |  |  |  |  |  |  |  |  |  |  |  |  |  |  |  |  |  |  |  |  |  |  |  |  |  |  |  |  |  |  |  |  |  |  |  |  |  |  |  |  |
| CP-P2-02-01-SW-0040 |  | Prepare Draft Rev A - FSAR Section 2.1.3 | 24d | 2022-07-20 A | 2022-10-11 A | CP-P2-02-01-SD-0055 FS+5d, CP-P2-02-01-SD-0030, CP-P2-02-01-SD-0045, CP-P2-02-01-SD-0027 FF | 100% |  | 2022-08-01 | 2022-09-01 |  |  |  | UDF_G3 | Yes | Yes | X | S&L | OCT | Oct | deliv | oct update | S&L-REVA | in S&L report as delayed (unconfirmed) | 03 | S&L | FNTP | P2 | 2 | 2.1.3 | No SDA | 1 |  |  |  |  |  |  |  |  |  |  |  |  |  |  |  |  |
| CP-P2-02-01-SW-0045 |  | Review Draft Rev A - FSAR Section 2.1.3 (TO4 Team Review) | 10d | 2022-10-12 A | 2022-11-11 A | CP-P2-02-01-SW-0040 | 100% |  | 2022-10-10 | 2022-10-21 |  |  |  | UDF_G1 | Yes | Yes |  | S&L | OCT | Oct | deliv | oct update finish slip out from 21oct22 |  | in S&L report as delayed (unconfirmed) | 03 | TO4 | FNTP | P2 | 2 | 2.1.3 |  | 2 | NFIX | As of 15nov 22 actual finish 11nov22 | As of 29nov22 complete (based on S&L update) |  |  |  |  |  |  |  |  |  |  |  |  |  |
| CP-P2-02-01-SW-0050 |  | Resolve Rev A Comments - FSAR Section 2.1.3 | 5d | 2022-11-14 A | 2022-11-23 A | CP-P2-02-01-SW-0045 | 100% |  | 2022-11-10 | 2022-11-16 |  |  |  | UDF_G1 | Yes | Yes |  | S&L | OCT |  | deliv | oct update pred slip out |  | in S&L report as delayed (unconfirmed) | 03 | S&L | FNTP | P2 | 2 | 2.1.3 |  | 3 |  | As of 15nov 22 forecast fin 21nov22 | As of 29nov22 actual start 14nov finish 23nov |  |  |  |  |  |  |  |  |  |  |  |  |  |
| CP-P2-02-01-SW-0011 |  | Confirm SDA Information and Inform Reviewers - FSAR Section 2.1.3 | 5d | 2023-01-04 | 2023-01-10 | CP-P2-02-01-SW-0050, PKM-0125 |  |  |  |  | 204d | 0d |  | UDF_G1 | Yes | Yes |  | FL4 |  |  | deliv |  |  | in S&L report as delayed (unconfirmed) | 03 | S&L | FNTP | P2 | 2 | 2.1.3 | No SDA | 4 | NFIX |  |  | Matt-TBD | S | S&L-REV0 |  |  |  |  |  |  |  |  |  |  |
| CP-P2-02-01-SW-0055 |  | Issue Rev 0 - FSAR Section 2.1.3 | 5d | 2023-01-11 | 2023-01-17 | CP-P2-02-01-SW-0011 |  |  |  |  | 204d | 202d |  | UDF_G1 | Yes | Yes |  | S&L |  |  | deliv |  |  | in S&L report as delayed (unconfirmed) | 03 | S&L | FNTP | P2 | 2 | 2.1.3 | No SDA | 5 |  |  |  |  | S | S&L-REV0 | oct update "Confirm SDA date" driving out |  |  |  |  |  |  |  |  |  |
|  | 02 | **CFPP - COLA Prep - Part 02 - Chapter 02 - Section 2 -Nearby Indust, Transport, & Military Facilities** |  | 2022-01-10 | 2023-04-06 |  |  |  |  |  |  |  |  |  |  |  |  |  |  |  |  |  |  |  |  |  |  |  |  |  |  |  |  |  |  |  |  |  |  |  |  |  |  |  |  |  |  |  |
|  | 01 | **CFPP - COLA Prep - Part 02 - Chapter 02 - Section 2 - Support Documents** |  | 2022-01-10 | 2023-03-09 |  |  |  |  |  |  |  |  |  |  |  |  |  |  |  |  |  |  |  |  |  |  |  |  |  |  |  |  |  |  |  |  |  |  |  |  |  |  |  |  |  |  |  |
| CP-P2-02-02-SD-0005 |  | Provide Info on Nearby Facilities / Transportation - Prepare | 16d | 2022-01-10 A | 2022-03-11 A | PKM-0070, B-000-0065 FF+8d | 100% |  | 2022-01-31 | 2022-02-21 |  |  |  | UDF_G3 | Yes | Yes |  | S&L |  |  | supt |  |  |  | 03 | S&L | FNTP | P2 | 2 | 2.2 |  |  |  |  |  |  |  |  |  | 18 |  |  |  |  |  |  |  |  |
| CP-P2-02-02-SD-0010 |  | Provide Dimensions of Safety-Related Buildings | 30d | 2022-02-09 A | 2022-04-19 A | IFM-TO5-TO4-0000 | 100% |  | 2022-01-31 | 2022-03-11 |  |  |  | UDF_G3 | Yes | Yes |  | S&L |  |  | supt |  |  |  | 03 | S&L | FNTP | P2 | 2 | 2.2 |  |  |  |  |  |  |  |  |  | 17 |  |  |  |  |  |  |  |  |
| CP-P2-02-02-SD-0020 |  | Identify Nearby Hazards at CFPP Site - Prepare | 45d | 2022-02-25 A | 2022-06-30 A | CP-P2-02-02-SD-0005 | 100% |  | 2022-02-28 | 2022-04-29 |  |  |  | UDF_G3 | Yes | Yes |  | S&L |  |  | supt |  |  |  | 03 | S&L | FNTP | P2 | 2 | 2.2 |  |  |  |  |  |  |  |  |  | 12 |  |  |  |  |  |  |  |  |
| CP-P2-02-02-SD-0006 |  | Provide Info on Nearby Facilities / Transportation - TO4 External Review / Comments Received | 5d | 2022-03-14 A | 2022-08-15 A | CP-P2-02-02-SD-0005 | 100% |  | 2022-05-02 | 2022-05-06 |  |  |  |  |  |  |  |  |  |  | supt |  |  |  |  | S&L |  |  | 2 | 2.2 |  |  |  |  |  |  |  |  |  |  | cal | x |  |  |  |  |  |  |
| CP-P2-02-02-SD-0025 |  | Prepare GIS Figures for Hazard Evaluations - Prepare | 44d | 2022-04-05 A | 2022-07-28 A | CP-P2-02-02-SD-0005, CP-P2-02-01-SD-0025, CP-P2-02-02-SD-0020 FF+10d | 100% |  | 2022-04-05 | 2022-06-06 |  |  |  | UDF_G3 | Yes |  |  | S&L |  |  | supt |  |  |  | 03 | S&L | FNTP | P2 | 2 | 2.2 |  |  |  |  |  |  |  |  |  | 15 |  |  | slid 1 jul to 11 jul |  |  |  |  |  |
| CP-P2-02-02-SD-0015 |  | Wildfire/ Incident Heat Flux Analysis - Prepare | 42d | 2022-04-15 A | 2022-09-30 A | CP-P2-02-01-SD-0025, PKM-0070, B-000-0065 | 100% |  | 2022-04-15 | 2022-06-14 |  |  |  | UDF_G3 | Yes |  |  | S&L |  |  | supt | oct update |  |  | 03 | S&L | FNTP | P2 | 2 | 2.2 |  |  |  |  |  |  |  |  |  | 19 |  |  | slid 6 - 29 -22 to 7-19-22 |  |  |  |  |  |
| CP-P2-02-02-SD-0030 |  | Prepare Hazard / Transportation Analysis - Prepare | 30d | 2022-06-07 A | 2022-09-30 A | CP-P2-02-02-SD-0020 FF+10d, CP-P2-02-01-SD-0025, CP-P2-02-02-SD-0025 FF, CP-P2-02-02-SD-0015 FF | 100% |  | 2022-06-07 | 2022-07-19 |  |  |  | UDF_G3 | Yes | Yes |  | S&L |  |  | supt |  |  |  | 03 | S&L | FNTP | P2 | 2 | 2.2 |  |  |  |  |  |  |  |  |  | 16 |  |  |  |  |  |  |  |  |
| CP-P2-02-02-SD-0035 |  | Prepare Chemical Hazards/ CR Habitability Calc - Prepare | 108d | 2022-07-05 A | 2022-12-06 A | CP-P2-02-02-SD-0020, CP-P2-02-01-SD-0025, IFM-TO5-TO4-0085, IFM-TO5-TO4-0090, IFM-TO5-TO4-0095 SS, IFM-TO5-TO4-0100 | 100% |  | 2022-10-03 | 2023-03-03 |  |  |  | UDF_G3 | Yes | Yes | X | S&L |  | Oct | supt | oct update finish slip out from 06dec22 |  |  | 03 | S&L | FNTP | P2 | 2 | 2.2 |  |  |  |  |  |  |  |  |  | 14 |  |  |  | 2022-12-06 | CC |  |  |  |
| CP-P2-02-02-SD-0021 |  | Identify Nearby Hazards at CFPP Site - TO4 External Review / Comments Received | 10d | 2022-07-12 A | 2022-08-15 A | CP-P2-02-02-SD-0020 | 100% |  | 2022-07-05 | 2022-07-18 |  |  |  |  |  |  |  |  | OCT |  | supt |  |  |  |  | S&L |  |  | 2 | 2.2 |  |  |  |  |  |  |  |  |  |  | cal | x |  |  |  |  |  |  |
| CP-P2-02-02-SD-0026 |  | Prepare GIS Figures for Hazard Evaluations - TO4 External Review / Comments Received | 10d | 2022-07-29 A | 2022-08-12 A | CP-P2-02-02-SD-0025 | 100% |  | 2022-07-28 | 2022-08-10 |  |  |  |  |  |  |  |  |  |  | supt |  |  |  |  | S&L |  |  | 2 | 2.2 |  |  |  |  |  |  |  |  |  |  | cal | x |  |  |  |  |  |  |
| CP-P2-02-02-SD-0040 |  | Prepare Aircraft Hazards Evaluation - Prepare | 129d | 2022-08-08 A | 2023-02-09 | CP-P2-02-02-SD-0010, CP-P2-02-01-SD-0025, CP-P2-02-02-SD-0035 FF+10d, CP-P2-03-05-SD-0020 FF | 65% | 29d | 2022-08-04 | 2023-02-03 | 72d | 0d | 2023-02-09 | UDF_G3 | Yes | Yes |  | S&L |  | Oct | supt | oct update finish slip from 4jan23 |  |  | 03 | S&L | FNTP | P2 | 2 | 2.2 |  |  |  |  |  |  |  |  |  | 13 |  |  |  | 2023-02-09 |  | As of 12dec22 missed forecast update from S&L | 2022-08-08 |  |
| CP-P2-02-02-SD-0007 |  | Provide Info on Nearby Facilities / Transportation - Comment Resolution / Issue Final | 10d | 2022-08-15 A | 2022-08-15 A | CP-P2-02-02-SD-0006 FF | 100% |  | 2022-08-02 | 2022-08-15 |  |  |  |  |  |  |  |  |  |  | supt |  |  |  |  | S&L |  | P2 | 2 | 2.2 |  |  |  |  |  |  |  |  |  |  | cal | x |  |  |  |  |  |  |
| CP-P2-02-02-SD-0022 |  | Identify Nearby Hazards at CFPP Site - Comment Resolution / Issue Final | 10d | 2022-08-15 A | 2022-08-15 A | CP-P2-02-02-SD-0021 | 100% |  | 2022-10-31 | 2022-11-11 |  |  |  |  |  |  |  |  |  |  | supt |  |  |  |  | S&L |  | P2 | 2 | 2.2 |  |  |  |  |  |  |  |  |  |  | cal | x |  |  |  |  |  |  |
| CP-P2-02-02-SD-0027 |  | Prepare GIS Figures for Hazard Evaluations - Comment Resolution / Issue Final | 10d | 2022-08-15 A | 2022-08-19 A | CP-P2-02-02-SD-0026 | 100% |  | 2022-08-15 | 2022-08-26 |  |  |  |  |  |  |  |  |  |  | supt |  |  |  |  | S&L |  | P2 | 2 | 2.2 |  |  |  |  |  |  |  |  |  |  | cal |  |  |  |  |  |  | Y |
| CP-P2-02-02-SD-0016 |  | Wildfire/ Incident Heat Flux Analysis - TO4 External Review / Comments Received | 42d | 2022-10-03 A | 2022-10-17 A | CP-P2-02-02-SD-0015 | 100% |  | 2022-10-03 | 2022-11-30 |  |  |  | UDF_G3 | Yes |  |  | S&L | OCT |  | supt | oct update |  |  | 03 | S&L | FNTP | P2 | 2 | 2.2 |  |  |  |  |  |  |  |  |  | 19 |  |  | slid 6 - 29 -22 to 7-19-22 |  |  |  |  |  |
| CP-P2-02-02-SD-0031 |  | Prepare Hazard / Transportation Analysis - TO4 External Review / Comments Received | 10d | 2022-10-03 A | 2022-10-17 A | CP-P2-02-02-SD-0030 | 100% |  | 2022-11-14 | 2022-11-28 |  |  |  |  |  |  |  |  |  |  | supt |  |  |  |  | TO4 |  |  | 2 | 2.2 |  |  |  |  |  |  |  |  |  |  | cal |  |  |  |  |  |  |  |
| CP-P2-02-02-SD-0017 |  | Wildfire/ Incident Heat Flux Analysis - Comment Resolution / Issue Final | 42d | 2022-10-17 A | 2022-10-18 A | CP-P2-02-02-SD-0016 | 100% |  | 2022-10-17 | 2022-12-14 |  |  |  | UDF_G3 | Yes |  |  | S&L | OCT |  | supt | oct update |  |  | 03 | S&L | FNTP | P2 | 2 | 2.2 |  |  |  |  |  |  |  |  |  | 19 |  |  | slid 6 - 29 -22 to 7-19-22 |  |  |  |  |  |
| CP-P2-02-02-SD-0032 |  | Prepare Hazard / Transportation Analysis - Comment Resolution / Issue Final | 10d | 2022-10-18 A | 2022-10-18 A | CP-P2-02-02-SD-0031 | 100% |  | 2022-11-29 | 2022-12-12 |  |  |  |  |  |  |  |  |  |  | supt |  |  |  |  | S&L |  | P2 | 2 | 2.2 |  |  |  |  |  |  |  |  | oct update change succ sd-0015 from FF |  | cal |  |  |  |  |  |  |  |
| CP-P2-02-02-SD-0036 |  | Prepare Chemical Hazards/ CR Habitability Calc - TO4 External Review / Comments Received | 10d | 2023-01-02 | 2023-01-13 | CP-P2-02-02-SD-0035 |  |  |  |  | 101d | 0d |  |  |  |  |  |  |  |  | supt |  |  |  |  | TO4 |  |  | 2 | 2.2 |  |  |  |  |  |  |  |  |  |  | cal |  |  |  |  |  |  |  |
| CP-P2-02-02-SD-0037 |  | Prepare Chemical Hazards/ CR Habitability Calc - Comment Resolution / Issue Final | 10d | 2023-01-16 | 2023-01-27 | CP-P2-02-02-SD-0036 |  |  |  |  | 101d | 29d |  |  |  |  |  |  |  |  | supt |  |  |  |  | S&L |  | P2 | 2 | 2.2 |  |  |  |  |  |  |  |  |  |  | cal |  |  |  |  |  |  |  |
| CP-P2-02-02-SD-0041 |  | Prepare Aircraft Hazards Evaluation - TO4 External Review / Comments Received | 10d | 2023-02-10 | 2023-02-23 | CP-P2-02-02-SD-0040 |  |  |  |  | 72d | 0d |  |  |  |  |  |  |  |  | supt |  |  |  |  | TO4 |  |  | 2 | 2.2 |  |  |  |  |  |  |  |  |  |  | cal |  |  |  |  |  |  |  |
| CP-P2-02-02-SD-0042 |  | Prepare Aircraft Hazards Evaluation - Comment Resolution / Issue Final | 10d | 2023-02-24 | 2023-03-09 | CP-P2-02-02-SD-0041 |  |  |  |  | 72d | 0d |  |  |  |  |  |  |  |  | supt |  |  |  |  | S&L |  | P2 | 2 | 2.2 |  |  |  |  |  |  |  |  |  |  | cal |  |  |  |  |  |  |  |

Notes:
- CP-P2-02-01-SW-0040: 9A SEP EOM Notes: Sep update 7oct22 finish (resource)
- CP-P2-02-01-SW-0011: 12B DEC EOM Notes: as of 30dec22 updated Incorporated Fluor 11/27/22 Update - They deleted 22 sucessors to CP-P2-01-01-SW-0010 / CFPP - Contractor's Remarks: as of 30dec22 updated Incorporated Fluor 11/27/22 Update - They deleted 22 sucessors to CP-P2-01-01-SW-0010
- CP-P2-02-01-SW-0055: 12B DEC EOM Notes: as of 30dec22 updated Incorporated Fluor 11/27/22 Update / CFPP - Contractor's Remarks: as of 30dec22 updated Incorporated Fluor 11/27/22 Update
- CP-P2-02-02-SD-0020: Remarks: first draft available, finish date on track
- CP-P2-02-02-SD-0025: Remarks: Remove successor ties to CP-P2-02-01-SD-0045 & CP-P2-02-02-SD-0030
- CP-P2-02-02-SD-0015: 9A SEP EOM Notes: Sep update
- CP-P2-02-02-SD-0030: Remarks: resource availability
- CP-P2-02-02-SD-0035: Remarks: added Pred IFM-TO5-TO4-0095 / 9A SEP EOM Notes: Sep update looking for detail from CFPP by 1nov22 finish date slip out from 1nov / 12B DEC EOM Notes: as of 30dec22 updated Date not Inocorprated PDL AF 12/6 / CFPP - Contractor's Remarks: as of 30dec22 updated Date not Inocorprated PDL AF 12/6
- CP-P2-02-02-SD-0040: Remarks: chg pred FS to FF 20 CP-P2-02-02-SD-0035 / 12B DEC EOM Notes: as of 30dec22 updated Forecast date not incorporated PDL 2/9/23 / CFPP - Contractor's Remarks: as of 30dec22 updated Forecast date not incorporated PDL 2/9/23
- CP-P2-02-02-SD-0007: Remarks: verifiy with FLUOR review completion new forecast start out 4 weeks 25jul
- CP-P2-02-02-SD-0037: 12B DEC EOM Notes: as of 30dec22 updated Forecast Date not Inocorprated PDL EF 2/5/23 / CFPP - Contractor's Remarks: as of 30dec22 updated Forecast Date not Inocorprated PDL EF 2/5/23
- CP-P2-02-02-SD-0042: 12B DEC EOM Notes: as of 30dec22 updated Forecast date not incorporated PDL 3/9/23 / CFPP - Contractor's Remarks: as of 30dec22 updated Forecast date not incorporated PDL 3/9/23

| ID | WBS | Activity | Duration | Start | Finish | Predecessors | Complete | Remaining | Planned start | Planned finish | Total float | Free float | Constraint | Expected finish | UDF Indicator 01 | zText_02 | zText_Level 3 Schedule | Rebaseline details | doc type | PREPDRFTREVA | Forecast Finish | CFPP, LLC WBS Structure | Author | Period of Performance | Part | Chapter | Section | SDA needed | activity step | SDA ties | Deliverable Owner | SDA cleanup notes | SDA ACT | REV0 - SDA | Progress Deliv Sheet Milestone # | 10A OCT MIDMONTH Notes | zText_RFI | 9A SEP EOM Notes | UDF Text 01 | z_Text-4 | Reconcile Rev 0 Milestones | zText_33 | Other |
| --- | --- | --- | --- | --- | --- | --- | --- | --- | --- | --- | --- | --- | --- | --- | --- | --- | --- | --- | --- | --- | --- | --- | --- | --- | --- | --- | --- | --- | --- | --- | --- | --- | --- | --- | --- | --- | --- | --- | --- | --- | --- | --- | --- |
|  | 02 | **CFPP - COLA Prep - Part 02 - Chapter 02 - Section 2 - Chapter Writing** |  | 2022-11-21 | 2023-04-06 |  |  |  |  |  |  |  |  |  |  |  |  |  |  |  |  |  |  |  |  |  |  |  |  |  |  |  |  |  |  |  |  |  |  |  |  |  |  |
| CP-P2-02-02-SW-0000 |  | Prepare Draft Rev A - FSAR Section 2.2 | 20d | 2022-11-21 A | 2023-03-09 | CP-P2-02-02-SD-0025, CP-P2-02-02-SD-0040, CP-P2-02-02-SD-0030, CP-P2-02-02-SD-0015, CP-P2-02-02-SD-0035, IFM-TO5-TO4-0095, IFM-TO5-TO4-0085, IFM-TO5-TO4-0090, IFM-TO5-TO4-0100, CP-P2-02-02-SD-0007 FF, CP-P2-02-02-SD-0022 FF, CP-P2-02-02-SD-0027 FF, CP-P2-02-02-SD-0032 FF, CP-P2-02-02-SD-0037 FF, CP-P2-02-02-SD-0042 FF, CP-P2-02-02-SD-0017 | 22% | 20d | 2023-02-10 | 2023-03-09 | 72d | 0d |  | 2023-03-09 | UDF_G3 | Yes | Yes | S&L | deliv | S&L-REVA | 2023-03-09 | 03 | S&L | FNTP | P2 | 2 | 2.2 | No SDA | 1 |  |  |  |  |  |  |  |  |  |  |  |  |  |  |
| CP-P2-02-02-SW-0005 |  | Review Draft Rev A - FSAR Section 2.2 (TO4 Team Review) | 10d | 2023-03-10 | 2023-03-23 | CP-P2-02-02-SW-0000 |  |  |  |  | 72d | 0d |  |  | UDF_G1 | Yes | Yes | S&L | deliv |  |  | 03 | TO4 | FNTP | P2 | 2 | 2.2 |  | 2 | FIX |  |  |  |  |  |  |  |  |  |  |  |  |  |
| CP-P2-02-02-SW-0010 |  | Resolve Rev A Comments - FSAR Section 2.2 | 5d | 2023-03-24 | 2023-03-30 | CP-P2-02-02-SW-0005 |  |  |  |  | 147d | 0d |  |  | UDF_G1 | Yes | Yes | S&L | deliv |  |  | 03 | S&L | FNTP | P2 | 2 | 2.2 |  | 3 |  |  |  |  |  |  |  |  |  |  |  |  |  |  |
| CP-P2-02-02-SW-0012 |  | Confirm SDA Information and Inform Reviewers - FSAR Section 2.2 | 5d | 2023-03-31 | 2023-03-31 | CP-P2-02-02-SW-0010, PKM-0125 |  |  | 2023-03-31 | 2023-04-06 | 147d | 0d |  |  | UDF_G1 | Yes | Yes | FL4 | deliv |  |  | 03 | FL4 | FNTP | P2 | 1 | 1.1 | SDA Tie | 4 | FIX | Matt-TBD | checked pushed out by pred | S | S&L-REV0 |  |  |  |  |  |  |  |  |  |
| CP-P2-02-02-SW-0015 |  | Issue Rev 0 - FSAR Section 2.2 | 5d | 2023-03-31 | 2023-04-06 | CP-P2-02-02-SW-0012 |  |  |  |  | 147d | 145d |  |  | UDF_G1 | Yes | Yes | S&L | deliv |  |  | 03 | S&L | FNTP | P2 | 2 | 2.2 | SDA Tie | 5 |  |  |  | S | S&L-REV0 |  |  |  |  |  |  |  |  |  |
|  | 03 | **CFPP - COLA Prep - Part 02 - Chapter 02 - Section 3 - Meteorology** |  | 2022-01-12 | 2023-10-04 |  |  |  |  |  |  |  |  |  |  |  |  |  |  |  |  |  |  |  |  |  |  |  |  |  |  |  |  |  |  |  |  |  |  |  |  |  |  |
|  | 00 | **CFPP - COLA Prep - Part 02 - Chapter 02 - Section 3.0 - Meteorology** |  | 2022-01-21 | 2023-10-04 |  |  |  |  |  |  |  |  |  |  |  |  |  |  |  |  |  |  |  |  |  |  |  |  |  |  |  |  |  |  |  |  |  |  |  |  |  |  |
|  | 01 | **CFPP - COLA Prep - Part 02 - Chapter 02 - Section 3.0 - Support Documents** |  | 2022-01-21 | 2022-02-14 |  |  |  |  |  |  |  |  |  |  |  |  |  |  |  |  |  |  |  |  |  |  |  |  |  |  |  |  |  |  |  |  |  |  |  |  |  |  |
| CP-P2-02-03-SD-0000 |  | Develop Site Specific Meteorology Sections List | 16d | 2022-01-21 A | 2022-02-14 A | PKM-0070, B-000-0065 FF+8d | 100% |  | 2022-01-31 | 2022-02-21 |  |  |  |  | UDF_G3 | Yes | Yes | S&L | supt |  |  | 03 | S&L | FNTP | P2 | 2 | 2.3.0 |  |  |  |  |  |  |  | 21 |  |  |  |  |  |  |  |  |
|  | 02 | **CFPP - COLA Prep - Part 02 - Chapter 02 - Section 3.0 - Section Writing** |  | 2023-07-26 | 2023-10-04 |  |  |  |  |  |  |  |  |  |  |  |  |  |  |  |  |  |  |  |  |  |  |  |  |  |  |  |  |  |  |  |  |  |  |  |  |  |  |
| CP-P2-02-03-SW-0000 |  | Prepare Draft Rev A - FSAR Section 2.3.0 | 20d | 2023-07-26 | 2023-08-22 | CP-P2-02-03-SD-0000, CP-P2-02-03-SW-0110, CP-P2-02-03-SW-0090, CP-P2-02-03-SW-0065, CP-P2-02-03-SW-0045, CP-P2-02-03-SW-0025 |  |  |  |  | 21d | 0d |  |  | UDF_G1 | Yes | Yes | S&L | deliv | S&L-REVA |  | 03 | S&L | FNTP | P2 | 2 | 2.3.0 | No SDA | 1 |  |  |  |  |  | 20 | oct update |  |  |  |  |  |  |  |
| CP-P2-02-03-SW-0005 |  | Review Draft Rev A - FSAR Section 2.3.0 (TO4 Team Review) | 10d | 2023-08-23 | 2023-09-06 | CP-P2-02-03-SW-0000 |  |  |  |  | 21d | 0d |  |  | UDF_G1 | Yes | Yes | S&L | deliv |  |  | 03 | TO4 | FNTP | P2 | 2 | 2.3.0 |  | 2 | FIX |  |  |  |  | 20 | oct update |  |  |  |  |  |  |  |
| CP-P2-02-03-SW-0010 |  | Resolve Rev A Comments - FSAR Section 2.3.0 | 10d | 2023-09-07 | 2023-09-20 | CP-P2-02-03-SW-0005 |  |  |  |  | 21d | 0d |  |  | UDF_G1 | Yes | Yes | S&L | deliv |  |  | 03 | S&L | FNTP | P2 | 2 | 2.3.0 |  | 3 |  |  |  |  |  | 20 | oct update |  |  |  |  |  |  |  |
| CP-P2-02-03-SW-0012 |  | Confirm SDA Information and Inform Reviewers - FSAR Section 2.3.0 | 5d | 2023-09-21 | 2023-09-21 | CP-P2-02-03-SW-0010, PKM-0125 |  |  | 2023-09-21 | 2023-09-27 | 21d | 0d |  |  | UDF_G1 | Yes | Yes | FL4 | deliv |  |  | 03 | FL4 | FNTP | P2 | 1 | 1.1 | SDA Tie | 4 | FIX | Matt-TBD | checked pushed out by pred | S | S&L-REV0 |  | oct update |  |  |  |  |  |  |  |
| CP-P2-02-03-SW-0015 |  | Issue Rev 0 - FSAR Section 2.3.0 | 10d | 2023-09-21 | 2023-10-04 | CP-P2-02-03-SW-0012 |  |  |  |  | 21d | 19d |  |  | UDF_G1 | Yes | Yes | S&L | deliv |  |  | 03 | S&L | FNTP | P2 | 2 | 2.3.0 | SDA Tie | 5 |  |  |  | S | S&L-REV0 | 20 | oct update |  |  |  |  |  |  |  |
|  | 01 | **CFPP - COLA Prep - Part 02 - Chapter 02 - Section 3.1 - Regional Climatology** |  | 2022-05-05 | 2023-08-08 |  |  |  |  |  |  |  |  |  |  |  |  |  |  |  |  |  |  |  |  |  |  |  |  |  |  |  |  |  |  |  |  |  |  |  |  |  |  |
|  | 01 | **CFPP - COLA Prep - Part 02 - Chapter 02 - Section 3.1 - Support Documents** |  | 2022-05-05 | 2023-06-26 |  |  |  |  |  |  |  |  |  |  |  |  |  |  |  |  |  |  |  |  |  |  |  |  |  |  |  |  |  |  |  |  |  |  |  |  |  |  |
| CP-P2-02-03-SD-0015 |  | LiDAR data of the CFPP site area (LIDAR Analysis) | 30d | 2022-05-05 A | 2022-06-16 A |  | 100% |  |  |  |  |  |  |  | UDF_G3 |  | Yes | RIZZO | supt |  |  | 03 | RIZZO | FNTP | P2 | 2 | 2.3.1 |  |  |  |  |  |  |  |  |  | RFI 202 |  |  |  |  |  |  |
| CP-P2-02-03-SD-0035 |  | Prepare Geologic Maps at 200, 25, 5, & 0.6-mile Radii | 40d | 2022-05-09 A | 2022-09-06 A | CP-P2-02-03-SD-0030, CP-P2-02-03-SD-0020 | 100% |  | 2022-08-01 | 2022-09-26 |  |  |  |  | UDF_G1 | Yes | Yes | RIZZO | supt |  |  | 03 | RIZZO | FNTP | P2 | 2 | 2.3.1 |  |  |  |  |  |  |  |  |  |  | Sep update |  |  |  |  |  |
| CP-P2-02-03-SD-0060 |  | Prepare Structure Contour Maps | 30d | 2022-06-06 A | 2022-06-27 A | CP-P2-02-03-SD-0055 SS | 100% |  | 2022-06-06 | 2022-07-18 |  |  |  |  | UDF_G1 | Yes | Yes | RIZZO | supt |  |  | 03 | RIZZO | FNTP | P2 | 2 | 2.3.1 |  |  |  |  |  |  |  |  |  |  |  |  |  |  |  |  |
| CP-P2-02-03-SD-0070 |  | Provide Info on Meteorological Monitoring Stations / Existing Climatology Studies at INL Site | 17d | 2022-08-03 A | 2022-08-25 A |  | 100% |  | 2023-01-09 | 2023-01-31 |  |  |  |  | UDF_G3 | Yes | Yes | S&L | supt |  |  | 03 | S&L | FNTP | P2 | 2 | 2.3.1 |  |  |  |  |  |  |  |  |  | RFI 202 |  | INL/Others | CP-1 | 3.3 |  |  |
| CP-P2-02-03-SD-0075 |  | Research Regional Climatology - Prepare | 30d | 2023-01-23 | 2023-03-03 | CP-P2-02-03-SD-0070 FF |  |  |  |  | 18d | 0d | start on or after 2023-01-23 |  | UDF_G3 | Yes | Yes | S&L | supt |  |  | 03 | S&L | FNTP | P2 | 2 | 2.3.1 |  |  |  |  |  |  |  |  |  |  |  |  | CP-1 | 3.3 |  |  |
| CP-P2-02-03-SD-0080 |  | Prepare Meteorological Parameter Calculation | 30d | 2023-03-06 | 2023-04-14 | CP-P2-02-03-SD-0075, PKM-0120 |  |  |  |  | 18d | 0d |  |  | UDF_G3 | Yes | Yes | S&L | supt |  |  | 03 | S&L | FNTP | P2 | 2 | 2.3.1 |  |  |  |  |  |  |  |  |  |  |  |  | CP-1 | 3.3 |  |  |
| CP-P2-02-03-SD-0085 |  | Prepare Severe Weather Calculation - Prepare | 30d | 2023-04-17 | 2023-05-26 | CP-P2-02-03-SD-0080, PKM-0120 |  |  |  |  | 18d | 0d |  |  | UDF_G3 | Yes | Yes | S&L | supt |  |  | 03 | S&L | FNTP | P2 | 2 | 2.3.1 |  |  |  |  |  |  |  |  |  |  |  |  | CP-1 | 3.3 | Near Critical Path #2 - Meteorological Report |  |
| CP-P2-02-03-SD-0086 |  | Prepare Severe Weather Calculation - TO4 External Review / Comments Received | 10d | 2023-05-30 | 2023-06-12 | CP-P2-02-03-SD-0085 |  |  |  |  | 31d | 0d |  |  |  |  |  |  | supt |  |  |  | TO4 |  |  | 2 | 2.3.1 |  |  |  |  |  |  |  |  |  |  |  |  |  |  |  | cal |
| CP-P2-02-03-SD-0087 |  | Prepare Severe Weather Calculation - Comment Resolution / Issue Final | 10d | 2023-06-13 | 2023-06-26 | CP-P2-02-03-SD-0086 |  |  |  |  | 31d | 0d |  |  |  |  |  |  | supt |  |  |  | S&L |  | P2 | 2 | 2.3.1 |  |  |  |  |  |  |  |  |  |  |  |  |  |  |  | cal |

Notes:
- CP-P2-02-02-SW-0000: 12B DEC EOM Notes: as of 30dec22 updated Forecast date not incorporated PDL 3/9/23 / CFPP - Contractor's Remarks: as of 30dec22 updated Forecast date not incorporated PDL 3/9/23
- CP-P2-02-02-SW-0010: 12B DEC EOM Notes: as of 30dec22 updated Forecast date not incorporated PDL 3/30/23 / CFPP - Contractor's Remarks: as of 30dec22 updated Forecast date not incorporated PDL 3/30/23
- CP-P2-02-02-SW-0012: 12B DEC EOM Notes: In parallel with Team Review (hold duration at 5d)
- CP-P2-02-02-SW-0015: 12B DEC EOM Notes: as of 30dec22 updated Forecast date not incorporated PDL 4/6/23 / CFPP - Contractor's Remarks: as of 30dec22 updated Forecast date not incorporated PDL 4/6/23
- CP-P2-02-03-SW-0012: 12B DEC EOM Notes: In parallel with Team Review (hold duration at 5d)
- CP-P2-02-03-SD-0035: UDF Text 02: Large scale map prepared for 2.5.1 can't have disconnects from SSHAC. This model will be provided at Workshop Meeting 3.
- CP-P2-02-03-SD-0070: UDF Text 02: INL, airports, BSU / 12A DEC MIDMONTH Notes: As of 12dec22 pred is driving out start (S&L start 3aug22 Fin 25aug22) Need to revise pred(PKM-0120) / 12B DEC EOM Notes: as of 30dec22 updated Actual date not incorporated AF 8/25 / CFPP - Contractor's Remarks: as of 30dec22 updated Actual date not incorporated AF 8/25

| ID | WBS | Activity | Duration | Start | Finish | Predecessors | Complete | Remaining | Planned start | Planned finish | Total float | Free float | Expected finish | UDF Indicator 01 | zText_33 | zText_02 | zText_Level 3 Schedule | Rebaseline details | doc type | PREPDRFTREVA | CFPP, LLC WBS Structure | Author | Period of Performance | Part | Chapter | Section | SDA needed | activity step | SDA ties | Deliverable Owner | SDA cleanup notes | SDA ACT | REV0 - SDA | 12B DEC EOM Notes | zText_RFI | Other | 9A SEP EOM Notes | CFPP - Contractor's Remarks | JLG - Generic Field | Critcal Path | z_Text-4 | nuscale comp | 11B NOV EOM Notes | Forecast Finish |
| --- | --- | --- | --- | --- | --- | --- | --- | --- | --- | --- | --- | --- | --- | --- | --- | --- | --- | --- | --- | --- | --- | --- | --- | --- | --- | --- | --- | --- | --- | --- | --- | --- | --- | --- | --- | --- | --- | --- | --- | --- | --- | --- | --- | --- |
|  | 02 | **CFPP - COLA Prep - Part 02 - Chapter 02 - Section 3.1 - Section Writing** |  | 2023-05-30 | 2023-08-08 |  |  |  |  |  |  |  |  |  |  |  |  |  |  |  |  |  |  |  |  |  |  |  |  |  |  |  |  |  |  |  |  |  |  |  |  |  |  |  |
| CP-P2-02-03-SW-0020 |  | Prepare Draft Rev A - FSAR Section 2.3.1 | 20d | 2023-05-30 | 2023-06-26 | CP-P2-02-03-SD-0075, CP-P2-02-03-SD-0080, CP-P2-02-03-SD-0085, CP-P2-02-03-SD-0087 FF |  |  |  |  | 31d | 0d |  | UDF_G3 | Near Critical Path #2 - Meteorological Report | Yes | Yes | S&L | deliv | S&L-REVA | 03 | S&L | FNTP | P2 | 2 | 2.3.1 | No SDA | 1 |  |  |  |  |  |  |  |  |  |  |  |  |  |  |  |  |
| CP-P2-02-03-SW-0025 |  | Review Draft Rev A - FSAR Section 2.3.1 (TO4 Team Review) | 10d | 2023-06-27 | 2023-07-11 | CP-P2-02-03-SW-0020 |  |  |  |  | 31d | 0d |  | UDF_G1 | Near Critical Path #2 - Meteorological Report | Yes | Yes | S&L | deliv |  | 03 | TO4 | FNTP | P2 | 2 | 2.3.1 |  | 2 | FIX |  |  |  |  |  |  |  |  |  |  |  |  |  |  |  |
| CP-P2-02-03-SW-0030 |  | Resolve Rev A Comments - FSAR Section 2.3.1 | 10d | 2023-07-12 | 2023-07-25 | CP-P2-02-03-SW-0025 |  |  |  |  | 61d | 0d |  | UDF_G1 |  | Yes | Yes | S&L | deliv |  | 03 | S&L | FNTP | P2 | 2 | 2.3.1 |  | 3 |  |  |  |  |  |  |  |  |  |  |  |  |  |  |  |  |
| CP-P2-02-03-SW-0031 |  | Confirm SDA Information and Inform Reviewers - FSAR Section 2.3.1 | 5d | 2023-07-26 | 2023-07-26 | CP-P2-02-03-SW-0030, PKM-0125 |  |  | 2023-07-26 | 2023-08-01 | 61d | 0d |  | UDF_G1 |  | Yes | Yes | FL4 | deliv |  | 03 | FL4 | FNTP | P2 | 1 | 1.1 | SDA Tie | 4 | FIX | Matt-TBD | checked pushed out by pred | S | S&L-REV0 | In parallel with Team Review (hold duration at 5d) |  |  |  |  |  |  |  |  |  |  |
| CP-P2-02-03-SW-0035 |  | Issue Rev 0 - FSAR Section 2.3.1 | 10d | 2023-07-26 | 2023-08-08 | CP-P2-02-03-SW-0031 |  |  |  |  | 61d | 59d |  | UDF_G1 |  | Yes | Yes | S&L | deliv |  | 03 | S&L | FNTP | P2 | 2 | 2.3.1 | SDA Tie | 5 |  |  |  | S | S&L-REV0 |  |  |  |  |  |  |  |  |  |  |  |
|  | 02 | **CFPP - COLA Prep - Part 02 - Chapter 02 - Section 3.2 - Local Meteorology** |  | 2023-01-09 | 2023-08-22 |  |  |  |  |  |  |  |  |  |  |  |  |  |  |  |  |  |  |  |  |  |  |  |  |  |  |  |  |  |  |  |  |  |  |  |  |  |  |  |
|  | 01 | **CFPP - COLA Prep - Part 02 - Chapter 02 - Section 3.2 - Support Documents** |  | 2023-01-09 | 2023-07-31 |  |  |  |  |  |  |  |  |  |  |  |  |  |  |  |  |  |  |  |  |  |  |  |  |  |  |  |  |  |  |  |  |  |  |  |  |  |  |  |
| CP-P2-02-03-SD-0090 |  | Provide Cooling Tower Performance Characteristics | 30d | 2023-01-09 | 2023-02-17 | PKM-0000, PKM-0120 |  |  |  |  | 21d | 0d |  | UDF_G3 |  | Yes | Yes | S&L | supt |  | 03 | S&L | FNTP | P2 | 2 | 2.3.2 |  |  |  |  |  |  |  |  | RFI 102 |  |  |  |  |  |  |  |  |  |
| CP-P2-02-03-SD-0096 |  | Provide Quality - Assured Met Data in ARCON format & JFDs - Prepare | 5d | 2023-01-23 | 2023-01-27 | PKM-0120 FS+10d |  |  |  |  | 1d | 0d |  |  |  |  |  |  | supt |  |  | S&L |  |  |  |  |  |  |  |  |  |  |  |  |  | cal |  |  |  |  |  |  |  |  |
| CP-P2-02-03-SD-0097 |  | Provide Quality - Assured Met Data in ARCON format & JFDs - TO4 External Review / Comments Received | 5d | 2023-01-30 | 2023-02-10 | CP-P2-02-03-SD-0096 |  |  | 2023-01-30 | 2023-02-03 | 116d | 0d |  |  |  |  |  |  | supt |  |  | TO4 |  |  |  |  |  |  |  |  |  |  |  |  |  | cal |  |  |  |  |  |  |  |  |
| CP-P2-02-03-SD-0098 |  | Provide Quality - Assured Met Data in ARCON format & JFDs - Comment Resolution / Issue Final | 10d | 2023-02-13 | 2023-02-24 | CP-P2-02-03-SD-0097 |  |  |  |  | 116d | 95d |  |  |  |  |  |  | supt |  |  | S&L |  |  |  |  |  |  |  |  |  |  |  |  |  | cal |  |  |  |  |  |  |  |  |
| CP-P2-02-03-SD-0100 |  | Perform SACTI2 / AERMOD Analysis - Prepare | 80d | 2023-02-20 | 2023-06-12 | CP-P2-02-00-SD-0000, CP-P2-02-03-SD-0090 |  |  |  |  | 21d | 0d |  | UDF_G3 |  | Yes | Yes | S&L | supt |  | 03 | S&L | FNTP | P2 | 2 | 2.3.2 |  |  |  |  |  |  |  |  |  |  | Sep update removed ALAP |  |  |  |  |  |  |  |
| CP-P2-02-03-SD-0095 |  | Research Local Meteorology - Prepare | 34d | 2023-06-13 | 2023-07-31 | PKM-0120, CP-P2-02-03-SD-0100 |  |  |  |  | 21d | 0d |  | UDF_G3 |  | Yes | Yes | S&L | supt |  | 03 | S&L | FNTP | P2 | 2 | 2.3.2 |  |  |  |  |  |  |  | as of 30dec22 updated check logic - large variance |  |  | Sep update removed ALAP | as of 30dec22 updated check logic - large variance |  |  |  |  |  |  |
| CP-P2-02-03-SD-0101 |  | Perform SACTI2 / AERMOD Analysis - TO4 External Review / Comments Received | 10d | 2023-06-13 | 2023-06-26 | CP-P2-02-03-SD-0100 |  |  |  |  | 21d | 0d |  |  |  |  |  |  | supt |  |  | TO4 |  |  | 2 | 2.3.2 |  |  |  |  |  |  |  |  |  | cal |  |  |  |  |  |  |  |  |
| CP-P2-02-03-SD-0102 |  | Perform SACTI2 / AERMOD Analysis - Comment Resolution / Issue Final | 10d | 2023-06-27 | 2023-07-11 | CP-P2-02-03-SD-0101 |  |  |  |  | 21d | 0d |  |  |  |  |  |  | supt |  |  | S&L |  | P2 | 2 | 2.3.2 |  |  |  |  |  |  |  |  |  | cal |  |  |  |  |  |  |  |  |
|  | 02 | **CFPP - COLA Prep - Part 02 - Chapter 02 - Section 3.2 - Section Writing** |  | 2023-06-13 | 2023-08-22 |  |  |  |  |  |  |  |  |  |  |  |  |  |  |  |  |  |  |  |  |  |  |  |  |  |  |  |  |  |  |  |  |  |  |  |  |  |  |  |
| CP-P2-02-03-SW-0040 |  | Prepare Draft Rev A - FSAR Section 2.3.2 | 20d | 2023-06-13 | 2023-07-11 | CP-P2-02-03-SD-0095 SS, CP-P2-02-03-SD-0100 SS, PKM-0120, CP-P2-02-03-SD-0102 FF, CP-P2-02-03-SD-0098 FF |  |  |  |  | 21d | 0d |  | UDF_G3 |  | Yes | Yes | S&L | deliv | S&L-REVA | 03 | S&L | FNTP | P2 | 2 | 2.3.2 | No SDA | 1 |  |  |  |  |  |  |  |  |  |  | COLA |  |  |  |  |  |
| CP-P2-02-03-SW-0045 |  | Review Draft Rev A - FSAR Section 2.3.2 (TO4 Team Review) | 10d | 2023-07-12 | 2023-07-25 | CP-P2-02-03-SW-0040 |  |  |  |  | 21d | 0d |  | UDF_G1 |  | Yes | Yes | S&L | deliv |  | 03 | TO4 | FNTP | P2 | 2 | 2.3.2 |  | 2 | FIX |  |  |  |  |  |  |  |  |  | COLA |  |  |  |  |  |
| CP-P2-02-03-SW-0050 |  | Resolve Rev A Comments - FSAR Section 2.3.2 | 10d | 2023-07-26 | 2023-08-08 | CP-P2-02-03-SW-0045 |  |  |  |  | 51d | 0d |  | UDF_G1 |  | Yes | Yes | S&L | deliv |  | 03 | S&L | FNTP | P2 | 2 | 2.3.2 |  | 3 |  |  |  |  |  |  |  |  |  |  |  |  |  |  |  |  |
| CP-P2-02-03-SW-0051 |  | Confirm SDA Information and Inform Reviewers - FSAR Section 2.3.2 | 5d | 2023-08-09 | 2023-08-09 | CP-P2-02-03-SW-0050, PKM-0125 |  |  | 2023-08-09 | 2023-08-15 | 51d | 0d |  | UDF_G1 |  | Yes | Yes | FL4 | deliv |  | 03 | FL4 | FNTP | P2 | 1 | 1.1 | SDA Tie | 4 | FIX | Matt-TBD | checked pushed out by pred | S | S&L-REV0 | In parallel with Team Review (hold duration at 5d) |  |  |  |  |  |  |  |  |  |  |
| CP-P2-02-03-SW-0055 |  | Issue Rev 0 - FSAR Section 2.3.2 | 10d | 2023-08-09 | 2023-08-22 | CP-P2-02-03-SW-0051 |  |  |  |  | 51d | 49d |  | UDF_G1 |  | Yes | Yes | S&L | deliv |  | 03 | S&L | FNTP | P2 | 2 | 2.3.2 | SDA Tie | 5 |  |  |  | S | S&L-REV0 |  |  |  |  |  |  |  |  |  |  |  |
|  | 03 | **CFPP - COLA Prep - Part 02 - Chapter 02 - Section 3.3 - Onsite Met Measurements Program** |  | 2022-11-10 | 2023-05-08 |  |  |  |  |  |  |  |  |  |  |  |  |  |  |  |  |  |  |  |  |  |  |  |  |  |  |  |  |  |  |  |  |  |  |  |  |  |  |  |
|  | 01 | **CFPP - COLA Prep - Part 02 - Chapter 02 - Section 3.3 - Support Documents** |  | 2022-11-10 | 2023-03-27 |  |  |  |  |  |  |  |  |  |  |  |  |  |  |  |  |  |  |  |  |  |  |  |  |  |  |  |  |  |  |  |  |  |  |  |  |  |  |  |
| CP-P2-02-03-SW-0140 |  | Joint Frequency Ditribution Calc Input (PAVAN) / XOQD Analysis - Prepare | 30d | 2022-11-10 A | 2023-01-23 | PKM-0120 FF+10d, CP-FI-MET-DC-0035 FF | 10% | 16d | 2022-12-09 | 2023-01-20 | 0d |  | 2023-01-23 | UDF_G3 |  | Yes | Yes | S&L | deliv |  | 03 | S&L | FNTP | P2 | 2 | 2.3.3 |  |  |  |  |  |  |  | as of 30dec22 updated |  |  |  |  |  | 2 | CP-3 | nuscalex15 | As of 29nov22 started | 2023-01-23 |
| CP-P2-02-03-SW-0145 |  | Joint Frequency Distribution Calc Input (PAVAN) / XOQD Analysis - TO4 External Review / Comments Received | 10d | 2023-02-28 | 2023-03-13 | CP-P2-02-03-SW-0140, CP-P2-02-03-SD-0116 FF |  |  |  |  | 95d | 0d |  |  |  |  |  |  | deliv |  |  | TO4 |  |  | 2 | 2.3.3 |  |  |  |  |  |  |  |  |  | cal |  |  |  |  |  |  |  |  |
| CP-P2-02-03-SW-0150 |  | Joint Frequency Ditribution Calc Input (PAVAN) / XOQD Analysis - Comment Resolution / Issue Final | 10d | 2023-03-14 | 2023-03-27 | CP-P2-02-03-SW-0145 |  |  |  |  | 95d | 0d |  |  |  |  |  |  | deliv |  |  | S&L |  |  |  |  |  |  |  |  |  |  |  |  |  | cal |  |  |  |  |  |  |  |  |

Notes:
- CP-P2-02-03-SD-0096: 10A OCT MIDMONTH Notes: oct update reduced duration from 30
- CP-P2-02-03-SW-0140: 10A OCT MIDMONTH Notes: oct update reduced duration from 120 added succ cp-02-03-sd-0115 / 12A DEC MIDMONTH Notes: As of 12dec22 reduce duration by 1d (39d) to remove neg float

| ID | WBS | Activity | Duration | Start | Finish | Predecessors | Complete | Remaining | Planned start | Planned finish | Total float | Free float | Expected finish | UDF Indicator 01 | zText_02 | z_Text-4 | zText_Level 3 Schedule | Rebaseline details | doc type | 10B OCT EOM Notes | PREPDRFTREVA | CFPP, LLC WBS Structure | Author | Period of Performance | Part | Chapter | Section | SDA needed | activity step | SDA ties | Deliverable Owner | SDA cleanup notes | SDA ACT | REV0 - SDA | zText_RFI | Other | Comments | Critcal Path | Forecast Finish | TWG | nuscale comp | CFPP - Contractor's Remarks | Critical Paths | Reconcile Rev 0 Milestones | 12A DEC MIDMONTH Notes |
| --- | --- | --- | --- | --- | --- | --- | --- | --- | --- | --- | --- | --- | --- | --- | --- | --- | --- | --- | --- | --- | --- | --- | --- | --- | --- | --- | --- | --- | --- | --- | --- | --- | --- | --- | --- | --- | --- | --- | --- | --- | --- | --- | --- | --- | --- |
|  | 02 | **CFPP - COLA Prep - Part 02 - Chapter 02 - Section 3.3 - Section Writing** |  | 2023-02-28 | 2023-05-08 |  |  |  |  |  |  |  |  |  |  |  |  |  |  |  |  |  |  |  |  |  |  |  |  |  |  |  |  |  |  |  |  |  |  |  |  |  |  |  |  |
| CP-P2-02-03-SW-0060 |  | Prepare Draft Rev A -Check Updated Supporting Documents -FSAR Section 2.3.3 | 20d | 2023-02-28 | 2023-03-27 | PKM-0120, CP-P2-02-03-SW-0140, CP-P2-02-03-SW-0150 FF |  |  |  |  | 95d | 0d |  | UDF_G3 | Yes | CP-3 | Yes | RIZZO | deliv | oct update (RIZZO activity?) | S&L-REVA | 03 | S&L | FNTP | P2 | 2 | 2.3.3 | No SDA | 1 |  |  |  |  |  |  |  |  |  |  |  |  |  |  |  |  |
| CP-P2-02-03-SW-0065 |  | Review Draft Rev A - FSAR Section 2.3.3 (TO4 Team Review) | 10d | 2023-03-28 | 2023-04-10 | CP-P2-02-03-SW-0060 |  |  |  |  | 95d | 0d |  | UDF_G1 | Yes | CP-3 | Yes | RIZZO | deliv |  |  | 03 | TO4 | FNTP | P2 | 2 | 2.3.3 |  | 2 | FIX |  |  |  |  |  |  |  |  |  |  |  |  |  |  |  |
| CP-P2-02-03-SW-0070 |  | Resolve Rev A Comments - FSAR Section 2.3.3 | 10d | 2023-04-11 | 2023-04-24 | CP-P2-02-03-SW-0065 |  |  |  |  | 125d | 0d |  | UDF_G1 | Yes |  | Yes | RIZZO | deliv | oct update (RIZZO activity?) |  | 03 | S&L | FNTP | P2 | 2 | 2.3.3 |  | 3 |  |  |  |  |  |  |  |  |  |  |  |  |  |  |  |  |
| CP-P2-02-03-SW-0071 |  | Confirm SDA Information and Inform Reviewers - FSAR Section 2.3.3 | 5d | 2023-04-25 | 2023-04-25 | CP-P2-02-03-SW-0070, PKM-0125 |  |  | 2023-04-25 | 2023-05-01 | 125d | 0d |  | UDF_G1 | Yes |  | Yes | FL4 | deliv |  |  | 03 | FL4 | FNTP | P2 | 1 | 1.1 | SDA Tie | 4 | FIX | Matt-TBD | checked pushed out by pred | S | S&L-REV0 |  |  |  |  |  |  |  |  |  |  |  |
| CP-P2-02-03-SW-0075 |  | Issue Rev 0 - FSAR Section 2.3.3 | 10d | 2023-04-25 | 2023-05-08 | CP-P2-02-03-SW-0071 |  |  |  |  | 125d | 123d |  | UDF_G1 | Yes |  | Yes | RIZZO | deliv | oct update (RIZZO activity?) |  | 03 | S&L | FNTP | P2 | 2 | 2.3.3 | SDA Tie | 5 |  |  |  | S | S&L-REV0 |  |  |  |  |  |  |  |  |  |  |  |
|  | 04 | **CFPP - COLA Prep - Part 02 - Chapter 02 - Section 3.4 - Shrt-trm Atm'phere Dispersion Est Accdt Rel** |  | 2022-01-12 | 2023-05-15 |  |  |  |  |  |  |  |  |  |  |  |  |  |  |  |  |  |  |  |  |  |  |  |  |  |  |  |  |  |  |  |  |  |  |  |  |  |  |  |  |
|  | 01 | **CFPP - COLA Prep - Part 02 - Chapter 02 - Section 3.4 - Support Documents** |  | 2022-01-12 | 2023-04-03 |  |  |  |  |  |  |  |  |  |  |  |  |  |  |  |  |  |  |  |  |  |  |  |  |  |  |  |  |  |  |  |  |  |  |  |  |  |  |  |  |
| CP-P2-02-03-SD-0105 |  | Gather NOAA Met Data | 16d | 2022-01-12 A | 2022-02-25 A | PKM-0070, B-000-0065 FF+8d | 100% |  | 2022-01-31 | 2022-02-21 |  |  |  | UDF_G3 | Yes |  | Yes | S&L | supt |  |  | 03 | S&L | FNTP | P2 | 2 | 2.3.4 |  |  |  |  |  |  |  |  |  |  |  |  |  |  |  |  |  |  |
| CP-P2-02-03-SD-0110 |  | Provide NuScale Bldg Air Intake Locations/Stack Height | 65d | 2022-02-09 A | 2022-04-19 A |  | 100% |  | 2022-03-21 | 2022-06-20 |  |  |  | UDF_G3 | Yes |  | Yes | S&L | supt |  |  | 03 | S&L | FNTP | P2 | 2 | 2.3.4 |  |  |  |  |  |  |  | RFI-302 |  |  |  |  |  |  |  |  |  |  |
| CP-P2-02-03-SD-0111 |  | Provide NuScale Bldg Air Intake Locations/Stack Height - TO4 External Review / Comments Received | 5d | 2022-05-02 A | 2022-08-25 A | CP-P2-02-03-SD-0110 | 100% |  | 2022-08-01 | 2022-08-05 |  |  |  |  |  |  |  |  | supt |  |  |  | S&L |  |  |  |  |  |  |  |  |  |  |  |  | cal | x |  |  |  |  |  |  |  |  |
| CP-P2-02-03-SD-0112 |  | Provide NuScale Bldg Air Intake Locations/Stack Height - Comment Resolution / Issue Final | 5d | 2022-08-25 A | 2022-08-25 A | CP-P2-02-03-SD-0111 | 100% |  | 2022-08-22 | 2022-08-26 |  |  |  |  |  |  |  |  | supt |  |  |  | S&L |  |  |  |  |  |  |  |  |  |  |  |  | cal | x |  |  |  |  |  |  |  |  |
| CP-P2-02-03-SD-0120 |  | Perform Control Room/ TSC Accident X/Q (ARCON) | 25d | 2022-12-21 A | 2023-02-27 | CP-P2-02-03-SD-0110, CP-P2-02-01-SD-0025, PKM-0120 FF, CP-P2-02-01-SD-0010, CP-P2-02-03-SD-0096 FF+20d |  | 41d | 2023-01-23 | 2023-02-24 | 0d |  | 2023-02-27 | UDF_G3 | Yes |  | Yes | S&L | supt |  |  | 03 | S&L | FNTP | P2 | 2 | 2.3.4 |  |  |  |  |  |  |  |  |  |  | 2 | 2023-03-06 |  |  |  |  |  |  |
| CP-P2-02-03-SD-0115 |  | Perform Accident X/Q Analysis (PAVAN) | 25d | 2022-12-21 A | 2023-02-27 | CP-P2-02-03-SD-0110, PKM-0120 FF, CP-P2-02-03-SW-0140 |  | 25d | 2023-01-23 | 2023-02-24 | 0d |  | 2023-02-27 | UDF_G3 | Yes | CP-4 | Yes | S&L | supt |  |  | 03 | S&L | FNTP | P2 | 2 | 2.3.4 |  |  |  |  |  |  |  |  |  |  | 2 | 2023-02-27 | 1 | nuscalex15 | as of 30dec22 updated | 1 |  |  |
| CP-P2-02-03-SD-0125 |  | Perform X/Q Sensitivity Analysis Based on Site Specific Met Data | 15d | 2023-02-14 | 2023-03-06 | CP-P2-02-03-SD-0105, PKM-0120, CP-P2-02-03-SD-0120 FF+5d, CP-P2-02-03-SD-0115 FF+5d |  |  |  |  | 0d |  |  | UDF_G3 | Yes |  | Yes | S&L | supt |  |  | 03 | S&L | FNTP | P2 | 2 | 2.3.4 |  |  |  |  |  |  |  |  |  |  | 2 |  |  | x/q nuscalex15 | as of 30dec22 updated X/Q Schedule logic changes |  | 15 |  |
| CP-P2-02-03-SD-0116 |  | Perform Accident X/Q Analysis (PAVAN) - TO4 External Review / Comments Received | 5d | 2023-02-28 | 2023-03-13 | CP-P2-02-03-SD-0115 |  |  | 2023-02-28 | 2023-03-06 | 60d | 0d |  |  |  |  |  |  | supt |  |  |  | TO4 |  |  |  |  |  |  |  |  |  |  |  |  | cal |  |  |  |  |  |  |  |  |  |
| CP-P2-02-03-SD-0121 |  | Perform Control Room/ TSC Accident X/Q (ARCON) - TO4 External Review / Comments Received | 5d | 2023-02-28 | 2023-03-13 | CP-P2-02-03-SD-0120 |  |  | 2023-02-28 | 2023-03-06 | 60d | 0d |  |  |  |  |  |  | supt |  |  |  | TO4 |  |  |  |  |  |  |  |  |  |  |  |  | cal |  |  |  |  |  |  |  |  |  |
| CP-P2-02-03-SD-0126 |  | Perform X/Q Sensitivity Analysis Based on Site Specific Met Data - TO4 External Review / Comments Received | 5d | 2023-03-07 | 2023-03-20 | CP-P2-02-03-SD-0125 |  |  | 2023-03-07 | 2023-03-13 | 0d |  |  |  |  |  |  |  | supt |  |  |  | TO4 |  |  |  |  |  |  |  |  |  |  |  |  | cal |  | 2 |  |  |  |  |  |  |  |
| CP-P2-02-03-SD-0117 |  | Perform Accident X/Q Analysis (PAVAN) - Comment Resolution / Issue Final | 10d | 2023-03-14 | 2023-03-27 | CP-P2-02-03-SD-0116 |  |  |  |  | 60d | 5d |  |  |  |  |  |  | supt |  |  |  | S&L |  |  |  |  |  |  |  |  |  |  |  |  | cal |  |  |  |  |  |  |  |  |  |
| CP-P2-02-03-SD-0122 |  | Perform Control Room/ TSC Accident X/Q (ARCON) - Comment Resolution / Issue Final | 10d | 2023-03-14 | 2023-03-27 | CP-P2-02-03-SD-0121 |  |  |  |  | 60d | 5d |  |  |  |  |  |  | supt |  |  |  | S&L |  |  |  |  |  |  |  |  |  |  |  |  | cal |  |  |  |  |  |  |  |  |  |
| CP-P2-02-03-SD-0127 |  | Perform X/Q Sensitivity Analysis Based on Site Specific Met Data - Comment Resolution / Issue Final | 10d | 2023-03-21 | 2023-04-03 | CP-P2-02-03-SD-0126 |  |  |  |  | 0d |  |  |  |  |  |  |  | supt |  |  |  | S&L |  |  |  |  |  |  |  |  |  |  |  |  | cal |  | 2 |  |  |  |  |  |  | As of 12dec22 revised as pred to 15-01-sd-0005 |
|  | 02 | **CFPP - COLA Prep - Part 02 - Chapter 02 - Section 3.4 - Section Writing** |  | 2023-03-07 | 2023-05-15 |  |  |  |  |  |  |  |  |  |  |  |  |  |  |  |  |  |  |  |  |  |  |  |  |  |  |  |  |  |  |  |  |  |  |  |  |  |  |  |  |
| CP-P2-02-03-SW-0085 |  | Prepare Draft Rev A - FSAR Section 2.3.4 | 20d | 2023-03-07 | 2023-04-03 | CP-P2-02-03-SD-0125, CP-P2-02-03-SD-0115, CP-P2-02-03-SD-0120, CP-P2-02-03-SD-0117 FF, CP-P2-02-03-SD-0127 FF, CP-P2-02-03-SD-0122 FF, CP-P2-02-03-SD-0112 FF |  |  |  |  | 55d | 0d |  | UDF_G3 | Yes | CP-4 | Yes | S&L | deliv |  | S&L-REVA | 03 | S&L | FNTP | P2 | 2 | 2.3.4 | No SDA | 1 |  |  |  |  |  |  |  |  |  |  | 1 |  |  | 1 |  |  |
| CP-P2-02-03-SW-0090 |  | Review Draft Rev A - FSAR Section 2.3.4 (TO4 Team Review) | 10d | 2023-04-04 | 2023-04-17 | CP-P2-02-03-SW-0085 |  |  |  |  | 55d | 0d |  | UDF_G1 | Yes | CP-4 | Yes | S&L | deliv |  |  | 03 | TO4 | FNTP | P2 | 2 | 2.3.4 |  | 2 | FIX |  |  |  |  |  |  |  |  |  | 1 |  |  | 1 |  |  |
| CP-P2-02-03-SW-0095 |  | Resolve Rev A Comments - FSAR Section 2.3.4 | 10d | 2023-04-18 | 2023-05-01 | CP-P2-02-03-SW-0090 |  |  |  |  | 120d | 0d |  | UDF_G1 | Yes |  | Yes | S&L | deliv |  |  | 03 | S&L | FNTP | P2 | 2 | 2.3.4 |  | 3 |  |  |  |  |  |  |  |  |  |  |  |  |  |  |  |  |
| CP-P2-02-03-SW-0096 |  | Confirm SDA Information and Inform Reviewers - FSAR Section 2.3.4 | 5d | 2023-05-02 | 2023-05-02 | CP-P2-02-03-SW-0095, PKM-0125 |  |  | 2023-05-02 | 2023-05-08 | 120d | 0d |  | UDF_G1 | Yes |  | Yes | FL4 | deliv |  |  | 03 | FL4 | FNTP | P2 | 1 | 1.1 | SDA Tie | 4 | FIX | Matt-TBD | checked pushed out by pred | S | S&L-REV0 |  |  |  |  |  |  |  |  |  |  |  |
| CP-P2-02-03-SW-0100 |  | Issue Rev 0 - FSAR Section 2.3.4 | 10d | 2023-05-02 | 2023-05-15 | CP-P2-02-03-SW-0096 |  |  |  |  | 120d | 118d |  | UDF_G1 | Yes |  | Yes | S&L | deliv |  |  | 03 | S&L | FNTP | P2 | 2 | 2.3.4 | SDA Tie | 5 |  |  |  | S | S&L-REV0 |  |  |  |  |  |  |  |  |  |  |  |

Notes:
- CP-P2-02-03-SW-0060: 10A OCT MIDMONTH Notes: oct update
- CP-P2-02-03-SW-0065: 10A OCT MIDMONTH Notes: oct update
- CP-P2-02-03-SW-0070: 10A OCT MIDMONTH Notes: oct update
- CP-P2-02-03-SW-0071: 10A OCT MIDMONTH Notes: oct update / 12B DEC EOM Notes: In parallel with Team Review (hold duration at 5d)
- CP-P2-02-03-SW-0075: 10A OCT MIDMONTH Notes: oct update
- CP-P2-02-03-SD-0120: 10A OCT MIDMONTH Notes: oct update reduced duration from 45 / 12B DEC EOM Notes: as of 30dec22 updated added start date 1st mitigation reduced finish to 27feb23 from 6mar23
- CP-P2-02-03-SD-0115: 10A OCT MIDMONTH Notes: oct update reduced duration from 65 / 12B DEC EOM Notes: as of 30dec22 updated
- CP-P2-02-03-SD-0125: 10A OCT MIDMONTH Notes: oct update reduced duration from 65 added pred p2-11-03-sd-0010 pushing out critical path / 12B DEC EOM Notes: as of 30dec22 updated pred slip X/Q Schedule logic changes
- CP-P2-02-03-SD-0126: 12B DEC EOM Notes: as of 30dec22 updated pred slip
- CP-P2-02-03-SD-0127: 12B DEC EOM Notes: as of 30dec22 updated pred slip
- CP-P2-02-03-SW-0085: 10A OCT MIDMONTH Notes: oct update
- CP-P2-02-03-SW-0090: 10A OCT MIDMONTH Notes: oct update
- CP-P2-02-03-SW-0095: 10A OCT MIDMONTH Notes: oct update
- CP-P2-02-03-SW-0096: 10A OCT MIDMONTH Notes: oct update / 12B DEC EOM Notes: In parallel with Team Review (hold duration at 5d)
- CP-P2-02-03-SW-0100: 10A OCT MIDMONTH Notes: oct update

| ID | WBS | Activity | Duration | Start | Finish | Predecessors | Complete | Remaining | Planned start | Planned finish | Total float | Free float | Constraint | Expected finish | UDF Indicator 01 | zText_02 | zText_Level 3 Schedule | Rebaseline details | doc type | CFPP, LLC WBS Structure | Author | Period of Performance | Part | Chapter | Section | 12B DEC EOM Notes | 10C OCT Monthly Report Notes | CFPP - Contractor's Remarks | Forecast Finish | Other | 10A OCT MIDMONTH Notes | PREPDRFTREVA | SDA needed | activity step | SDA ties | Deliverable Owner | SDA cleanup notes | SDA ACT | REV0 - SDA | Progress Deliv Sheet Milestone # | zText_RFI | zText_CFPP Look Ahead Notes | VERIFIED MONTHLY UPDATE | 9A SEP EOM Notes | NEED UPDATE | cfpp two week acts | 11A NOV MIDMONTH Notes |
| --- | --- | --- | --- | --- | --- | --- | --- | --- | --- | --- | --- | --- | --- | --- | --- | --- | --- | --- | --- | --- | --- | --- | --- | --- | --- | --- | --- | --- | --- | --- | --- | --- | --- | --- | --- | --- | --- | --- | --- | --- | --- | --- | --- | --- | --- | --- | --- |
|  | 05 | **CFPP - COLA Prep - Part 02 - Chapter - Sec 3.5 Lng-trm Atm'pheric Dispersion Estimat Routine Release** |  | 2022-02-08 | 2023-06-13 |  |  |  |  |  |  |  |  |  |  |  |  |  |  |  |  |  |  |  |  |  |  |  |  |  |  |  |  |  |  |  |  |  |  |  |  |  |  |  |  |  |  |
|  | 01 | **CFPP - COLA Prep - Part 02 - Chapter 02 - Section 3.5 - Support Documents** |  | 2022-02-08 | 2023-05-01 |  |  |  |  |  |  |  |  |  |  |  |  |  |  |  |  |  |  |  |  |  |  |  |  |  |  |  |  |  |  |  |  |  |  |  |  |  |  |  |  |  |  |
| CP-P2-02-03-SD-0130 |  | Provide locations of "Sensitive Receptors" | 30d | 2022-02-08 A | 2022-04-29 A | PKM-0070, B-000-0065, CP-P2-02-01-SD-0030 FF | 100% |  | 2022-03-14 | 2022-04-22 |  |  |  |  | UDF_G3 | Yes | Yes | S&L | supt | 03 | S&L | FNTP | P2 | 2 | 2.3.5 |  |  |  |  |  |  |  |  |  |  |  |  |  |  |  |  |  |  |  |  |  |  |
| CP-P2-02-03-SD-0135 |  | Prepare Annual Average X/Q (XOQDOQ) Calc - Prepare | 25d | 2022-12-21 A | 2023-04-03 | CP-P2-02-03-SD-0115, CP-P2-02-01-SD-0010, CP-P2-02-03-SD-0130, PKM-0120 |  | 25d | 2023-02-27 | 2023-03-31 | 25d | 0d |  | 2023-04-03 | UDF_G3 | Yes | Yes | S&L | supt | 03 | S&L | FNTP | P2 | 2 | 2.3.5 | as of 30dec22 updated | in S&L report as delayed (confirmed) | as of 30dec22 updated | 2023-04-03 |  |  |  |  |  |  |  |  |  |  |  |  |  |  |  |  |  |  |
| CP-P2-02-03-SD-0140 |  | Long term atmospheric dispersion analysis for accident X/Q values - calc - Prepare | 25d | 2023-02-28 | 2023-04-03 | PKM-0120, CP-P2-02-03-SD-0115 |  |  | 2023-02-28 | 2023-04-04 | 25d | 0d | start on or after 2023-02-28 | 2023-04-03 |  |  |  |  | supt |  | S&L |  |  |  |  |  |  |  | 2023-04-03 | cal | oct update reduced duration from 44 |  |  |  |  |  |  |  |  |  |  |  |  |  |  |  |  |
| CP-P2-02-03-SD-0136 |  | Prepare Annual Average X/Q (XOQDOQ) Calc - TO4 External Review / Comments Received | 10d | 2023-04-04 | 2023-04-17 | CP-P2-02-03-SD-0135 |  |  |  |  | 25d | 0d |  |  |  |  |  |  | supt |  | TO4 |  |  | 2 | 2.3.5 |  |  |  |  | cal |  |  |  |  |  |  |  |  |  |  |  |  |  |  |  |  |  |
| CP-P2-02-03-SD-0141 |  | Long term atmospheric dispersion analysis for accident X/Q values - calc -TO4 External Review / Comments Received | 5d | 2023-04-04 | 2023-04-17 | CP-P2-02-03-SD-0140 |  |  | 2023-04-04 | 2023-04-10 | 25d | 0d |  |  |  |  |  |  | supt |  | S&L |  |  |  |  |  |  |  |  | cal |  |  |  |  |  |  |  |  |  |  |  |  |  |  |  |  |  |
| CP-P2-02-03-SD-0137 |  | Prepare Annual Average X/Q (XOQDOQ) Calc - Comment Resolution / Issue Final | 10d | 2023-04-18 | 2023-05-01 | CP-P2-02-03-SD-0136 |  |  |  |  | 25d | 0d |  |  |  |  |  |  | supt |  | S&L |  | P2 | 2 | 2.3.5 |  |  |  |  | cal |  |  |  |  |  |  |  |  |  |  |  |  |  |  |  |  |  |
| CP-P2-02-03-SD-0142 |  | Long term atmospheric dispersion analysis for accident X/Q values - calc -Comment Resolution / Issue Final | 10d | 2023-04-18 | 2023-05-01 | CP-P2-02-03-SD-0141 |  |  |  |  | 25d | 0d |  |  |  |  |  |  | supt |  | S&L |  |  |  |  |  |  |  |  | cal |  |  |  |  |  |  |  |  |  |  |  |  |  |  |  |  |  |
|  | 02 | **CFPP - COLA Prep - Part 02 - Chapter 02 - Section 3.5 - Section Writing** |  | 2023-04-04 | 2023-06-13 |  |  |  |  |  |  |  |  |  |  |  |  |  |  |  |  |  |  |  |  |  |  |  |  |  |  |  |  |  |  |  |  |  |  |  |  |  |  |  |  |  |  |
| CP-P2-02-03-SW-0105 |  | Prepare Draft Rev A - FSAR Section 2.3.5 | 20d | 2023-04-04 | 2023-05-01 | CP-P2-02-03-SD-0135, CP-P2-02-03-SD-0137 FF, CP-P2-02-03-SD-0142 FF |  |  |  |  | 25d | 0d |  |  | UDF_G3 | Yes | Yes | S&L | deliv | 03 | S&L | FNTP | P2 | 2 | 2.3.5 |  | in S&L report as delayed (unconfirmed) |  |  |  | oct update | S&L-REVA | No SDA | 1 |  |  |  |  |  |  |  |  |  |  |  |  |  |
| CP-P2-02-03-SW-0110 |  | Review Draft Rev A - FSAR Section 2.3.5 (TO4 Team Review) | 10d | 2023-05-02 | 2023-05-15 | CP-P2-02-03-SW-0105 |  |  |  |  | 25d | 0d |  |  | UDF_G1 | Yes | Yes | S&L | deliv | 03 | TO4 | FNTP | P2 | 2 | 2.3.5 |  | in S&L report as delayed (unconfirmed) |  |  |  | oct update |  |  | 2 | FIX |  |  |  |  |  |  |  |  |  |  |  |  |
| CP-P2-02-03-SW-0115 |  | Resolve Rev A Comments - FSAR Section 2.3.5 | 10d | 2023-05-16 | 2023-05-30 | CP-P2-02-03-SW-0110 |  |  |  |  | 100d | 0d |  |  | UDF_G1 | Yes | Yes | S&L | deliv | 03 | S&L | FNTP | P2 | 2 | 2.3.5 |  | in S&L report as delayed (unconfirmed) |  |  |  | oct update |  |  | 3 |  |  |  |  |  |  |  |  |  |  |  |  |  |
| CP-P2-02-03-SW-0116 |  | Confirm SDA Information and Inform Reviewers - FSAR Section 2.3.5 | 5d | 2023-05-31 | 2023-05-31 | CP-P2-02-03-SW-0115, PKM-0125 |  |  | 2023-05-31 | 2023-06-06 | 100d | 0d |  |  | UDF_G1 | Yes | Yes | FL4 | deliv | 03 | FL4 | FNTP | P2 | 1 | 1.1 | In parallel with Team Review (hold duration at 5d) | in S&L report as delayed (unconfirmed) |  |  |  | oct update |  | SDA Tie | 4 | FIX | Matt-TBD | checked pushed out by pred | S | S&L-REV0 |  |  |  |  |  |  |  |  |
| CP-P2-02-03-SW-0120 |  | Issue Rev 0 - FSAR Section 2.3.5 | 10d | 2023-05-31 | 2023-06-13 | CP-P2-02-03-SW-0116 |  |  |  |  | 100d | 98d |  |  | UDF_G1 | Yes | Yes | S&L | deliv | 03 | S&L | FNTP | P2 | 2 | 2.3.5 |  | in S&L report as delayed (unconfirmed) |  |  |  | oct update driven out by 2.3.5 SD deliveries |  | SDA Tie | 5 |  |  |  | S | S&L-REV0 |  |  |  |  |  |  |  |  |
|  | 04 | **CFPP - COLA Prep - Part 02 - Chapter 02 - Section 4 Hydrology** |  | 2022-01-05 | 2023-07-18 |  |  |  |  |  |  |  |  |  |  |  |  |  |  |  |  |  |  |  |  |  |  |  |  |  |  |  |  |  |  |  |  |  |  |  |  |  |  |  |  |  |  |
|  | 00 | **CFPP - COLA Prep - Part 02 - Chapter 02 - Section 4.0 Hydrologic Engineering** |  | 2022-01-25 | 2023-06-05 |  |  |  |  |  |  |  |  |  |  |  |  |  |  |  |  |  |  |  |  |  |  |  |  |  |  |  |  |  |  |  |  |  |  |  |  |  |  |  |  |  |  |
|  | 01 | **CFPP - COLA Prep - Part 02 - Chapter 02 - Section 4.0 - Support Documents** |  | 2022-01-25 | 2023-02-01 |  |  |  |  |  |  |  |  |  |  |  |  |  |  |  |  |  |  |  |  |  |  |  |  |  |  |  |  |  |  |  |  |  |  |  |  |  |  |  |  |  |  |
| CP-P2-02-04-SD-0000 |  | Develop Site Specific Hydrology Sections List | 16d | 2022-01-25 A | 2022-02-02 A | PKM-0070, B-000-0065 FF+8d | 100% |  | 2022-01-31 | 2022-02-21 |  |  |  |  | UDF_G3 | Yes | Yes | S&L | supt | 03 | S&L | FNTP | P2 | 2 | 2.4.0 |  |  |  |  |  |  |  |  |  |  |  |  |  |  | 21 |  |  |  |  |  |  |  |
| CP-P2-02-04-SD-0010 |  | Obtain Existing DOE/USGS/State & County Groundwater Models | 30d | 2022-03-28 A | 2022-04-29 A | FI-GI-SSI-RP-0015 SS | 100% |  | 2022-03-28 | 2022-05-06 |  |  |  |  | UDF_G3 | Yes |  | RIZZO | supt | 03 | RIZZO | FNTP | P2 |  |  |  |  |  |  |  |  |  |  |  |  |  |  |  |  |  | RFI 202 |  |  |  |  |  |  |
| CP-P2-02-04-SD-0005 |  | Obtain FDN Depths & Dimensions for SR & non-SR Buildings & Max GW Level from SDA | 0d | 2022-05-10 A | 2022-05-10 A | FI-GI-SSI-RP-0015 | 100% |  |  |  |  |  |  |  | UDF_G3 | Yes |  | S&L RIZZO FL4 | supt | 03 | RIZZO | FNTP | P2 | 2 | 2.4.0 |  |  |  |  |  |  |  |  |  |  |  |  |  |  |  | RFI 302 |  |  |  |  |  |  |
| CP-P2-02-04-SD-0015 |  | Prepare Site, Local, & Regional Hydrology Existing Data Summary | 50d | 2022-06-28 A | 2022-10-28 A | CP-P2-02-04-SD-0010, CP-P2-02-04-SD-0190 | 100% |  | 2022-06-28 | 2022-09-07 |  |  |  |  | UDF_G3 | Yes | Yes | RIZZO | supt | 03 | RIZZO | FNTP | P2 | 2 | 2.4.0 |  |  |  |  |  |  |  |  |  |  |  |  |  |  |  |  | Y | X | Sep update finish slip from 7sep | OCT | x |  |
| CP-P2-02-04-SD-0020 |  | Prepare Regional Groundwater Use Study | 60d | 2022-09-06 A | 2023-02-01 | CP-P2-02-04-SD-0015 FF |  | 23d | 2022-09-08 | 2022-12-01 | 8d | 0d |  | 2023-02-01 | UDF_G3 | Yes | Yes | RIZZO | supt | 03 | RIZZO | FNTP | P2 | 2 | 2.4.0 | As of 30dec22 delayed |  | as of 30dec22 updated |  |  |  |  |  |  |  |  |  |  |  |  |  |  |  | Sep update |  |  | As of 22Nov |
|  | 02 | **CFPP - COLA Prep - Part 02 - Chapter 02 - Section 4.0 - Section Writing** |  | 2023-03-27 | 2023-06-05 |  |  |  |  |  |  |  |  |  |  |  |  |  |  |  |  |  |  |  |  |  |  |  |  |  |  |  |  |  |  |  |  |  |  |  |  |  |  |  |  |  |  |
| CP-P2-02-04-SW-0000 |  | Prepare Draft Rev A - FSAR Section 2.4.0 | 20d | 2023-03-27 | 2023-04-21 | CP-P2-02-04-SD-0000, CP-P3-02-02-SW-0000 |  |  |  |  | 106d | 0d |  |  | UDF_G3 | Yes | Yes | S&L | deliv | 03 | S&L | FNTP | P2 | 2 | 2.4.0 | as of 30dec22 updated Incorporated RIZZO 11/27/22 Updates | In S&L report as delayed (unconfirmed) | as of 30dec22 updated Incorporated RIZZO 11/27/22 Updates |  |  |  | S&L-REVA | No SDA | 1 |  |  |  |  |  | 22 |  |  |  |  |  |  |  |
| CP-P2-02-04-SW-0005 |  | Review Draft Rev A - FSAR Section 2.4.0 (TO4 Team Review) | 10d | 2023-04-24 | 2023-05-05 | CP-P2-02-04-SW-0000 |  |  |  |  | 106d | 0d |  |  | UDF_G1 | Yes | Yes | S&L | deliv | 03 | TO4 | FNTP | P2 | 2 | 2.4.0 |  | In S&L report as delayed (unconfirmed) |  |  |  |  |  |  | 2 | FIX |  |  |  |  | 22 |  |  |  |  |  |  |  |
| CP-P2-02-04-SW-0010 |  | Resolve Rev A Comments - FSAR Section 2.4.0 | 10d | 2023-05-08 | 2023-05-19 | CP-P2-02-04-SW-0005 |  |  |  |  | 106d | 0d |  |  | UDF_G1 | Yes | Yes | S&L | deliv | 03 | S&L | FNTP | P2 | 2 | 2.4.0 | as of 30dec22 updated Incorporated RIZZO 11/27/22 Updates | In S&L report as delayed (unconfirmed) | as of 30dec22 updated Incorporated RIZZO 11/27/22 Updates |  |  |  |  |  | 3 |  |  |  |  |  | 22 |  |  |  |  |  |  |  |
| CP-P2-02-04-SW-0013 |  | Confirm SDA Information and Inform Reviewers - FSAR Section 2.4.0 | 5d | 2023-05-22 | 2023-05-22 | CP-P2-02-04-SW-0010, PKM-0125 |  |  | 2023-05-22 | 2023-05-26 | 106d | 0d |  |  | UDF_G1 | Yes | Yes | FL4 | deliv | 03 | FL4 | FNTP | P2 | 1 | 1.1 | In parallel with Team Review (hold duration at 5d) | In S&L report as delayed (unconfirmed) |  |  |  |  |  | SDA Tie | 4 | FIX | Matt-TBD | checked pushed out by pred | S | S&L-REV0 |  |  |  |  |  |  |  |  |
| CP-P2-02-04-SW-0015 |  | Issue Rev 0 - FSAR Section 2.4.0 | 10d | 2023-05-22 | 2023-06-05 | CP-P2-02-04-SW-0013 |  |  |  |  | 106d | 104d |  |  | UDF_G1 | Yes | Yes | S&L | deliv | 03 | S&L | FNTP | P2 | 2 | 2.4.0 | as of 30dec22 updated Incorporated RIZZO 11/27/22 Updates | In S&L report as delayed (unconfirmed) | as of 30dec22 updated Incorporated RIZZO 11/27/22 Updates |  |  |  |  | SDA Tie | 5 |  |  |  | S | S&L-REV0 | 22 |  |  |  |  |  |  |  |

Notes:
- CP-P2-02-03-SD-0135: 10B OCT EOM Notes: oct update add p2-02-03-sd-0115 pred duration from 40 to 25 days
- CP-P2-02-04-SD-0015: 10B OCT EOM Notes: oct update finish on time

| ID | WBS | Activity | Duration | Start | Finish | Predecessors | Complete | Remaining | Planned start | Planned finish | Total float | Free float | Expected finish | UDF Indicator 01 | zText_02 | zText_Level 3 Schedule | Rebaseline details | doc type | CFPP, LLC WBS Structure | Author | Period of Performance | Part | Chapter | Section | Comments | 9A SEP EOM Notes | VERIFIED MONTHLY UPDATE | NEED UPDATE | Monthly Variance | 10B OCT EOM Notes | PREPDRFTREVA | 11A NOV MIDMONTH Notes | 11B NOV EOM Notes | 10C OCT Monthly Report Notes | SDA needed | activity step | SDA ties | 12A DEC MIDMONTH Notes | Deliverable Owner | SDA ACT | REV0 - SDA | 10A OCT MIDMONTH Notes | zText_RFI | Reconcile Rev 0 Milestones | Forecast Finish | Critical Paths | Other | SDA cleanup notes |
| --- | --- | --- | --- | --- | --- | --- | --- | --- | --- | --- | --- | --- | --- | --- | --- | --- | --- | --- | --- | --- | --- | --- | --- | --- | --- | --- | --- | --- | --- | --- | --- | --- | --- | --- | --- | --- | --- | --- | --- | --- | --- | --- | --- | --- | --- | --- | --- | --- |
|  | 01 | **CFPP - COLA Prep - Part 02 - Chapter 02 - Section 4.1 Hydrologic Description** |  | 2022-01-05 | 2023-01-24 |  |  |  |  |  |  |  |  |  |  |  |  |  |  |  |  |  |  |  |  |  |  |  |  |  |  |  |  |  |  |  |  |  |  |  |  |  |  |  |  |  |  |  |
|  | 01 | **CFPP - COLA Prep - Part 02 - Chapter 02 - Section 4.1 - Support Documents** |  | 2022-01-05 | 2022-09-30 |  |  |  |  |  |  |  |  |  |  |  |  |  |  |  |  |  |  |  |  |  |  |  |  |  |  |  |  |  |  |  |  |  |  |  |  |  |  |  |  |  |  |  |
| CP-P2-02-04-SD-0025 |  | Provide Info of Hydrological Features at INL Site | 30d | 2022-01-05 A | 2022-03-25 A | PKM-0070, B-000-0065, FI-GI-SSI-RP-0015 FF | 100% |  | 2022-02-03 | 2022-03-16 |  |  |  | UDF_G3 | Yes | Yes | S&L | supt | 03 | S&L | FNTP | P2 | 2 | 2.4.1 |  |  |  |  |  |  |  |  |  |  |  |  |  |  |  |  |  |  |  |  |  |  |  |  |
| CP-P2-02-04-SD-0030 |  | Collect & Summarize Surface Water Hydrology Data | 30d | 2022-03-04 A | 2022-04-06 A |  | 100% |  | 2022-03-14 | 2022-04-22 |  |  |  | UDF_G3 | Yes |  | S&L | supt | 03 | S&L | FNTP | P2 | 2 | 2.4.1 |  |  |  |  |  |  |  |  |  |  |  |  |  |  |  |  |  |  |  |  |  |  |  |  |
| CP-P2-02-04-SD-0035 |  | Topographic Maps Showing Major Hydrologic Features | 102d | 2022-04-07 A | 2022-06-24 A | CP-P2-02-04-SD-0030 | 100% |  | 2022-04-07 | 2022-08-30 |  |  |  | UDF_G3 | Yes |  | S&L | supt | 03 | S&L | FNTP | P2 | 2 | 2.4.1 |  |  |  |  |  |  |  |  |  |  |  |  |  |  |  |  |  |  |  |  |  |  |  |  |
| CP-P2-02-04-SD-0036 |  | Topographic Maps Showing Major Hydrologic Features - TO4 External Review / Comment | 102d | 2022-07-05 A | 2022-07-18 A | CP-P2-02-04-SD-0030, CP-P2-02-04-SD-0035 | 100% |  | 2022-07-05 | 2022-11-25 |  |  |  | UDF_G3 | Yes |  | S&L | supt | 03 | S&L | FNTP | P2 | 2 | 2.4.1 | x |  |  |  |  |  |  |  |  |  |  |  |  |  |  |  |  |  |  |  |  |  |  |  |
| CP-P2-02-04-SD-0037 |  | Topographic Maps Showing Major Hydrologic Features - Comment Resolution / Issue | 102d | 2022-07-19 A | 2022-09-30 A | CP-P2-02-04-SD-0030, CP-P2-02-04-SD-0036 | 100% |  | 2022-04-07 | 2022-08-30 |  |  |  | UDF_G3 | Yes |  | S&L | supt | 03 | S&L | FNTP | P2 | 2 | 2.4.1 |  | Sep update |  |  |  |  |  |  |  |  |  |  |  |  |  |  |  |  |  |  |  |  |  |  |
|  | 02 | **CFPP - COLA Prep - Part 02 - Chapter 02 - Section 4.1 - Section Writing** |  | 2022-10-03 | 2023-01-24 |  |  |  |  |  |  |  |  |  |  |  |  |  |  |  |  |  |  |  |  |  |  |  |  |  |  |  |  |  |  |  |  |  |  |  |  |  |  |  |  |  |  |  |
| CP-P2-02-04-SW-0020 |  | Prepare Draft Rev A - FSAR Section 2.4.1 | 20d | 2022-10-03 A | 2022-11-04 A | CP-P2-02-04-SD-0030, IFM-TO3-TO4-0001, IFM-TO5-TO4-0005, CP-P2-02-04-SD-0037 FF | 100% |  | 2022-10-03 | 2022-10-28 |  |  |  | UDF_G3 | Yes | Yes | S&L | deliv | 03 | S&L | FNTP | P2 | 2 | 2.4.1 |  | Sep update start slip from 30sep | X | OCT | Oct | oct update finsih slip from 28oct22 | S&L-REVA | As of 15nov 22 complete 4nov22 | As of 29nov22 complete | In S&L report as delayed (confirmed) | No SDA | 1 |  |  |  |  |  |  |  |  |  |  |  |  |
| CP-P2-02-04-SW-0025 |  | Review Draft Rev A - FSAR Section 2.4.1 (TO4 Team Review) | 10d | 2022-11-07 A | 2022-12-19 A | CP-P2-02-04-SW-0020 | 100% |  | 2022-11-07 | 2022-11-18 |  |  |  | UDF_G1 | Yes | Yes | S&L | deliv | 03 | TO4 | FNTP | P2 | 2 | 2.4.1 |  |  |  |  |  | oct update start slip out |  | As of 15nov 22 forecast 29nov22 | As of 29nov22 complete (based on S&L update) |  |  | 2 | NFIX |  |  |  |  |  |  |  |  |  |  |  |
| CP-P2-02-04-SW-0030 |  | Resolve Rev A Comments - FSAR Section 2.4.1 | 10d | 2022-12-01 A | 2022-12-07 A | CP-P2-02-04-SW-0025 | 100% |  | 2022-11-30 | 2022-12-13 |  |  |  | UDF_G1 | Yes | Yes | S&L | deliv | 03 | S&L | FNTP | P2 | 2 | 2.4.1 |  |  |  |  |  |  |  |  | As of 29nov22 pred start slip out |  |  | 3 |  | As of 12dec22 duration reduced to 0 (?) |  |  |  |  |  |  |  |  |  |  |
| CP-P2-02-04-SW-0012 |  | Confirm SDA Information and Inform Reviewers - FSAR Section 2.4.1 | 5d | 2023-01-04 | 2023-01-10 | CP-P2-02-04-SW-0030, PKM-0125 |  |  |  |  | 199d | 0d |  | UDF_G1 | Yes | Yes | FL4 | deliv | 03 | S&L | FNTP | P2 | 2 | 2.4.1 |  |  |  |  |  |  |  |  | As of 29nov22 moved to 11/7/22 start date (verify) |  | No SDA | 4 | NFIX |  | Matt-TBD | S | S&L-REV0 |  |  |  |  |  |  |  |
| CP-P2-02-04-SW-0035 |  | Issue Rev 0 - FSAR Section 2.4.1 | 10d | 2023-01-11 | 2023-01-24 | CP-P2-02-04-SW-0012 |  |  |  |  | 199d | 197d |  | UDF_G1 | Yes | Yes | S&L | deliv | 03 | S&L | FNTP | P2 | 2 | 2.4.1 |  |  |  |  |  |  |  |  |  | In S&L report as delayed (confirmed) | No SDA | 5 |  |  |  | S | S&L-REV0 | oct update "Confirm SDA date" driving out |  |  |  |  |  |  |
|  | 02 | **CFPP - COLA Prep - Part 02 - Chapter 02 - Section 4.2 Floods** |  | 2022-01-05 | 2023-06-05 |  |  |  |  |  |  |  |  |  |  |  |  |  |  |  |  |  |  |  |  |  |  |  |  |  |  |  |  |  |  |  |  |  |  |  |  |  |  |  |  |  |  |  |
|  | 01 | **CFPP - COLA Prep - Part 02 - Chapter 02 - Section 4.2 - Support Documents** |  | 2022-01-05 | 2023-03-24 |  |  |  |  |  |  |  |  |  |  |  |  |  |  |  |  |  |  |  |  |  |  |  |  |  |  |  |  |  |  |  |  |  |  |  |  |  |  |  |  |  |  |  |
| CP-P2-02-04-SD-0045 |  | Provide PMF Studies Info for INL Site | 16d | 2022-01-05 A | 2022-03-25 A | PKM-0070, B-000-0065 FF+8d | 100% |  | 2022-01-31 | 2022-02-21 |  |  |  | UDF_G3 | Yes | Yes | S&L | supt | 03 | S&L | FNTP | P2 | 2 | 2.4.2 |  |  |  |  |  |  |  |  |  |  |  |  |  |  |  |  |  |  | RFI 102 |  |  |  |  |  |
| CP-P2-02-04-SD-0050 |  | Conduct Topographic / Bathymetric Data Research & Provide Plant Drainage System Info | 30d | 2022-02-01 A | 2022-03-14 A | PKM-0070, IFM-TO5-TO4-0000 | 100% |  | 2022-01-31 | 2022-03-11 |  |  |  | UDF_G3 | Yes | Yes | S&L | supt | 03 | S&L | FNTP | P2 | 2 | 2.4.2 |  |  |  |  |  |  |  |  |  |  |  |  |  |  |  |  |  |  |  |  |  |  |  |  |
| CP-P2-02-04-SD-0055 |  | Conduct Flood History Research at INL Site | 30d | 2022-02-07 A | 2022-04-01 A | CP-P2-02-04-SD-0045 SS, IFM-TO5-TO4-0000, IFM-TO5-TO4-0005 | 100% |  | 2022-03-31 | 2022-05-11 |  |  |  | UDF_G3 | Yes | Yes | S&L | supt | 03 | S&L | FNTP | P2 | 2 | 2.4.2 |  |  |  |  |  |  |  |  |  |  |  |  |  |  |  |  |  |  |  |  |  |  |  |  |
| CP-P2-02-04-SD-0060 |  | Prepare Local Intense Precipitation Calc | 165d | 2022-06-25 A | 2023-02-20 | CP-P2-02-04-SD-0075, CP-P2-02-01-SD-0025 | 45% | 36d | 2022-07-05 | 2023-02-23 | 66d | 0d | 2023-02-20 | UDF_G3 | Yes |  | S&L | supt | 03 | S&L | FNTP | P2 | 2 | 2.4.2 |  |  |  |  |  |  |  |  |  |  |  |  |  |  |  |  |  |  |  | 3.4 | 2023-02-20 | 3 |  |  |
| CP-P2-02-04-SD-0065 |  | Prepare Description of Flood Inspection & Maint Program for Stormwater Conveyance Facilities - Prepare | 40d | 2023-01-30 | 2023-03-24 | CP-P2-02-04-SD-0060 FF+24d |  |  |  |  | 66d | 0d |  | UDF_G3 | Yes | Yes | S&L | supt | 03 | S&L | FNTP | P2 | 2 | 2.4.2 |  |  |  |  |  |  |  |  |  |  |  |  |  |  |  |  |  |  |  | 3.4 |  | 3 |  |  |
| CP-P2-02-04-SD-0061 |  | Prepare Local Intense Precipitation Calc - TO4 External Review / Comment Resolution | 5d | 2023-02-21 | 2023-03-06 | CP-P2-02-04-SD-0060 |  |  | 2023-02-21 | 2023-02-27 | 90d | 0d |  |  |  |  |  | supt |  | TO4 |  |  |  |  |  |  |  |  |  |  |  |  |  |  |  |  |  |  |  |  |  |  |  |  |  |  | cal |  |
| CP-P2-02-04-SD-0062 |  | Prepare Local Intense Precipitation Calc - Comment Resolution / Issue | 10d | 2023-03-07 | 2023-03-20 | CP-P2-02-04-SD-0061 |  |  |  |  | 90d | 24d |  |  |  |  |  | supt |  | S&L |  |  |  |  |  |  |  |  |  |  |  |  |  |  |  |  |  |  |  |  |  |  |  |  |  |  | cal |  |
|  | 02 | **CFPP - COLA Prep - Part 02 - Chapter 02 - Section 4.2 - Writing Section** |  | 2023-03-27 | 2023-06-05 |  |  |  |  |  |  |  |  |  |  |  |  |  |  |  |  |  |  |  |  |  |  |  |  |  |  |  |  |  |  |  |  |  |  |  |  |  |  |  |  |  |  |  |
| CP-P2-02-04-SW-0040 |  | Prepare Draft Rev A - FSAR Section 2.4.2 | 20d | 2023-03-27 | 2023-04-21 | CP-P2-02-04-SD-0065, CP-P2-02-04-SD-0080, CP-P2-02-04-SD-0050, CP-P2-02-04-SD-0055, CP-P2-02-04-SD-0062 FF |  |  |  |  | 66d | 0d |  | UDF_G3 | Yes | Yes | S&L | deliv | 03 | S&L | FNTP | P2 | 2 | 2.4.2 |  |  |  |  |  |  | S&L-REVA |  |  |  | No SDA | 1 |  |  |  |  |  |  |  | 3.4 |  | 3 |  |  |
| CP-P2-02-04-SW-0045 |  | Review Draft Rev A - FSAR Section 2.4.2 (TO4 Team Review) | 10d | 2023-04-24 | 2023-05-05 | CP-P2-02-04-SW-0040 |  |  |  |  | 76d | 0d |  | UDF_G1 | Yes | Yes | S&L | deliv | 03 | TO4 | FNTP | P2 | 2 | 2.4.2 |  |  |  |  |  |  |  |  |  |  |  | 2 | FIX |  |  |  |  |  |  |  |  |  |  |  |
| CP-P2-02-04-SW-0050 |  | Resolve Rev A Comments - FSAR Section 2.4.2 | 10d | 2023-05-08 | 2023-05-19 | CP-P2-02-04-SW-0045 |  |  |  |  | 106d | 0d |  | UDF_G1 | Yes | Yes | S&L | deliv | 03 | S&L | FNTP | P2 | 2 | 2.4.2 |  |  |  |  |  |  |  |  |  |  |  | 3 |  |  |  |  |  |  |  |  |  |  |  |  |
| CP-P2-02-04-SW-0051 |  | Confirm SDA Information and Inform Reviewers - FSAR Section 2.4.2 | 5d | 2023-05-22 | 2023-05-22 | CP-P2-02-04-SW-0050, PKM-0125 |  |  | 2023-05-22 | 2023-05-26 | 106d | 0d |  | UDF_G1 | Yes | Yes | FL4 | deliv | 03 | FL4 | FNTP | P2 | 1 | 1.1 |  |  |  |  |  |  |  |  |  |  | SDA Tie | 4 | FIX |  | Matt-TBD | S | S&L-REV0 |  |  |  |  |  |  | checked pushed out by pred |
| CP-P2-02-04-SW-0055 |  | Issue Rev 0 - FSAR Section 2.4.2 | 10d | 2023-05-22 | 2023-06-05 | CP-P2-02-04-SW-0051 |  |  |  |  | 106d | 104d |  | UDF_G1 | Yes | Yes | S&L | deliv | 03 | S&L | FNTP | P2 | 2 | 2.4.2 |  |  |  |  |  |  |  |  |  |  | SDA Tie | 5 |  |  |  | S | S&L-REV0 |  |  |  |  |  |  |  |

Notes:
- CP-P2-02-04-SW-0025: 12B DEC EOM Notes: as of 30dec22 updated
- CP-P2-02-04-SW-0030: 12B DEC EOM Notes: as of 30dec22 updated / CFPP - Contractor's Remarks: as of 30dec22 updated Forecast date not incorporated PDL 12/13
- CP-P2-02-04-SD-0060: 12B DEC EOM Notes: as of 30dec22 updated Forecast Date not Inocorprated PDL EF 2/20/23 / CFPP - Contractor's Remarks: as of 30dec22 updated Forecast Date not Inocorprated PDL EF 2/20/23
- CP-P2-02-04-SW-0051: 12B DEC EOM Notes: In parallel with Team Review (hold duration at 5d)

| ID | WBS | Activity | Duration | Start | Finish | Predecessors | Complete | Remaining | Planned start | Planned finish | Total float | Free float | Expected finish | UDF Indicator 01 | zText_02 | zText_Level 3 Schedule | Rebaseline details | doc type | CFPP, LLC WBS Structure | Author | Period of Performance | Part | Chapter | Section | Other | Comments | Remarks | Forecast Finish | zText_CFPP Look Ahead Notes | 9A SEP EOM Notes | NEED UPDATE | Monthly Variance | 10B OCT EOM Notes | PREPDRFTREVA | 10C OCT Monthly Report Notes | SDA needed | activity step | SDA ties | 11B NOV EOM Notes | 11A NOV MIDMONTH Notes | Deliverable Owner | SDA ACT | REV0 - SDA | 10A OCT MIDMONTH Notes | zText_RFI |
| --- | --- | --- | --- | --- | --- | --- | --- | --- | --- | --- | --- | --- | --- | --- | --- | --- | --- | --- | --- | --- | --- | --- | --- | --- | --- | --- | --- | --- | --- | --- | --- | --- | --- | --- | --- | --- | --- | --- | --- | --- | --- | --- | --- | --- | --- |
|  | 03 | **CFPP - COLA Prep - Part 02 - Chapter 02 - Section 4.3 PMF on Streams & Rivers** |  | 2022-02-03 | 2023-02-20 |  |  |  |  |  |  |  |  |  |  |  |  |  |  |  |  |  |  |  |  |  |  |  |  |  |  |  |  |  |  |  |  |  |  |  |  |  |  |  |  |
|  | 01 | **CFPP - COLA Prep - Part 02 - Chapter 02 - Section 4.3 - Support Documents** |  | 2022-02-03 | 2023-02-20 |  |  |  |  |  |  |  |  |  |  |  |  |  |  |  |  |  |  |  |  |  |  |  |  |  |  |  |  |  |  |  |  |  |  |  |  |  |  |  |  |
| CP-P2-02-04-SD-0070 |  | Gather River / Reservoir Regulations for Dams or Reservoirs | 30d | 2022-02-03 A | 2022-04-12 A | PKM-0070, B-000-0065, IFM-CFP-TO4-0005, IFM-TO5-TO4-0000 | 100% |  | 2022-01-31 | 2022-03-11 |  |  |  | UDF_G3 | Yes | Yes | S&L | supt | 03 | S&L | FNTP | P2 | 2 | 2.4.3 |  |  |  |  |  |  |  |  |  |  |  |  |  |  |  |  |  |  |  |  |  |
| CP-P2-02-04-SD-0075 |  | Develop PMF Depths - Prepare | 60d | 2022-02-07 A | 2022-04-15 A | CP-P2-02-04-SD-0045 SS, PKM-0000, CP-P2-02-04-SD-0045 FF | 100% |  | 2022-01-31 | 2022-04-22 |  |  |  | UDF_G3 | Yes | Yes | S&L | supt | 03 | S&L | FNTP | P2 | 2 | 2.4.3 |  |  |  |  |  |  |  |  |  |  |  |  |  |  |  |  |  |  |  |  |  |
| CP-P2-02-04-SD-0076 |  | Develop PMF Depths - TO4 External Review / Comments Received | 10d | 2022-05-02 A | 2022-08-12 A | CP-P2-02-04-SD-0075 | 100% |  | 2022-05-02 | 2022-05-13 |  |  |  |  |  |  |  | supt |  | S&L |  |  | 2 | 2.4.3 | cal | x | Per 6/27 mtg w/FL 7/11+10d. |  |  |  |  |  |  |  |  |  |  |  |  |  |  |  |  |  |  |
| CP-P2-02-04-SD-0080 |  | Develop PMF Flood Analysis | 160d | 2022-07-05 A | 2023-02-20 | CP-P2-02-04-SD-0070, CP-P2-02-04-SD-0075, IFM-TO5-TO4-0005 | 59% | 36d | 2022-07-05 | 2023-02-16 | 21d | 0d | 2023-02-20 | UDF_G3 | Yes |  | S&L | supt | 03 | S&L | FNTP | P2 | 2 | 2.4.3 |  |  |  | 2023-02-20 |  |  |  |  |  |  |  |  |  |  |  |  |  |  |  |  |  |
| CP-P2-02-04-SD-0077 |  | Develop PMF Depths - Comment Resolution / Issue Final | 10d | 2022-08-19 A | 2022-08-31 A | CP-P2-02-04-SD-0076 | 100% |  | 2022-08-19 | 2022-09-01 |  |  |  |  |  |  |  | supt |  | S&L |  | P2 | 2 | 2.4.3 | cal |  | verifiy with FLUOR review completion |  | Y | Sep update |  |  |  |  |  |  |  |  |  |  |  |  |  |  |  |
|  | 02 | **CFPP - COLA Prep - Part 02 - Chapter 02 - Section 4.3 - Section Writing** |  | 2022-09-06 | 2023-01-24 |  |  |  |  |  |  |  |  |  |  |  |  |  |  |  |  |  |  |  |  |  |  |  |  |  |  |  |  |  |  |  |  |  |  |  |  |  |  |  |  |
| CP-P2-02-04-SW-0060 |  | Prepare Draft Rev A - FSAR Section 2.4.3 | 20d | 2022-09-06 A | 2022-10-13 A | CP-P2-02-04-SD-0045, CP-P2-02-04-SD-0070, CP-P2-02-04-SD-0080 SS+44d, CP-P2-02-04-SD-0077 FF | 100% |  | 2022-09-06 | 2022-10-04 |  |  |  | UDF_G3 | Yes | Yes | S&L | deliv | 03 | S&L | FNTP | P2 | 2 | 2.4.3 |  |  |  |  |  | Sep update | OCT | Oct | oct update finish slip from 4oct22 | S&L-REVA | In S&L report as delayed (confirmed) | No SDA | 1 |  |  |  |  |  |  |  |  |
| CP-P2-02-04-SW-0065 |  | Review Draft Rev A - FSAR Section 2.4.3 (TO4 Team Review) | 10d | 2022-10-14 A | 2022-11-11 A | CP-P2-02-04-SW-0060 | 100% |  | 2022-10-05 | 2022-10-18 |  |  |  | UDF_G1 | Yes | Yes | S&L | deliv | 03 | TO4 | FNTP | P2 | 2 | 2.4.3 |  |  |  |  |  |  | OCT | Oct | oct update finish slip out from 18oct22 |  | In S&L report as delayed (confirmed) |  | 2 | NFIX | As of 29nov22 complete (based on S&L update) |  |  |  |  |  |  |
| CP-P2-02-04-SW-0070 |  | Resolve Rev A Comments - FSAR Section 2.4.3 | 10d | 2022-11-07 A | 2022-11-30 A | CP-P2-02-04-SW-0065 | 100% |  | 2022-11-03 | 2022-11-16 |  |  |  | UDF_G1 | Yes | Yes | S&L | deliv | 03 | S&L | FNTP | P2 | 2 | 2.4.3 |  |  |  | 2022-11-30 |  |  | OCT |  | oct update pred slip out |  | In S&L report as delayed (confirmed) |  | 3 |  | As of 29nov22 complete | As of 15nov 22 forecast 25nov22 |  |  |  |  |  |
| CP-P2-02-04-SW-0011 |  | Confirm SDA Information and Inform Reviewers - FSAR Section 2.4.3 | 5d | 2023-01-04 | 2023-01-10 | CP-P2-02-04-SW-0070, PKM-0125 |  |  |  |  | 199d | 0d |  | UDF_G1 | Yes | Yes | FL4 | deliv | 03 | S&L | FNTP | P2 | 2 | 2.4.3 |  |  |  |  |  |  |  |  |  |  | In S&L report as delayed (confirmed) | No SDA | 4 | NFIX | As of 29nov22 moved to 11/7/22 start date (verify) |  | Matt-TBD | S | S&L-REV0 |  |  |
| CP-P2-02-04-SW-0075 |  | Issue Rev 0 - FSAR Section 2.4.3 | 10d | 2023-01-11 | 2023-01-24 | CP-P2-02-04-SW-0011 |  |  |  |  | 199d | 197d |  | UDF_G1 | Yes | Yes | S&L | deliv | 03 | S&L | FNTP | P2 | 2 | 2.4.3 |  |  |  |  |  |  |  |  |  |  | In S&L report as delayed (confirmed) | No SDA | 5 |  |  |  |  | S | S&L-REV0 | oct update "Confirm SDA date" driving out |  |
|  | 04 | **CFPP - COLA Prep - Part 02 - Chapter 02 - Section 4.4 Potential Dam Failures** |  | 2022-03-25 | 2023-01-24 |  |  |  |  |  |  |  |  |  |  |  |  |  |  |  |  |  |  |  |  |  |  |  |  |  |  |  |  |  |  |  |  |  |  |  |  |  |  |  |  |
|  | 01 | **CFPP - COLA Prep - Part 02 - Chapter 02 - Section 4.4 - Support Documents** |  | 2022-03-25 | 2022-07-22 |  |  |  |  |  |  |  |  |  |  |  |  |  |  |  |  |  |  |  |  |  |  |  |  |  |  |  |  |  |  |  |  |  |  |  |  |  |  |  |  |
| CP-P2-02-04-SD-0085 |  | Provide Existing Dam Failure Studies Info | 30d | 2022-03-25 A | 2022-04-12 A | CP-P2-02-04-SD-0070 | 100% |  | 2022-03-29 | 2022-05-09 |  |  |  | UDF_G3 | Yes |  | S&L | supt | 03 | S&L | FNTP | P2 | 2 | 2.4.4 |  |  |  |  |  |  |  |  |  |  |  |  |  |  |  |  |  |  |  |  | RFI 102 |
| CP-P2-02-04-SD-0095 |  | Determine if Existing Dam Failure Studies Can Be Used to Establish Dam Breach Flood Evaluation | 4d | 2022-04-21 A | 2022-04-26 A | CP-P2-02-04-SD-0070, CP-P2-02-04-SD-0085 | 100% |  |  |  |  |  |  | UDF_G3 | Yes | Yes | S&L | supt | 03 | S&L | FNTP | P2 | 2 | 2.4.4 |  |  |  |  |  |  |  |  |  |  |  |  |  |  |  |  |  |  |  |  |  |
| CP-P2-02-04-SD-0090 |  | Assess Potential for Water Releases from Upstream Natural Water Bodies, & Prepare calc (if necessary) - Prepare | 75d | 2022-05-02 A | 2022-07-11 A | CP-P2-02-04-SD-0085 | 100% |  | 2022-05-02 | 2022-08-16 |  |  |  | UDF_G3 | Yes | Yes | S&L | supt | 03 | S&L | FNTP | P2 | 2 | 2.4.4 |  |  |  |  |  |  |  |  |  |  |  |  |  |  |  |  |  |  |  |  |  |
| CP-P2-02-04-SD-0091 |  | Assess Potential for Water Releases from Upstream Natural Water Bodies, & Prepare calc (if necessary) - TO4 External Rev | 10d | 2022-07-12 A | 2022-07-19 A | CP-P2-02-04-SD-0090 | 100% |  | 2022-08-25 | 2022-09-08 |  |  |  |  |  |  |  | supt |  | S&L |  |  | 2 | 2.4.4 | cal | x |  |  |  |  |  |  |  |  |  |  |  |  |  |  |  |  |  |  |  |
| CP-P2-02-04-SD-0092 |  | Assess Potential for Water Releases from Upstream Natural Water Bodies & Prepare calc - Comment Resolution / Issue Final | 10d | 2022-07-20 A | 2022-07-22 A | CP-P2-02-04-SD-0091 | 100% |  | 2022-09-09 | 2022-09-22 |  |  |  |  |  |  |  | supt |  | S&L |  | P2 | 2 | 2.4.4 | cal |  |  |  |  |  |  |  |  |  |  |  |  |  |  |  |  |  |  |  |  |
|  | 02 | **CFPP - COLA Prep - Part 02 - Chapter 02 - Section 4.4 - Section Writing** |  | 2022-08-25 | 2023-01-24 |  |  |  |  |  |  |  |  |  |  |  |  |  |  |  |  |  |  |  |  |  |  |  |  |  |  |  |  |  |  |  |  |  |  |  |  |  |  |  |  |
| CP-P2-02-04-SW-0080 |  | Prepare Draft Rev A - FSAR Section 2.4.4 | 20d | 2022-08-25 A | 2022-09-28 A | CP-P2-02-04-SD-0095, CP-P2-02-04-SD-0090, CP-P2-02-04-SD-0092 FF | 100% |  | 2022-08-25 | 2022-09-22 |  |  |  | UDF_G3 | Yes | Yes | S&L | deliv | 03 | S&L | FNTP | P2 | 2 | 2.4.4 |  |  |  |  |  | Sep update |  |  |  | S&L-REVA |  | No SDA | 1 |  |  |  |  |  |  |  |  |
| CP-P2-02-04-SW-0085 |  | Review Draft Rev A - FSAR Section 2.4.4 (TO4 Team Review) | 10d | 2022-09-29 A | 2022-10-24 A | CP-P2-02-04-SW-0080 | 100% |  | 2022-09-23 | 2022-10-06 |  |  |  | UDF_G1 | Yes | Yes | S&L | deliv | 03 | TO4 | FNTP | P2 | 2 | 2.4.4 |  |  |  |  |  | Sep update | OCT |  | oct updarte |  |  |  | 2 | NFIX |  |  |  |  |  |  |  |
| CP-P2-02-04-SW-0090 |  | Resolve Rev A Comments - FSAR Section 2.4.4 | 10d | 2022-10-25 A | 2022-11-18 A | CP-P2-02-04-SW-0085 | 100% |  | 2022-10-13 | 2022-10-26 |  |  |  | UDF_G1 | Yes | Yes | S&L | deliv | 03 | S&L | FNTP | P2 | 2 | 2.4.4 |  |  |  |  |  |  | OCT | Oct | oct updarte finish slip from 26oct22 |  | In S&L report as delayed (confirmed) |  | 3 |  | As of 29nov22 complete | As of 15nov 22 finish moved out 19nov |  |  |  |  |  |
| CP-P2-02-04-SW-0094 |  | Confirm SDA Information and Inform Reviewers - FSAR Section 2.4.4 | 5d | 2023-01-04 | 2023-01-10 | CP-P2-02-04-SW-0090, PKM-0125 |  |  |  |  | 199d | 0d |  | UDF_G1 | Yes | Yes | FL4 | deliv | 03 | S&L | FNTP | P2 | 2 | 2.4.4 |  |  |  |  |  |  |  |  |  |  | not noted in S&L report (delayed by SDA confirm) | No SDA | 4 | NFIX | As of 29nov22 moved to 11/7/22 start date (verify) |  | Matt-TBD | S | S&L-REV0 |  |  |
| CP-P2-02-04-SW-0095 |  | Issue Rev 0 - FSAR Section 2.4.4 | 10d | 2023-01-11 | 2023-01-24 | CP-P2-02-04-SW-0094 |  |  |  |  | 199d | 197d |  | UDF_G1 | Yes | Yes | S&L | deliv | 03 | S&L | FNTP | P2 | 2 | 2.4.4 |  |  |  |  |  |  |  |  |  |  |  | No SDA | 5 |  |  |  |  | S | S&L-REV0 | oct update "Confirm SDA date" driving out |  |

Notes:
- CP-P2-02-04-SW-0070: 12B DEC EOM Notes: as of 30dec22 updated / CFPP - Contractor's Remarks: as of 30dec22 updated Comment response provided to FLOUR on 11/9/22. Review meeting held 11/22
- CP-P2-02-04-SW-0011: 12B DEC EOM Notes: as of 30dec22 updated Incorporated Fluor 11/27/22 Update - They deleted 22 sucessors to CP-P2-01-01-SW-0010 / CFPP - Contractor's Remarks: as of 30dec22 updated Incorporated Fluor 11/27/22 Update - They deleted 22 sucessors to CP-P2-01-01-SW-0010
- CP-P2-02-04-SW-0075: 12B DEC EOM Notes: as of 30dec22 updated Incorporated Fluor 11/27/22 Update / CFPP - Contractor's Remarks: as of 30dec22 updated Incorporated Fluor 11/27/22 Update
- CP-P2-02-04-SW-0094: 12B DEC EOM Notes: as of 30dec22 updated Incorporated Fluor 11/27/22 Update - They deleted 22 sucessors to CP-P2-01-01-SW-0010 / CFPP - Contractor's Remarks: as of 30dec22 updated Incorporated Fluor 11/27/22 Update - They deleted 22 sucessors to CP-P2-01-01-SW-0010
- CP-P2-02-04-SW-0095: 12B DEC EOM Notes: as of 30dec22 updated Incorporated Fluor 11/27/22 Update / CFPP - Contractor's Remarks: as of 30dec22 updated Incorporated Fluor 11/27/22 Update

| ID | WBS | Activity | Duration | Start | Finish | Predecessors | Complete | Remaining | Planned start | Planned finish | Total float | Free float | Expected finish | UDF Indicator 01 | zText_02 | Rebaseline details | doc type | CFPP, LLC WBS Structure | Author | Period of Performance | Part | Chapter | Section | zText_RFI | Deliverable Owner | 10B OCT EOM Notes | 11B NOV EOM Notes | Forecast Finish | zText_Level 3 Schedule | 9A SEP EOM Notes | PREPDRFTREVA | SDA needed | activity step | NEED UPDATE | SDA ties | Monthly Variance | 11A NOV MIDMONTH Notes | SDA cleanup notes | SDA ACT | REV0 - SDA | 10A OCT MIDMONTH Notes | Comments | 10C OCT Monthly Report Notes |
| --- | --- | --- | --- | --- | --- | --- | --- | --- | --- | --- | --- | --- | --- | --- | --- | --- | --- | --- | --- | --- | --- | --- | --- | --- | --- | --- | --- | --- | --- | --- | --- | --- | --- | --- | --- | --- | --- | --- | --- | --- | --- | --- | --- |
|  | 05 | **CFPP - COLA Prep - Part 02 - Chapter 02 - Section 4.5 Probable Max Surge & Seiche Flooding** |  | 2022-03-08 | 2023-01-24 |  |  |  |  |  |  |  |  |  |  |  |  |  |  |  |  |  |  |  |  |  |  |  |  |  |  |  |  |  |  |  |  |  |  |  |  |  |  |
|  | 01 | **CFPP - COLA Prep - Part 02 - Chapter 02 - Section 4.5 - Support Documents** |  | 2022-03-08 | 2023-01-20 |  |  |  |  |  |  |  |  |  |  |  |  |  |  |  |  |  |  |  |  |  |  |  |  |  |  |  |  |  |  |  |  |  |  |  |  |  |  |
| CP-P2-02-04-SD-0105 |  | Confirm Storm Surge Event Impacts on Large Bodies of Water Near Plant | 5d | 2022-03-08 A | 2022-03-10 A | CP-P2-02-04-SD-0070 | 100% |  | 2022-03-29 | 2022-04-04 |  |  |  | UDF_G3 | Yes | S&L | supt | 03 | S&L | FNTP | P2 | 2 | 2.4.5 |  |  |  |  |  |  |  |  |  |  |  |  |  |  |  |  |  |  |  |  |
| CP-P2-02-04-SD-0110 |  | Provide Cooling Water Source for CFPP Plant & Other Water Storage Bodies Info | 179d | 2022-03-29 A | 2023-01-20 | CP-P2-02-04-SD-0105 | 95% | 15d | 2022-04-05 | 2022-12-15 | 16d | 0d | 2023-01-20 | UDF_G3 | Yes | S&L | supt | 03 | S&L | FNTP | P2 | 2 | 2.4.5 | RFI 102 | Brian/Doug | finish pushed out by predecessor cp-p2-02-04-sd-0225 | As of 29nov22 remove CP-P2-02-04-sd-0225 as predecessor | 2022-12-30 |  |  |  |  |  |  |  |  |  |  |  |  |  |  |  |
| CP-P2-02-04-SD-0115 |  | Review Effects of Seismically Induced Seiche Event on Water Storage Bodies - Prepare | 5d | 2022-05-03 A | 2022-05-12 A | CP-P2-02-04-SD-0105 | 100% |  | 2022-12-12 | 2022-12-16 |  |  |  | UDF_G3 | Yes | S&L | supt | 03 | S&L | FNTP | P2 | 2 | 2.4.5 |  |  |  |  |  | Yes |  |  |  |  |  |  |  |  |  |  |  |  |  |  |
|  | 02 | **CFPP - COLA Prep - Part 02 - Chapter 02 - Section 4.5 - Section Writing** |  | 2022-09-21 | 2023-01-24 |  |  |  |  |  |  |  |  |  |  |  |  |  |  |  |  |  |  |  |  |  |  |  |  |  |  |  |  |  |  |  |  |  |  |  |  |  |  |
| CP-P2-02-04-SW-0100 |  | Prepare Draft Rev A - FSAR Section 2.4.5 | 20d | 2022-09-21 A | 2022-09-28 A | CP-P2-02-04-SD-0115, CP-P2-02-04-SD-0105 | 100% |  | 2022-12-06 | 2023-01-03 |  |  |  | UDF_G3 | Yes | S&L | deliv | 03 | S&L | FNTP | P2 | 2 | 2.4.5 |  |  |  |  |  | Yes | Sep update | S&L-REVA | No SDA | 1 |  |  |  |  |  |  |  |  |  |  |
| CP-P2-02-04-SW-0105 |  | Review Draft Rev A - FSAR Section 2.4.5 (TO4 Team Review) | 10d | 2022-10-03 A | 2022-10-20 A | CP-P2-02-04-SW-0100 | 100% |  | 2022-10-03 | 2022-10-14 |  |  |  | UDF_G1 | Yes | S&L | deliv | 03 | TO4 | FNTP | P2 | 2 | 2.4.5 |  |  |  |  |  | Yes |  |  |  | 2 | OCT | NFIX |  |  |  |  |  |  |  |  |
| CP-P2-02-04-SW-0110 |  | Resolve Rev A Comments - FSAR Section 2.4.5 | 10d | 2022-10-21 A | 2022-11-11 A | CP-P2-02-04-SW-0105 | 100% |  | 2022-10-17 | 2022-10-28 |  |  |  | UDF_G1 | Yes | S&L | deliv | 03 | S&L | FNTP | P2 | 2 | 2.4.5 |  |  | oct update finish slip from 28oct22 | As of 29nov22 complete |  | Yes |  |  |  | 3 | OCT |  | Oct | As of 15nov 22 complete 11nov22 |  |  |  |  |  |  |
| CP-P2-02-04-SW-0111 |  | Confirm SDA Information and Inform Reviewers - FSAR Section 2.4.5 | 5d | 2023-01-04 | 2023-01-10 | CP-P2-02-04-SW-0110, PKM-0125 |  |  |  |  | 199d | 0d |  | UDF_G1 | Yes | FL4 | deliv | 03 | FL4 | FNTP | P2 | 1 | 1.1 |  | Matt-TBD |  |  |  | Yes |  |  | SDA Tie | 4 |  | NFIX |  |  | checked pushed out by pred | S | S&L-REV0 |  |  |  |
| CP-P2-02-04-SW-0115 |  | Issue Rev 0 - FSAR Section 2.4.5 | 10d | 2023-01-11 | 2023-01-24 | CP-P2-02-04-SW-0111 |  |  |  |  | 199d | 197d |  | UDF_G1 | Yes | S&L | deliv | 03 | S&L | FNTP | P2 | 2 | 2.4.5 |  |  |  |  |  | Yes |  |  | SDA Tie | 5 |  |  |  |  |  | S | S&L-REV0 | oct update "Confirm SDA date" driving out |  |  |
|  | 06 | **CFPP - COLA Prep - Part 02 - Chapter 02 - Section 4.6 Probable Maximum Tsunami Hazards** |  | 2022-01-27 | 2023-01-26 |  |  |  |  |  |  |  |  |  |  |  |  |  |  |  |  |  |  |  |  |  |  |  |  |  |  |  |  |  |  |  |  |  |  |  |  |  |  |
|  | 01 | **CFPP - COLA Prep - Part 02 - Chapter 02 - Section 4.6 - Support Documents** |  | 2022-01-27 | 2022-03-03 |  |  |  |  |  |  |  |  |  |  |  |  |  |  |  |  |  |  |  |  |  |  |  |  |  |  |  |  |  |  |  |  |  |  |  |  |  |  |
| CP-P2-02-04-SD-0125 |  | Gather Seismological & Geological Evaluations Related Info to Potential for Tsunami Sources Near INL Site | 30d | 2022-01-27 A | 2022-01-28 A | CP-P2-02-04-SD-0045 SS | 100% |  | 2022-03-01 | 2022-04-11 |  |  |  | UDF_G3 | Yes | S&L | supt | 03 | S&L | FNTP | P2 | 2 | 2.4.6 |  |  |  |  |  | Yes |  |  |  |  |  |  |  |  |  |  |  |  |  |  |
| CP-P2-02-04-SD-0130 |  | Confirm No Historical Tsunami Record in Area | 4d | 2022-02-28 A | 2022-03-03 A | CP-P2-02-04-SD-0125 | 100% |  |  |  |  |  |  | UDF_G3 | Yes | S&L | supt | 03 | S&L | FNTP | P2 | 2 | 2.4.6 |  |  |  |  |  |  |  |  |  |  |  |  |  |  |  |  |  |  |  |  |
|  | 02 | **CFPP - COLA Prep - Part 02 - Chapter 02 - Section 4.6 - Section Writing** |  | 2022-02-04 | 2023-01-26 |  |  |  |  |  |  |  |  |  |  |  |  |  |  |  |  |  |  |  |  |  |  |  |  |  |  |  |  |  |  |  |  |  |  |  |  |  |  |
| CP-P2-02-04-SW-0120 |  | Prepare Draft Rev A - FSAR Section 2.4.6 | 20d | 2022-02-04 A | 2022-03-03 A | CP-P2-02-04-SD-0130 FF | 100% |  | 2022-02-14 | 2022-03-11 |  |  |  | UDF_G3 | Yes | S&L | deliv | 03 | S&L | FNTP | P2 | 2 | 2.4.6 |  |  |  |  |  | Yes |  | S&L-REVA | No SDA | 1 |  |  |  |  |  |  |  |  |  |  |
| CP-P2-02-04-SW-0125 |  | Review Draft Rev A - FSAR Section 2.4.6 (TO4 Team Review) | 10d | 2022-03-04 A | 2022-08-31 A | CP-P2-02-04-SW-0120 | 100% |  | 2022-03-04 | 2022-03-17 |  |  |  | UDF_G1 | Yes | S&L | deliv | 03 | S&L | FNTP | P2 | 2 | 2.4.6 |  |  |  |  |  |  | Sep update |  |  | 2 |  | NFIX |  |  |  |  |  |  | x |  |
| CP-P2-02-04-SW-0130 |  | Resolve Rev A Comments - FSAR Section 2.4.6 | 10d | 2022-09-01 A | 2022-09-09 A | CP-P2-02-04-SW-0125 | 100% |  | 2022-09-02 | 2022-09-16 |  |  |  | UDF_G1 | Yes | S&L | deliv | 03 | S&L | FNTP | P2 | 2 | 2.4.6 |  |  |  |  |  |  | Sep update |  |  | 3 |  |  |  |  |  |  |  |  |  |  |
| CP-P2-02-04-SW-0134 |  | Confirm SDA Information and Inform Reviewers - FSAR Section 2.4.6 | 1d | 2022-09-09 A | 2022-09-09 A | CP-P2-02-04-SW-0130, PKM-0125 | 100% |  | 2023-01-09 | 2023-01-09 |  |  |  | UDF_G1 | Yes | FL4 | deliv | 03 | S&L | FNTP | P2 | 2 | 2.4.6 |  | Matt-TBD | oct update (S&L has complete) no SDA confirmation pred | As of 29nov22 moved to 8/23/22 start date (verify) |  | Yes |  |  | No SDA | 4 |  | NFIX |  |  |  | S | S&L-REV0 |  |  | In S&L report as delayed by SDA release (confirmed) |
| CP-P2-02-04-SW-0135 |  | Issue Rev 0 - FSAR Section 2.4.6 | 87d | 2022-09-09 A | 2023-01-26 | CP-P2-02-04-SW-0134 | 50% | 17d | 2023-01-16 | 2023-05-16 | 197d | 0d | 2023-01-26 | UDF_G1 | Yes | S&L | deliv | 03 | S&L | FNTP | P2 | 2 | 2.4.6 |  |  |  |  | 2023-01-26 |  |  |  | No SDA | 5 |  |  |  |  |  | S | S&L-REV0 | oct update "Confirm SDA date" driving out |  | In S&L report as delayed by SDA release (confirmed) |
|  | 07 | **CFPP - COLA Prep - Part 02 - Chapter 02 - Section 4.7 Ice Effects** |  | 2022-03-31 | 2023-03-09 |  |  |  |  |  |  |  |  |  |  |  |  |  |  |  |  |  |  |  |  |  |  |  |  |  |  |  |  |  |  |  |  |  |  |  |  |  |  |
|  | 01 | **CFPP - COLA Prep - Part 02 - Chapter 02 - Section 4.7 - Support Documents** |  | 2022-03-31 | 2022-08-03 |  |  |  |  |  |  |  |  |  |  |  |  |  |  |  |  |  |  |  |  |  |  |  |  |  |  |  |  |  |  |  |  |  |  |  |  |  |  |
| CP-P2-02-04-SD-0140 |  | Prepare Accumulated Freezing Degree Days (AFDD) & Ice Thickness Calcs | 60d | 2022-03-31 A | 2022-08-03 A | PKM-0070, CP-P2-02-04-SD-0070 SS | 100% |  | 2022-03-29 | 2022-06-21 |  |  |  | UDF_G3 | Yes | S&L | supt | 03 | S&L | FNTP | P2 | 2 | 2.4.6 |  |  |  |  |  |  |  |  |  |  |  |  |  |  |  |  |  |  |  |  |
| CP-P2-02-04-SD-0135 |  | Conduct Historical Ice Jams & Ice Jam Floods Research | 10d | 2022-04-26 A | 2022-05-13 A | CP-P2-02-04-SD-0045, CP-P2-02-04-SD-0140 SS | 100% |  | 2022-05-02 | 2022-05-13 |  |  |  | UDF_G3 | Yes | S&L | supt | 03 | S&L | FNTP | P2 | 2 | 2.4.6 | RFI 102 |  |  |  |  | Yes |  |  |  |  |  |  |  |  |  |  |  |  |  |  |

Notes:
- CP-P2-02-04-SD-0110: Schedule Notes: Per Brian Jelke Email of 9jan23 / The history of this activity is complicated. Since the source / of offsite water is not S&L scope, we created an RFI on this topic back in / March. Over the months that followed, we were told the information would / be provided by Rizzo in December 22 (CFPP TO4.CP.02.02.04.12.01 Determine / Groundwater Capacity for Normal Cooling). We had a call with Rizzo in / December and found that it is not their scope either to determine the source of / offsite water. We currently understand that is CFPP/Burns & McDonnell / scope. In any case, in order to write our FSAR sections that depend on / this information, we agreed a good solution at the time was to simply refer to / the Rizzo section(s) on groundwater. However, since the activity also / identifies “ Other Water Storage Bodies Info”, there / remains an outstanding RFI (CFPP-RFI-SL-041 ) on details related to the proposed / evaporation pond to support zero liquid discharge which we have asked for a / response by 1/20/22. / Therefore, I think the / new projected date should be 1/20/22 unless Fluor engineering wants to suggest / an alternative. / Remarks: change successor CP-P2-02-04-SD-0115 from FS to SS / 12A DEC MIDMONTH Notes: As of 12dec22 actual start added, didn't increase the duration as per S&L / 12B DEC EOM Notes: As of 30dec22 delayed see notebook / CFPP - Contractor's Remarks: as of 30dec22 updated Forecast Finish Date not Incorporated PDL EF 12/30
- CP-P2-02-04-SD-0115: Remarks: This task was not applicable to the plant as there is no water storage
- CP-P2-02-04-SW-0125: Remarks: Per 6/27 FL mtg, 7/25+10d.
- CP-P2-02-04-SW-0134: 12A DEC MIDMONTH Notes: As of 12dec22 driven by SDA content available pred / 12B DEC EOM Notes: as of 30dec22 updated Actual Finish Date not Incorporated PDL AF 9/9 / CFPP - Contractor's Remarks: as of 30dec22 updated Actual Finish Date not Incorporated PDL AF 9/9
- CP-P2-02-04-SW-0135: 12B DEC EOM Notes: as of 30dec22 updated NS direction to delay rev 0 issue until SDA is issued / CFPP - Contractor's Remarks: as of 30dec22 updated NS direction to delay rev 0 issue until SDA is issued

| ID | WBS | Activity | Duration | Start | Finish | Predecessors | Complete | Remaining | Planned start | Planned finish | Total float | Free float | Expected finish | UDF Indicator 01 | zText_02 | zText_Level 3 Schedule | Rebaseline details | Monthly Variance | doc type | 10B OCT EOM Notes | PREPDRFTREVA | Forecast Finish | CFPP, LLC WBS Structure | Author | Period of Performance | Part | Chapter | Section | SDA needed | activity step | SDA ties | Deliverable Owner | SDA cleanup notes | SDA ACT | REV0 - SDA | Change Management # (Project, CM#) | zText_RFI | 11B NOV EOM Notes | 9A SEP EOM Notes | NEED UPDATE | 11A NOV MIDMONTH Notes | 10A OCT MIDMONTH Notes | zText_01 | Reconcile Rev 0 Milestones | Critical Paths |
| --- | --- | --- | --- | --- | --- | --- | --- | --- | --- | --- | --- | --- | --- | --- | --- | --- | --- | --- | --- | --- | --- | --- | --- | --- | --- | --- | --- | --- | --- | --- | --- | --- | --- | --- | --- | --- | --- | --- | --- | --- | --- | --- | --- | --- | --- |
|  | 02 | **CFPP - COLA Prep - Part 02 - Chapter 02 - Section 4.7 - Section Writing** |  | 2022-12-26 | 2023-03-09 |  |  |  |  |  |  |  |  |  |  |  |  |  |  |  |  |  |  |  |  |  |  |  |  |  |  |  |  |  |  |  |  |  |  |  |  |  |  |  |  |
| CP-P2-02-04-SW-0140 |  | Prepare Draft Rev A - FSAR Section 2.4.7 | 20d | 2022-12-26 A | 2023-01-26 | CP-P2-02-04-SD-0140 | 50% | 19d | 2023-01-16 | 2023-02-10 | 167d | 0d | 2023-01-26 | UDF_G3 | Yes | Yes | S&L | Oct | deliv | oct update start slip out from 06jan23 | S&L-REVA | 2023-01-26 | 03 | S&L | FNTP | P2 | 2 | 2.4.7 | No SDA | 1 |  |  |  |  |  |  |  |  |  |  |  |  |  |  |  |
| CP-P2-02-04-SW-0145 |  | Review Draft Rev A - FSAR Section 2.4.7 (TO4 Team Review) | 10d | 2023-01-27 | 2023-02-09 | CP-P2-02-04-SW-0140 |  |  |  |  | 167d | 0d |  | UDF_G1 | Yes | Yes | S&L |  | deliv |  |  |  | 03 | TO4 | FNTP | P2 | 2 | 2.4.7 |  | 2 | FIX |  |  |  |  |  |  |  |  |  |  |  |  |  |  |
| CP-P2-02-04-SW-0150 |  | Resolve Rev A Comments - FSAR Section 2.4.7 | 10d | 2023-02-10 | 2023-02-23 | CP-P2-02-04-SW-0145 |  |  |  |  | 167d | 0d |  | UDF_G1 | Yes | Yes | S&L |  | deliv |  |  |  | 03 | S&L | FNTP | P2 | 2 | 2.4.7 |  | 3 |  |  |  |  |  |  |  |  |  |  |  |  |  |  |  |
| CP-P2-02-04-SW-0151 |  | Confirm SDA Information and Inform Reviewers - FSAR Section 2.4.7 | 5d | 2023-02-24 | 2023-02-24 | CP-P2-02-04-SW-0150, PKM-0125 |  |  | 2023-02-24 | 2023-03-02 | 167d | 0d |  | UDF_G1 | Yes | Yes | FL4 |  | deliv |  |  |  | 03 | FL4 | FNTP | P2 | 1 | 1.1 | SDA Tie | 4 | FIX | Matt-TBD | checked pushed out by pred | S | S&L-REV0 |  |  |  |  |  |  |  |  |  |  |
| CP-P2-02-04-SW-0155 |  | Issue Rev 0 - FSAR Section 2.4.7 | 10d | 2023-02-24 | 2023-03-09 | CP-P2-02-04-SW-0151 |  |  |  |  | 167d | 165d |  | UDF_G1 | Yes | Yes | S&L |  | deliv |  |  |  | 03 | S&L | FNTP | P2 | 2 | 2.4.7 | SDA Tie | 5 |  |  |  | S | S&L-REV0 |  |  |  |  |  |  |  |  |  |  |
|  | 08 | **CFPP - COLA Prep - Part 02 - Chapter 02 - Section 4.8 Cooling Water Canals & Reservoirs** |  | 2022-03-29 | 2022-12-22 |  |  |  |  |  |  |  |  |  |  |  |  |  |  |  |  |  |  |  |  |  |  |  |  |  |  |  |  |  |  |  |  |  |  |  |  |  |  |  |  |
|  | 01 | **CFPP - COLA Prep - Part 02 - Chapter 02 - Section 4.8 - Support Documents** |  | 2022-03-29 | 2022-12-22 |  |  |  |  |  |  |  |  |  |  |  |  |  |  |  |  |  |  |  |  |  |  |  |  |  |  |  |  |  |  |  |  |  |  |  |  |  |  |  |  |
| CP-P2-02-04-SD-0150 |  | Provide Existing Water Studies at CFPP Site | 179d | 2022-03-29 A | 2022-12-22 A | CP-P2-02-04-SD-0070 SS | 100% |  | 2022-03-29 | 2022-12-08 |  |  |  | UDF_G3 | Yes |  | S&L |  | supt | finish pushed out by predecessor cp-p2-02-04-sd-0225 |  | 2022-12-30 | 03 | S&L | FNTP | P2 | 2 | 2.4.8 |  |  |  |  | DELETE FROM SCOPE - CONFIRM (with PDN) |  |  | UAMPS TO#4 C-013 | RFI 102 | As of 29nov22 remove CP-P2-02-04-sd-0225 as predecessor |  |  |  |  |  |  |  |
| CP-P2-02-04-SD-0155 |  | Confirm No Cooling Water Canals, Reservoirs or Storage Basins / Ponds for Normal or Emergency Cooling Systems | 5d | 2022-04-20 A | 2022-04-26 A | CP-P2-02-04-SD-0150 SS | 100% |  |  |  |  |  |  | UDF_G3 | Yes | Yes | S&L |  | supt |  |  |  | 03 | S&L | FNTP | P2 | 2 | 2.4.8 |  |  |  |  |  |  |  | UAMPS TO#4 C-013 |  |  |  |  |  |  |  |  |  |
|  | 02 | **CFPP - COLA Prep - Part 02 - Chapter 02 - Section 4.8 - Section Writing** |  |  |  |  |  |  |  |  |  |  |  |  |  |  |  |  |  |  |  |  |  |  |  |  |  |  |  |  |  |  |  |  |  |  |  |  |  |  |  |  |  |  |  |
|  | 09 | **CFPP - COLA Prep - Part 02 - Chapter 02 - Section 4.9 Channel Diversions** |  | 2022-02-04 | 2023-01-24 |  |  |  |  |  |  |  |  |  |  |  |  |  |  |  |  |  |  |  |  |  |  |  |  |  |  |  |  |  |  |  |  |  |  |  |  |  |  |  |  |
|  | 01 | **CFPP - COLA Prep - Part 02 - Chapter 02 - Section 4.9 - Support Documents** |  | 2022-02-04 | 2022-06-10 |  |  |  |  |  |  |  |  |  |  |  |  |  |  |  |  |  |  |  |  |  |  |  |  |  |  |  |  |  |  |  |  |  |  |  |  |  |  |  |  |
| CP-P2-02-04-SD-0165 |  | Review Historical Topographic Records & Channel Course of Big Lost River | 5d | 2022-02-04 A | 2022-02-28 A | CP-P2-02-04-SD-0045 | 100% |  | 2022-03-21 | 2022-03-25 |  |  |  | UDF_G3 | Yes |  | S&L |  | supt |  |  |  | 03 | S&L | FNTP | P2 | 2 | 2.4.9 |  |  |  |  |  |  |  |  |  |  |  |  |  |  |  |  |  |
| CP-P2-02-04-SD-0160 |  | Provide Existing Sediment Info & Floodplain Movement Studies | 30d | 2022-03-31 A | 2022-04-20 A | CP-P2-02-04-SD-0045 SS, CP-P2-02-04-SD-0070 SS | 100% |  | 2022-03-29 | 2022-05-09 |  |  |  | UDF_G3 | Yes |  | S&L |  | supt |  |  |  | 03 | S&L | FNTP | P2 | 2 | 2.4.9 |  |  |  |  |  |  |  |  | RFI 102 |  |  |  |  |  |  |  |  |
| CP-P2-02-04-SD-0170 |  | Determine Risk of Channel Migration & Impacts on Site Flooding | 30d | 2022-05-02 A | 2022-06-10 A | CP-P2-02-04-SD-0160, CP-P2-02-04-SD-0165 | 100% |  | 2022-05-02 | 2022-06-13 |  |  |  | UDF_G3 | Yes | Yes | S&L |  | supt |  |  |  | 03 | S&L | FNTP | P2 | 2 | 2.4.9 |  |  |  |  | Move to section writing? |  |  |  |  |  |  |  |  |  |  |  |  |
|  | 02 | **CFPP - COLA Prep - Part 02 - Chapter 02 - Section 4.9 - Section Writing** |  | 2022-09-06 | 2023-01-24 |  |  |  |  |  |  |  |  |  |  |  |  |  |  |  |  |  |  |  |  |  |  |  |  |  |  |  |  |  |  |  |  |  |  |  |  |  |  |  |  |
| CP-P2-02-04-SW-0185 |  | Prepare Draft Rev A - FSAR Section 2.4.9 | 20d | 2022-09-06 A | 2022-10-03 A | CP-P2-02-04-SD-0170 | 100% |  |  |  |  |  |  | UDF_G3 | Yes | Yes | S&L |  | deliv | oct update | S&L-REVA |  | 03 | S&L | FNTP | P2 | 2 | 2.4.9 | No SDA | 1 |  |  |  |  |  |  |  |  | Sep update | OCT |  |  |  |  |  |
| CP-P2-02-04-SW-0190 |  | Review Draft Rev A - FSAR Section 2.4.9 (TO4 Team Review) | 10d | 2022-10-04 A | 2022-10-24 A | CP-P2-02-04-SW-0185 | 100% |  | 2022-10-04 | 2022-10-17 |  |  |  | UDF_G3 | Yes | Yes | S&L |  | deliv | oct update |  |  | 03 | TO4 | FNTP | P2 | 2 | 2.4.9 |  | 2 | NFIX |  |  |  |  |  |  |  |  | OCT |  |  |  |  |  |
| CP-P2-02-04-SW-0195 |  | Resolve Rev A Comments - FSAR Section 2.4.9 | 10d | 2022-10-25 A | 2022-11-08 A | CP-P2-02-04-SW-0190 | 100% |  | 2022-10-18 | 2022-10-31 |  |  |  | UDF_G3 | Yes | Yes | S&L | Oct | deliv | oct update finish slip out from 31oct22 |  |  | 03 | S&L | FNTP | P2 | 2 | 2.4.9 |  | 3 |  |  |  |  |  |  |  | As of 29nov22 complete |  | OCT | As of 15nov 22 complete 8nov22 |  |  |  |  |
| CP-P2-02-04-SW-0199 |  | Confirm SDA Information and Inform Reviewers - FSAR Section 2.4.9 | 5d | 2023-01-04 | 2023-01-10 | CP-P2-02-04-SW-0195, PKM-0125 |  |  |  |  | 199d | 0d |  | UDF_G1 | Yes | Yes | FL4 |  | deliv |  |  |  | 03 | S&L | FNTP | P2 | 2 | 2.4.9 | No SDA | 4 | NFIX | Matt-TBD |  | S | S&L-REV0 |  |  | As of 29nov22 moved to 11/7/22 start date (verify) |  |  |  |  |  |  |  |
| CP-P2-02-04-SW-0200 |  | Issue Rev 0 - FSAR Section 2.4.9 | 10d | 2023-01-11 | 2023-01-24 | CP-P2-02-04-SW-0199 |  |  |  |  | 199d | 197d |  | UDF_G3 | Yes | Yes | S&L |  | deliv |  |  |  | 03 | S&L | FNTP | P2 | 2 | 2.4.9 | No SDA | 5 |  |  |  | S | S&L-REV0 |  |  |  |  |  |  | oct update "Confirm SDA date" driving out |  |  |  |
|  | 10 | **CFPP - COLA Prep - Part 02 - Chapter 02 - Section 4.10 Flood Protection Requirements** |  | 2023-04-24 | 2023-07-18 |  |  |  |  |  |  |  |  |  |  |  |  |  |  |  |  |  |  |  |  |  |  |  |  |  |  |  |  |  |  |  |  |  |  |  |  |  |  |  |  |
|  | 01 | **CFPP - COLA Prep - Part 02 - Chapter 02 - Section 4.10 - Support Documents** |  | 2023-04-24 | 2023-05-05 |  |  |  |  |  |  |  |  |  |  |  |  |  |  |  |  |  |  |  |  |  |  |  |  |  |  |  |  |  |  |  |  |  |  |  |  |  |  |  |  |
| CP-P2-02-04-SD-0175 |  | Confirm No Flood Protection Measures Are Required - Prepare | 10d | 2023-04-24 | 2023-05-05 | CP-P2-02-04-SW-0040, CP-P2-02-04-SD-0105, CP-P2-02-04-SD-0115, CP-P2-03-04-SD-0005, CP-P2-02-04-SD-0080, CP-P2-02-04-SD-0170, CP-P2-02-04-SD-0130, CP-P2-02-04-SD-0060, CP-P2-03-04-SD-0000 |  |  |  |  | 66d | 0d |  | UDF_G3 | Yes | Yes | S&L |  | supt |  |  |  | 03 | S&L | FNTP | P2 | 2 | 2.4.10 |  |  |  |  |  |  |  |  |  |  |  |  |  |  | 58COL.P2.CH03.275 | 3.4 | 3 |

Notes:
- CP-P2-02-04-SW-0140: 12B DEC EOM Notes: as of 30dec22 updated / CFPP - Contractor's Remarks: as of 30dec22 updated
- CP-P2-02-04-SW-0151: 12B DEC EOM Notes: In parallel with Team Review (hold duration at 5d)
- CP-P2-02-04-SD-0150: 12A DEC MIDMONTH Notes: As of 12dec22 missed forecast update from S&L Needs a new successor / 12B DEC EOM Notes: as of 30dec22 updated / CFPP - Contractor's Remarks: as of 30dec22 updated Forecast Finish not Incorporated PDL EF 12/30
- CP-P2-02-04-SW-0199: 12B DEC EOM Notes: as of 30dec22 updated Incorporated Fluor 11/27/22 Update - They deleted 22 sucessors to CP-P2-01-01-SW-0010 / CFPP - Contractor's Remarks: as of 30dec22 updated Incorporated Fluor 11/27/22 Update - They deleted 22 sucessors to CP-P2-01-01-SW-0010
- CP-P2-02-04-SW-0200: 12B DEC EOM Notes: as of 30dec22 updated Incorporated Fluor 11/27/22 Update / CFPP - Contractor's Remarks: as of 30dec22 updated Incorporated Fluor 11/27/22 Update

| ID | WBS | Activity | Duration | Start | Finish | Predecessors | Complete | Remaining | Planned start | Planned finish | Total float | Free float | Constraint | Expected finish | UDF Indicator 01 | zText_02 | zText_Level 3 Schedule | Rebaseline details | doc type | PREPDRFTREVA | CFPP, LLC WBS Structure | Author | Period of Performance | Part | Chapter | Section | SDA needed | activity step | SDA ties | Deliverable Owner | SDA ACT | REV0 - SDA | 10B OCT EOM Notes | 12A DEC MIDMONTH Notes | Forecast Finish | Forecast Start | 11A NOV MIDMONTH Notes | JLG - Generic Field | VERIFIED MONTHLY UPDATE | 9A SEP EOM Notes | NEED UPDATE | Monthly Variance |
| --- | --- | --- | --- | --- | --- | --- | --- | --- | --- | --- | --- | --- | --- | --- | --- | --- | --- | --- | --- | --- | --- | --- | --- | --- | --- | --- | --- | --- | --- | --- | --- | --- | --- | --- | --- | --- | --- | --- | --- | --- | --- | --- |
|  | 02 | **CFPP - COLA Prep - Part 02 - Chapter 02 - Section 4.10 - Section Writing** |  | 2023-05-08 | 2023-07-18 |  |  |  |  |  |  |  |  |  |  |  |  |  |  |  |  |  |  |  |  |  |  |  |  |  |  |  |  |  |  |  |  |  |  |  |  |  |
| CP-P2-02-04-SW-0205 |  | Prepare Draft Rev A - FSAR Section 2.4.10 | 20d | 2023-05-08 | 2023-06-05 | CP-P2-02-04-SD-0175 |  |  |  |  | 76d | 0d |  |  | UDF_G3 | Yes | Yes | S&L | deliv | S&L-REVA | 03 | S&L | FNTP | P2 | 2 | 2.4.10 | No SDA | 1 |  |  |  |  |  |  |  |  |  |  |  |  |  |  |
| CP-P2-02-04-SW-0210 |  | Review Draft Rev A - FSAR Section 2.4.10 (TO4 Team Review) | 10d | 2023-06-06 | 2023-06-19 | CP-P2-02-04-SW-0205 |  |  |  |  | 76d | 0d |  |  | UDF_G1 | Yes | Yes | S&L | deliv |  | 03 | TO4 | FNTP | P2 | 2 | 2.4.10 |  | 2 | FIX |  |  |  |  |  |  |  |  |  |  |  |  |  |
| CP-P2-02-04-SW-0215 |  | Resolve Rev A Comments - FSAR Section 2.4.10 | 10d | 2023-06-20 | 2023-07-03 | CP-P2-02-04-SW-0210 |  |  |  |  | 76d | 0d |  |  | UDF_G1 | Yes | Yes | S&L | deliv |  | 03 | S&L | FNTP | P2 | 2 | 2.4.10 |  | 3 |  |  |  |  |  |  |  |  |  |  |  |  |  |  |
| CP-P2-02-04-SW-0216 |  | Confirm SDA Information and Inform Reviewers - FSAR Section 2.4.10 | 5d | 2023-07-05 | 2023-07-05 | CP-P2-02-04-SW-0215, PKM-0125 |  |  | 2023-07-05 | 2023-07-11 | 76d | 0d |  |  | UDF_G1 | Yes | Yes | FL4 | deliv |  | 03 | FL4 | FNTP | P2 | 1 | 1.1 | SDA Tie | 4 | FIX | Matt-TBD | S | S&L-REV0 |  |  |  |  |  |  |  |  |  |  |
| CP-P2-02-04-SW-0220 |  | Issue Rev 0 - FSAR Section 2.4.10 | 10d | 2023-07-05 | 2023-07-18 | CP-P2-02-04-SW-0216 |  |  |  |  | 76d | 74d |  |  | UDF_G1 | Yes | Yes | S&L | deliv |  | 03 | S&L | FNTP | P2 | 2 | 2.4.10 | SDA Tie | 5 |  |  | S | S&L-REV0 |  |  |  |  |  |  |  |  |  |  |
|  | 11 | **CFPP - COLA Prep - Part 02 - Chapter 02 - Section 4.11 Low Water Considerations** |  | 2022-02-02 | 2023-02-21 |  |  |  |  |  |  |  |  |  |  |  |  |  |  |  |  |  |  |  |  |  |  |  |  |  |  |  |  |  |  |  |  |  |  |  |  |  |
|  | 01 | **CFPP - COLA Prep - Part 02 - Chapter 02 - Section 4.11 - Support Documents** |  | 2022-02-02 | 2022-03-21 |  |  |  |  |  |  |  |  |  |  |  |  |  |  |  |  |  |  |  |  |  |  |  |  |  |  |  |  |  |  |  |  |  |  |  |  |  |
| CP-P2-02-04-SD-0185 |  | Obtain Historical Droughts & River Level | 30d | 2022-02-02 A | 2022-03-07 A | CP-P2-02-04-SD-0045 | 100% |  | 2022-03-21 | 2022-04-29 |  |  |  |  | UDF_G3 | Yes |  | S&L | supt |  | 03 | S&L | FNTP | P2 | 2 | 2.4.11 |  |  |  |  |  |  |  |  |  |  |  |  |  |  |  |  |
| CP-P2-02-04-SD-0180 |  | Gather Existing Low Water Condition Studies at INL Site | 30d | 2022-02-07 A | 2022-03-21 A | CP-P2-02-04-SD-0045 | 100% |  | 2022-03-21 | 2022-04-29 |  |  |  |  | UDF_G3 | Yes |  | S&L | supt |  | 03 | S&L | FNTP | P2 | 2 | 2.4.11 |  |  |  |  |  |  |  |  |  |  |  |  |  |  |  |  |
|  | 02 | **CFPP - COLA Prep - Part 02 - Chapter 02 - Section 4.11 - Section Writing** |  | 2022-03-31 | 2023-02-21 |  |  |  |  |  |  |  |  |  |  |  |  |  |  |  |  |  |  |  |  |  |  |  |  |  |  |  |  |  |  |  |  |  |  |  |  |  |
| CP-P2-02-04-SW-0225 |  | Prepare Draft Rev A - FSAR Section 2.4.11 | 177d | 2022-03-31 A | 2023-01-02 | CP-P2-02-04-SD-0180, CP-P2-02-04-SD-0185 | 95% | 0d | 2022-05-02 | 2023-01-10 | 186.12d | 0d |  | 2022-12-30 | UDF_G3 | Yes | Yes | S&L | deliv | S&L-REVA | 03 | S&L | FNTP | P2 | 2 | 2.4.11 | No SDA | 1 |  |  |  |  | finish pushed out by predecessor cp-p2-02-04-sd-0225 | As of 12dec22 missed forecast update from S&L | 2022-12-30 |  |  |  |  |  |  |  |
| CP-P2-02-04-SW-0230 |  | Review Draft Rev A - FSAR Section 2.4.11 (TO4 Team Review) | 10d | 2023-01-02 | 2023-01-13 | CP-P2-02-04-SW-0225 |  |  |  |  | 186.12d | 0d |  |  | UDF_G1 | Yes | Yes | S&L | deliv |  | 03 | TO4 | FNTP | P2 | 2 | 2.4.10 |  | 2 | FIX |  |  |  |  |  |  |  |  |  |  |  |  |  |
| CP-P2-02-04-SW-0235 |  | Resolve Rev A Comments - FSAR Section 2.4.11 | 10d | 2023-01-16 | 2023-01-27 | CP-P2-02-04-SW-0230 |  |  |  |  | 186.12d | 0d |  |  | UDF_G1 | Yes | Yes | S&L | deliv |  | 03 | S&L | FNTP | P2 | 2 | 2.4.11 |  | 3 |  |  |  |  |  |  |  |  |  |  |  |  |  |  |
| CP-P2-02-04-SW-0236 |  | Confirm SDA Information and Inform Reviewers - FSAR Section 2.4.11 | 5d | 2023-01-30 | 2023-01-30 | CP-P2-02-04-SW-0235, PKM-0125 |  |  | 2023-01-30 | 2023-02-03 | 186.12d | 7.12d |  |  | UDF_G1 | Yes | Yes | FL4 | deliv |  | 03 | FL4 | FNTP | P2 | 1 | 1.1 | SDA Tie | 4 | FIX | Matt-TBD | S | S&L-REV0 |  |  |  |  |  |  |  |  |  |  |
| CP-P2-02-04-SW-0240 |  | Issue Rev 0 - FSAR Section 2.4.11 | 10d | 2023-02-08 | 2023-02-21 | CP-P2-02-04-SW-0236 |  |  | 2023-02-08 | 2023-02-22 | 179d | 0d | start on or after 2023-02-08 | 2023-02-21 | UDF_G1 | Yes | Yes | S&L | deliv |  | 03 | S&L | FNTP | P2 | 2 | 2.4.11 | SDA Tie | 5 |  |  | S | S&L-REV0 |  |  | 2023-02-21 | 2023-02-08 |  |  |  |  |  |  |
|  | 12 | **CFPP - COLA Prep - Part 02 - Chapter 02 - Section 4.12 Groundwater** |  | 2022-03-21 | 2023-05-17 |  |  |  |  |  |  |  |  |  |  |  |  |  |  |  |  |  |  |  |  |  |  |  |  |  |  |  |  |  |  |  |  |  |  |  |  |  |
|  | 01 | **CFPP - COLA Prep - Part 02 - Chapter 02 - Section 4.12 - Support Documents** |  | 2022-03-21 | 2023-05-03 |  |  |  |  |  |  |  |  |  |  |  |  |  |  |  |  |  |  |  |  |  |  |  |  |  |  |  |  |  |  |  |  |  |  |  |  |  |
| CP-P2-02-04-SD-0205 |  | Prepare Groundwater Pumping Test Calculation | 130d | 2022-03-21 A | 2022-12-30 A | FI-GI-SSI-DR-0070 | 100% |  | 2021-12-10 | 2022-06-17 |  |  |  |  | UDF_G1 | Yes | Yes | RIZZO | supt |  | 03 | RIZZO | FNTP | P2 | 2 | 2.4.12 |  |  |  |  |  |  |  |  |  |  | As of 22Nov |  |  |  |  |  |
| CP-P2-02-04-SD-0220 |  | Prepare Groundwater Computer Model Calculation | 115d | 2022-05-10 A | 2023-01-20 | CP-P2-02-04-SD-0205 FF, CP-P2-02-04-SD-0210 FF, CP-P2-02-04-SD-0005, CP-P2-02-04-SD-0010 | 100% | 15d | 2022-05-10 | 2022-10-20 | 16d | 0d |  | 2023-01-20 | UDF_G1 | Yes | Yes | RIZZO | supt |  | 03 | RIZZO | FNTP | P2 | 2 | 2.4.12 |  |  |  |  |  |  |  |  |  |  | As of 22Nov | Overview P1 SI |  |  |  |  |
| CP-P2-02-04-SD-0190 |  | Gather Existing Well Inventory, Groundwater Usage Data, Etc. | 30d | 2022-05-16 A | 2022-06-27 A | CP-FI-HYD-DC-0000, CP-FI-HYD-DC-0003 | 100% |  |  |  |  |  |  |  | UDF_G3 | Yes | Yes | RIZZO | supt |  | 03 | RIZZO | FNTP | P2 | 2 | 2.4.12 |  |  |  |  |  |  |  |  |  |  |  |  |  |  |  |  |
| CP-P2-02-04-SD-0210 |  | Prepare Groundwater Gradient Calculation (Partial First Water Year) | 60d | 2022-05-17 A | 2023-01-20 | FI-GI-SSI-DR-0070 |  | 15d | 2021-12-10 | 2022-03-10 | 16d | 0d |  | 2023-01-20 | UDF_G1 | Yes | Yes | RIZZO | supt |  | 03 | RIZZO | FNTP | P2 | 2 | 2.4.12 |  |  |  |  |  |  |  |  |  |  | As of 22Nov |  |  |  |  |  |
| CP-P2-02-04-SD-0215 |  | Prepare Groundwater Quality Summary Study | 30d | 2022-08-24 A | 2023-01-20 | CP-FI-HYD-DC-0010 FF |  | 15d | 2022-09-12 | 2022-10-21 | 6d | 0d |  | 2023-01-20 | UDF_G1 | Yes | Yes | RIZZO | supt |  | 03 | RIZZO | FNTP | P2 | 2 | 2.4.12 |  |  |  |  |  |  | oct update finish slip from 28oct22 |  |  |  | As of 22Nov |  | X | Sep update finish slip from 21oct | OCT | Oct |
| CP-P2-02-04-SD-0230 |  | Prepare Groundwater Computer Model Report | 45d | 2022-11-24 A | 2023-01-24 | CP-P2-02-04-SD-0220 SS |  | 17d | 2022-11-21 | 2023-01-24 | 34d | 0d |  | 2023-01-24 | UDF_G1 | Yes | Yes | RIZZO | supt |  | 03 | RIZZO | FNTP | P2 | 2 | 2.4.12 |  |  |  |  |  |  |  |  |  |  | As of 22Nov |  |  |  |  |  |
| CP-P2-02-04-SD-0225 |  | Determine Groundwater Capacity for Normal Cooling | 30d | 2023-01-23 | 2023-03-03 | CP-P2-02-04-SD-0220 |  |  |  |  | 291d |  |  |  | UDF_G1 | Yes | Yes | RIZZO | supt |  | 03 | FL4 | FNTP | P2 | 2 | 2.4.12 |  |  |  |  |  |  |  |  |  |  |  |  |  |  |  |  |
| CP-P2-02-04-SD-0235 |  | Confirm Max Groundwater Level at Least 2 ft Below Baseline Plant Elevation | 20d | 2023-04-06 | 2023-05-03 | CP-P2-02-04-SD-0220, PKM-0130 |  |  |  |  | 248d |  |  |  | UDF_G1 | Yes | Yes | RIZZO | supt |  | 03 | RIZZO | FNTP | P2 | 2 | 2.4.12 |  |  |  |  |  |  |  |  |  |  |  |  |  |  |  |  |

Notes:
- CP-P2-02-04-SW-0216: SDA cleanup notes: checked pushed out by pred / 12B DEC EOM Notes: In parallel with Team Review (hold duration at 5d)
- CP-P2-02-04-SW-0225: 11B NOV EOM Notes: As of 29nov22 remove CP-P2-02-04-sd-0225 as predecessor / 12B DEC EOM Notes: As of 30dec22 delayed need update / CFPP - Contractor's Remarks: as of 30dec22 updated Forecast FInish Date not Incorporated PDL EF 12/30
- CP-P2-02-04-SW-0230: 12B DEC EOM Notes: As of 30dec22 delayed
- CP-P2-02-04-SW-0235: 12B DEC EOM Notes: As of 30dec22 delayed
- CP-P2-02-04-SW-0236: SDA cleanup notes: checked pushed out by pred / 12B DEC EOM Notes: In parallel with Team Review (hold duration at 5d)
- CP-P2-02-04-SW-0240: 12B DEC EOM Notes: as of 30dec22 updated NS direction to delay rev 0 issue until SDA is issued / CFPP - Contractor's Remarks: as of 30dec22 updated NS direction to delay rev 0 issue until SDA is issued
- CP-P2-02-04-SD-0205: 11B NOV EOM Notes: As of 29nov22 finish slip from 18nov22 / 12B DEC EOM Notes: As of 30dec22 updated
- CP-P2-02-04-SD-0220: 11B NOV EOM Notes: As of 29nov22 finish slip from 18nov22 (Needs a full year of data to complete)
- CP-P2-02-04-SD-0210: SDA cleanup notes: 4 calcs, water yr 9/30/22, 3/21/23, 9/20/23, 3/21/24 1st 2 tied to 4.12 / 11B NOV EOM Notes: As of 29nov22 removed original start date 10dec21 finish slip from 18nov22 The schedule had groundwater calculations starting before wells were installed. Moreover, this calculation needs at least two full quarters of data for completion.
- CP-P2-02-04-SD-0215: SDA cleanup notes: checked pushed out by pred / 11B NOV EOM Notes: As of 29nov22 finish slip from 4nov22 / 12B DEC EOM Notes: As of 30dec22 delayed
- CP-P2-02-04-SD-0230: 11B NOV EOM Notes: As of 29nov22 started
- CP-P2-02-04-SD-0225: SDA cleanup notes: Add appropriate owner and activity moved to fluor for answer / 11B NOV EOM Notes: As of 29nov22 pred finish slip out Pred is RIZZO act (Need to verify/revise pred) (GUS- David S-Lorena)
- CP-P2-02-04-SD-0235: SDA cleanup notes: after year of water data collection need successor

| ID | WBS | Activity | Duration | Start | Finish | Predecessors | Complete | Remaining | Planned start | Planned finish | Total float | Free float | Expected finish | UDF Indicator 01 | zText_02 | zText_Level 3 Schedule | Rebaseline details | doc type | PREPDRFTREVA | CFPP, LLC WBS Structure | Author | Period of Performance | Part | Chapter | Section | SDA needed | activity step | SDA ties | Deliverable Owner | SDA cleanup notes | SDA ACT | REV0 - SDA | 12B DEC EOM Notes | Comments | zText_RFI | NEED UPDATE | Monthly Variance | 10B OCT EOM Notes | CFPP - Contractor's Remarks | VERIFIED MONTHLY UPDATE |
| --- | --- | --- | --- | --- | --- | --- | --- | --- | --- | --- | --- | --- | --- | --- | --- | --- | --- | --- | --- | --- | --- | --- | --- | --- | --- | --- | --- | --- | --- | --- | --- | --- | --- | --- | --- | --- | --- | --- | --- | --- |
|  | 02 | **CFPP - COLA Prep - Part 02 - Chapter 02 - Section 4.12 - Section Writing** |  | 2023-02-02 | 2023-05-17 |  |  |  |  |  |  |  |  |  |  |  |  |  |  |  |  |  |  |  |  |  |  |  |  |  |  |  |  |  |  |  |  |  |  |  |
| CP-P2-02-04-SW-0245 |  | Prepare Draft Rev A -Check Updated Supporting Documents -FSAR Section 2.4.12 | 20d | 2023-02-02 | 2023-03-01 | CP-P2-02-04-SD-0220 FF+20d, CP-P2-02-04-SD-0015, CP-P2-02-04-SD-0205, CP-P2-02-04-SD-0210, CP-P2-02-04-SD-0215, CP-P2-02-04-SD-0020, CP-P2-02-03-SD-0055, CP-P2-02-04-SD-0230 FF, CP-FI-HYD-DC-0035 SS |  |  |  |  | 8d | 2d |  | UDF_G1 | Yes | Yes | RIZZO | deliv | RZO-REVA | 03 | RIZZO | FNTP | P2 | 2 | 2.4.12 | No SDA | 1 |  |  |  |  |  |  |  |  |  |  |  |  |  |
| CP-P2-02-04-SW-0250 |  | Review Draft Rev A - FSAR Section 2.4.12 (TO4 Team Review) | 10d | 2023-04-06 | 2023-04-19 | CP-P2-02-04-SW-0245, PKM-0130 |  |  |  |  | 88d | 0d |  | UDF_G1 | Yes | Yes | RIZZO | deliv |  | 03 | TO4 | FNTP | P2 | 2 | 2.4.12 |  | 2 | FIX |  |  |  |  |  |  |  |  |  |  |  |  |
| CP-P2-02-04-SW-0255 |  | Resolve Rev A Comments - FSAR Section 2.4.12 | 10d | 2023-04-20 | 2023-05-03 | CP-P2-02-04-SW-0250 |  |  |  |  | 118d | 0d |  | UDF_G1 | Yes | Yes | RIZZO | deliv |  | 03 | RIZZO | FNTP | P2 | 2 | 2.4.12 |  | 3 |  |  |  |  |  |  |  |  |  |  |  |  |  |
| CP-P2-02-04-SW-0256 |  | Confirm SDA Information and Inform Reviewers - FSAR Section 2.4.12 | 5d | 2023-05-04 | 2023-05-04 | CP-P2-02-04-SW-0255, PKM-0125 |  |  | 2023-05-04 | 2023-05-10 | 118d | 0d |  | UDF_G1 | Yes | Yes | FL4 | deliv |  | 03 | FL4 | FNTP | P2 | 1 | 1.1 | SDA Tie | 4 | FIX | Matt-TBD | checked pushed out by pred | R | RZO-REV0 | In parallel with Team Review (hold duration at 5d) |  |  |  |  |  |  |  |
| CP-P2-02-04-SW-0260 |  | Issue Rev 0 - FSAR Section 2.4.12 | 10d | 2023-05-04 | 2023-05-17 | CP-P2-02-04-SW-0256 |  |  |  |  | 118d | 116d |  | UDF_G1 | Yes | Yes | RIZZO | deliv |  | 03 | RIZZO | FNTP | P2 | 2 | 2.4.12 | SDA Tie | 5 |  |  |  | R | RZO-REV0 |  |  |  |  |  |  |  |  |
|  | 13 | **CFPP - Chap 2 - Sec 4.13 Accidental Release of Radioactive Liquid Effluents in GW & Surf Waters** |  | 2022-05-10 | 2023-03-21 |  |  |  |  |  |  |  |  |  |  |  |  |  |  |  |  |  |  |  |  |  |  |  |  |  |  |  |  |  |  |  |  |  |  |  |
|  | 01 | **CFPP - COLA Prep - Part 02 - Chapter 02 - Section 4.13 - Support Documents** |  | 2022-05-10 | 2022-12-06 |  |  |  |  |  |  |  |  |  |  |  |  |  |  |  |  |  |  |  |  |  |  |  |  |  |  |  |  |  |  |  |  |  |  |  |
| CP-P2-02-04-SD-0245 |  | Provide Existing Laboratory KD Analysis of Soil Samples at INL Site | 40d | 2022-05-10 A | 2022-12-06 A | FI-GI-SSI-RP-0015, IFM-CFP-TO4-0065 | 100% |  | 2022-05-10 | 2022-07-06 |  |  |  | UDF_G3 | Yes |  | BEA | supt |  | 03 | RIZZO | FNTP | P2 | 2 | 2.4.13 |  |  |  |  |  |  |  | as of 30dec22 updated | x | RFI 102 | OCT | Oct | oct update no update received slip out from 3oct22 | as of 30dec22 updated |  |
|  | 02 | **CFPP - COLA Prep - Part 02 - Chapter 02 - Section 4.13 - Section Writing** |  | 2022-10-17 | 2023-03-21 |  |  |  |  |  |  |  |  |  |  |  |  |  |  |  |  |  |  |  |  |  |  |  |  |  |  |  |  |  |  |  |  |  |  |  |
| CP-P2-02-04-SW-0265 |  | Prepare Draft Rev A -Check Updated Supporting Documents -FSAR Section 2.4.13 | 80d | 2022-10-17 A | 2023-02-07 | CP-P2-02-04-SD-0245 SS, CP-P2-02-04-SD-0220 SS |  | 27d |  |  | 84d | 0d | 2023-02-07 | UDF_G3 | Yes | Yes | RIZZO | deliv | RZO-REVA | 03 | RIZZO | FNTP | P2 | 2 | 2.4.13 | No SDA | 1 |  |  | pushed from 20 to 80 d dur |  |  |  |  |  | X |  | oct update start on time |  | X |
| CP-P2-02-04-SW-0270 |  | Review Draft Rev A - FSAR Section 2.4.13 (TO4 Team Review) | 10d | 2023-02-08 | 2023-02-21 | CP-P2-02-04-SW-0265 |  |  |  |  | 84d | 0d |  | UDF_G1 | Yes | Yes | RIZZO | deliv |  | 03 | TO4 | FNTP | P2 | 2 | 2.4.13 |  | 2 | FIX |  |  |  |  |  |  |  |  |  |  |  |  |
| CP-P2-02-04-SW-0275 |  | Resolve Rev A Comments - FSAR Section 2.4.13 | 10d | 2023-02-22 | 2023-03-07 | CP-P2-02-04-SW-0270 |  |  |  |  | 159d | 0d |  | UDF_G1 | Yes | Yes | RIZZO | deliv |  | 03 | RIZZO | FNTP | P2 | 2 | 2.4.13 |  | 3 |  |  |  |  |  |  |  |  |  |  |  |  |  |
| CP-P2-02-04-SW-0276 |  | Confirm SDA Information and Inform Reviewers - FSAR Section 2.4.13 | 5d | 2023-03-08 | 2023-03-08 | CP-P2-02-04-SW-0275, PKM-0125 |  |  | 2023-03-08 | 2023-03-14 | 159d | 0d |  | UDF_G1 | Yes | Yes | FL4 | deliv |  | 03 | FL4 | FNTP | P2 | 1 | 1.1 | SDA Tie | 4 | FIX | Matt-TBD | checked pushed out by pred | R | RZO-REV0 | In parallel with Team Review (hold duration at 5d) |  |  |  |  |  |  |  |
| CP-P2-02-04-SW-0280 |  | Issue Rev 0 - FSAR Section 2.4.13 | 10d | 2023-03-08 | 2023-03-21 | CP-P2-02-04-SW-0276 |  |  |  |  | 159d | 157d |  | UDF_G1 | Yes | Yes | RIZZO | deliv |  | 03 | RIZZO | FNTP | P2 | 2 | 2.4.13 | SDA Tie | 5 |  |  |  | R | RZO-REV0 |  |  |  |  |  |  |  |  |
|  | 14 | **CFPP - COLA Prep - Part 02 - Chapter 02 - Section 4.14 Tech Spec & Emergency Operation Req'ments** |  | 2023-04-24 | 2023-07-18 |  |  |  |  |  |  |  |  |  |  |  |  |  |  |  |  |  |  |  |  |  |  |  |  |  |  |  |  |  |  |  |  |  |  |  |
|  | 01 | **CFPP - COLA Prep - Part 02 - Chapter 02 - Section 4.14 - Support Documents** |  | 2023-04-24 | 2023-05-05 |  |  |  |  |  |  |  |  |  |  |  |  |  |  |  |  |  |  |  |  |  |  |  |  |  |  |  |  |  |  |  |  |  |  |  |
| CP-P2-02-04-SD-0280 |  | Review Required EOPs / Tech Specs Based Flooding Evaluations - Prepare | 10d | 2023-04-24 | 2023-05-05 | CP-P2-02-04-SW-0250 FF, CP-P2-02-04-SW-0045 FF, CP-P2-02-04-SW-0025 FF |  |  |  |  | 76d | 0d |  | UDF_G1 | Yes | Yes | S&L | supt |  | 03 | S&L | FNTP | P2 | 2 | 2.4.14 |  |  |  |  |  |  |  |  |  |  |  |  |  |  |  |
|  | 02 | **CFPP - COLA Prep - Part 02 - Chapter 02 - Section 4.14 - Section Writing** |  | 2023-05-08 | 2023-07-18 |  |  |  |  |  |  |  |  |  |  |  |  |  |  |  |  |  |  |  |  |  |  |  |  |  |  |  |  |  |  |  |  |  |  |  |
| CP-P2-02-04-SW-0285 |  | Prepare Draft Rev A - FSAR Section 2.4.14 | 20d | 2023-05-08 | 2023-06-05 | CP-P2-02-04-SD-0280 |  |  |  |  | 76d | 0d |  | UDF_G1 | Yes | Yes | S&L | deliv | S&L-REVA | 03 | S&L | FNTP | P2 | 2 | 2.4.14 | No SDA | 1 |  |  |  |  |  |  |  |  |  |  |  |  |  |
| CP-P2-02-04-SW-0290 |  | Review Draft Rev A - FSAR Section 2.4.14 (TO4 Team Review) | 10d | 2023-06-06 | 2023-06-19 | CP-P2-02-04-SW-0285 |  |  |  |  | 76d | 0d |  | UDF_G1 | Yes | Yes | S&L | deliv |  | 03 | TO4 | FNTP | P2 | 2 | 2.4.14 |  | 2 | FIX |  |  |  |  |  |  |  |  |  |  |  |  |
| CP-P2-02-04-SW-0295 |  | Resolve Rev A Comments - FSAR Section 2.4.14 | 10d | 2023-06-20 | 2023-07-03 | CP-P2-02-04-SW-0290 |  |  |  |  | 76d | 0d |  | UDF_G1 | Yes | Yes | S&L | deliv |  | 03 | S&L | FNTP | P2 | 2 | 2.4.14 |  | 3 |  |  |  |  |  |  |  |  |  |  |  |  |  |
| CP-P2-02-04-SW-0296 |  | Confirm SDA Information and Inform Reviewers - FSAR Section 2.4.14 | 5d | 2023-07-05 | 2023-07-05 | CP-P2-02-04-SW-0295, PKM-0125 |  |  | 2023-07-05 | 2023-07-11 | 76d | 0d |  | UDF_G1 | Yes | Yes | FL4 | deliv |  | 03 | FL4 | FNTP | P2 | 1 | 1.1 | SDA Tie | 4 | FIX | Matt-TBD | checked pushed out by pred | S | S&L-REV0 | In parallel with Team Review (hold duration at 5d) |  |  |  |  |  |  |  |
| CP-P2-02-04-SW-0300 |  | Issue Rev 0 - FSAR Section 2.4.14 | 10d | 2023-07-05 | 2023-07-18 | CP-P2-02-04-SW-0296 |  |  |  |  | 76d | 74d |  | UDF_G1 | Yes | Yes | S&L | deliv |  | 03 | S&L | FNTP | P2 | 2 | 2.4.14 | SDA Tie | 5 |  |  |  | S | S&L-REV0 |  |  |  |  |  |  |  |  |

Notes:
- CP-P2-02-04-SW-0245: P3 Activity Log Info: 8-Mar-22 - Removed the 1st year hydrology report as a predecessor. Will / begin the draft using the 3rd quarter hydrology report.
- CP-P2-02-04-SD-0245: 9A SEP EOM Notes: Sep update NEED UPDATE slip finish out to 3oct pending confirmation / 11B NOV EOM Notes: As of 29nov22 finish slip from 310ct22 (Discussion about who provides this)
- CP-P2-02-04-SW-0265: 9A SEP EOM Notes: Sep update Requires Discussion on 10/11/22, re: Provision of Liquid Radwaste Source Items Information From Others / 12A DEC MIDMONTH Notes: as of 12dec22 remove pred cp-p2-11-01-sw-0000 SS causing OOS issue

| ID | WBS | Activity | Type | Duration | Start | Finish | Predecessors | Complete | Remaining | Planned start | Planned finish | Total float | Free float | Expected finish | UDF Indicator 01 | JLG - Generic Field | zText_02 | Rebaseline details | doc type | PREPDRFTREVA | CFPP, LLC WBS Structure | Author | Period of Performance | Part | Chapter | Section | SDA needed | activity step | SDA ties | zText_Level 3 Schedule | Deliverable Owner | SDA cleanup notes | SDA ACT | REV0 - SDA | 12B DEC EOM Notes | 9A SEP EOM Notes | UDF Start Date 01 | UDF Start Date 02 | UDF Finish Date 01 | UDF Finish Date 02 | Areva - Item Number | Other | UDF Text 01 | PSHA NOTES | TWG | NEED UPDATE | PMAR | cfpp two week acts | 10B OCT EOM Notes | PSHA | z_Text-4 | Comments | 11B NOV EOM Notes | zText_CFPP Look Ahead Notes |
| --- | --- | --- | --- | --- | --- | --- | --- | --- | --- | --- | --- | --- | --- | --- | --- | --- | --- | --- | --- | --- | --- | --- | --- | --- | --- | --- | --- | --- | --- | --- | --- | --- | --- | --- | --- | --- | --- | --- | --- | --- | --- | --- | --- | --- | --- | --- | --- | --- | --- | --- | --- | --- | --- | --- |
|  | 05 | **CFPP - COLA Prep - Part 02 - Chapter 02 - Section 5 Geology, Seismology & Geotech Eng** |  |  | 2021-09-21 | 2023-10-24 |  |  |  |  |  |  |  |  |  |  |  |  |  |  |  |  |  |  |  |  |  |  |  |  |  |  |  |  |  |  |  |  |  |  |  |  |  |  |  |  |  |  |  |  |  |  |  |  |
|  | 00 | **CFPP - COLA Prep - Part 02 - Chapter 02 - Section 5 Geology, Seismology & Geotech Eng** |  |  | 2023-08-15 | 2023-10-24 |  |  |  |  |  |  |  |  |  |  |  |  |  |  |  |  |  |  |  |  |  |  |  |  |  |  |  |  |  |  |  |  |  |  |  |  |  |  |  |  |  |  |  |  |  |  |  |  |
|  | 01 | **CFPP - COLA Prep - Part 02 - Chapter 02 - Section 5 - Support Documents** |  |  |  |  |  |  |  |  |  |  |  |  |  |  |  |  |  |  |  |  |  |  |  |  |  |  |  |  |  |  |  |  |  |  |  |  |  |  |  |  |  |  |  |  |  |  |  |  |  |  |  |  |
|  | 02 | **CFPP - COLA Prep - Part 02 - Chapter 02 - Section 5 - Section Writing** |  |  | 2023-08-15 | 2023-10-24 |  |  |  |  |  |  |  |  |  |  |  |  |  |  |  |  |  |  |  |  |  |  |  |  |  |  |  |  |  |  |  |  |  |  |  |  |  |  |  |  |  |  |  |  |  |  |  |  |
| CP-P2-02-05-SW-0000 |  | Prepare Draft Rev A -Check Updated Supporting Documents -FSAR Section 2.5.0 |  | 20d | 2023-08-15 | 2023-09-12 | FI-GI-SSI-RP-0015, CP-P2-02-05-SW-0025, CP-P2-02-05-SW-0045, CP-P2-02-05-SW-0065, CP-P2-02-05-SW-0095, CP-P2-02-05-SW-0115, CP-P2-02-05-SW-0135 |  |  |  |  | 7d | 0d |  | UDF_G3 | Seismic | Yes | RIZZO | deliv | RZO-REVA | 03 | RIZZO | FNTP | P2 | 2 | 2.5 | No SDA | 1 |  |  |  |  |  |  |  |  |  |  |  |  |  |  |  |  |  |  |  |  |  |  |  |  |  |  |
| CP-P2-02-05-SW-0005 |  | Review Draft Rev A - FSAR Section 2.5.0 (TO4 Team Review) |  | 10d | 2023-09-13 | 2023-09-26 | CP-P2-02-05-SW-0000 |  |  |  |  | 7d | 0d |  | UDF_G3 | Seismic | Yes | RIZZO | deliv |  | 03 | TO4 | FNTP | P2 | 2 | 2.5 |  | 2 | FIX |  |  |  |  |  |  |  |  |  |  |  |  |  |  |  |  |  |  |  |  |  |  |  |  |  |
| CP-P2-02-05-SW-0010 |  | Resolve Rev A Comments - FSAR Section 2.5.0 |  | 10d | 2023-09-27 | 2023-10-10 | CP-P2-02-05-SW-0005 |  |  |  |  | 7d | 0d |  | UDF_G3 | Seismic | Yes | RIZZO | deliv |  | 03 | RIZZO | FNTP | P2 | 2 | 2.5 |  | 3 |  | Yes |  |  |  |  |  |  |  |  |  |  |  |  |  |  |  |  |  |  |  |  |  |  |  |  |
| CP-P2-02-05-SW-0011 |  | Confirm SDA Information and Inform Reviewers - FSAR Section 2.5.0 |  | 5d | 2023-10-11 | 2023-10-11 | CP-P2-02-05-SW-0010, PKM-0125 |  |  | 2023-10-11 | 2023-10-17 | 7d | 0d |  | UDF_G1 |  | Yes | FL4 | deliv |  | 03 | FL4 | FNTP | P2 | 1 | 1.1 | SDA Tie | 4 | FIX | Yes | Matt-TBD | checked pushed out by pred | R | RZO-REV0 | In parallel with Team Review (hold duration at 5d) |  |  |  |  |  |  |  |  |  |  |  |  |  |  |  |  |  |  |  |
| CP-P2-02-05-SW-0015 |  | Issue Rev 0 - FSAR Section 2.5.0 |  | 10d | 2023-10-11 | 2023-10-24 | CP-P2-02-05-SW-0011 |  |  |  |  | 7d | 5d |  | UDF_G3 | Seismic | Yes | RIZZO | deliv |  | 03 | RIZZO | FNTP | P2 | 2 | 2.5 | SDA Tie | 5 |  | Yes |  |  | R | RZO-REV0 |  |  |  |  |  |  |  |  |  |  |  |  |  |  |  |  |  |  |  |  |
|  | 01 | **CFPP - COLA Prep - Part 02 - Chapter 02 - Section 5.1 Basic Geologic and Seismic Information** |  |  | 2022-04-01 | 2023-06-23 |  |  |  |  |  |  |  |  |  |  |  |  |  |  |  |  |  |  |  |  |  |  |  |  |  |  |  |  |  |  |  |  |  |  |  |  |  |  |  |  |  |  |  |  |  |  |  |  |
|  | 01 | **CFPP - COLA Prep - Part 02 - Chapter 02 - Section 5.1 - Support Documents** |  |  | 2022-04-01 | 2022-09-30 |  |  |  |  |  |  |  |  |  |  |  |  |  |  |  |  |  |  |  |  |  |  |  |  |  |  |  |  |  |  |  |  |  |  |  |  |  |  |  |  |  |  |  |  |  |  |  |  |
| CP-P2-02-03-SD-0030 |  | Compile & Review Literature / Maps / GIS / LiDar Data & INL Site Data |  | 5d | 2022-04-01 A | 2022-07-18 A | CP-P2-02-03-SD-0020 FF | 100% |  | 2022-08-01 | 2022-08-05 |  |  |  | UDF_G1 |  | Yes | RIZZO | supt |  | 03 | RIZZO | FNTP | P2 | 2 | 2.3.1 |  |  |  | Yes |  |  |  |  |  |  |  |  |  |  |  |  |  |  |  |  |  |  |  |  |  |  |  |  |
| CP-P2-02-03-SD-0020 |  | Conduct Field Reconnaissance (incl Geohazard Mapping) |  | 30d | 2022-06-17 A | 2022-07-29 A | CP-P2-02-03-SD-0015 | 100% |  |  |  |  |  |  | UDF_G1 |  | Yes | RIZZO | supt |  | 03 | RIZZO | FNTP | P2 | 2 | 2.3.1 |  |  |  |  |  |  |  |  |  |  |  |  |  |  |  |  |  |  |  |  |  |  |  |  |  |  |  |  |
| CP-P2-02-03-SD-0045 |  | Prepare Rock Mass Properties |  | 40d | 2022-07-07 A | 2022-09-30 A | FI-GI-SSI-RP-0020 | 100% |  | 2022-07-07 | 2022-08-31 |  |  |  | UDF_G1 |  | Yes | RIZZO | supt |  | 03 | RIZZO | FNTP | P2 | 2 | 2.3.1 |  |  |  | Yes |  |  |  |  |  | Sep update |  |  |  |  |  |  |  |  |  |  |  |  |  |  |  |  |  |  |
| CP-P2-02-03-SD-0055 |  | Prepare Geologic Cross Sections Calc |  | 30d | 2022-07-07 A | 2022-09-30 A | CP-P2-02-04-SD-0005, FI-GI-SSI-RP-0020 | 100% |  | 2022-07-07 | 2022-08-17 |  |  |  | UDF_G1 | Tmonth | Yes | RIZZO | supt |  | 03 | RIZZO | FNTP | P2 | 2 | 2.3.1 |  |  |  | Yes |  |  |  |  |  | Sep update |  |  |  |  |  |  |  |  |  |  |  |  |  |  |  |  |  |  |
|  | 02 | **CFPP - COLA Prep - Part 02 - Chapter 02 - Section 5.1 - Section Writing** |  |  | 2022-08-18 | 2023-06-23 |  |  |  |  |  |  |  |  |  |  |  |  |  |  |  |  |  |  |  |  |  |  |  |  |  |  |  |  |  |  |  |  |  |  |  |  |  |  |  |  |  |  |  |  |  |  |  |  |
| CP-P2-02-05-SW-0020 |  | Prepare Draft Rev A -Check Updated Supporting Documents -FSAR Section 2.5.1 |  | 188d | 2022-08-18 A | 2023-05-11 | CP-P2-02-03-SD-0035 SS, CP-P2-02-03-SD-0060 SS, CP-P2-02-03-SD-0055 SS, CP-P2-02-03-SD-0045 SS, FI-GI-SSI-RP-0020 SS, A-000-0025 SS, CP-P2-02-05-PVH-1055 |  | 94d |  |  | 37d | 0d | 2023-05-11 | UDF_G1 | Seismic | Yes | RIZZO | deliv | RZO-REVA | 03 | RIZZO | FNTP | P2 | 2 | 2.5.1 | No SDA | 1 |  | Yes |  |  |  |  |  |  |  |  |  |  |  |  |  |  |  |  |  |  |  |  |  |  |  |  |
| CP-P2-02-05-SW-0025 |  | Review Draft Rev A - FSAR Section 2.5.1 (TO4 Team Review) |  | 10d | 2023-05-12 | 2023-05-25 | CP-P2-02-05-SW-0020 |  |  |  |  | 62d | 0d |  | UDF_G1 | Seismic | Yes | RIZZO | deliv |  | 03 | TO4 | FNTP | P2 | 2 | 2.5.1 |  | 2 | FIX | Yes |  |  |  |  |  |  |  |  |  |  |  |  |  |  |  |  |  |  |  |  |  |  |  |  |
| CP-P2-02-05-SW-0030 |  | Resolve Rev A Comments - FSAR Section 2.5.1 |  | 10d | 2023-05-26 | 2023-06-09 | CP-P2-02-05-SW-0025 |  |  |  |  | 92d | 0d |  | UDF_G1 | Seismic | Yes | RIZZO | deliv |  | 03 | RIZZO | FNTP | P2 | 2 | 2.5.1 |  | 3 |  | Yes |  |  |  |  |  |  |  |  |  |  |  |  |  |  |  |  |  |  |  |  |  |  |  |  |
| CP-P2-02-05-SW-0012 |  | Confirm SDA Information and Inform Reviewers - FSAR Section 2.5.1 |  | 5d | 2023-06-12 | 2023-06-12 | CP-P2-02-05-SW-0030, PKM-0125 |  |  | 2023-06-12 | 2023-06-16 | 92d | 0d |  | UDF_G1 |  | Yes | FL4 | deliv |  | 03 | FL4 | FNTP | P2 | 2 | 2.5.1 | SDA Tie | 4 | FIX | Yes | Matt-TBD |  | R | RZO-REV0 | In parallel with Team Review (hold duration at 5d) |  |  |  |  |  |  |  |  |  |  |  |  |  |  |  |  |  |  |  |
| CP-P2-02-05-SW-0035 |  | Issue Rev 0 - FSAR Section 2.5.1 |  | 10d | 2023-06-12 | 2023-06-23 | CP-P2-02-05-SW-0012 |  |  |  |  | 92d | 90d |  | UDF_G1 | Seismic | Yes | RIZZO | deliv |  | 03 | RIZZO | FNTP | P2 | 2 | 2.5.1 | SDA Tie | 5 |  | Yes |  |  | R | RZO-REV0 |  |  |  |  |  |  |  |  |  |  |  |  |  |  |  |  |  |  |  |  |
|  | 02 | **CFPP - COLA Prep - Part 02 - Chapter 02 - Section 5.2 Vibratory Ground Motion** |  |  | 2022-02-01 | 2023-05-26 |  |  |  |  |  |  |  |  |  |  |  |  |  |  |  |  |  |  |  |  |  |  |  |  |  |  |  |  |  |  |  |  |  |  |  |  |  |  |  |  |  |  |  |  |  |  |  |  |
|  | 00 | **CFPP - COLA Prep - Part 02 - Chapter 02 - Section 5.2 - PSHA (SSHAC) (3rd Party)** |  |  | 2022-02-01 | 2022-12-08 |  |  |  |  |  |  |  |  |  |  |  |  |  |  |  |  |  |  |  |  |  |  |  |  |  |  |  |  |  |  |  |  |  |  |  |  |  |  |  |  |  |  |  |  |  |  |  |  |
| CP-P2-02-05-SHC-0100 |  | INL Prepare & Issue Draft FInal PSHA Report (SSHAC) |  | 39d | 2022-02-01 A | 2022-10-28 A | FI-GI-SSI-DR-0080 SS+20d | 100% |  | 2022-09-06 | 2022-10-28 |  |  |  | UDF_G1 | NATE | Yes | INL |  |  | 03 | INL | FNTP | P2 | 2 | 2.5.2 |  |  |  | Yes |  |  |  |  |  |  | 2021-06-14 | 2022-02-21 | 2021-07-09 | 2022-03-25 | 25 | PMAR | TVA/UAMPS | changed from 30nov to 28oct per emailfrom Eric 16june | 1 | OCT | Y | x | oct update complete | PSHA |  |  |  |  |
| CP-P2-02-05-SHC-0070 |  | SSHAC Inputs Complete | milestone | 0d | 2022-02-15 A | 2022-02-15 A | PKM-0090, FI-GI-SSI-RP-0025 | 100% |  |  |  |  |  |  | UDF_G3 |  | Yes | INL |  |  | 03 | INL | FNTP | P2 |  |  |  |  |  | Yes |  |  |  |  |  |  |  |  | 2021-07-09 | 2022-03-25 | A143240 |  |  |  |  |  |  |  |  |  | CP-5 |  |  |  |
| CP-P2-02-05-SHC-0110 |  | Receive Existing PSHA Reports | milestone | 0d | 2022-08-02 A | 2022-08-02 A | PKM-0065 | 100% |  |  |  |  |  |  | UDF_G3 |  | Yes | INL |  |  | 03 | INL | FNTP | P2 | 2 | 2.5.2 |  |  |  |  |  | no update |  |  |  |  |  |  | 2021-07-09 | 2022-03-25 | A143240 |  |  |  | 1 |  |  |  |  |  |  | x |  |  |
| CP-P2-02-05-SHC-0105 |  | INL Issue Closure Letter and Final INL Site-wide SSHAC Level 3 Report |  | 21d | 2022-10-31 A | 2022-12-08 A | CP-P2-02-05-SHC-0100 | 100% |  | 2022-10-31 | 2022-11-29 |  |  |  | UDF_G1 | NATE | Yes | INL |  |  | 03 | INL | FNTP | P2 | 2 | 2.5.2 |  |  |  | Yes |  |  |  |  | as of 30dec22 updated |  | 2021-06-14 | 2022-02-21 | 2021-07-09 | 2022-03-25 | 25 |  | TVA/UAMPS | new activity from email 16june | 1 |  |  |  |  | PSHA |  |  | As of 29nov22 started |  |
| CP-P2-02-05-SHC-0115 |  | Receive Existing PSHA Reports | milestone | 0d | 2022-10-31 A | 2022-10-31 A | PKM-0065, CP-P2-02-05-SHC-0110 | 100% |  |  |  |  |  |  | UDF_G3 |  | Yes | INL |  |  | 03 | INL | FNTP | P2 | 2 | 2.5.2 |  |  |  |  |  | no update |  |  |  |  |  |  | 2021-07-09 | 2022-03-25 | A143240 |  |  |  | 1 |  |  |  |  |  |  | x | As of 29nov22 complete | Y |

| ID | WBS | Activity | Type | Duration | Start | Finish | Predecessors | Complete | Remaining | Planned start | Planned finish | Total float | Free float | Expected finish | UDF Indicator 01 | UDF Text 01 | JLG - Generic Field | zText_02 | zText_RFI | Rebaseline details | TWG | doc type | CFPP, LLC WBS Structure | Author | Period of Performance | Part | Chapter | Section | zText_CFPP Look Ahead Notes | zText_Level 3 Schedule | 10B OCT EOM Notes | 11A NOV MIDMONTH Notes | 11B NOV EOM Notes | PSHA | PREPDRFTREVA | SDA needed | activity step | SDA ties | Deliverable Owner | SDA ACT | REV0 - SDA | Comments | VERIFIED MONTHLY UPDATE | 9A SEP EOM Notes | NEED UPDATE | cfpp two week acts | Monthly Variance | DOE MILESTONE |
| --- | --- | --- | --- | --- | --- | --- | --- | --- | --- | --- | --- | --- | --- | --- | --- | --- | --- | --- | --- | --- | --- | --- | --- | --- | --- | --- | --- | --- | --- | --- | --- | --- | --- | --- | --- | --- | --- | --- | --- | --- | --- | --- | --- | --- | --- | --- | --- | --- |
|  | 01 | **CFPP - COLA Prep - Part 02 - Chapter 02 - Section 5.2 - Support Documents** |  |  | 2022-05-13 | 2023-01-20 |  |  |  |  |  |  |  |  |  |  |  |  |  |  |  |  |  |  |  |  |  |  |  |  |  |  |  |  |  |  |  |  |  |  |  |  |  |  |  |  |  |  |
| CP-P2-02-05-SD-0025 |  | Develop Interim Hazard Curves & Time Histories |  | 48d | 2022-05-13 A | 2022-07-07 A | CP-P2-03-07-SD-0005 SS | 100% |  | 2022-05-13 | 2022-07-21 |  |  |  | UDF_G1 | SSHAC | Tmonth CP SSHAC SI | Yes | RFI 102 | RIZZO | 1 | supt | 03 | RIZZO | FNTP | P2 | 2 | 2.5.2 |  |  |  |  |  |  |  |  |  |  |  |  |  |  |  |  |  |  |  |  |
| CP-P2-02-05-SD-0010 |  | Provide Final Hazard Curves, GMRS, SCP's, FIRS |  | 20d | 2022-10-31 A | 2023-01-20 | CP-P2-02-05-SHC-0100, CP-P2-02-05-SD-0025 |  | 15d | 2022-12-05 | 2023-01-02 | 21d | 0d | 2023-01-20 | UDF_G1 | SSHAC | CP NATE | Yes | RFI 202 | RIZZO |  | supt | 03 | RIZZO | FNTP | P2 | 2 | 2.5.2 | Y | Yes | oct update start on time | As of 22Nov (FROM INL) does not include SCP's | As of 29nov22 started | PSHA |  |  |  |  |  |  |  |  |  |  |  |  |  |  |
|  | 02 | **CFPP - COLA Prep - Part 02 - Chapter 02 - Section 5.2 - Section Writing** |  |  | 2023-01-23 | 2023-05-26 |  |  |  |  |  |  |  |  |  |  |  |  |  |  |  |  |  |  |  |  |  |  |  |  |  |  |  |  |  |  |  |  |  |  |  |  |  |  |  |  |  |  |
| CP-P2-02-05-SW-0040 |  | Prepare Draft Rev A -Check Updated Supporting Documents -FSAR Section 2.5.2 |  | 60d | 2023-01-23 | 2023-04-14 | CP-P2-02-05-SD-0010, CP-P2-02-05-SHC-0100, CP-P2-03-07-SD-0015 |  |  |  |  | 61d | 0d |  | UDF_G1 |  | Seismic SSHAC | Yes |  | RIZZO |  | deliv | 03 | RIZZO | FNTP | P2 | 2 | 2.5.2 |  | Yes |  |  |  |  | RZO-REVA | No SDA | 1 |  |  |  |  |  |  |  |  |  |  |  |
| CP-P2-02-05-SW-0045 |  | Review Draft Rev A - FSAR Section 2.5.2 (TO4 Team Review) |  | 10d | 2023-04-17 | 2023-04-28 | CP-P2-02-05-SW-0040 |  |  |  |  | 81d | 0d |  | UDF_G1 |  | Seismic SSHAC | Yes |  | RIZZO |  | deliv | 03 | TO4 | FNTP | P2 | 2 | 2.5.2 |  | Yes |  |  |  |  |  |  | 2 | FIX |  |  |  |  |  |  |  |  |  |  |
| CP-P2-02-05-SW-0050 |  | Resolve Rev A Comments - FSAR Section 2.5.2 |  | 10d | 2023-05-01 | 2023-05-12 | CP-P2-02-05-SW-0045 |  |  |  |  | 111d | 0d |  | UDF_G1 |  | Seismic SSHAC | Yes |  | RIZZO |  | deliv | 03 | RIZZO | FNTP | P2 | 2 | 2.5.2 |  | Yes |  |  |  |  |  |  | 3 |  |  |  |  |  |  |  |  |  |  |  |
| CP-P2-02-05-SW-0051 |  | Confirm SDA Information and Inform Reviewers - FSAR Section 2.5.2 |  | 5d | 2023-05-15 | 2023-05-15 | CP-P2-02-05-SW-0050, PKM-0125 |  |  | 2023-05-15 | 2023-05-19 | 111d | 0d |  | UDF_G1 |  |  | Yes |  | FL4 |  | deliv | 03 | FL4 | FNTP | P2 | 1 | 1.1 |  | Yes |  |  |  |  |  | SDA Tie | 4 | FIX | Matt-TBD | R | RZO-REV0 |  |  |  |  |  |  |  |
| CP-P2-02-05-SW-0055 |  | Issue Rev 0 - FSAR Section 2.5.2 |  | 10d | 2023-05-15 | 2023-05-26 | CP-P2-02-05-SW-0051 |  |  |  |  | 111d | 109d |  | UDF_G1 |  | Seismic SSHAC | Yes |  | RIZZO |  | deliv | 03 | RIZZO | FNTP | P2 | 2 | 2.5.2 |  | Yes |  |  |  |  |  | SDA Tie | 5 |  |  | R | RZO-REV0 |  |  |  |  |  |  |  |
|  | 03 | **CFPP - COLA Prep - Part 02 - Chapter 02 - Section 5.3 Surface Faulting** |  |  | 2021-09-21 | 2023-07-31 |  |  |  |  |  |  |  |  |  |  |  |  |  |  |  |  |  |  |  |  |  |  |  |  |  |  |  |  |  |  |  |  |  |  |  |  |  |  |  |  |  |  |
|  | 01 | **CFPP - COLA Prep - Part 02 - Chapter 02 - Section 5.3 - Volcanic Hazard Analysis** |  |  | 2021-09-21 | 2023-04-20 |  |  |  |  |  |  |  |  |  |  |  |  |  |  |  |  |  |  |  |  |  |  |  |  |  |  |  |  |  |  |  |  |  |  |  |  |  |  |  |  |  |  |
| CP-P2-02-05-PVH-0000 |  | VHA: Start Volcanic Hazard Analysis | milestone | 0d | 2021-09-21 A | 2021-09-21 A | PKM-0040 | 100% |  |  |  |  |  |  | UDF_G1 | JP/PM |  | Yes |  | RIZZO |  |  | 03 | RIZZO | FNTP | P2 | 2 | 2.5.3 |  | Yes |  |  |  |  |  |  |  |  |  |  |  |  |  |  |  |  |  |  |
| CP-P2-02-05-PVH-0020 |  | VHA: Plan Interactions with NRC |  | 41d | 2021-09-21 A | 2021-11-18 A | CP-P2-02-05-PVH-0000 | 100% |  |  |  |  |  |  | UDF_G3 | RIZ |  | Yes |  | RIZZO |  |  | 03 | RIZZO | FNTP | P2 | 2 | 2.5.3 |  | Yes |  |  |  |  |  |  |  |  |  |  |  |  |  |  |  |  |  |  |
| CP-P2-02-05-PVH-1000 |  | VHA: Develop PEP and Project Schedule |  | 58d | 2021-09-21 A | 2021-12-15 A | CP-P2-02-05-PVH-0000 | 100% |  |  |  |  |  |  | UDF_G3 | RIZ |  | Yes |  | RIZZO |  |  | 03 | RIZZO | FNTP | P2 | 2 | 2.5.3 |  | Yes |  |  |  |  |  |  |  |  |  |  |  |  |  |  |  |  |  |  |
| CP-P2-02-05-PVH-0025 |  | VHA: Perform Pre-Application Workshop with NRC |  | 1d | 2021-11-19 A | 2021-11-19 A | CP-P2-02-05-PVH-0020 | 100% |  |  |  |  |  |  | UDF_G3 | RIZ |  | Yes |  | RIZZO |  |  | 03 | RIZZO | FNTP | P2 | 2 | 2.5.3 |  | Yes |  |  |  |  |  |  |  |  |  |  |  |  |  |  |  |  |  |  |
| CP-P2-02-05-PVH-1025 |  | VHA: Develop / Review / Approve Laboratory Testing Work Plan |  | 31d | 2021-11-19 A | 2021-11-19 A | CP-P2-02-05-PVH-1000 SS+40d, CP-P2-02-05-PVH-0000, CP-P2-02-05-PVH-0020 | 100% |  | 2021-11-19 | 2022-01-11 |  |  |  | UDF_G3 | RIZ |  | Yes |  | RIZZO |  |  | 03 | RIZZO | FNTP | P2 | 2 | 2.5.3 |  | Yes |  |  |  |  |  |  |  |  |  |  |  |  |  |  |  |  |  |  |
| CP-P2-02-05-PVH-1080 |  | VHA: Develop VHA Database (Existing Information) |  | 41d | 2021-11-19 A | 2022-07-14 A | CP-P2-02-05-PVH-1000 SS+41d, CP-P2-02-05-PVH-0000 | 100% |  | 2021-11-19 | 2022-01-25 |  |  |  | UDF_G3 | RIZ |  | Yes |  | RIZZO |  |  | 03 | RIZZO | FNTP | P2 | 2 | 2.5.3 |  | Yes |  |  |  |  |  |  |  |  |  |  |  | 1 |  |  |  |  |  |  |
| CP-P2-02-05-PVH-1085 |  | VHA: Evaluate VHA Database |  | 41d | 2021-11-19 A | 2022-07-14 A | CP-P2-02-05-PVH-1080 SS | 100% |  | 2021-11-19 | 2022-01-25 |  |  |  | UDF_G3 | RIZ |  | Yes |  | RIZZO | 1 |  | 03 | RIZZO | FNTP | P2 | 2 | 2.5.3 |  | Yes |  |  |  |  |  |  |  |  |  |  |  | 1 |  |  |  |  |  |  |
| CP-P2-02-05-PVH-1010 |  | VHA: Develop Draft "White Paper" Content |  | 10d | 2022-01-03 A | 2022-01-14 A | CP-P2-02-05-PVH-1000, CP-P2-02-05-PVH-0025 | 100% |  | 2022-01-31 | 2022-02-11 |  |  |  | UDF_G3 | RIZ |  | Yes |  | RIZZO |  |  | 03 | RIZZO | FNTP | P2 | 2 | 2.5.3 |  | Yes |  |  |  |  |  |  |  |  |  |  |  |  |  |  |  |  |  |  |
| CP-P2-02-05-PVH-1020 |  | VHA: Integrate / Review / Submit White Paper to NRC |  | 24d | 2022-01-17 A | 2022-08-12 A | CP-P2-02-05-PVH-1010 | 100% |  | 2022-02-14 | 2022-03-17 |  |  |  |  | RIZ |  | Yes |  | RIZZO |  |  | 03 | NuScale | FNTP | P2 | 2 | 2.5.3 |  | Yes |  |  |  |  |  |  |  |  |  |  |  |  |  |  |  |  |  |  |
| CP-P2-02-05-PVH-1060 |  | VHA: Sample CFPP Cores and Site Area Surface Samples for Age Dating & Petrographic and Trace Element Analysis |  | 10d | 2022-01-17 A | 2022-03-04 A | CP-P2-02-05-PVH-1025 FF, CP-P2-02-05-PVH-0000 | 100% |  | 2022-02-14 | 2022-02-25 |  |  |  | UDF_G3 | RIZ |  | Yes |  | RIZZO |  |  | 03 | RIZZO | FNTP | P2 | 2 | 2.5.3 |  | Yes |  |  |  |  |  |  |  |  |  |  |  |  |  |  |  |  |  |  |
| CP-P2-02-05-PVH-1095 |  | VHA: Tectono-Magmatic Model |  | 60d | 2022-02-02 A | 2022-10-11 A | CP-P2-02-05-PVH-1085 SS | 100% |  | 2022-07-15 | 2022-10-07 |  |  |  | UDF_G3 | RIZ |  | Yes |  | RIZZO | 1 |  | 03 | RIZZO | FNTP | P2 | 2 | 2.5.3 |  |  | oct update finish on time |  |  |  |  |  |  |  |  |  |  |  | X | Sep update finish slip from 16sep | OCT | x |  |  |
| CP-P2-02-05-PVH-1105 |  | VHA: Develop Spatial Density Estimation of Events / Vents |  | 49d | 2022-02-21 A | 2022-09-30 A | CP-P2-02-05-PVH-1095 SS | 100% |  | 2022-07-11 | 2022-09-16 |  |  |  | UDF_G3 | RIZ |  | Yes |  | RIZZO |  |  | 03 | RIZZO | FNTP | P2 | 2 | 2.5.3 |  | Yes |  |  |  |  |  |  |  |  |  |  |  |  |  | Sep update finish slip from 16sep |  |  |  |  |
| CP-P2-02-05-PVH-1120 |  | VHA: Develop Tephra Fallout / Accumulation Hazard Model & Conduct Simulations |  | 25d | 2022-02-21 A | 2022-09-30 A | CP-P2-02-05-PVH-1085 SS+10d | 100% |  | 2022-07-29 | 2022-09-01 |  |  |  | UDF_G3 | RIZ |  | Yes |  | RIZZO |  |  | 03 | RIZZO | FNTP | P2 | 2 | 2.5.3 |  |  |  |  |  |  |  |  |  |  |  |  |  |  |  | Sep update |  |  |  |  |
| CP-P2-02-05-PVH-1065 |  | VHA: Complete Argon-Argon Dating of Core & Site Area Surface Samples |  | 100d | 2022-04-04 A | 2022-08-23 A | CP-P2-02-05-PVH-1060 | 100% |  | 2022-05-02 | 2022-09-21 |  |  |  | UDF_G3 | RIZ |  | Yes |  | RIZZO |  |  | 03 | RIZZO | FNTP | P2 | 2 | 2.5.3 |  |  |  |  |  |  |  |  |  |  |  |  |  |  |  |  |  |  |  |  |
| CP-P2-02-05-PVH-1070 |  | VHA: Complete Paleomagnetic Dating of CFPP Core Samples |  | 60d | 2022-04-04 A | 2022-08-25 A | CP-P2-02-05-PVH-1060 | 100% |  | 2022-05-02 | 2022-07-26 |  |  |  | UDF_G3 | RIZ |  | Yes |  | RIZZO | 1 |  | 03 | RIZZO | FNTP | P2 | 2 | 2.5.3 |  |  |  |  |  |  |  |  |  |  |  |  |  |  |  |  |  |  |  |  |
| CP-P2-02-05-PVH-1090 |  | VHA: Define Events / Vents (Develop Screening Matrix) |  | 10d | 2022-05-06 A | 2022-06-09 A | CP-P2-02-05-PVH-1085 SS | 100% |  | 2022-05-06 | 2022-05-19 |  |  |  | UDF_G3 | RIZ |  | Yes |  | RIZZO |  |  | 03 | RIZZO | FNTP | P2 | 2 | 2.5.3 |  |  |  |  |  |  |  |  |  |  |  |  |  |  |  |  |  |  |  |  |
| CP-P2-02-05-PVH-1030 |  | VHA: Perform LiDAR Based Analyses |  | 19d | 2022-05-09 A | 2022-05-27 A | CP-P2-02-05-PVH-1000, CP-P2-02-05-PVH-1000 FF | 100% |  | 2022-05-09 | 2022-06-03 |  |  |  | UDF_G3 | RIZ |  | Yes |  | RIZZO |  |  | 03 | RIZZO | FNTP | P2 | 2 | 2.5.3 |  |  |  |  |  |  |  |  |  |  |  |  |  |  |  |  |  |  |  |  |
| CP-P2-02-05-PVH-1035 |  | VHA: Integrate Existing Geologic with LiDAR Data |  | 19d | 2022-05-09 A | 2022-05-27 A | CP-P2-02-05-PVH-1030 SS | 100% |  | 2022-05-09 | 2022-06-03 |  |  |  | UDF_G3 | RIZ |  | Yes |  | RIZZO | 1 |  | 03 | RIZZO | FNTP | P2 | 2 | 2.5.3 |  |  |  |  |  |  |  |  |  |  |  |  |  |  |  |  |  |  |  |  |
| CP-P2-02-05-PVH-1040 |  | VHA: Develop Preliminary 25 Mile Radius Geologic Map |  | 10d | 2022-05-31 A | 2022-06-13 A | CP-P2-02-05-PVH-1035 | 100% |  |  |  |  |  |  | UDF_G3 | RIZ |  | Yes |  | RIZZO |  |  | 03 | RIZZO | FNTP | P2 | 2 | 2.5.3 |  | Yes |  |  |  |  |  |  |  |  |  |  |  |  |  |  |  |  |  |  |
| CP-P2-02-05-PVH-1100 |  | VHA: Screen Potential Volcanic Hazards & issue corresponding technical note |  | 38d | 2022-06-07 A | 2022-10-11 A | CP-P2-02-05-PVH-1090 | 100% |  | 2022-06-10 | 2022-08-03 |  |  |  | UDF_G3 | RIZ |  | Yes |  | RIZZO | 1 |  | 03 | RIZZO | FNTP | P2 | 2 | 2.5.3 |  | Yes | oct update finish on time |  |  |  |  |  |  |  |  |  |  |  | X | Sep update finish slip from 16sep | OCT | x |  |  |
| CP-P2-02-05-PVH-1045 |  | VHA: Develop Preliminary 5 Mile Radius Geologic Map |  | 10d | 2022-06-14 A | 2022-06-27 A | CP-P2-02-05-PVH-1040 | 100% |  |  |  |  |  |  | UDF_G3 | RIZ |  | Yes |  | RIZZO |  |  | 03 | RIZZO | FNTP | P2 | 2 | 2.5.3 |  | Yes |  |  |  |  |  |  |  |  |  |  |  |  |  |  |  |  |  |  |
| CP-P2-02-05-PVH-1050 |  | VHA: Develop Preliminary 1 Mile Radius Geologic Map |  | 19d | 2022-06-28 A | 2022-07-18 A | CP-P2-02-05-PVH-1045 | 100% |  | 2022-06-28 | 2022-07-25 |  |  |  | UDF_G3 | RIZ |  | Yes |  | RIZZO |  |  | 03 | RIZZO | FNTP | P2 | 2 | 2.5.3 |  | Yes |  |  |  |  |  |  |  |  |  |  |  |  |  |  |  |  |  |  |
| CP-P2-02-05-PVH-1075 |  | VHA: Complete Petrographic and Trace Element Analysis of Core and Site Area Surface Samples |  | 9d | 2022-07-13 A | 2022-08-26 A | CP-P2-02-05-PVH-1060 | 100% |  | 2022-07-18 | 2022-07-28 |  |  |  | UDF_G3 | RIZ |  | Yes |  | RIZZO | 1 |  | 03 | RIZZO | FNTP | P2 | 2 | 2.5.3 |  |  |  |  |  |  |  |  |  |  |  |  |  |  |  |  |  |  |  |  |
| CP-P2-02-05-PVH-1055 |  | VHA: Develop Final 1, 5, & 25 Mile Radius Geologic Maps |  | 5d | 2022-07-29 A | 2022-08-26 A | CP-P2-02-05-PVH-1050 | 100% |  | 2022-07-26 | 2022-08-01 |  |  |  | UDF_G3 | RIZ |  | Yes |  | RIZZO |  |  | 03 | RIZZO | FNTP | P2 | 2 | 2.5.3 |  | Yes |  |  |  |  |  |  |  |  |  |  |  |  |  |  |  |  |  |  |
| CP-P2-02-05-PVH-1115 |  | VHA: Prepare Hazard Input Document (HID) for Hazard Models |  | 15d | 2022-09-14 A | 2022-11-04 A |  | 100% |  | 2022-09-19 | 2022-10-07 |  |  |  | UDF_G3 | RIZ |  | Yes |  | RIZZO |  |  | 03 | RIZZO | FNTP | P2 | 2 | 2.5.3 |  | Yes | oct update finish slip from 07oct22 | As of 22Nov | As of 29nov22 complete |  |  |  |  |  |  |  |  |  |  | Sep update | OCT |  | Oct |  |
| CP-P2-02-05-PVH-1125 |  | VHA: Develop Lava Inundation Hazard Model & Conduct Model Simulations |  | 54d | 2022-10-12 A | 2023-01-23 | CP-P2-02-05-PVH-1095, CP-P2-02-05-PVH-1115, CP-P2-02-05-PVH-1100 |  | 16d | 2022-10-12 | 2022-12-28 | 7d | 0d | 2023-01-23 | UDF_G3 | RIZ |  | Yes |  | RIZZO |  |  | 03 | RIZZO | FNTP | P2 | 2 | 2.5.3 |  | Yes | oct update start on time |  |  |  |  |  |  |  |  |  |  |  |  |  | OCT |  |  |  |
| CP-P2-02-05-PVH-1130 |  | VHA: Develop Near Vent Processes Hazard Model & Conduct Model Simulations |  | 54d | 2022-10-12 A | 2023-01-23 | CP-P2-02-05-PVH-1095, CP-P2-02-05-PVH-1115, CP-P2-02-05-PVH-1100 |  | 16d | 2022-10-12 | 2022-12-28 | 7d | 0d | 2023-01-23 | UDF_G3 | RIZ |  | Yes |  | RIZZO |  |  | 03 | RIZZO | FNTP | P2 | 2 | 2.5.3 |  | Yes | oct update start on time |  |  |  |  |  |  |  |  |  |  |  |  |  | OCT |  |  |  |
| CP-P2-02-05-PVH-1110 |  | VHA: Estimate Event / Vent Frequencies |  | 19d | 2023-01-02 | 2023-01-26 | CP-P2-02-05-PVH-1065, CP-P2-02-05-PVH-1070, CP-P2-02-05-PVH-1075, CP-P2-02-05-PVH-1105 |  |  |  |  | 22d | 15d |  | UDF_G3 | RIZ |  | Yes |  | RIZZO |  |  | 03 | RIZZO | FNTP | P2 | 2 | 2.5.3 |  | Yes |  |  |  |  |  |  |  |  |  |  |  |  |  |  |  |  |  |  |
| CP-P2-02-05-PVH-1135 |  | VHA: Calculate Event / Vent Probabilities |  | 18d | 2023-01-24 | 2023-02-16 | CP-P2-02-05-PVH-1120, CP-P2-02-05-PVH-1125, CP-P2-02-05-PVH-1130 |  |  |  |  | 7d | 0d |  | UDF_G3 | RIZ |  | Yes |  | RIZZO |  |  | 03 | RIZZO | FNTP | P2 | 2 | 2.5.3 |  | Yes |  |  |  |  |  |  |  |  |  |  |  |  |  |  |  |  |  |  |
| CP-P2-02-05-PVH-1140 |  | VHA: Complete Sensitivity Analyses of Probability Models |  | 20d | 2023-02-17 | 2023-03-16 | CP-P2-02-05-PVH-1135, CP-P2-02-05-PVH-1110 |  |  |  |  | 7d | 0d |  | UDF_G3 | RIZ |  | Yes |  | RIZZO |  |  | 03 | RIZZO | FNTP | P2 | 2 | 2.5.3 |  | Yes |  |  |  |  |  |  |  |  |  |  |  |  |  |  |  |  |  |  |
| CP-P2-02-05-PVH-1145 |  | VHA: Define Maximum Magnitude Events |  | 3d | 2023-03-17 | 2023-03-21 | CP-P2-02-05-PVH-1140 |  |  |  |  | 7d | 0d |  | UDF_G3 | RIZ |  | Yes |  | RIZZO |  |  | 03 | RIZZO | FNTP | P2 | 2 | 2.5.3 |  | Yes |  |  |  |  |  |  |  |  |  |  |  |  |  |  |  |  |  |  |
| CP-P2-02-05-PVH-1155 |  | VHA: Complete & Present VHA Report |  | 22d | 2023-03-22 | 2023-04-20 | CP-P2-02-05-PVH-1145, CP-P2-02-05-PVH-1115 |  |  |  |  | 7d | 0d |  | UDF_G3 | RIZ |  | Yes |  | RIZZO | 1 |  | 03 | RIZZO | FNTP | P2 | 2 | 2.5.3 |  | Yes |  |  |  |  |  |  |  |  |  |  |  |  |  |  |  |  |  | 18 |

Notes:
- CP-P2-02-05-SW-0040: SDA cleanup notes: pushed this duration 20d to 60d
- CP-P2-02-05-SW-0051: SDA cleanup notes: checked pushed out by pred / 12B DEC EOM Notes: In parallel with Team Review (hold duration at 5d)
- CP-P2-02-05-PVH-1020: SDA cleanup notes: under topical reports WBS (Fluor doesn't have anything in Topical reports section)
- CP-P2-02-05-PVH-1055: SDA cleanup notes: need successor
- CP-P2-02-05-PVH-1125: 12B DEC EOM Notes: As of 30dec22 delayed 1st mitigation finish slipped to 23 feb from INL delay (move finish back 1 month to 23jan) / CFPP - Contractor's Remarks: as of 30dec22 updated See note for CP-P2-02-05-PVH-1110. We have developed the model and conducted preliminary simulations, but the delay in the receipt of the final vent/event database has impacted the timing of our final simulations.
- CP-P2-02-05-PVH-1130: 12B DEC EOM Notes: As of 30dec22 delayed 1st mitigation finish slipped to 23 feb from INL delay (move finish back 1 month to 23jan) / CFPP - Contractor's Remarks: as of 30dec22 updated See note for CP-P2-02-05-PVH-1110. We have developed the model and conducted preliminary simulations, but the delay in the receipt of the final vent/event database has impacted the timing of our final simulations.
- CP-P2-02-05-PVH-1110: 12B DEC EOM Notes: as of 30dec22 updated Although not a direct December 2022 item, this is now a potential schedule delay we are now tracking. The INL PVHA provided a final vent/event database later than expected. We have an internal (RIZZO) meeting scheduled for 01/12/23 / CFPP - Contractor's Remarks: as of 30dec22 updated Although not a direct December 2022 item, this is now a potential schedule delay we are now tracking. The INL PVHA provided a final vent/event database later than expected. We have an internal (RIZZO) meeting scheduled for 01/12/23
- CP-P2-02-05-PVH-1135: 12B DEC EOM Notes: As of 30dec22 pred delayed / CFPP - Contractor's Remarks: as of 30dec22 updated See note for CP-P2-02-05-PVH-1110. We have developed the model and conducted preliminary simulations, but the delay in the receipt of the final vent/event database has impacted the timing of our final simulations.
- CP-P2-02-05-PVH-1155: SDA cleanup notes: 10/10/22 start 3/31/23 fin new predecessor( VHA-1145) driving this out

| ID | WBS | Activity | Duration | Start | Finish | Predecessors | Complete | Remaining | Planned start | Planned finish | Total float | Free float | Expected finish | UDF Indicator 01 | zText_02 | zText_Level 3 Schedule | Rebaseline details | doc type | PREPDRFTREVA | CFPP, LLC WBS Structure | Author | Period of Performance | Part | Chapter | Section | SDA needed | activity step | SDA ties | Deliverable Owner | SDA ACT | REV0 - SDA | 12B DEC EOM Notes | NEED UPDATE | Monthly Variance | 10B OCT EOM Notes | CFPP Eval | JLG - Generic Field | 10A OCT MIDMONTH Notes | 9A SEP EOM Notes | zText_CFPP Look Ahead Notes | 11A NOV MIDMONTH Notes |
| --- | --- | --- | --- | --- | --- | --- | --- | --- | --- | --- | --- | --- | --- | --- | --- | --- | --- | --- | --- | --- | --- | --- | --- | --- | --- | --- | --- | --- | --- | --- | --- | --- | --- | --- | --- | --- | --- | --- | --- | --- | --- |
|  | 02 | **CFPP - COLA Prep - Part 02 - Chapter 02 - Section 5.3 - Support Documents** |  |  |  |  |  |  |  |  |  |  |  |  |  |  |  |  |  |  |  |  |  |  |  |  |  |  |  |  |  |  |  |  |  |  |  |  |  |  |  |
|  | 03 | **CFPP - COLA Prep - Part 02 - Chapter 02 - Section 5.3 - Section Writing** |  | 2023-04-21 | 2023-07-31 |  |  |  |  |  |  |  |  |  |  |  |  |  |  |  |  |  |  |  |  |  |  |  |  |  |  |  |  |  |  |  |  |  |  |  |  |
| CP-P2-02-05-SW-0060 |  | Prepare Draft Rev A -Check Updated Supporting Documents -FSAR Section 2.5.3 | 40d | 2023-04-21 | 2023-06-16 | CP-P2-02-03-SD-0020, CP-P2-02-05-PVH-1155, A-000-0025, CP-P2-02-05-PVH-1055 |  |  |  |  | 17d | 0d |  | UDF_G1 | Yes | Yes | RIZZO | deliv | RZO-REVA | 03 | RIZZO | FNTP | P2 | 2 | 2.5.3 | No SDA | 1 |  |  |  |  |  |  |  |  |  |  |  |  |  |  |
| CP-P2-02-05-SW-0065 |  | Review Draft Rev A - FSAR Section 2.5.3 (TO4 Team Review) | 10d | 2023-06-19 | 2023-06-30 | CP-P2-02-05-SW-0060 |  |  |  |  | 37d | 0d |  | UDF_G1 | Yes | Yes | RIZZO | deliv |  | 03 | TO4 | FNTP | P2 | 2 | 2.5.3 |  | 2 | FIX |  |  |  |  |  |  |  |  |  |  |  |  |  |
| CP-P2-02-05-SW-0070 |  | Resolve Rev A Comments - FSAR Section 2.5.3 | 10d | 2023-07-03 | 2023-07-17 | CP-P2-02-05-SW-0065 |  |  |  |  | 67d | 0d |  | UDF_G1 | Yes | Yes | RIZZO | deliv |  | 03 | RIZZO | FNTP | P2 | 2 | 2.5.3 |  | 3 |  |  |  |  |  |  |  |  |  |  |  |  |  |  |
| CP-P2-02-05-SW-0071 |  | Confirm SDA Information and Inform Reviewers - FSAR Section 2.5.3 | 5d | 2023-07-18 | 2023-07-18 | CP-P2-02-05-SW-0070, PKM-0125 |  |  | 2023-07-18 | 2023-07-24 | 67d | 0d |  | UDF_G1 | Yes | Yes | FL4 | deliv |  | 03 | FL4 | FNTP | P2 | 1 | 1.1 | SDA Tie | 4 | FIX | Matt-TBD | R | RZO-REV0 | In parallel with Team Review (hold duration at 5d) |  |  |  |  |  |  |  |  |  |
| CP-P2-02-05-SW-0075 |  | Issue Rev 0 - FSAR Section 2.5.3 | 10d | 2023-07-18 | 2023-07-31 | CP-P2-02-05-SW-0071 |  |  |  |  | 67d | 65d |  | UDF_G1 | Yes | Yes | RIZZO | deliv |  | 03 | RIZZO | FNTP | P2 | 2 | 2.5.3 | SDA Tie | 5 |  |  | R | RZO-REV0 |  |  |  |  |  |  |  |  |  |  |
|  | 04 | **CFPP - COLA Prep - Part 02 - Chapter 02 - Section 5.4 Stability of Subsurface Mat'ls & FDN** |  | 2022-06-16 | 2023-07-24 |  |  |  |  |  |  |  |  |  |  |  |  |  |  |  |  |  |  |  |  |  |  |  |  |  |  |  |  |  |  |  |  |  |  |  |  |
|  | 01 | **CFPP - COLA Prep - Part 02 - Chapter 02 - Section 5.4 - Backfill Study** |  | 2022-06-16 | 2023-06-09 |  |  |  |  |  |  |  |  |  |  |  |  |  |  |  |  |  |  |  |  |  |  |  |  |  |  |  |  |  |  |  |  |  |  |  |  |
| CP-P2-02-05-BFS-0000 |  | Prepare Backfill Study Plan | 20d | 2022-06-16 A | 2023-01-13 | PKM-0070, FI-GI-SSI-RP-0015 SS, PKM-0090 |  | 10d | 2022-06-16 | 2022-07-14 | 22d | 0d | 2023-01-13 | UDF_G1 | Yes |  | RIZZO |  |  | 03 | RIZZO | FNTP | P2 | 2 | 2.5.4 |  |  |  |  |  |  |  | OCT | Oct | oct update finish slip from 07oct22 | BFS |  |  |  |  |  |
| CP-P2-02-05-BFS-0010 |  | Backfill Study & Laboratory Testing | 45d | 2023-01-16 | 2023-03-15 | CP-P2-02-05-BFS-0000 |  |  | 2023-01-16 | 2023-03-17 | 43d | 0d |  | UDF_G1 | Yes |  | RIZZO |  |  | 03 | RIZZO | FNTP | P2 | 2 | 2.5.4 |  |  |  |  |  |  |  | OCT |  | oct update start 15jan22 |  |  |  |  |  |  |
| CP-P2-02-05-BFS-0015 |  | Prepare Backfill Summary Report | 30d | 2023-02-13 | 2023-06-09 | CP-P2-02-05-BFS-0000 FS+20d |  |  | 2023-02-13 | 2023-03-24 | 22d | 0d |  | UDF_G1 | Yes | Yes | S&L |  |  | 03 | RIZZO | FNTP | P2 | 2 | 2.5.4 |  |  |  |  |  |  |  | OCT |  | oct update start 15feb22 |  |  |  |  |  |  |
|  | 04 | **CFPP - COLA Prep - Part 02 - Chapter 02 - Section 5.4 - Support Documents** |  | 2023-03-16 | 2023-04-12 |  |  |  |  |  |  |  |  |  |  |  |  |  |  |  |  |  |  |  |  |  |  |  |  |  |  |  |  |  |  |  |  |  |  |  |  |
| CP-P2-02-05-SD-0030 |  | Prepare Backfill Properties Calc | 90d | 2023-03-16 | 2023-04-12 | CP-P2-02-05-BFS-0010 |  |  | 2023-03-16 | 2023-07-21 | 43d | 21d |  | UDF_G1 | Yes | Yes | RIZZO | supt |  | 03 | RIZZO | FNTP | P2 | 2 | 2.5.4 |  |  |  |  |  |  |  |  |  | oct update reduce duration from 90 to 20 |  |  |  |  |  |  |
|  | 05 | **CFPP - COLA Prep - Part 02 - Chapter 02 - Section 5.4 - Section Writing** |  | 2023-05-12 | 2023-07-24 |  |  |  |  |  |  |  |  |  |  |  |  |  |  |  |  |  |  |  |  |  |  |  |  |  |  |  |  |  |  |  |  |  |  |  |  |
| CP-P2-02-05-SW-0090 |  | Prepare Draft Rev A -Check Updated Supporting Documents -FSAR Section 2.5.4 | 20d | 2023-05-12 | 2023-06-09 | CP-P2-02-05-BFS-0010 FF, CP-P2-02-05-BFS-0015 FF, CP-P2-02-05-SD-0030, FI-GI-SSI-RP-0015, FI-GI-SSI-RP-0020, FI-GI-SSI-RP-0000, FI-GI-SSI-RP-0005 |  |  |  |  | 22d | 0d |  | UDF_G1 | Yes | Yes | RIZZO | deliv | RZO-REVA | 03 | RIZZO | FNTP | P2 | 2 | 2.5.4 | No SDA | 1 |  |  |  |  |  |  |  |  |  | 2.5 Seismic |  |  |  |  |
| CP-P2-02-05-SW-0095 |  | Review Draft Rev A - FSAR Section 2.5.4 (TO4 Team Review) | 10d | 2023-06-12 | 2023-06-23 | CP-P2-02-05-SW-0090 |  |  |  |  | 42d | 0d |  | UDF_G1 | Yes | Yes | RIZZO | deliv |  | 03 | TO4 | FNTP | P2 | 2 | 2.5.4 |  | 2 | FIX |  |  |  |  |  |  |  |  | 2.5 Seismic |  |  |  |  |
| CP-P2-02-05-SW-0100 |  | Resolve Rev A Comments - FSAR Section 2.5.4 | 10d | 2023-06-26 | 2023-07-10 | CP-P2-02-05-SW-0095 |  |  |  |  | 72d | 0d |  | UDF_G1 | Yes | Yes | RIZZO | deliv |  | 03 | RIZZO | FNTP | P2 | 2 | 2.5.4 |  | 3 |  |  |  |  |  |  |  |  |  | 2.5 Seismic |  |  |  |  |
| CP-P2-02-05-SW-0101 |  | Confirm SDA Information and Inform Reviewers - FSAR Section 2.5.4 | 5d | 2023-07-11 | 2023-07-11 | CP-P2-02-05-SW-0100, PKM-0125 |  |  | 2023-07-11 | 2023-07-17 | 72d | 0d |  | UDF_G1 | Yes | Yes | FL4 | deliv |  | 03 | FL4 | FNTP | P2 | 1 | 1.1 | SDA Tie | 4 | FIX | Matt-TBD | R | RZO-REV0 | In parallel with Team Review (hold duration at 5d) |  |  |  |  |  |  |  |  |  |
| CP-P2-02-05-SW-0105 |  | Issue Rev 0 - FSAR Section 2.5.4 | 10d | 2023-07-11 | 2023-07-24 | CP-P2-02-05-SW-0101 |  |  |  |  | 72d | 70d |  | UDF_G1 | Yes | Yes | RIZZO | deliv |  | 03 | RIZZO | FNTP | P2 | 2 | 2.5.4 | SDA Tie | 5 |  |  | R | RZO-REV0 |  |  |  |  |  | 2.5 Seismic | oct update pushed out by 2.5BFS-0010 delivery |  |  |  |
|  | 05 | **CFPP - COLA Prep - Part 02 - Chapter 02 - Section 5.5 Stability of Slopes** |  | 2021-10-15 | 2023-07-17 |  |  |  |  |  |  |  |  |  |  |  |  |  |  |  |  |  |  |  |  |  |  |  |  |  |  |  |  |  |  |  |  |  |  |  |  |
|  | 01 | **CFPP - COLA Prep - Part 02 - Chapter 02 - Section 5.5 - Support Documents** |  | 2021-10-15 | 2023-05-18 |  |  |  |  |  |  |  |  |  |  |  |  |  |  |  |  |  |  |  |  |  |  |  |  |  |  |  |  |  |  |  |  |  |  |  |  |
| CP-P2-02-05-SD-0090 |  | Determine Conceptual Design of Excavation | 20d | 2021-10-15 A | 2022-09-16 A | CP-P2-02-03-SD-0055 FF | 100% |  | 2021-10-15 | 2021-11-12 |  |  |  | UDF_G1 | Yes | Yes | RIZZO | supt |  | 03 | RIZZO | FNTP | P2 | 2 | 2.5.5 |  |  |  |  |  |  |  |  |  |  |  |  |  | Sep update |  |  |
| CP-P2-02-05-SD-0100 |  | Identify any Permanent Safety-Related Slopes Req'd | 15d | 2022-03-28 A | 2022-06-21 A | FI-GI-SSI-RP-0020 FF | 100% |  | 2022-05-10 | 2022-05-31 |  |  |  | UDF_G3 | Yes |  | RIZZO FL4 | supt |  | 03 | RIZZO | FNTP | P2 | 2 | 2.5.5 |  |  |  |  |  |  |  |  |  |  |  |  |  |  |  |  |
| CP-P2-02-05-SD-0110 |  | Prepare Cross-Section & Plan Drawings of Slope Configuration | 40d | 2022-06-22 A | 2022-08-17 A | CP-P2-02-05-SD-0100 | 100% |  |  |  |  |  |  | UDF_G1 | Yes | Yes | RIZZO | supt |  | 03 | RIZZO | FNTP | P2 | 2 | 2.5.5 |  |  |  |  |  |  |  |  |  |  |  |  |  |  |  |  |
| CP-P2-02-05-SD-0095 |  | Prepare Rock Slope Stability Calculation (Excavation stability) | 40d | 2022-10-03 A | 2022-12-02 A | CP-P2-02-05-SD-0090, CP-P2-02-03-SD-0045 | 100% |  | 2022-10-03 | 2022-11-28 |  |  |  | UDF_G1 | Yes | Yes | RIZZO | supt |  | 03 | RIZZO | FNTP | P2 | 2 | 2.5.5 |  |  |  |  |  |  | as of 30dec22 updated | OCT |  | oct update start on time |  |  |  |  | Y | As of 22Nov slip out to 15dec |
| CP-P2-02-05-SD-0105 |  | Prepare Soil Slope Stability Calc & Evaluate Need for Borrow Material | 60d | 2023-02-24 | 2023-05-18 | CP-P2-02-05-SD-0100, CP-P2-02-05-SD-0110, CP-P2-02-05-PVH-1155 FF+20d |  |  |  |  | 7d | 0d |  | UDF_G1 | Yes |  | RIZZO | supt |  | 03 | RIZZO | FNTP | P2 | 2 | 2.5.5 |  |  |  |  |  |  |  |  |  |  |  |  |  |  |  |  |

Notes:
- CP-P2-02-05-SW-0071: SDA cleanup notes: checked pushed out by pred
- CP-P2-02-05-SW-0101: SDA cleanup notes: checked pushed out by pred
- CP-P2-02-05-SD-0100: SDA cleanup notes: RIZZO Develop preliminary recommendations CONFIRM This should be a Fluor task, not RIZZO. RIZZO is only providing recommendations on engineering of slopes and subsequent calculations of slope stability
- CP-P2-02-05-SD-0095: CFPP - Contractor's Remarks: as of 30dec22 updated Per June 20-21, 2022 Engineering Alignment Meeting Minutes
- CP-P2-02-05-SD-0105: SDA cleanup notes: increased from 40d to 60d dur

| ID | WBS | Activity | Duration | Start | Finish | Predecessors | Planned start | Planned finish | Total float | Free float | Constraint | UDF Indicator 01 | JLG - Generic Field | zText_02 | zText_Level 3 Schedule | Rebaseline details | doc type | PREPDRFTREVA | CFPP, LLC WBS Structure | Author | Period of Performance | Part | Chapter | Section | SDA needed | activity step | SDA ties | Deliverable Owner | SDA cleanup notes | SDA ACT | REV0 - SDA | 12B DEC EOM Notes | Monthly Variance | 10B OCT EOM Notes | CFPP - Contractor's Remarks | Forecast Finish | Forecast Start | Contractor Date | DELTA | Nuscale ACT Number | nuscale comp | Reconcile Rev 0 Milestones | 12A DEC MIDMONTH Notes | 10C OCT Monthly Report Notes |
| --- | --- | --- | --- | --- | --- | --- | --- | --- | --- | --- | --- | --- | --- | --- | --- | --- | --- | --- | --- | --- | --- | --- | --- | --- | --- | --- | --- | --- | --- | --- | --- | --- | --- | --- | --- | --- | --- | --- | --- | --- | --- | --- | --- | --- |
|  | 02 | **CFPP - COLA Prep - Part 02 - Chapter 02 - Section 5.5 - Section Writing** |  | 2023-05-19 | 2023-07-17 |  |  |  |  |  |  |  |  |  |  |  |  |  |  |  |  |  |  |  |  |  |  |  |  |  |  |  |  |  |  |  |  |  |  |  |  |  |  |  |
| CP-P2-02-05-SW-0110 |  | Prepare Draft Rev A -Check Updated Supporting Documents -FSAR Section 2.5.5 | 20d | 2023-05-19 | 2023-06-16 | CP-P2-02-05-BFS-0010 FF, CP-P2-02-05-SD-0110, CP-P2-02-05-SD-0095, CP-P2-02-05-SD-0090, CP-P2-02-05-SD-0100, CP-P2-02-05-SD-0105, FI-GI-SSI-RP-0015, FI-GI-SSI-RP-0020, FI-GI-SSI-RP-0000, FI-GI-SSI-RP-0005 |  |  | 7d | 0d |  | UDF_G1 | Seismic | Yes | Yes | RIZZO | deliv | RZO-REVA | 03 | RIZZO | FNTP | P2 | 2 | 2.5.5 | No SDA | 1 |  |  |  |  |  |  |  |  |  |  |  |  |  |  |  |  |  |  |
| CP-P2-02-05-SW-0115 |  | Review Draft Rev A - FSAR Section 2.5.5 (TO4 Team Review) | 10d | 2023-06-19 | 2023-06-30 | CP-P2-02-05-SW-0110 |  |  | 7d | 0d |  | UDF_G1 | Seismic | Yes | Yes | RIZZO | deliv |  | 03 | TO4 | FNTP | P2 | 2 | 2.5.5 |  | 2 | FIX |  |  |  |  |  |  |  |  |  |  |  |  |  |  |  |  |  |
| CP-P2-02-05-SW-0120 |  | Resolve Rev A Comments - FSAR Section 2.5.5 | 5d | 2023-07-03 | 2023-07-10 | CP-P2-02-05-SW-0115 |  |  | 77d | 0d |  | UDF_G1 | Seismic | Yes | Yes | RIZZO | deliv |  | 03 | RIZZO | FNTP | P2 | 2 | 2.5.5 |  | 3 |  |  |  |  |  |  |  |  |  |  |  |  |  |  |  |  |  |  |
| CP-P2-02-05-SW-0121 |  | Confirm SDA Information and Inform Reviewers - FSAR Section 2.5.5 | 5d | 2023-07-11 | 2023-07-11 | CP-P2-02-05-SW-0120, PKM-0125 | 2023-07-11 | 2023-07-17 | 77d | 0d |  | UDF_G1 |  | Yes | Yes | FL4 | deliv |  | 03 | FL4 | FNTP | P2 | 1 | 1.1 | SDA Tie | 4 | FIX | Matt-TBD | checked pushed out by pred | R | RZO-REV0 | In parallel with Team Review (hold duration at 5d) |  |  |  |  |  |  |  |  |  |  |  |  |
| CP-P2-02-05-SW-0125 |  | Issue Rev 0 - FSAR Section 2.5.5 | 5d | 2023-07-11 | 2023-07-17 | CP-P2-02-05-SW-0121 |  |  | 77d | 75d |  | UDF_G1 | Seismic | Yes | Yes | RIZZO | deliv |  | 03 | RIZZO | FNTP | P2 | 2 | 2.5.5 | SDA Tie | 5 |  |  |  | R | RZO-REV0 |  |  |  |  |  |  |  |  |  |  |  |  |  |
|  | 06 | **CFPP - COLA Prep - Part 02 - Chapter 02 - Section 5.6 References** |  | 2023-07-03 | 2023-08-28 |  |  |  |  |  |  |  |  |  |  |  |  |  |  |  |  |  |  |  |  |  |  |  |  |  |  |  |  |  |  |  |  |  |  |  |  |  |  |  |
|  | 01 | **CFPP - COLA Prep - Part 02 - Chapter 02 - Section 5.6 - Support Documents** |  |  |  |  |  |  |  |  |  |  |  |  |  |  |  |  |  |  |  |  |  |  |  |  |  |  |  |  |  |  |  |  |  |  |  |  |  |  |  |  |  |  |
|  | 02 | **CFPP - COLA Prep - Part 02 - Chapter 02 - Section 5.6 - Section Writing** |  | 2023-07-03 | 2023-08-28 |  |  |  |  |  |  |  |  |  |  |  |  |  |  |  |  |  |  |  |  |  |  |  |  |  |  |  |  |  |  |  |  |  |  |  |  |  |  |  |
| CP-P2-02-05-SW-0130 |  | Prepare Draft Rev A -Check Updated Supporting Documents -FSAR Section 2.5.6 | 20d | 2023-07-03 | 2023-07-31 | CP-P2-02-05-SW-0090, CP-P2-02-05-SW-0060, CP-P2-02-05-SW-0040, CP-P2-02-05-SW-0020, CP-P2-02-05-SW-0115 |  |  | 7d | 0d |  | UDF_G3 | 2.5 Seismic | Yes | Yes | RIZZO | deliv | RZO-REVA | 03 | RIZZO | FNTP | P2 | 2 | 2.5.6 | No SDA | 1 |  |  |  |  |  |  |  |  |  |  |  |  |  |  |  |  |  |  |
| CP-P2-02-05-SW-0135 |  | Review Draft Rev A - FSAR Section 2.5.6 (TO4 Team Review) | 10d | 2023-08-01 | 2023-08-14 | CP-P2-02-05-SW-0130 |  |  | 7d | 0d |  | UDF_G1 | 2.5 Seismic | Yes | Yes | RIZZO | deliv |  | 03 | TO4 | FNTP | P2 | 2 | 2.5.6 |  | 2 | FIX |  |  |  |  |  |  |  |  |  |  |  |  |  |  |  |  |  |
| CP-P2-02-05-SW-0140 |  | Resolve Rev A Comments - FSAR Section 2.5.6 | 5d | 2023-08-15 | 2023-08-21 | CP-P2-02-05-SW-0135 |  |  | 47d | 0d |  | UDF_G1 | 2.5 Seismic | Yes | Yes | RIZZO | deliv |  | 03 | RIZZO | FNTP | P2 | 2 | 2.5.6 |  | 3 |  |  |  |  |  |  |  |  |  |  |  |  |  |  |  |  |  |  |
| CP-P2-02-05-SW-0141 |  | Confirm SDA Information and Inform Reviewers - FSAR Section 2.5.6 | 5d | 2023-08-22 | 2023-08-22 | CP-P2-02-05-SW-0140, PKM-0125 | 2023-08-22 | 2023-08-28 | 47d | 0d |  | UDF_G1 |  | Yes | Yes | FL4 | deliv |  | 03 | FL4 | FNTP | P2 | 1 | 1.1 | SDA Tie | 4 | FIX | Matt-TBD | checked pushed out by pred | R | RZO-REV0 | In parallel with Team Review (hold duration at 5d) |  |  |  |  |  |  |  |  |  |  |  |  |
| CP-P2-02-05-SW-0145 |  | Issue Rev 0 - FSAR Section 2.5.6 | 5d | 2023-08-22 | 2023-08-28 | CP-P2-02-05-SW-0141 |  |  | 47d | 45d |  | UDF_G1 | 2.5 Seismic | Yes | Yes | RIZZO | deliv |  | 03 | RIZZO | FNTP | P2 | 2 | 2.5.6 | SDA Tie | 5 |  |  |  | R | RZO-REV0 |  |  |  |  |  |  |  |  |  |  |  |  |  |
|  | 03 | **CFPP - COLA Prep - Part 02 - Chapter 03 Design of Structures, Systems, Components and Equipment** |  | 2022-01-25 | 2023-10-20 |  |  |  |  |  |  |  |  |  |  |  |  |  |  |  |  |  |  |  |  |  |  |  |  |  |  |  |  |  |  |  |  |  |  |  |  |  |  |  |
|  | 01 | **CFPP - COLA Prep - Part 02 - Chapter 03 - Section 1 Conformance with U.S.NRC General Design Criteria** |  | 2023-01-20 | 2023-04-10 |  |  |  |  |  |  |  |  |  |  |  |  |  |  |  |  |  |  |  |  |  |  |  |  |  |  |  |  |  |  |  |  |  |  |  |  |  |  |  |
|  | 01 | **CFPP - COLA Prep - Part 02 - Chapter 03 - Section 1 - Suppport Documents** |  |  |  |  |  |  |  |  |  |  |  |  |  |  |  |  |  |  |  |  |  |  |  |  |  |  |  |  |  |  |  |  |  |  |  |  |  |  |  |  |  |  |
|  | 02 | **CFPP - COLA Prep - Part 02 - Chapter 03 - Section 1 - Section Writing** |  | 2023-01-20 | 2023-04-10 |  |  |  |  |  |  |  |  |  |  |  |  |  |  |  |  |  |  |  |  |  |  |  |  |  |  |  |  |  |  |  |  |  |  |  |  |  |  |  |
| CP-P2-03-01-SW-0000 |  | Prepare Draft Rev A -Check Updated Supporting Documents -FSAR Section 3.1 | 25d | 2023-01-20 | 2023-03-13 | IFM-SDA-TO4-0135 | 2023-01-20 | 2023-02-23 | 145d | 0d | start on or after 2023-01-20 |  |  | Yes | Yes | NUSCALE | deliv | NS-REVA | 03 | NuScale | FNTP | P2 | 3 | 3.1 | SDA Tie | 1 |  |  |  |  |  | As of 30dec22 delayed | Oct | oct update finish slip out from 23jan23 | as of 30dec22 updated | 2023-03-09 | 2023-01-20 |  |  |  |  |  |  |  |
| CP-P2-03-01-SW-0005 |  | Review Draft Rev A - FSAR Section 3.1 (TO4 Team Review) | 10d | 2023-03-14 | 2023-03-27 | CP-P2-03-01-SW-0000 |  |  | 145d | 0d |  | UDF_G1 |  | Yes | Yes | NUSCALE | deliv |  | 03 | TO4 | FNTP | P2 | 3 | 3.1 |  | 2 | FIX |  |  |  |  |  |  |  |  |  |  |  |  |  |  |  |  |  |
| CP-P2-03-01-SW-0010 |  | Resolve Rev A Comments - FSAR Section 3.1 | 5d | 2023-03-28 | 2023-04-03 | CP-P2-03-01-SW-0005 |  |  | 145d | 0d |  |  |  | Yes | Yes | NUSCALE | deliv |  | 03 | NuScale | FNTP | P2 | 3 | 3.1 |  | 3 |  |  |  |  |  |  |  |  |  |  |  |  |  |  |  |  |  |  |
| CP-P2-03-01-SW-0013 |  | Confirm SDA Information and Inform Reviewers - FSAR Section 3.1 | 5d | 2023-04-04 | 2023-04-04 | CP-P2-03-01-SW-0010, PKM-0125 | 2023-04-04 | 2023-04-10 | 145d | 0d |  | UDF_G1 |  | Yes | Yes | FL4 | deliv |  | 03 | FL4 | FNTP | P2 | 1 | 1.1 | SDA Tie | 4 | FIX | Matt-TBD | checked pushed out by pred | N | NS-REV0 | In parallel with Team Review (hold duration at 5d) |  |  |  |  |  |  |  |  |  |  |  |  |
| CP-P2-03-01-SW-0015 |  | Issue Rev 0 - FSAR Section 3.1 | 5d | 2023-04-04 | 2023-04-10 | CP-P2-03-01-SW-0013 |  |  | 145d | 136d |  | UDF_G3 |  | Yes | Yes | NUSCALE | deliv |  | 03 | NuScale | FNTP | P2 | 3 | 3.1 | SDA Tie | 5 |  |  |  | N | NS-REV0 |  |  | oct update Nuscale finish 15mar23 |  |  |  | 2023-02-22 | 3 | 56COL.P2.CH03.580 | nuscale |  |  |  |
|  | 02 | **CFPP - COLA Prep - Part 02 - Chapter 03 - Secti 2 Classification of Structs, Systems, and Components** |  | 2023-01-09 | 2023-05-12 |  |  |  |  |  |  |  |  |  |  |  |  |  |  |  |  |  |  |  |  |  |  |  |  |  |  |  |  |  |  |  |  |  |  |  |  |  |  |  |
|  | 01 | **CFPP - COLA Prep - Part 02 - Chapter 03 - Section 2 - Support Documents** |  |  |  |  |  |  |  |  |  |  |  |  |  |  |  |  |  |  |  |  |  |  |  |  |  |  |  |  |  |  |  |  |  |  |  |  |  |  |  |  |  |  |
|  | 02 | **CFPP - COLA Prep - Part 02 - Chapter 03 - Section 2 - Section Writing** |  | 2023-01-09 | 2023-05-12 |  |  |  |  |  |  |  |  |  |  |  |  |  |  |  |  |  |  |  |  |  |  |  |  |  |  |  |  |  |  |  |  |  |  |  |  |  |  |  |
| CP-P2-03-02-SW-0000 |  | Prepare Draft Rev A -Check Updated Supporting Documents -FSAR Section 3.2 | 70d | 2023-01-09 | 2023-04-14 | IFM-SDA-TO4-0100 |  |  | 121d | 0d | start on or after 2023-01-09 |  |  | Yes | Yes | NUSCALE | deliv | NS-REVA | 03 | NuScale | FNTP | P2 | 3 | 3.2 | SDA Tie | 1 |  |  |  |  |  | As of 30dec22 delayed |  | oct update pending change order | as of 30dec22 updated | 2023-02-03 | 2023-01-09 |  |  |  |  | 3.2 | As of 12dec22 start slip from 28nov22 | in Nuscale report as delayed (no change in excel report) |
| CP-P2-03-02-SW-0005 |  | Review Draft Rev A - FSAR Section 3.2 (TO4 Team Review) | 10d | 2023-04-17 | 2023-04-28 | CP-P2-03-02-SW-0000 |  |  | 121d | 0d |  | UDF_G1 |  | Yes | Yes | NUSCALE | deliv |  | 03 | TO4 | FNTP | P2 | 3 | 3.2 |  | 2 | FIX |  |  |  |  |  |  |  |  |  |  |  |  |  |  | 3.2 |  | in Nuscale report as delayed (no change in excel report) |
| CP-P2-03-02-SW-0010 |  | Resolve Rev A Comments - FSAR Section 3.2 | 5d | 2023-05-01 | 2023-05-05 | CP-P2-03-02-SW-0005 |  |  | 121d | 0d |  |  |  | Yes | Yes | NUSCALE | deliv |  | 03 | NuScale | FNTP | P2 | 3 | 3.2 |  | 3 |  |  |  |  |  |  |  |  |  |  |  |  |  |  |  | 3.2 |  | in Nuscale report as delayed (no change in excel report) |
| CP-P2-03-02-SW-0012 |  | Confirm SDA Information and Inform Reviewers - FSAR Section 3.2 | 5d | 2023-05-08 | 2023-05-08 | CP-P2-03-02-SW-0010, PKM-0125 | 2023-05-08 | 2023-05-12 | 121d | 0d |  | UDF_G1 |  | Yes | Yes | FL4 | deliv |  | 03 | FL4 | FNTP | P2 | 1 | 1.1 | SDA Tie | 4 | FIX | Matt-TBD | checked pushed out by pred | N | NS-REV0 | In parallel with Team Review (hold duration at 5d) |  |  |  |  |  |  |  |  |  |  |  | in Nuscale report as delayed (no change in excel report) |
| CP-P2-03-02-SW-0015 |  | Issue Rev 0 - FSAR Section 3.2 | 5d | 2023-05-08 | 2023-05-12 | CP-P2-03-02-SW-0012 |  |  | 121d | 112d |  | UDF_G1 |  | Yes | Yes | NUSCALE | deliv |  | 03 | NuScale | FNTP | P2 | 3 | 3.2 | SDA Tie | 5 |  |  |  | N | NS-REV0 |  |  | oct update Nuscale finish 26may23 |  |  |  | 2023-06-05 | -12 | 56COL.P2.CH03.590 | nuscale | 3.2 |  | in Nuscale report as delayed (no change in excel report) |

| ID | WBS | Activity | Duration | Start | Finish | Predecessors | Complete | Remaining | Planned start | Planned finish | Total float | Free float | Constraint | Expected finish | UDF Indicator 01 | zText_02 | z_Text-4 | zText_Level 3 Schedule | Rebaseline details | Reconcile Rev 0 Milestones | doc type | CFPP, LLC WBS Structure | Author | Period of Performance | Part | Chapter | Section | Progress Deliv Sheet Milestone # | Other | zText_01 | PREPDRFTREVA | 12B DEC EOM Notes | CFPP - Contractor's Remarks | Forecast Finish | Forecast Start | SDA needed | activity step | SDA ties | Deliverable Owner | SDA cleanup notes | SDA ACT | REV0 - SDA | Contractor Date | DELTA | Nuscale ACT Number | nuscale comp | 10B OCT EOM Notes | NEED UPDATE | Monthly Variance | 10C OCT Monthly Report Notes | Critical Paths |
| --- | --- | --- | --- | --- | --- | --- | --- | --- | --- | --- | --- | --- | --- | --- | --- | --- | --- | --- | --- | --- | --- | --- | --- | --- | --- | --- | --- | --- | --- | --- | --- | --- | --- | --- | --- | --- | --- | --- | --- | --- | --- | --- | --- | --- | --- | --- | --- | --- | --- | --- | --- |
|  | 03 | **CFPP - COLA Prep - Part 02 - Chapter 03 - Section 3 Wind and Tornado Loadings** |  | 2023-05-30 | 2023-10-20 |  |  |  |  |  |  |  |  |  |  |  |  |  |  |  |  |  |  |  |  |  |  |  |  |  |  |  |  |  |  |  |  |  |  |  |  |  |  |  |  |  |  |  |  |  |  |
|  | 01 | **CFPP - COLA Prep - Part 02 - Chapter 03 - Section 3 - Support Documents** |  | 2023-05-30 | 2023-08-22 |  |  |  |  |  |  |  |  |  |  |  |  |  |  |  |  |  |  |  |  |  |  |  |  |  |  |  |  |  |  |  |  |  |  |  |  |  |  |  |  |  |  |  |  |  |  |
| CP-P2-03-03-SD-0000 |  | Provide Site-Specific Wind Loads - Prepare | 20d | 2023-05-30 | 2023-06-26 | CP-P2-02-03-SD-0085 |  |  |  |  | 18d | 0d |  |  | UDF_G3 | Yes | CP-1 | Yes | S&L | 3.3 | supt | 03 | S&L | FNTP | P2 | 3 | 3.3 | 27 |  |  |  |  |  |  |  |  |  |  |  |  |  |  |  |  |  |  |  |  |  |  |  |
| CP-P2-03-03-SD-0001 |  | Provide Site-Specific Wind Loads - TO4 External Review / Comments Received | 10d | 2023-06-27 | 2023-07-11 | CP-P2-03-03-SD-0000 |  |  |  |  | 41d | 0d |  |  |  |  |  |  |  |  | supt |  | TO4 |  |  | 3 | 3.3 |  | cal |  |  |  |  |  |  |  |  |  |  |  |  |  |  |  |  |  |  |  |  |  |  |
| CP-P2-03-03-SD-0005 |  | Perform Extreme Wind Analysis - Prepare | 20d | 2023-06-27 | 2023-07-25 | CP-P2-03-03-SD-0000 |  |  |  |  | 18d | 0d |  |  | UDF_G3 | Yes | CP-1 | Yes | S&L | 3.3 | supt | 03 | S&L | FNTP | P2 | 3 | 3.3 | 26 |  |  |  |  |  |  |  |  |  |  |  |  |  |  |  |  |  |  |  |  |  |  |  |
| CP-P2-03-03-SD-0002 |  | Provide Site-Specific Wind Loads - Comment Resolution / Issue Final | 10d | 2023-07-12 | 2023-07-25 | CP-P2-03-03-SD-0001 |  |  |  |  | 41d | 32d |  |  |  |  |  |  |  |  | supt |  | S&L |  | P2 | 3 | 3.3 |  | cal |  |  |  |  |  |  |  |  |  |  |  |  |  |  |  |  |  |  |  |  |  |  |
| CP-P2-03-03-SD-0006 |  | Perform Extreme Wind Analysis - TO4 External Review / Comments Received | 10d | 2023-07-26 | 2023-08-08 | CP-P2-03-03-SD-0005 |  |  |  |  | 21d | 0d |  |  |  |  |  |  |  |  | supt |  | TO4 |  |  | 3 | 3.3 |  | cal |  |  |  |  |  |  |  |  |  |  |  |  |  |  |  |  |  |  |  |  |  |  |
| CP-P2-03-03-SD-0007 |  | Perform Extreme Wind Analysis - Comment Resolution / Issue Final | 10d | 2023-08-09 | 2023-08-22 | CP-P2-03-03-SD-0006 |  |  |  |  | 21d | 12d |  |  |  |  |  |  |  |  | supt |  | S&L |  | P2 | 3 | 3.3 |  | cal |  |  |  |  |  |  |  |  |  |  |  |  |  |  |  |  |  |  |  |  |  |  |
|  | 02 | **CFPP - COLA Prep - Part 02 - Chapter 03 - Section 3 - Section Writing** |  | 2023-08-08 | 2023-10-20 |  |  |  |  |  |  |  |  |  |  |  |  |  |  |  |  |  |  |  |  |  |  |  |  |  |  |  |  |  |  |  |  |  |  |  |  |  |  |  |  |  |  |  |  |  |  |
| CP-P2-03-03-SW-0000 |  | Prepare Draft Rev A -Check Updated Supporting Documents -FSAR Section 3.3 | 23d | 2023-08-08 | 2023-09-08 | CP-P2-03-03-SD-0005, IFM-SDA-TO4-0170, CP-P2-03-03-SD-0002 FF, CP-P2-03-03-SD-0007 FF |  |  |  |  | 9d | 0d | start on or after 2023-08-08 |  |  | Yes | CP-1 | Yes | NUSCALE | 3.3 | deliv | 03 | NuScale | FNTP | P2 | 3 | 3.3 |  |  | Yes | NS-REVA | as of 30dec22 updated | as of 30dec22 updated | 2023-09-11 | 2023-08-08 | SDA Tie | 1 |  |  |  |  |  |  |  |  |  |  |  |  |  |  |
| CP-P2-03-03-SW-0005 |  | Review Draft Rev A - FSAR Section 3.3 (TO4 Team Review) | 10d | 2023-09-11 | 2023-09-22 | CP-P2-03-03-SW-0000 |  |  |  |  | 9d | 0d |  |  | UDF_G1 | Yes | CP-1 | Yes | NUSCALE | 3.3 | deliv | 03 | TO4 | FNTP | P2 | 3 | 3.3 |  |  | Yes |  |  |  |  |  |  | 2 | FIX |  |  |  |  |  |  |  |  |  |  |  |  |  |
| CP-P2-03-03-SW-0010 |  | Resolve Rev A Comments - FSAR Section 3.3 | 10d | 2023-09-25 | 2023-10-06 | CP-P2-03-03-SW-0005 |  |  |  |  | 9d | 0d |  |  |  | Yes | CP-1 | Yes | NUSCALE | 3.3 | deliv | 03 | NuScale | FNTP | P2 | 3 | 3.3 |  |  | Yes |  |  |  |  |  |  | 3 |  |  |  |  |  |  |  |  |  |  |  |  |  |  |
| CP-P2-03-03-SW-0012 |  | Confirm SDA Information and Inform Reviewers - FSAR Section 3.3 | 5d | 2023-10-09 | 2023-10-09 | CP-P2-03-03-SW-0010, PKM-0125 |  |  | 2023-10-09 | 2023-10-13 | 9d | 0d |  |  | UDF_G1 | Yes |  | Yes | FL4 |  | deliv | 03 | FL4 | FNTP | P2 | 1 | 1.1 |  |  |  |  | In parallel with Team Review (hold duration at 5d) |  |  |  | SDA Tie | 4 | FIX | Matt-TBD | checked pushed out by pred | N | NS-REV0 |  |  |  |  |  |  |  |  |  |
| CP-P2-03-03-SW-0015 |  | Issue Rev 0 - FSAR Section 3.3 | 10d | 2023-10-09 | 2023-10-20 | CP-P2-03-03-SW-0012 |  |  |  |  | 9d | 0d |  |  | UDF_G1 | Yes | CP-1 | Yes | NUSCALE | 3.3 | deliv | 03 | NuScale | FNTP | P2 | 3 | 3.3 |  |  | Yes |  |  |  |  |  | SDA Tie | 5 |  |  |  | N | NS-REV0 | 2023-10-06 | -13 | 56COL.P2.CH03.600 | nuscale | oct update Nuscale finish 09oct23 |  |  |  |  |
|  | 04 | **CFPP - COLA Prep - Part 02 - Chapter 03 - Section 4 Water Level (Flood) Design** |  | 2022-06-06 | 2023-08-01 |  |  |  |  |  |  |  |  |  |  |  |  |  |  |  |  |  |  |  |  |  |  |  |  |  |  |  |  |  |  |  |  |  |  |  |  |  |  |  |  |  |  |  |  |  |  |
|  | 01 | **CFPP - COLA Prep - Part 02 - Chapter 03 - Section 4 - Support Documents** |  | 2022-06-06 | 2023-05-05 |  |  |  |  |  |  |  |  |  |  |  |  |  |  |  |  |  |  |  |  |  |  |  |  |  |  |  |  |  |  |  |  |  |  |  |  |  |  |  |  |  |  |  |  |  |  |
| CP-P2-03-04-SD-0015 |  | Confirm No RXB & CRB Impact from Adjacent Structures | 20d | 2022-06-06 A | 2022-07-01 A | IFM-TO5-TO4-0000, IFM-TO5-TO4-0020, IFM-TO5-TO4-0115, IFM-TO5-TO4-0130, IFM-TO5-TO4-0145, IFM-TO5-TO4-0160, IFM-TO5-TO4-0170, IFM-TO5-TO4-0180, IFM-TO5-TO4-0190 | 100% |  |  |  |  |  |  |  | UDF_G3 | Yes |  | Yes | FL4 |  | supt | 03 | FL4 | FNTP | P2 | 3 |  |  |  |  |  |  |  |  |  |  |  |  |  |  |  |  |  |  |  |  |  |  |  |  |  |
| CP-P2-03-04-SD-0000 |  | Confirm Large or External Water Tanks Locations | 10d | 2022-11-08 A | 2023-02-20 | CP-P2-02-04-SD-0070, CP-P2-02-04-SD-0080 FF | 40% | 36d | 2023-02-07 | 2023-02-20 | 85d | 0d |  | 2023-02-20 | UDF_G1 | Yes |  | Yes | S&L |  | supt | 03 | S&L | FNTP | P2 | 3 | 3.4 | 29 |  |  |  |  |  | 2023-02-20 |  |  |  |  |  |  |  |  |  |  |  |  |  |  |  |  |  |
| CP-P2-03-04-SD-0010 |  | Develop Door & Seal Inspection & Maintenance Program | 25d | 2022-11-28 A | 2022-12-30 A | IFM-TO3-TO4-0015 | 100% |  | 2022-11-28 | 2023-01-02 |  |  |  |  | UDF_G3 | Yes |  | Yes | FL4 |  | supt | 03 | FL4 | FNTP | P2 | 3 |  |  |  |  |  | As of 30dec22 updated Chris J providing backup email. | Chris J providing backup email. |  |  |  |  |  | Matt/Chris/Mo? |  |  |  |  |  |  |  | oct update NEED UPDATE 03oct start | OCT | Oct |  |  |
| CP-P2-03-04-SD-0005 |  | Develop Site-specific Extent of Water Proofing & Dampproofing Required to Prevent Moisture Intrusion - Prepare | 25d | 2023-02-21 | 2023-03-27 | CP-P2-03-04-SD-0000 |  |  |  |  | 85d | 0d |  |  | UDF_G3 | Yes |  | Yes | S&L |  | supt | 03 | S&L | FNTP | P2 | 3 | 3.4 | 30 |  |  |  |  |  |  |  |  |  |  |  |  |  |  |  |  |  |  |  |  |  |  |  |
| CP-P2-03-04-SD-0020 |  | Engineering Review of Deliverables | 20d | 2023-03-21 | 2023-05-05 | CP-P2-03-04-SD-0000 FF, CP-P2-03-04-SD-0005 FF, CP-P2-03-04-SD-0010 FF, CP-P2-03-04-SD-0015 FF, CP-P2-02-04-SD-0175 FF |  |  | 2023-03-21 | 2023-04-17 | 66d | 0d |  |  |  | Yes |  | Yes | NUSCALE | 3.4 | supt | 03 | NuScale | FNTP | P2 | 3 | 4.0 |  |  |  |  |  |  |  |  |  |  |  |  |  |  |  |  |  |  |  |  |  |  | in Nuscale report as delayed (no change in excel report) | 3 |
| CP-P2-03-04-SD-0006 |  | Develop Site-specific Extent of Water Proofing & Dampproofing Required to Prevent Moisture Intrusion - TO4 External Revi | 10d | 2023-03-28 | 2023-04-10 | CP-P2-03-04-SD-0005 |  |  |  |  | 105d | 0d |  |  |  |  |  |  |  |  | supt |  | TO4 |  |  | 3 |  |  | cal |  |  |  |  |  |  |  |  |  |  |  |  |  |  |  |  |  |  |  |  |  |  |
| CP-P2-03-04-SD-0007 |  | Develop Site-specific Extent of Water Proofing & Dampproofing Required to Prevent Moisture Intrusion - Comment Resolutio | 10d | 2023-04-11 | 2023-04-24 | CP-P2-03-04-SD-0006 |  |  |  |  | 105d | 39d |  |  |  |  |  |  |  |  | supt |  | S&L |  | P2 | 3 | 3.4 |  | cal |  |  |  |  |  |  |  |  |  |  |  |  |  |  |  |  |  |  |  |  |  |  |
|  | 02 | **CFPP - COLA Prep - Part 02 - Chapter 03 - Section 4 - Section Writing** |  | 2022-11-14 | 2023-08-01 |  |  |  |  |  |  |  |  |  |  |  |  |  |  |  |  |  |  |  |  |  |  |  |  |  |  |  |  |  |  |  |  |  |  |  |  |  |  |  |  |  |  |  |  |  |  |
| CP-P2-03-04-SW-0000 |  | Prepare Draft Rev A -Check Updated Supporting Documents -FSAR Section 3.4 | 95d | 2022-11-14 A | 2023-06-19 | CP-P2-03-04-SD-0020 FF+30d, IFM-SDA-TO4-0175, CP-P2-03-04-SD-0007 FF |  | 120d | 2023-02-02 | 2023-06-15 | 66d | 0d |  | 2023-06-19 |  | Yes |  | Yes | NUSCALE | 3.4 | deliv | 03 | NuScale | FNTP | P2 | 3 | 4.0 |  |  |  | NS-REVA |  |  | 2023-06-19 |  | SDA Tie | 1 |  |  |  |  |  |  |  |  |  |  |  |  | in Nuscale report as delayed (no change in excel report) | 3 |
| CP-P2-03-04-SW-0005 |  | Review Draft Rev A - FSAR Section 3.4 (TO4 Team Review) | 10d | 2023-06-20 | 2023-07-03 | CP-P2-03-04-SW-0000 |  |  |  |  | 66d | 0d |  |  | UDF_G3 | Yes |  | Yes | NUSCALE | 3.4 | deliv | 03 | TO4 | FNTP | P2 | 3 |  |  |  |  |  |  |  |  |  |  | 2 | FIX |  |  |  |  |  |  |  |  |  |  |  |  | 3 |
| CP-P2-03-04-SW-0010 |  | Resolve Rev A Comments - FSAR Section 3.4 | 10d | 2023-07-05 | 2023-07-18 | CP-P2-03-04-SW-0005 |  |  |  |  | 66d | 0d |  |  |  | Yes |  | Yes | NUSCALE | 3.4 | deliv | 03 | NuScale | FNTP | P2 | 3 | 4.0 |  |  |  |  |  |  |  |  |  | 3 |  |  |  |  |  |  |  |  |  |  |  |  | in Nuscale report as delayed (no change in excel report) | 3 |
| CP-P2-03-04-SW-0012 |  | Confirm SDA Information and Inform Reviewers - FSAR Section 3.4 | 5d | 2023-07-19 | 2023-07-19 | CP-P2-03-04-SW-0010, PKM-0125 |  |  | 2023-07-19 | 2023-07-25 | 66d | 0d |  |  | UDF_G1 | Yes |  | Yes | FL4 |  | deliv | 03 | FL4 | FNTP | P2 | 1 | 1.1 |  |  |  |  | In parallel with Team Review (hold duration at 5d) |  |  |  | SDA Tie | 4 | FIX | Matt-TBD | checked pushed out by pred | N | NS-REV0 |  |  |  |  |  |  |  |  |  |
| CP-P2-03-04-SW-0015 |  | Issue Rev 0 - FSAR Section 3.4 | 10d | 2023-07-19 | 2023-08-01 | CP-P2-03-04-SW-0012 |  |  |  |  | 66d | 57d |  |  | UDF_G3 | Yes |  | Yes | NUSCALE | 3.4 | deliv | 03 | NuScale | FNTP | P2 | 3 | 4.0 |  |  |  |  |  |  |  |  | SDA Tie | 5 |  |  |  | N | NS-REV0 | 2023-07-18 | 94 | 56COL.P2.CH03.610 | nuscale | oct update Nuscale finish 01aug23 |  |  | in Nuscale report as delayed (no change in excel report) | 3 |

Notes:
- CP-P2-03-03-SW-0000: 12A DEC MIDMONTH Notes: As of 12dec22 start slip from 12jul23
- CP-P2-03-04-SD-0000: 11B NOV EOM Notes: As of 29nov22 started
- CP-P2-03-04-SD-0010: Schedule Notes: COL Item / 3.4-3 (Door & seal inspection and maintenance program) – I don’t see this / in Certrec, do you know when we can expect this? / Feedback / from Matt Featherston : / Last time I communicated with NuScale on #1, it was agreed that due to the / high level summary description needed to address the COL item, they don’t need / any input. They should run their draft by XENS to ensure early alignment, / but no specific input. / 11B NOV EOM Notes: As of 29nov22 need update (Gus - David S.) (S&L activity) (review 3.4 SD acts from S&L)
- CP-P2-03-04-SD-0020: 12A DEC MIDMONTH Notes: As of 12dec22 finish slip from 3may23 (Nuscale update finish on 13may23)
- CP-P2-03-04-SW-0000: 12A DEC MIDMONTH Notes: As of 12dec22 Nuscale update Ignores predecessors, creates out of sequence issues with schedule

| ID | WBS | Activity | Type | Duration | Start | Finish | Predecessors | Complete | Remaining | Planned start | Planned finish | Total float | Free float | Constraint | Expected finish | UDF Indicator 01 | zText_02 | Rebaseline details | doc type | CFPP, LLC WBS Structure | Author | Period of Performance | Part | Chapter | zText_Level 3 Schedule | VERIFIED MONTHLY UPDATE | 9A SEP EOM Notes | NEED UPDATE | Section | Progress Deliv Sheet Milestone # | 10B OCT EOM Notes | 10C OCT Monthly Report Notes | Forecast Finish | PREPDRFTREVA | 12A DEC MIDMONTH Notes | SDA needed | activity step | SDA ties | Deliverable Owner | SDA ACT | REV0 - SDA | Contractor Date | DELTA | Nuscale ACT Number | nuscale comp | Forecast Start | UDF Text 01 | z_Text-4 | TWG | Areva - Item Number | zText_33 | JLG - Generic Field | Change Management # (Project, CM#) | 11A NOV MIDMONTH Notes | 11B NOV EOM Notes | Monthly Variance | UDF Text 02 | PSHA | zText_CFPP Look Ahead Notes | DOE MILESTONE |
| --- | --- | --- | --- | --- | --- | --- | --- | --- | --- | --- | --- | --- | --- | --- | --- | --- | --- | --- | --- | --- | --- | --- | --- | --- | --- | --- | --- | --- | --- | --- | --- | --- | --- | --- | --- | --- | --- | --- | --- | --- | --- | --- | --- | --- | --- | --- | --- | --- | --- | --- | --- | --- | --- | --- | --- | --- | --- | --- | --- | --- |
|  | 05 | **CFPP - COLA Prep - Part 02 - Chapter 03 - Section 5 Missile Protection** |  |  | 2022-03-14 | 2023-07-28 |  |  |  |  |  |  |  |  |  |  |  |  |  |  |  |  |  |  |  |  |  |  |  |  |  |  |  |  |  |  |  |  |  |  |  |  |  |  |  |  |  |  |  |  |  |  |  |  |  |  |  |  |  |  |
|  | 01 | **CFPP - COLA Prep - Part 02 - Chapter 03 - Section 5 - Support Documents** |  |  | 2022-03-14 | 2023-04-19 |  |  |  |  |  |  |  |  |  |  |  |  |  |  |  |  |  |  |  |  |  |  |  |  |  |  |  |  |  |  |  |  |  |  |  |  |  |  |  |  |  |  |  |  |  |  |  |  |  |  |  |  |  |  |
| CP-P2-03-05-SD-0000 |  | Perform Turbine Missile Analysis (Vendor Data) |  | 65d | 2022-03-14 A | 2022-04-21 A | PKM-0000, PKM-0035, B-000-0075 | 100% |  | 2022-04-04 | 2022-07-05 |  |  |  |  | UDF_G3 | Yes | DOOSKODA | supt | 03 | DOOSKODA | FNTP | P2 | 3 |  |  |  |  |  |  |  |  |  |  |  |  |  |  |  |  |  |  |  |  |  |  |  |  |  |  |  |  |  |  |  |  |  |  |  |  |
| CP-P2-03-05-SD-0020 |  | Define Site Specific Natural Phenomenon \ Automobile Missile Spectra |  | 40d | 2022-08-26 A | 2022-10-28 A |  | 100% |  | 2022-08-01 | 2022-09-26 |  |  |  |  | UDF_G3 | Yes | S&L | supt | 03 | S&L | FNTP | P2 | 3 | Yes | X | Sep update | OCT | 3.5 | 32 |  |  |  |  |  |  |  |  |  |  |  |  |  |  |  |  |  |  |  |  |  |  |  |  |  |  |  |  |  |  |
| CP-P2-03-05-SD-0015 |  | Develop External Hazard Assessment Report |  | 90d | 2022-12-20 A | 2023-04-19 | CP-P2-02-02-SD-0032, CP-P2-03-05-SD-0000, CP-P2-03-05-SD-0020 |  | 78d | 2022-12-13 | 2023-04-18 | 78d | 0d | start on or after 2022-12-13 | 2023-04-19 |  | Yes | NUSCALE | supt | 03 | NuScale | FNTP | P2 | 3 | Yes | X | Sep update added FS relationship slip out start from 27sep | OCT | 5.0 |  | oct update | in Nuscale report as delayed (no change in excel report) | 2023-04-19 |  |  |  |  |  |  |  |  |  |  |  |  |  |  |  |  |  |  |  |  |  |  |  |  |  |  |  |
|  | 02 | **CFPP - COLA Prep - Part 02 - Chapter 03 - Section 5 - Section Writing** |  |  | 2022-11-30 | 2023-07-28 |  |  |  |  |  |  |  |  |  |  |  |  |  |  |  |  |  |  |  |  |  |  |  |  |  |  |  |  |  |  |  |  |  |  |  |  |  |  |  |  |  |  |  |  |  |  |  |  |  |  |  |  |  |  |
| CP-P2-03-05-SW-0000 |  | Prepare Draft Rev A -Check Updated Supporting Documents -FSAR Section 3.5 |  | 65d | 2022-11-30 A | 2023-06-15 | CP-P2-03-05-SD-0015 FF+30d, CP-P2-03-05-SD-0020, IFM-SDA-TO4-0180 |  | 118d | 2023-04-20 | 2023-07-21 | 68d | 0d | start on or after 2023-04-20 | 2023-06-15 |  | Yes | NUSCALE | deliv | 03 | NuScale | FNTP | P2 | 3 | Yes |  |  |  | 5.0 |  |  | in Nuscale report as delayed (no change in excel report) | 2023-06-15 | NS-REVA | As of 12dec22 start slip from 1mar23 | SDA Tie | 1 |  |  |  |  |  |  |  |  |  |  |  |  |  |  |  |  |  |  |  |  |  |  |  |
| CP-P2-03-05-SW-0005 |  | Review Draft Rev A - FSAR Section 3.5 (TO4 Team Review) |  | 10d | 2023-06-16 | 2023-06-29 | CP-P2-03-05-SW-0000 |  |  |  |  | 68d | 0d |  |  | UDF_G3 | Yes | NUSCALE | deliv | 03 | TO4 | FNTP | P2 | 3 | Yes |  |  |  |  |  |  |  |  |  |  |  | 2 | FIX |  |  |  |  |  |  |  |  |  |  |  |  |  |  |  |  |  |  |  |  |  |  |
| CP-P2-03-05-SW-0010 |  | Resolve Rev A Comments - FSAR Section 3.5 |  | 10d | 2023-06-30 | 2023-07-14 | CP-P2-03-05-SW-0005 |  |  |  |  | 68d | 0d |  |  |  | Yes | NUSCALE | deliv | 03 | NuScale | FNTP | P2 | 3 | Yes |  |  |  | 5.0 |  |  | in Nuscale report as delayed (no change in excel report) |  |  |  |  | 3 |  |  |  |  |  |  |  |  |  |  |  |  |  |  |  |  |  |  |  |  |  |  |  |
| CP-P2-03-05-SW-0012 |  | Confirm SDA Information and Inform Reviewers - FSAR Section 3.5 |  | 5d | 2023-07-17 | 2023-07-17 | CP-P2-03-05-SW-0010, PKM-0125 |  |  | 2023-07-17 | 2023-07-21 | 68d | 0d |  |  | UDF_G1 | Yes | FL4 | deliv | 03 | FL4 | FNTP | P2 | 1 | Yes |  |  |  | 1.1 |  |  |  |  |  |  | SDA Tie | 4 | FIX | Matt-TBD | N | NS-REV0 |  |  |  |  |  |  |  |  |  |  |  |  |  |  |  |  |  |  |  |
| CP-P2-03-05-SW-0015 |  | Issue Rev 0 - FSAR Section 3.5 |  | 10d | 2023-07-17 | 2023-07-28 | CP-P2-03-05-SW-0012 |  |  |  |  | 68d | 59d |  |  | UDF_G3 | Yes | NUSCALE | deliv | 03 | NuScale | FNTP | P2 | 3 | Yes |  |  |  | 5.0 |  | oct update Nuscale finish 26jun23 | in Nuscale report as delayed (no change in excel report) |  |  |  | SDA Tie | 5 |  |  | N | NS-REV0 | 2023-04-14 | 70 | 56COL.P2.CH03.620 | nuscalex |  |  |  |  |  |  |  |  |  |  |  |  |  |  |  |
|  | 06 | **CFPP- Part 02 - Chap 03 Sect 6 Protect Against Dynamic Effects Assoc'd w/ Postulated Rupture of Pipe** |  |  | 2023-05-01 | 2023-08-01 |  |  |  |  |  |  |  |  |  |  |  |  |  |  |  |  |  |  |  |  |  |  |  |  |  |  |  |  |  |  |  |  |  |  |  |  |  |  |  |  |  |  |  |  |  |  |  |  |  |  |  |  |  |  |
|  | 01 | **CFPP - COLA Prep - Part 02 - Chapter 03 - Section 6 - Support Documents** |  |  |  |  |  |  |  |  |  |  |  |  |  |  |  |  |  |  |  |  |  |  |  |  |  |  |  |  |  |  |  |  |  |  |  |  |  |  |  |  |  |  |  |  |  |  |  |  |  |  |  |  |  |  |  |  |  |  |
|  | 02 | **CFPP - COLA Prep - Part 02 - Chapter 03 - Section 6 - Section Writing** |  |  | 2023-05-01 | 2023-08-01 |  |  |  |  |  |  |  |  |  |  |  |  |  |  |  |  |  |  |  |  |  |  |  |  |  |  |  |  |  |  |  |  |  |  |  |  |  |  |  |  |  |  |  |  |  |  |  |  |  |  |  |  |  |  |
| CP-P2-03-06-SW-0000 |  | Prepare Draft Rev A -Check Updated Supporting Documents -FSAR Section 3.6 |  | 100d | 2023-05-01 | 2023-06-19 | IFM-TO5-TO4-0010, IFM-SPD-TO4-0065, IFM-SDA-TO4-0185 |  |  | 2023-05-01 | 2023-09-20 | 66d | 0d | start on or after 2023-05-01 |  |  | Yes | NUSCALE | deliv | 03 | NuScale | FNTP | P2 | 3 | Yes |  |  |  | 6.0 |  | oct update start slip from 16dec22 to 16dec23 |  | 2023-06-26 | NS-REVA | As of 12dec22 start slip from 16dec22 | SDA Tie | 1 |  |  |  |  |  |  |  |  | 2023-05-01 |  |  |  |  |  |  |  |  |  |  |  |  |  |  |
| CP-P2-03-06-SW-0005 |  | Review Draft Rev A - FSAR Section 3.6 (TO4 Team Review) |  | 10d | 2023-06-20 | 2023-07-03 | CP-P2-03-06-SW-0000 |  |  |  |  | 66d | 0d |  |  | UDF_G1 | Yes | NUSCALE | deliv | 03 | TO4 | FNTP | P2 | 3 | Yes |  |  |  |  |  |  |  |  |  |  |  | 2 | FIX |  |  |  |  |  |  |  |  |  |  |  |  |  |  |  |  |  |  |  |  |  |  |
| CP-P2-03-06-SW-0015 |  | Resolve Rev A Comments - FSAR Section 3.6 |  | 10d | 2023-07-05 | 2023-07-18 | CP-P2-03-06-SW-0005 |  |  |  |  | 66d | 0d |  |  |  | Yes | NUSCALE | deliv | 03 | NuScale | FNTP | P2 | 3 | Yes |  |  |  | 6.0 |  |  |  |  |  |  |  | 3 |  |  |  |  |  |  |  |  |  |  |  |  |  |  |  |  |  |  |  |  |  |  |  |
| CP-P2-03-06-SW-0017 |  | Confirm SDA Information and Inform Reviewers - FSAR Section 3.6 |  | 5d | 2023-07-19 | 2023-07-19 | CP-P2-03-06-SW-0015, CP-P2-03-06-SW-0015 FF, PKM-0125 |  |  | 2023-07-19 | 2023-07-25 | 66d | 0d |  |  | UDF_G1 | Yes | FL4 | deliv | 03 | FL4 | FNTP | P2 | 1 | Yes |  |  |  | 1.1 |  |  |  |  |  |  | SDA Tie | 4 | FIX | Matt-TBD | N | NS-REV0 |  |  |  |  |  |  |  |  |  |  |  |  |  |  |  |  |  |  |  |
| CP-P2-03-06-SW-0020 |  | Issue Rev 0 - FSAR Section 3.6 |  | 10d | 2023-07-19 | 2023-08-01 | CP-P2-03-06-SW-0017 |  |  |  |  | 66d | 57d |  |  | UDF_G1 | Yes | NUSCALE | deliv | 03 | NuScale | FNTP | P2 | 3 | Yes |  |  |  | 6.0 |  | oct update Nuscale finish 06jul23 |  |  |  |  | SDA Tie | 5 |  |  | N | NS-REV0 | 2023-06-07 | 17 | 56COL.P2.CH03.630 | nuscale |  |  |  |  |  |  |  |  |  |  |  |  |  |  |  |
|  | 07 | **CFPP - COLA Prep - Part 02 - Chapter 03 - Section 7 Seismic Design** |  |  | 2022-01-25 | 2023-08-30 |  |  |  |  |  |  |  |  |  |  |  |  |  |  |  |  |  |  |  |  |  |  |  |  |  |  |  |  |  |  |  |  |  |  |  |  |  |  |  |  |  |  |  |  |  |  |  |  |  |  |  |  |  |  |
| CP-P2-03-07-MS-0000 |  | Document & Transmit Preliminary Time Histories (5 sets for each FIRS) | milestone | 0d | 2022-07-07 A | 2022-07-07 A | CP-P2-03-07-SD-0005 | 100% |  | 2022-07-21 | 2022-07-21 |  |  |  |  | UDF_G3 | Yes | FL4 |  | 03 | RIZZO | FNTP | P2 | 3 | Yes |  |  |  | 7 |  |  |  |  |  |  |  |  |  |  |  |  |  |  |  |  |  | DR/MC | CP-5 | 1 |  |  |  |  |  |  |  |  |  |  |  |
|  | 01 | **CFPP - COLA Prep - Part 02 - Chapter 03 - Section 7 - Support Documents** |  |  | 2022-05-13 | 2023-06-20 |  |  |  |  |  |  |  |  |  |  |  |  |  |  |  |  |  |  |  |  |  |  |  |  |  |  |  |  |  |  |  |  |  |  |  |  |  |  |  |  |  |  |  |  |  |  |  |  |  |  |  |  |  |  |
| CP-P2-03-07-SD-0005 |  | Document & Transmit Preliminary Time Histories (5 sets for each FIRS) |  | 48d | 2022-05-13 A | 2022-07-07 A | CP-P2-02-05-SHC-0110 FF | 100% |  | 2022-05-13 | 2022-07-21 |  |  |  |  | UDF_G1 | Yes | RIZZO | supt | 03 | RIZZO | FNTP | P2 | 3 |  |  |  |  | 7 |  |  |  |  |  |  |  |  |  |  |  |  |  |  |  |  |  |  |  | 1 | A143580 | Critical Path | Tmonth CP SSHAC SI |  |  |  |  |  |  |  |  |
| CP-P2-03-07-SD-0080 |  | COL Item 3.07-07 - Provide info on Seismic Monitoring System/Program (from SPD) |  | 20d | 2022-05-24 A | 2022-06-27 A | IFM-TO5-TO4-0000, IFM-TO5-TO4-0020, IFM-SPD-TO4-0000 | 100% |  | 2022-05-24 | 2022-06-21 |  |  |  |  |  | Yes | NUSCALE | supt | 03 | NuScale | FNTP | P2 | 3 |  |  |  |  | 7 |  |  |  |  |  |  |  |  |  |  |  |  |  |  |  |  |  |  |  |  |  |  |  | UAMPS TO #4 C-012 |  |  |  |  |  |  |  |
| CP-P2-03-07-SD-0065 |  | Analysis of Preliminary Time Histories for Building Configuration |  | 90d | 2022-06-03 A | 2023-01-02 | CP-P2-03-07-SD-0005 SS |  | 0d | 2022-08-03 | 2022-12-08 | 36d | 22d |  |  |  | Yes | NUSCALE | supt | 03 | NuScale | FNTP | P2 | 3 | Yes |  |  |  | 7 |  | oct update pending change order |  |  |  | As of 12dec22 Delete pending CO |  |  |  |  |  |  |  |  |  |  |  |  |  | 1 |  | Critical Path | P1 |  | As of 15nov22 remove pending change order #008 | As of 29nov22 |  |  |  |  |  |
| CP-P2-03-07-SD-0070 |  | Decision for how modules will be loaded into plant (OPS) |  | 60d | 2022-10-17 A | 2023-01-31 |  |  | 22d | 2022-10-04 | 2022-12-28 | 14d | 0d |  | 2023-01-31 |  | Yes | NUSCALE | supt | 03 | NuScale | FNTP | P2 | 3 | Yes |  | Sep update | OCT | 7 |  | oct update start slip from 04oct22 finish slip out |  | 2023-01-31 |  |  |  |  |  |  |  |  |  |  |  |  |  |  |  |  |  | Critical Path | P1 |  |  |  | Oct |  |  |  |  |
| CP-P2-03-07-SD-0015 |  | Final Time Histories (5 sets for each FIRS) |  | 40d | 2022-10-31 A | 2022-12-13 A | CP-P2-03-07-SD-0005, CP-P2-03-07-MS-0000, CP-P2-02-05-SD-0010 SS, FI-GI-SSI-DR-0080 SS+20d, CP-P2-02-05-SHC-0070 FS+100d | 100% |  | 2022-10-31 | 2022-12-27 |  |  |  |  | UDF_G1 | Yes | RIZZO | supt | 03 | RIZZO | FNTP | P2 | 3 | Yes |  |  |  | 7 |  |  |  |  |  |  |  |  |  |  |  |  |  |  |  |  |  |  | CP-5 | 1 | A143350 | Critical Path | P1 |  | As of 22Nov | As of 29nov22 started |  | We do NOT have SSHAC-1803 (SSHAC Complete) as pred. | PSHA |  |  |
| CP-P2-03-07-SD-0085 |  | Reactor Building ANSYS Model Complete (Site Specific Engineering or SPD) | milestone | 0d | 2022-11-22 A | 2022-11-22 A | IFM-TO5-TO4-0000, IFM-TO5-TO4-0020, IFM-SPD-TO4-0000 | 100% |  | 2022-11-28 | 2022-11-28 |  |  | finish on or after 2022-11-22 |  |  | Yes | NUSCALE | supt | 03 | NuScale | FNTP | P2 | 3 |  |  | Sep update |  | 7 |  |  |  |  |  |  |  |  |  |  |  |  |  |  |  |  |  |  |  |  |  |  |  |  | As of 15nov22 14nov22 finish | As of 29nov22 finish slip from 7nov22 |  |  |  |  |  |
| CP-P2-03-07-SD-0090 |  | Double Building Model Complete (Site Specific Engineering or SPD) | milestone | 0d | 2022-11-22 A | 2022-11-22 A | IFM-TO5-TO4-0000, IFM-TO5-TO4-0020, IFM-SPD-TO4-0000 | 100% |  | 2022-11-30 | 2022-11-30 |  |  | finish on or after 2022-11-30 |  |  | Yes | NUSCALE | supt | 03 | NuScale | FNTP | P2 | 3 |  |  | Sep update more detail required | OCT | 7 |  | oct update finish slip out from 26oct |  |  |  |  |  |  |  |  |  |  |  |  |  |  |  |  |  |  |  |  |  |  | As of 15nov22 14nov22 finish |  | Oct |  |  | Y |  |
| CP-P2-03-07-SD-0040 |  | Provide Description of Final Time Histories |  | 0d | 2022-12-13 A | 2022-12-13 A | CP-P2-03-07-SD-0015 | 100% |  | 2022-12-28 | 2022-12-28 |  |  |  |  | UDF_G1 | Yes | RIZZO | supt | 03 | RIZZO | FNTP | P2 | 3 | Yes |  |  |  | 7 |  |  |  |  |  |  |  |  |  |  |  |  |  |  |  |  |  |  |  | 1 |  | Critical Path | P1 |  |  |  |  |  |  |  |  |
| CP-P2-03-07-SD-0060 |  | COL Item 3.07-15 Number of interaction planes |  | 20d | 2023-01-02 | 2023-01-27 | IFM-TO5-TO4-0000, IFM-TO5-TO4-0020, IFM-SPD-TO4-0000 |  |  |  |  | 166d | 121d |  |  |  | Yes | NUSCALE | supt | 03 | NuScale | FNTP | P2 | 3 |  |  |  |  | 7 |  |  |  |  |  |  |  |  |  |  |  |  |  |  |  |  |  |  |  |  |  |  |  |  |  |  |  |  |  |  |  |
| CP-P2-03-07-SD-0055 |  | Perform Site Specific Shake Analysis |  | 50d | 2023-02-01 | 2023-04-11 | CP-P2-03-07-SD-0040 FF, CP-P2-03-07-SD-0015, CP-P2-03-07-SD-0065, CP-P2-03-07-SD-0070, CP-P2-02-05-SD-0010 |  |  |  |  | 14d | 0d |  |  |  | Yes | NUSCALE | supt | 03 | NuScale | FNTP | P2 | 3 | Yes |  |  |  | 7 |  | oct update pending change order |  |  |  | As of 12dec22 Delete pending CO |  |  |  |  |  |  |  |  |  |  |  |  | CP-5 | 1 |  | Critical Path | P1 |  |  | As of 29nov22 pred start slip out |  |  | PSHA |  | 12 |
| CP-P2-03-07-SD-0075 |  | COL Item 3.07-16 Means and methods of lifting a bioshield |  | 20d | 2023-04-04 | 2023-06-20 | IFM-TO5-TO4-0000, IFM-TO5-TO4-0020, IFM-SPD-TO4-0000 |  |  | 2023-04-04 | 2023-05-01 | 65d | 20d | start on or after 2023-04-04 |  |  | Yes | NUSCALE | supt | 03 | NuScale | FNTP | P2 | 3 |  |  |  |  | 7 |  |  |  | 2023-05-01 |  | As of 12dec22 finish slip from 13mar23 |  |  |  |  |  |  |  |  |  |  | 2023-04-04 |  |  |  |  |  |  |  |  |  |  |  |  |  |  |

Notes:
- CP-P2-03-05-SD-0020: SDA cleanup notes: tied to Fluor BED document release (not activity in integrated schedule)
- CP-P2-03-05-SD-0015: 12B DEC EOM Notes: as of 30dec22 updated / CFPP - Contractor's Remarks: as of 30dec22 updated
- CP-P2-03-05-SW-0000: 12B DEC EOM Notes: as of 30dec22 updated / CFPP - Contractor's Remarks: as of 30dec22 updated
- CP-P2-03-05-SW-0012: SDA cleanup notes: checked pushed out by pred / 12B DEC EOM Notes: In parallel with Team Review (hold duration at 5d)
- CP-P2-03-06-SW-0000: 12B DEC EOM Notes: as of 30dec22 delayed Forecast finish date (26jun23) pushing out COLA delivery date 1st mitigation move finish date back to 19jun23 / CFPP - Contractor's Remarks: as of 30dec22 updated Date slip pending input from pre-FEED/TO-5b, date pending
- CP-P2-03-06-SW-0017: SDA cleanup notes: checked pushed out by pred / 12B DEC EOM Notes: In parallel with Team Review (hold duration at 5d)
- CP-P2-03-07-SD-0005: Schedule Notes: RIZZO update to 12MAY22 start date
- CP-P2-03-07-SD-0080: SDA cleanup notes: new activity 56COL.P2.CH03.260
- CP-P2-03-07-SD-0065: Steps: NuScale; S&L / 12B DEC EOM Notes: As of 30dec22 no update pending deletion / CFPP - Contractor's Remarks: as of 30dec22 updated delete pending co
- CP-P2-03-07-SD-0070: Steps: NuScale; S&L / SDA cleanup notes: new activity 56COL.P2.CH03.105 / 12B DEC EOM Notes: as of 30dec22 updated / CFPP - Contractor's Remarks: as of 30dec22 updated
- CP-P2-03-07-SD-0015: 12B DEC EOM Notes: as of 30dec22 updated / CFPP - Contractor's Remarks: as of 30dec22 updated
- CP-P2-03-07-SD-0085: SDA cleanup notes: new activity 56COL.P2.CH03.505 / 12B DEC EOM Notes: as of 30dec22 updated this was provided in the november update / CFPP - Contractor's Remarks: as of 30dec22 updated this was provided in the november update
- CP-P2-03-07-SD-0090: SDA cleanup notes: new activity 56COL.P2.CH03.270 / 12B DEC EOM Notes: as of 30dec22 updated this was provided in the november update / CFPP - Contractor's Remarks: as of 30dec22 updated this was provided in the november update
- CP-P2-03-07-SD-0040: Steps: NuScale; S&L / 12B DEC EOM Notes: as of 30dec22 updated / CFPP - Contractor's Remarks: as of 30dec22 updated
- CP-P2-03-07-SD-0060: 12B DEC EOM Notes: as of 30dec22 updated delete pending co / CFPP - Contractor's Remarks: as of 30dec22 updated delete pending co
- CP-P2-03-07-SD-0055: Steps: NuScale; S&L / 12B DEC EOM Notes: as of 30dec22 updated delete pending co / CFPP - Contractor's Remarks: as of 30dec22 updated delete pending co
- CP-P2-03-07-SD-0075: SDA cleanup notes: new activity 56COL.P2.CH03.200 / 12B DEC EOM Notes: as of 30dec22 updated / CFPP - Contractor's Remarks: as of 30dec22 updated

| ID | WBS | Activity | Type | Duration | Start | Finish | Predecessors | Complete | Remaining | Planned start | Planned finish | Total float | Free float | Constraint | Expected finish | Areva - Item Number | UDF Indicator 01 | UDF Text 02 | JLG - Generic Field | zText_02 | zText_Level 3 Schedule | Rebaseline details | doc type | CFPP, LLC WBS Structure | Author | Period of Performance | Part | Chapter | Section | z_Text-4 | VERIFIED MONTHLY UPDATE | 9A SEP EOM Notes | Reconcile Rev 0 Milestones | 10B OCT EOM Notes | PREPDRFTREVA | Forecast Finish | Forecast Start | SDA needed | PSHA | activity step | SDA ties | Deliverable Owner | SDA cleanup notes | SDA ACT | REV0 - SDA | Contractor Date | DELTA | Nuscale ACT Number | nuscale comp | NEED UPDATE | 10C OCT Monthly Report Notes | 10A OCT MIDMONTH Notes | TWG | Monthly Variance |
| --- | --- | --- | --- | --- | --- | --- | --- | --- | --- | --- | --- | --- | --- | --- | --- | --- | --- | --- | --- | --- | --- | --- | --- | --- | --- | --- | --- | --- | --- | --- | --- | --- | --- | --- | --- | --- | --- | --- | --- | --- | --- | --- | --- | --- | --- | --- | --- | --- | --- | --- | --- | --- | --- | --- |
|  | 02 | **CFPP - COLA Prep - Part 02 - Chapter 03 - Section 7 - Section Writing** |  |  | 2022-01-25 | 2023-08-30 |  |  |  |  |  |  |  |  |  |  |  |  |  |  |  |  |  |  |  |  |  |  |  |  |  |  |  |  |  |  |  |  |  |  |  |  |  |  |  |  |  |  |  |  |  |  |  |  |
| CP-P2-03-07-SW-0025 |  | Setup Templates Draft Rev A - FSAR Section 3.7 |  | 172d | 2022-01-25 A | 2022-04-22 A | CP-P2-02-01-SD-0000 | 100% |  | 2022-02-16 | 2022-10-18 |  |  |  |  | A2170 | UDF_G1 | Critical Path Item | Tmonth CP 3.7 SSHAC | Yes | Yes | NUSCALE | deliv | 03 | NuScale | FNTP | P2 | 3 | 7 |  |  |  |  |  |  |  |  |  |  |  |  |  |  |  |  |  |  |  |  |  |  |  |  |  |
| CP-P2-03-07-SW-0020 |  | Prepare Draft Rev A -Check Updated Supporting Documents -FSAR Section 3.7 |  | 100d | 2023-01-19 | 2023-07-19 | CP-P2-03-07-SD-0005, CP-P2-03-07-SW-0025, CP-P2-03-07-SD-0055 FF, CP-P2-03-07-SD-0060 FF, CP-P2-03-07-SD-0075 FF, IFM-SDA-TO4-0400 FF, CP-P2-03-07-SD-0070 FF+30d, CP-P2-03-08-SD-0035 FF+30d, CP-P2-03-07-SD-0080 FF, CP-P2-03-07-SD-0085 FF, CP-P2-03-07-SD-0090 FF |  |  | 2023-01-19 | 2023-06-08 | 45d | 0d | start on or after 2023-01-19 |  | A2170 |  | Critical Path Item | Tmonth CP 3.7 SSHAC | Yes | Yes | NUSCALE | deliv | 03 | NuScale | FNTP | P2 | 3 | 7 | CP-5 | X | Sep update start slip from 18nov | 3.7 | oct update pred slip out | NS-REVA | 2023-07-19 | 2023-01-19 | SDA Tie | PSHA | 1 |  |  |  |  |  |  |  |  |  |  |  |  |  |  |
| CP-P2-03-07-SW-0005 |  | Review Draft Rev A - FSAR Section 3.7 (TO4 Team Review) |  | 10d | 2023-07-20 | 2023-08-02 | CP-P2-03-07-SW-0020 |  |  |  |  | 45d | 0d |  |  | A143400 | UDF_G3 |  | Tmonth CP XXX 3.7 | Yes | Yes | NUSCALE | deliv | 03 | TO4 | FNTP | P2 | 3 |  |  |  |  | 3.7 |  |  |  |  |  |  | 2 | FIX |  |  |  |  |  |  |  |  |  |  |  |  |  |
| CP-P2-03-07-SW-0010 |  | Resolve Rev A Comments - FSAR Section 3.7 |  | 15d | 2023-08-03 | 2023-08-23 | CP-P2-03-07-SW-0005 |  |  |  |  | 45d | 0d |  |  | A143400 |  |  | CP XXX 3.7 | Yes | Yes | NUSCALE | deliv | 03 | NuScale | FNTP | P2 | 3 | 7 |  |  |  | 3.7 |  |  |  |  |  |  | 3 |  |  |  |  |  |  |  |  |  |  |  |  |  |  |
| CP-P2-03-07-SW-0012 |  | Confirm SDA Information and Inform Reviewers - FSAR Section 3.7 |  | 5d | 2023-08-24 | 2023-08-24 | CP-P2-03-07-SW-0010, PKM-0125 |  |  | 2023-08-24 | 2023-08-30 | 45d | 0d |  |  |  | UDF_G1 |  |  | Yes | Yes | FL4 | deliv | 03 | FL4 | FNTP | P2 | 1 | 1.1 |  |  |  |  |  |  |  |  | SDA Tie |  | 4 | FIX | Matt-TBD | checked pushed out by pred | N | NS-REV0 |  |  |  |  |  |  |  |  |  |
| CP-P2-03-07-SW-0015 |  | Issue Rev 0 - FSAR Section 3.7 |  | 5d | 2023-08-24 | 2023-08-30 | CP-P2-03-07-SW-0012 |  |  |  |  | 45d | 36d |  |  | A143400 | UDF_G3 |  | 3.7 | Yes | Yes | NUSCALE | deliv | 03 | NuScale | FNTP | P2 | 3 | 7 |  |  |  | 3.7 |  |  |  |  | SDA Tie |  | 5 |  |  |  | N | NS-REV0 | 2023-06-06 | 95 | 56COL.P2.CH03.640 | nuscale |  |  |  |  |  |
|  | 08 | **CFPP - COLA Prep - Part 02 - Chapter 03 - Section 8 Design of Category I Structure** |  |  | 2022-10-03 | 2023-09-20 |  |  |  |  |  |  |  |  |  |  |  |  |  |  |  |  |  |  |  |  |  |  |  |  |  |  |  |  |  |  |  |  |  |  |  |  |  |  |  |  |  |  |  |  |  |  |  |  |
|  | 01 | **CFPP - COLA Prep - Part 02 - Chapter 03 - Section 8 - Support Documents** |  |  | 2022-10-03 | 2023-02-06 |  |  |  |  |  |  |  |  |  |  |  |  |  |  |  |  |  |  |  |  |  |  |  |  |  |  |  |  |  |  |  |  |  |  |  |  |  |  |  |  |  |  |  |  |  |  |  |  |
| CP-P2-03-08-SD-0015 |  | Develop Provisions of Geotech & FND Interface Information |  | 89d | 2022-10-03 A | 2023-02-06 | CP-P2-02-05-SD-0090 |  | 26d |  |  | 31d | 0d |  | 2023-02-06 |  | UDF_G1 | Critical Path Item - FF | Tmonth CP XXX | Yes | Yes | RIZZO | supt | 03 | RIZZO | FNTP | P2 | 3 | 8 |  |  |  |  | oct update start on time |  |  |  |  |  |  |  |  |  |  |  |  |  |  |  | OCT |  |  |  |  |
| CP-P2-03-08-SD-0035 |  | Develop Description of Inspection Program for Monitoring & Maintaining Seismic Monitoring |  | 40d | 2022-10-03 A | 2023-01-13 |  |  | 10d | 2023-01-31 | 2023-03-27 | 31d | 0d |  | 2023-01-13 |  |  | Critical Path Item - FF | Tmonth CP XXX | Yes |  | NUSCALE | supt | 03 | NuScale | FNTP | P2 | 3 | 8 |  |  |  |  |  |  | 2023-01-13 |  |  |  |  |  |  |  |  |  |  |  |  |  |  | in Nuscale report as delayed (no change in excel report) |  |  |  |
|  | 02 | **CFPP - COLA Prep - Part 02 - Chapter 03 - Section 8 - Section Writing** |  |  | 2022-11-30 | 2023-09-20 |  |  |  |  |  |  |  |  |  |  |  |  |  |  |  |  |  |  |  |  |  |  |  |  |  |  |  |  |  |  |  |  |  |  |  |  |  |  |  |  |  |  |  |  |  |  |  |  |
| CP-P2-03-08-SW-0000 |  | Prepare Draft Rev A -Check Updated Supporting Documents -FSAR Section 3.8 |  | 100d | 2022-11-30 A | 2023-08-22 | IFM-SPD-TO4-0005, IFM-TO3-TO4-0015 FF, CP-P2-03-07-SD-0040 FF, IFM-SPD-TO4-0050, IFM-TO3-TO4-0015, CP-P2-03-08-SD-0015 SS, CP-P2-03-08-SD-0035 SS, IFM-SDA-TO4-0190 |  | 165d | 2022-11-30 | 2023-04-19 | 31d | 0d | start on or after 2022-11-30 | 2023-08-22 |  |  | Critical Path Item - FF | Tmonth CP XXX | Yes | Yes | NUSCALE | deliv | 03 | NuScale | FNTP | P2 | 3 | 8 |  |  |  |  |  | NS-REVA | 2023-08-22 |  | SDA Tie |  | 1 |  |  |  |  |  |  |  |  |  |  | in Nuscale report as delayed (no change in excel report) |  |  |  |
| CP-P2-03-08-SW-0005 |  | Review Draft Rev A - FSAR Section 3.8 (TO4 Team Review) |  | 10d | 2023-08-23 | 2023-09-06 | CP-P2-03-08-SW-0000 |  |  |  |  | 31d | 0d |  |  |  | UDF_G1 |  | Tmonth CP XXX | Yes | Yes | NUSCALE | deliv | 03 | TO4 | FNTP | P2 | 3 |  |  |  |  |  |  |  |  |  |  |  | 2 | FIX |  |  |  |  |  |  |  |  |  |  |  |  |  |
| CP-P2-03-08-SW-0010 |  | Resolve Rev A Comments - FSAR Section 3.8 |  | 5d | 2023-09-07 | 2023-09-13 | CP-P2-03-08-SW-0005 |  |  |  |  | 31d | 0d |  |  |  |  |  | CP XXX | Yes | Yes | NUSCALE | deliv | 03 | NuScale | FNTP | P2 | 3 | 8 |  |  |  |  |  |  |  |  |  |  | 3 |  |  |  |  |  |  |  |  |  |  | in Nuscale report as delayed (no change in excel report) |  |  |  |
| CP-P2-03-08-SW-0012 |  | Confirm SDA Information and Inform Reviewers - FSAR Section 3.8 |  | 5d | 2023-09-14 | 2023-09-14 | CP-P2-03-08-SW-0010, PKM-0125 |  |  | 2023-09-14 | 2023-09-20 | 31d | 0d |  |  |  | UDF_G1 |  |  | Yes | Yes | FL4 | deliv | 03 | FL4 | FNTP | P2 | 1 | 1.1 |  |  |  |  |  |  |  |  | SDA Tie |  | 4 | FIX | Matt-TBD | checked pushed out by pred | N | NS-REV0 |  |  |  |  |  |  |  |  |  |
| CP-P2-03-08-SW-0015 |  | Issue Rev 0 - FSAR Section 3.8 |  | 5d | 2023-09-14 | 2023-09-20 | CP-P2-03-08-SW-0012 |  |  |  |  | 31d | 22d |  |  |  | UDF_G3 |  |  | Yes | Yes | NUSCALE | deliv | 03 | NuScale | FNTP | P2 | 3 | 8 |  |  |  |  |  |  |  |  | SDA Tie |  | 5 |  |  |  | N | NS-REV0 | 2023-07-17 | 4 | 56COL.P2.CH03.650 | nuscale |  | in Nuscale report as delayed (no change in excel report) | oct update pushed out by 3.8 sd delivery |  |  |
|  | 09 | **CFPP - COLA Prep - Part 02 - Chapter 03 - Section 9 Mechanical Systems and Components** |  |  | 2022-11-14 | 2023-08-16 |  |  |  |  |  |  |  |  |  |  |  |  |  |  |  |  |  |  |  |  |  |  |  |  |  |  |  |  |  |  |  |  |  |  |  |  |  |  |  |  |  |  |  |  |  |  |  |  |
|  | 01 | **CFPP - COLA Prep - Part 02 - Chapter 03 - Section 9 - Support Documents** |  |  | 2022-11-14 | 2023-05-22 |  |  |  |  |  |  |  |  |  |  |  |  |  |  |  |  |  |  |  |  |  |  |  |  |  |  |  |  |  |  |  |  |  |  |  |  |  |  |  |  |  |  |  |  |  |  |  |  |
| CP-P2-03-09-SD-0140 |  | COL Item 3.09-06 Identify site specific valves/implementation milestones/ASME OM code for inservice test program |  | 220d | 2022-11-14 A | 2023-01-06 |  |  | 5d | 2022-11-28 | 2023-10-05 | 331d | 0d | start on or after 2022-10-31 | 2023-01-06 |  |  |  |  | Yes | Yes | NUSCALE | supt | 03 | NuScale | FNTP | P2 | 3 | 9.0 |  | X | Sep update start slip from 22nov |  | oct update start move in from 22dec22 |  | 2023-01-06 |  |  |  |  |  |  |  |  |  |  |  |  |  |  |  |  | 1 | Oct |
| CP-P2-03-09-SD-0180 |  | COL Item 3.09-11 Control rod drive system operability assurance program |  | 220d | 2022-11-14 A | 2023-01-13 |  |  | 10d | 2023-04-12 | 2024-02-28 | 166d | 0d |  | 2023-01-13 |  |  |  |  | Yes | Yes | NUSCALE | supt | 03 | NuScale | FNTP | P2 | 3 | 9.0 |  |  |  |  |  |  | 2023-01-13 |  |  |  |  |  |  |  |  |  |  |  |  |  |  |  |  | 1 |  |
| CP-P2-03-09-SD-0120 |  | COL Item 3.09-01 Develop start-up procedures for CVAP |  | 220d | 2022-12-16 A | 2023-02-03 |  |  | 25d | 2022-12-07 | 2023-10-16 | 55d | 0d | start on or after 2022-12-07 | 2023-02-03 |  |  |  |  | Yes | Yes | NUSCALE | supt | 03 | NuScale | FNTP | P2 | 3 | 9.0 |  | X | Sep update start slip from 21sep |  | oct update start slip from 03oct22 |  | 2023-02-03 |  |  |  |  |  |  |  |  |  |  |  |  |  | OCT |  |  | 1 |  |
| CP-P2-03-09-SD-0150 |  | COL Item 3.09-12 Determination if site specific seismic is bounded for NPM components |  | 220d | 2023-04-11 | 2023-05-22 |  |  |  | 2023-04-11 | 2024-02-27 | 95d | 0d | start on or after 2023-04-11 |  |  |  |  |  | Yes | Yes | NUSCALE | supt | 03 | NuScale | FNTP | P2 | 3 | 9.0 |  |  |  |  |  |  | 2023-05-22 | 2023-04-11 |  |  |  |  |  |  |  |  |  |  |  |  |  |  |  | 1 |  |
| CP-P2-03-09-SD-0200 |  | Vibration Testing for Piping Systems - Prepare |  | 5d | 2023-04-11 | 2023-05-08 | CP-P2-03-09-SD-0180, CP-P2-03-09-SD-0150 SS |  |  | 2023-04-11 | 2023-04-17 | 105d | 50d |  |  |  |  |  |  | Yes | Yes | NUSCALE | supt | 03 | S&L | FNTP | P2 | 3 | 9.0 |  |  |  |  |  |  | 2023-03-31 | 2023-03-06 |  |  |  |  |  |  |  |  |  |  |  |  |  |  |  | 1 |  |
| CP-P2-03-09-SD-0190 |  | Supporting Document complete for section 3.9 | milestone | 0d | 2023-05-22 | 2023-05-22 | CP-P2-03-09-SD-0180, CP-P2-03-09-SD-0150 |  |  |  |  | 95d | 40d |  |  |  |  |  |  | Yes | Yes | NUSCALE | supt | 03 | NuScale | FNTP | P2 | 3 | 9.0 |  |  |  |  |  |  |  |  |  |  |  |  |  |  |  |  |  |  |  |  |  |  |  | 1 |  |

Notes:
- CP-P2-03-07-SW-0020: 11B NOV EOM Notes: As of 29nov22 start slip from 22nov22 (connected to time histories) forecast finish 30aug23 reduced to 30jun23 to avoid neg float COLA delivery date / 12A DEC MIDMONTH Notes: As of 29nov22 start slip from 22nov22 (connected to time histories) forecast finish 30aug23 / 12B DEC EOM Notes: As of 30dec22 delayed / CFPP - Contractor's Remarks: as of 30dec22 updated
- CP-P2-03-07-SW-0010: 11B NOV EOM Notes: As of 29nov22 pred start slip out
- CP-P2-03-07-SW-0012: 12B DEC EOM Notes: In parallel with Team Review (hold duration at 5d)
- CP-P2-03-07-SW-0015: 11B NOV EOM Notes: As of 29nov22 pred start slip out
- CP-P2-03-08-SD-0035: 12A DEC MIDMONTH Notes: As of 12dec22 missed in update / 12B DEC EOM Notes: as of 30dec22 updated / CFPP - Contractor's Remarks: as of 30dec22 updated
- CP-P2-03-08-SW-0000: 12A DEC MIDMONTH Notes: As of 12dec22 Nuscale update ignores predecessors forecast start date 30nov22 (revise sd-0015 & sd-0035 to SS) / 12B DEC EOM Notes: as of 30dec22 updated completion date moved due to tie to RFT topical report. Date not yet confirmed / CFPP - Contractor's Remarks: as of 30dec22 updated completion date moved due to tie to RFT topical report. Date not yet confirmed
- CP-P2-03-08-SW-0012: 12B DEC EOM Notes: In parallel with Team Review (hold duration at 5d)
- CP-P2-03-09-SD-0140: 11B NOV EOM Notes: As of 29nov22 delete pending change order #009 / 12B DEC EOM Notes: as of 30dec22 updated / CFPP - Contractor's Remarks: as of 30dec22 updated
- CP-P2-03-09-SD-0180: 12A DEC MIDMONTH Notes: As of 12dec22 missed in update / 12B DEC EOM Notes: as of 30dec22 updated / CFPP - Contractor's Remarks: as of 30dec22 updated
- CP-P2-03-09-SD-0120: 12B DEC EOM Notes: as of 30dec22 updated / CFPP - Contractor's Remarks: as of 30dec22 updated
- CP-P2-03-09-SD-0150: 12B DEC EOM Notes: as of 30dec22 updated / CFPP - Contractor's Remarks: as of 30dec22 updated
- CP-P2-03-09-SD-0200: 12B DEC EOM Notes: as of 30dec22 revised pred sd-0150 FS to SS / CFPP - Contractor's Remarks: as of 30dec22 updated *** Need to provide New Activities to Fluor ***
- CP-P2-03-09-SD-0190: 12B DEC EOM Notes: as of 30dec22 updated why is this 4 separate milestones? / CFPP - Contractor's Remarks: as of 30dec22 updated why is this 4 separate milestones?

| ID | WBS | Activity | Duration | Start | Finish | Predecessors | Remaining | Planned start | Planned finish | Total float | Free float | Constraint | Expected finish | zText_02 | zText_Level 3 Schedule | VERIFIED MONTHLY UPDATE | Rebaseline details | 9A SEP EOM Notes | TWG | Reconcile Rev 0 Milestones | doc type | PREPDRFTREVA | 12B DEC EOM Notes | CFPP - Contractor's Remarks | Forecast Finish | CFPP, LLC WBS Structure | Author | Period of Performance | Part | Chapter | Section | SDA needed | activity step | UDF Indicator 01 | SDA ties | Deliverable Owner | SDA cleanup notes | SDA ACT | REV0 - SDA | Contractor Date | DELTA | Nuscale ACT Number | nuscale comp | Forecast Start | 10B OCT EOM Notes | UDF Text 02 | Monthly Variance | 10A OCT MIDMONTH Notes |
| --- | --- | --- | --- | --- | --- | --- | --- | --- | --- | --- | --- | --- | --- | --- | --- | --- | --- | --- | --- | --- | --- | --- | --- | --- | --- | --- | --- | --- | --- | --- | --- | --- | --- | --- | --- | --- | --- | --- | --- | --- | --- | --- | --- | --- | --- | --- | --- | --- |
|  | 02 | **CFPP - COLA Prep - Part 02 - Chapter 03 - Section 9 - Section Writing** |  | 2022-12-21 | 2023-08-16 |  |  |  |  |  |  |  |  |  |  |  |  |  |  |  |  |  |  |  |  |  |  |  |  |  |  |  |  |  |  |  |  |  |  |  |  |  |  |  |  |  |  |  |
| CP-P2-03-09-SW-0000 |  | Prepare Draft Rev A -Check Updated Supporting Documents -FSAR Section 3.9 | 115d | 2022-12-21 A | 2023-07-19 | IFM-SDA-TO4-0085, CP-P2-03-09-SD-0120 SS, CP-P2-03-09-SD-0190 FF, CP-P2-03-09-SD-0200 FF | 141d | 2022-12-20 | 2023-05-31 | 55d | 0d | start on or after 2022-12-07 | 2023-07-19 | Yes | Yes | X | NUSCALE | Sep update | 1 | 3.9 | deliv | NS-REVA | as of 30dec22 updated | as of 30dec22 updated | 2023-07-19 | 03 | NuScale | FNTP | P2 | 3 | 9.0 | SDA Tie | 1 |  |  |  |  |  |  |  |  |  |  |  |  |  |  |  |
| CP-P2-03-09-SW-0005 |  | Review Draft Rev A - FSAR Section 3.9 (TO4 Team Review) | 10d | 2023-07-20 | 2023-08-02 | CP-P2-03-09-SW-0000 |  |  |  | 55d | 0d |  |  | Yes | Yes |  | NUSCALE |  | 1 | 3.9 | deliv |  |  |  |  | 03 | TO4 | FNTP | P2 | 3 |  |  | 2 | UDF_G1 | FIX |  |  |  |  |  |  |  |  |  |  |  |  |  |
| CP-P2-03-09-SW-0010 |  | Resolve Rev A Comments - FSAR Section 3.9 | 5d | 2023-08-03 | 2023-08-09 | CP-P2-03-09-SW-0005 |  |  |  | 55d | 0d |  |  | Yes | Yes |  | NUSCALE |  | 1 | 3.9 | deliv |  |  |  |  | 03 | NuScale | FNTP | P2 | 3 | 9.0 |  | 3 |  |  |  |  |  |  |  |  |  |  |  |  |  |  |  |
| CP-P2-03-09-SW-0012 |  | Confirm SDA Information and Inform Reviewers - FSAR Section 3.9 | 5d | 2023-08-10 | 2023-08-10 | CP-P2-03-09-SW-0010, PKM-0125 |  | 2023-08-10 | 2023-08-16 | 55d | 0d |  |  | Yes | Yes |  | FL4 |  |  |  | deliv |  | In parallel with Team Review (hold duration at 5d) |  |  | 03 | FL4 | FNTP | P2 | 1 | 1.1 | SDA Tie | 4 | UDF_G1 | FIX | Matt-TBD | checked pushed out by pred | N | NS-REV0 |  |  |  |  |  |  |  |  |  |
| CP-P2-03-09-SW-0015 |  | Issue Rev 0 - FSAR Section 3.9 | 5d | 2023-08-10 | 2023-08-16 | CP-P2-03-09-SW-0012 |  |  |  | 55d | 46d |  |  | Yes | Yes |  | NUSCALE |  | 1 | 3.9 | deliv |  |  |  |  | 03 | NuScale | FNTP | P2 | 3 | 9.0 | SDA Tie | 5 | UDF_G1 |  |  |  | N | NS-REV0 | 2023-07-19 | 30 | 56COL.P2.CH03.660 | nuscale |  |  |  |  |  |
|  | 10 | **CFPP - COLA Prep - Part 02 - Chapter 03 - Section 10 Seismic & Dynamic Quals of Mech and Elect Equip** |  | 2023-01-03 | 2023-04-26 |  |  |  |  |  |  |  |  |  |  |  |  |  |  |  |  |  |  |  |  |  |  |  |  |  |  |  |  |  |  |  |  |  |  |  |  |  |  |  |  |  |  |  |
|  | 01 | **CFPP - COLA Prep - Part 02 - Chapter 03 - Section 10 - Support Documents** |  |  |  |  |  |  |  |  |  |  |  |  |  |  |  |  |  |  |  |  |  |  |  |  |  |  |  |  |  |  |  |  |  |  |  |  |  |  |  |  |  |  |  |  |  |  |
|  | 02 | **CFPP - COLA Prep - Part 02 - Chapter 03 - Section 10 - Section Writing** |  | 2023-01-03 | 2023-04-26 |  |  |  |  |  |  |  |  |  |  |  |  |  |  |  |  |  |  |  |  |  |  |  |  |  |  |  |  |  |  |  |  |  |  |  |  |  |  |  |  |  |  |  |
| CP-P2-03-10-SW-0000 |  | Prepare Draft Rev A -Check Updated Supporting Documents -FSAR Section 3.10 | 25d | 2023-01-03 | 2023-03-29 | IFM-SDA-TO4-0195 |  | 2023-01-03 | 2023-02-06 | 133d | 0d | start on or after 2023-01-03 |  | Yes | Yes |  | NUSCALE | Sep update added constraint removed pred sd-0035 |  | 3.10 | deliv | NS-REVA | as of 30dec22 updated | as of 30dec22 updated | 2023-02-27 | 03 | NuScale | FNTP | P2 | 3 | 10 | SDA Tie | 1 |  |  |  |  |  |  |  |  |  |  | 2023-01-03 |  |  |  |  |
| CP-P2-03-10-SW-0005 |  | Review Draft Rev A - FSAR Section 3.10 (TO4 Team Review) | 10d | 2023-03-30 | 2023-04-12 | CP-P2-03-10-SW-0000 |  |  |  | 133d | 0d |  |  | Yes | Yes |  | NUSCALE |  |  | 3.10 | deliv |  |  |  |  | 03 | TO4 | FNTP | P2 | 3 |  |  | 2 | UDF_G1 | FIX |  |  |  |  |  |  |  |  |  |  |  |  |  |
| CP-P2-03-10-SW-0010 |  | Resolve Rev A Comments - FSAR Section 3.10 | 5d | 2023-04-13 | 2023-04-19 | CP-P2-03-10-SW-0005 |  |  |  | 133d | 0d |  |  | Yes | Yes |  | NUSCALE |  |  | 3.10 | deliv |  |  |  |  | 03 | NuScale | FNTP | P2 | 3 | 10 |  | 3 |  |  |  |  |  |  |  |  |  |  |  |  |  |  |  |
| CP-P2-03-10-SW-0012 |  | Confirm SDA Information and Inform Reviewers - FSAR Section 3.10 | 5d | 2023-04-20 | 2023-04-20 | CP-P2-03-10-SW-0010, PKM-0125 |  | 2023-04-20 | 2023-04-26 | 133d | 0d |  |  | Yes | Yes |  | FL4 |  |  |  | deliv |  | In parallel with Team Review (hold duration at 5d) |  |  | 03 | FL4 | FNTP | P2 | 1 | 1.1 | SDA Tie | 4 | UDF_G1 | FIX | Matt-TBD | checked pushed out by pred | N | NS-REV0 |  |  |  |  |  |  |  |  |  |
| CP-P2-03-10-SW-0015 |  | Issue Rev 0 - FSAR Section 3.10 | 5d | 2023-04-20 | 2023-04-26 | CP-P2-03-10-SW-0012 |  |  |  | 133d | 124d |  |  | Yes | Yes |  | NUSCALE |  |  | 3.10 | deliv |  |  |  |  | 03 | NuScale | FNTP | P2 | 3 | 10 | SDA Tie | 5 | UDF_G3 |  |  |  | N | NS-REV0 | 2023-03-27 | -2 | 56COL.P2.CH03.670 | nuscale |  | oct update Nuscale finish 01mar23 |  |  |  |
|  | 11 | **CFPP - COLA Prep - Part 02 - Chapter 03 - Section 11 Environmental Quals of Mech and Elect Equip** |  | 2022-11-16 | 2023-05-15 |  |  |  |  |  |  |  |  |  |  |  |  |  |  |  |  |  |  |  |  |  |  |  |  |  |  |  |  |  |  |  |  |  |  |  |  |  |  |  |  |  |  |  |
| CP-P2-03-11-SD-0000 |  | Develop Environmental Qualification Program Documents & Schedule | 148d | 2023-01-02 | 2023-03-28 | PKM-0065, IFM-CFP-TO4-0055 FS+60d |  | 2023-01-02 | 2023-07-28 | 134d | 0d |  |  | Yes | Yes | X | NUSCALE | Sep update start slip from 6oct |  | 3.11 | supt |  | As of 30dec22 need update | as of 30dec22 updated pending deletion |  | 03 | NuScale | FNTP | P2 | 3 | 11 |  |  |  |  | Paul/Beth |  |  |  |  |  |  |  |  |  |  |  |  |
|  | 01 | **CFPP - COLA Prep - Part 02 - Chapter 03 - Section 11 - Support Documents** |  |  |  |  |  |  |  |  |  |  |  |  |  |  |  |  |  |  |  |  |  |  |  |  |  |  |  |  |  |  |  |  |  |  |  |  |  |  |  |  |  |  |  |  |  |  |
|  | 02 | **CFPP - COLA Prep - Part 02 - Chapter 03 - Section 11 - Section Writing** |  | 2022-11-16 | 2023-05-15 |  |  |  |  |  |  |  |  |  |  |  |  |  |  |  |  |  |  |  |  |  |  |  |  |  |  |  |  |  |  |  |  |  |  |  |  |  |  |  |  |  |  |  |
| CP-P2-03-11-SW-0000 |  | Prepare Draft Rev A -Check Updated Supporting Documents -FSAR Section 3.11 | 70d | 2022-11-16 A | 2023-04-17 | CP-P2-03-11-SD-0000 FF, IFM-SDA-TO4-0080 | 76d | 2023-03-02 | 2023-06-08 | 120d | 0d |  | 2023-04-17 | Yes | Yes |  | NUSCALE |  |  | 3.11 | deliv | NS-REVA | as of 30dec22 updated | as of 30dec22 updated | 2023-04-17 | 03 | NuScale | FNTP | P2 | 3 | 11 | SDA Tie | 1 |  |  |  |  |  |  |  |  |  |  |  |  |  |  |  |
| CP-P2-03-11-SW-0005 |  | Review Draft Rev A - FSAR Section 3.11 (TO4 Team Review) | 10d | 2023-04-18 | 2023-05-01 | CP-P2-03-11-SW-0000 |  |  |  | 120d | 0d |  |  | Yes | Yes |  | NUSCALE |  |  | 3.11 | deliv |  |  |  |  | 03 | TO4 | FNTP | P2 | 3 |  |  | 2 | UDF_G1 | FIX |  |  |  |  |  |  |  |  |  |  |  |  |  |
| CP-P2-03-11-SW-0010 |  | Resolve Rev A Comments - FSAR Section 3.11 | 5d | 2023-05-02 | 2023-05-08 | CP-P2-03-11-SW-0005 |  |  |  | 120d | 0d |  |  | Yes | Yes |  | NUSCALE |  |  | 3.11 | deliv |  |  |  |  | 03 | NuScale | FNTP | P2 | 3 | 11 |  | 3 |  |  |  |  |  |  |  |  |  |  |  |  |  |  |  |
| CP-P2-03-11-SW-0012 |  | Confirm SDA Information and Inform Reviewers - FSAR Section 3.11 | 5d | 2023-05-09 | 2023-05-09 | CP-P2-03-11-SW-0010, PKM-0125 |  | 2023-05-09 | 2023-05-15 | 120d | 0d |  |  | Yes | Yes |  | FL4 |  |  |  | deliv |  | In parallel with Team Review (hold duration at 5d) |  |  | 03 | FL4 | FNTP | P2 | 1 | 1.1 | SDA Tie | 4 | UDF_G1 | FIX | Matt-TBD | checked pushed out by pred | N | NS-REV0 |  |  |  |  |  |  |  |  |  |
| CP-P2-03-11-SW-0015 |  | Issue Rev 0 - FSAR Section 3.11 | 5d | 2023-05-09 | 2023-05-15 | CP-P2-03-11-SW-0012 |  |  |  | 120d | 111d |  |  | Yes | Yes |  | NUSCALE |  |  | 3.11 | deliv |  |  |  |  | 03 | NuScale | FNTP | P2 | 3 | 11 | SDA Tie | 5 | UDF_G3 |  |  |  | N | NS-REV0 | 2023-08-04 | 4 | 56COL.P2.CH03.680 | nuscale |  |  |  |  |  |
|  | 12 | **CFPP - COLA Prep - Part 02 - Chapter 03 - Section 12 ASME Code Class 1, 2 and 3 Piping** |  | 2023-01-31 | 2023-05-30 |  |  |  |  |  |  |  |  |  |  |  |  |  |  |  |  |  |  |  |  |  |  |  |  |  |  |  |  |  |  |  |  |  |  |  |  |  |  |  |  |  |  |  |
|  | 01 | **CFPP - COLA Prep - Part 02 - Chapter 03 - Section 12 - Support Documents** |  |  |  |  |  |  |  |  |  |  |  |  |  |  |  |  |  |  |  |  |  |  |  |  |  |  |  |  |  |  |  |  |  |  |  |  |  |  |  |  |  |  |  |  |  |  |
|  | 02 | **CFPP - COLA Prep - Part 02 - Chapter 03 - Section 12 - Section Writing** |  | 2023-01-31 | 2023-05-30 |  |  |  |  |  |  |  |  |  |  |  |  |  |  |  |  |  |  |  |  |  |  |  |  |  |  |  |  |  |  |  |  |  |  |  |  |  |  |  |  |  |  |  |
| CP-P2-03-12-SW-0000 |  | Prepare Draft Rev A -Check Updated Supporting Documents -FSAR Section 3.12 | 70d | 2023-01-31 | 2023-05-01 | IFM-SPD-TO4-0070, IFM-SDA-TO4-0105 |  | 2023-01-31 | 2023-05-08 | 110d | 0d | start on or after 2023-01-31 |  | Yes | Yes | X | NUSCALE | Sep update start slip from 2dec |  |  | deliv | NS-REVA | As of 30dec22 delayed | as of 30dec22 updated | 2023-03-27 | 03 | NuScale | FNTP | P2 | 3 | 12 | SDA Tie | 1 |  |  |  |  |  |  |  |  |  | nuscalex3.12 | 2023-01-31 | oct update start move in from 10feb23 | Critical Path Item - FF | Oct | oct update moved start from 02dec22 |
| CP-P2-03-12-SW-0005 |  | Review Draft Rev A - FSAR Section 3.12 (TO4 Team Review) | 10d | 2023-05-02 | 2023-05-15 | CP-P2-03-12-SW-0000 |  |  |  | 110d | 0d |  |  | Yes | Yes |  | NUSCALE |  |  |  | deliv |  |  |  |  | 03 | TO4 | FNTP | P2 | 3 |  |  | 2 | UDF_G3 | FIX |  |  |  |  |  |  |  | nuscalex3.12 |  |  |  |  |  |
| CP-P2-03-12-SW-0010 |  | Resolve Rev A Comments - FSAR Section 3.12 | 5d | 2023-05-16 | 2023-05-22 | CP-P2-03-12-SW-0005 |  |  |  | 110d | 0d |  |  | Yes | Yes |  | NUSCALE |  |  |  | deliv |  |  |  |  | 03 | NuScale | FNTP | P2 | 3 | 12 |  | 3 |  |  |  |  |  |  |  |  |  | nuscalex3.12 |  |  |  |  |  |
| CP-P2-03-12-SW-0012 |  | Confirm SDA Information and Inform Reviewers - FSAR Section 3.12 | 5d | 2023-05-23 | 2023-05-23 | CP-P2-03-12-SW-0010, PKM-0125 |  | 2023-05-23 | 2023-05-30 | 110d | 0d |  |  | Yes | Yes |  | FL4 |  |  |  | deliv |  | In parallel with Team Review (hold duration at 5d) |  |  | 03 | FL4 | FNTP | P2 | 1 | 1.1 | SDA Tie | 4 | UDF_G1 | FIX | Matt-TBD | checked pushed out by pred | N | NS-REV0 |  |  |  | nuscalex3.12 |  |  |  |  |  |
| CP-P2-03-12-SW-0015 |  | Issue Rev 0 - FSAR Section 3.12 | 5d | 2023-05-23 | 2023-05-30 | CP-P2-03-12-SW-0012 |  |  |  | 110d | 101d |  |  | Yes | Yes |  | NUSCALE |  |  |  | deliv |  |  |  |  | 03 | NuScale | FNTP | P2 | 3 | 12 | SDA Tie | 5 | UDF_G3 |  |  |  | N | NS-REV0 | 2023-04-11 | 162 | 56COL.P2.CH03.690 | nuscalex3.12 |  | oct update Nuscale finish 11apr23 |  |  |  |

Notes:
- CP-P2-03-09-SW-0000: 12A DEC MIDMONTH Notes: As of 12dec22 Nuscale update ignores predecessors forecast start date 7dec22 (revise sd-0120 & sd-0130 SS) TO4-0085 still driving out start
- CP-P2-03-10-SW-0000: 12A DEC MIDMONTH Notes: As of 12dec22 missed in update
- CP-P2-03-11-SW-0000: 12A DEC MIDMONTH Notes: As of 12dec22 Nuscale update Ignores predecessors, creates out of sequence issues with schedule (revise sd-0000 to SS)

| ID | WBS | Activity | Duration | Start | Finish | Predecessors | Complete | Remaining | Planned start | Planned finish | Total float | Free float | Constraint | Expected finish | zText_02 | zText_Level 3 Schedule | VERIFIED MONTHLY UPDATE | Rebaseline details | 9A SEP EOM Notes | doc type | PREPDRFTREVA | 12B DEC EOM Notes | CFPP - Contractor's Remarks | Forecast Finish | Forecast Start | CFPP, LLC WBS Structure | Author | Period of Performance | Part | Chapter | Section | SDA needed | activity step | UDF Indicator 01 | SDA ties | Deliverable Owner | SDA cleanup notes | SDA ACT | REV0 - SDA | Contractor Date | DELTA | Nuscale ACT Number | nuscale comp | 10A OCT MIDMONTH Notes | NEED UPDATE | Monthly Variance | 11A NOV MIDMONTH Notes |
| --- | --- | --- | --- | --- | --- | --- | --- | --- | --- | --- | --- | --- | --- | --- | --- | --- | --- | --- | --- | --- | --- | --- | --- | --- | --- | --- | --- | --- | --- | --- | --- | --- | --- | --- | --- | --- | --- | --- | --- | --- | --- | --- | --- | --- | --- | --- | --- |
|  | 13 | **CFPP - COLA Prep - Part 02 - Chapter 03 - Section 13 Threaded Fasteners** |  | 2023-01-09 | 2023-04-05 |  |  |  |  |  |  |  |  |  |  |  |  |  |  |  |  |  |  |  |  |  |  |  |  |  |  |  |  |  |  |  |  |  |  |  |  |  |  |  |  |  |  |
|  | 01 | **CFPP - COLA Prep - Part 02 - Chapter 03 - Section 13 - Support Documents** |  |  |  |  |  |  |  |  |  |  |  |  |  |  |  |  |  |  |  |  |  |  |  |  |  |  |  |  |  |  |  |  |  |  |  |  |  |  |  |  |  |  |  |  |  |
|  | 02 | **CFPP - COLA Prep - Part 02 - Chapter 03 - Section 13 - Section Writing** |  | 2023-01-09 | 2023-04-05 |  |  |  |  |  |  |  |  |  |  |  |  |  |  |  |  |  |  |  |  |  |  |  |  |  |  |  |  |  |  |  |  |  |  |  |  |  |  |  |  |  |  |
| CP-P2-03-13-SW-0000 |  | Prepare Draft Rev A -Check Updated Supporting Documents -FSAR Section 3.13 | 70d | 2023-01-09 | 2023-03-08 | IFM-SDA-TO4-0205, IFM-SPD-TO4-0035 |  |  | 2023-01-09 | 2023-04-14 | 148d | 0d | start on or after 2023-01-09 |  | Yes | Yes | X | NUSCALE | Sep update start slip from 8nov | deliv | NS-REVA | As of 30dec22 delayed | as of 30dec22 updated start delayed | 2023-03-03 | 2023-01-09 | 03 | NuScale | FNTP | P2 | 3 | 12 | SDA Tie | 1 |  |  |  |  |  |  |  |  |  |  |  |  |  |  |
| CP-P2-03-13-SW-0005 |  | Review Draft Rev A - FSAR Section 3.13 (TO4 Team Review) | 10d | 2023-03-09 | 2023-03-22 | CP-P2-03-13-SW-0000 |  |  |  |  | 148d | 0d |  |  | Yes | Yes |  | NUSCALE |  | deliv |  |  |  |  |  | 03 | TO4 | FNTP | P2 | 3 |  |  | 2 | UDF_G1 | FIX |  |  |  |  |  |  |  |  |  |  |  |  |
| CP-P2-03-13-SW-0010 |  | Resolve Rev A Comments - FSAR Section 03.13 | 5d | 2023-03-23 | 2023-03-29 | CP-P2-03-13-SW-0005 |  |  |  |  | 148d | 0d |  |  | Yes | Yes |  | NUSCALE |  | deliv |  |  |  |  |  | 03 | NuScale | FNTP | P2 | 3 | 12 |  | 3 |  |  |  |  |  |  |  |  |  |  |  |  |  |  |
| CP-P2-03-13-SW-0012 |  | Confirm SDA Information and Inform Reviewers - FSAR Section 3.13 | 5d | 2023-03-30 | 2023-03-30 | CP-P2-03-13-SW-0010, PKM-0125 |  |  | 2023-03-30 | 2023-04-05 | 148d | 0d |  |  | Yes | Yes |  | FL4 |  | deliv |  | In parallel with Team Review (hold duration at 5d) |  |  |  | 03 | FL4 | FNTP | P2 | 1 | 1.1 | SDA Tie | 4 | UDF_G1 | FIX | Matt-TBD | checked pushed out by pred | N | NS-REV0 |  |  |  |  |  |  |  |  |
| CP-P2-03-13-SW-0015 |  | Issue Rev 0 - FSAR Section 3.13 | 5d | 2023-03-30 | 2023-04-05 | CP-P2-03-13-SW-0012 |  |  |  |  | 148d | 139d |  |  | Yes | Yes |  | NUSCALE |  | deliv |  |  |  |  |  | 03 | NuScale | FNTP | P2 | 3 | 12 | SDA Tie | 5 | UDF_G3 |  |  |  | N | NS-REV0 | 2023-03-21 | 2 | 56COL.P2.CH03.700 | nuscale | oct update pushed out by revised Draft Rev A start date |  |  |  |
|  | 14 | **CFPP - COLA Prep - Part 02 - Chapter 03 - Appendix 3A Dynamic Struct Analysis of the NPMs** |  | 2022-11-14 | 2023-01-31 |  |  |  |  |  |  |  |  |  |  |  |  |  |  |  |  |  |  |  |  |  |  |  |  |  |  |  |  |  |  |  |  |  |  |  |  |  |  |  |  |  |  |
|  | 02 | **CFPP - COLA Prep - Part 02 - Chapter 03 - Appendix 3A - Section Writing** |  | 2022-11-14 | 2023-01-31 |  |  |  |  |  |  |  |  |  |  |  |  |  |  |  |  |  |  |  |  |  |  |  |  |  |  |  |  |  |  |  |  |  |  |  |  |  |  |  |  |  |  |
| CP-P2-03-APA-SW-0000 |  | Prepare Draft Rev A -Check Updated Supporting Documents -FSAR Appendix 3A | 25d | 2022-11-14 A | 2022-12-13 A | IFM-SDA-TO4-0005 | 100% |  | 2022-11-08 | 2022-12-13 |  |  |  |  | Yes | Yes |  | FL4 |  | deliv | NS-REVA | as of 30dec22 updated | as of 30dec22 updated |  |  | 03 | NuScale | FNTP | P2 | 3 | 3A | SDA Tie | 1 |  |  |  |  |  |  |  |  |  |  |  |  |  |  |
| CP-P2-03-APA-SW-0005 |  | Review Draft Rev A - FSAR Appendix 3A (TO4 Team Review) | 10d | 2023-01-04 | 2023-01-17 | CP-P2-03-APA-SW-0000, PKM-0125 |  |  |  |  | 194d | 0d |  |  | Yes | Yes |  | FL4 |  | deliv |  |  |  |  |  | 03 | TO4 | FNTP | P2 | 3 |  |  | 2 | UDF_G1 | FIX |  |  |  |  |  |  |  |  |  |  |  |  |
| CP-P2-03-APA-SW-0010 |  | Resolve Rev A Comments - FSAR Appendix 3A | 5d | 2023-01-18 | 2023-01-24 | CP-P2-03-APA-SW-0005 |  |  |  |  | 194d | 0d |  |  | Yes | Yes |  | FL4 |  | deliv |  |  |  |  |  | 03 | NuScale | FNTP | P2 | 3 | 3A |  | 3 |  |  |  |  |  |  |  |  |  |  |  |  |  |  |
| CP-P2-03-APA-SW-0012 |  | Confirm SDA Information and Inform Reviewers - FSAR Section 3.3A | 5d | 2023-01-25 | 2023-01-25 | CP-P2-03-APA-SW-0010, PKM-0125 |  |  | 2023-01-25 | 2023-01-31 | 194d | 0d |  |  | Yes | Yes |  | FL4 |  | deliv |  | In parallel with Team Review (hold duration at 5d) |  |  |  | 03 | FL4 | FNTP | P2 | 3 |  | SDA Tie | 4 | UDF_G1 | FIX | Matt-TBD |  | N | NS-REV0 |  |  |  |  |  |  |  |  |
| CP-P2-03-APA-SW-0015 |  | Issue Rev 0 - FSAR Appendix 3A | 5d | 2023-01-25 | 2023-01-31 | CP-P2-03-APA-SW-0012 |  |  |  |  | 194d | 185d |  |  | Yes | Yes |  | FL4 |  | deliv |  |  |  |  |  | 03 | NuScale | FNTP | P2 | 3 | 3A | SDA Tie | 5 | UDF_G1 |  |  |  | N | NS-REV0 | 2023-01-16 | 10 | 56COL.P2.CH03.710 | nuscale |  |  |  |  |
|  | 15 | **CFPP - COLA Prep - Part 02 - Chapter 03 - Appendix 3B Design Reports & Critical Section Details** |  | 2022-10-19 | 2023-06-13 |  |  |  |  |  |  |  |  |  |  |  |  |  |  |  |  |  |  |  |  |  |  |  |  |  |  |  |  |  |  |  |  |  |  |  |  |  |  |  |  |  |  |
|  | 02 | **CFPP - COLA Prep - Part 02 - Chapter 03 - Appendix 3B - Section Writing** |  | 2022-10-19 | 2023-06-13 |  |  |  |  |  |  |  |  |  |  |  |  |  |  |  |  |  |  |  |  |  |  |  |  |  |  |  |  |  |  |  |  |  |  |  |  |  |  |  |  |  |  |
| CP-P2-03-APB-SW-0000 |  | Prepare Draft Rev A -Check Updated Supporting Documents -FSAR Appendix 3B | 25d | 2022-10-19 A | 2023-05-15 | IFM-SDA-TO4-0010 |  | 96d | 2022-10-19 | 2022-11-22 | 100d | 0d |  | 2023-05-15 | Yes | Yes | X | FL4 | Sep update start slip from 27sep | deliv | NS-REVA |  |  | 2023-05-15 |  | 03 | NuScale | FNTP | P2 | 3 | 3B | SDA Tie | 1 |  |  |  |  |  |  |  |  |  |  |  | OCT | Oct | As of 15nov22 15may23 tied to harmonic analysis in 3.7 |
| CP-P2-03-APB-SW-0005 |  | Review Draft Rev A - FSAR Appendix 3B (TO4 Team Review) | 10d | 2023-05-16 | 2023-05-30 | CP-P2-03-APB-SW-0000 |  |  |  |  | 100d | 0d |  |  | Yes | Yes |  | FL4 |  | deliv |  |  |  |  |  | 03 | TO4 | FNTP | P2 | 3 |  |  | 2 | UDF_G1 | FIX |  |  |  |  |  |  |  |  |  |  |  |  |
| CP-P2-03-APB-SW-0010 |  | Resolve Rev A Comments - FSAR Appendix 3B | 5d | 2023-05-31 | 2023-06-06 | CP-P2-03-APB-SW-0005 |  |  |  |  | 100d | 0d |  |  | Yes | Yes |  | FL4 |  | deliv |  |  |  |  |  | 03 | NuScale | FNTP | P2 | 3 | 3B |  | 3 |  |  |  |  |  |  |  |  |  |  |  |  | Oct |  |
| CP-P2-03-APB-SW-0012 |  | Confirm SDA Information and Inform Reviewers - FSAR Section 3.3B | 5d | 2023-06-07 | 2023-06-07 | CP-P2-03-APB-SW-0010, PKM-0125 |  |  | 2023-06-07 | 2023-06-13 | 100d | 0d |  |  | Yes | Yes |  | FL4 |  | deliv |  | In parallel with Team Review (hold duration at 5d) |  |  |  | 03 | FL4 | FNTP | P2 | 3 |  | SDA Tie | 4 | UDF_G1 | FIX | Matt-TBD |  | N | NS-REV0 |  |  |  |  |  |  |  |  |
| CP-P2-03-APB-SW-0015 |  | Issue Rev 0 - FSAR Appendix 3B | 5d | 2023-06-07 | 2023-06-13 | CP-P2-03-APB-SW-0012 |  |  |  |  | 100d | 91d |  |  | Yes | Yes |  | FL4 |  | deliv |  |  |  |  |  | 03 | NuScale | FNTP | P2 | 3 | 3B | SDA Tie | 5 | UDF_G3 |  |  |  | N | NS-REV0 | 2022-11-30 | 8 | 56COL.P2.CH03.720 | nuscale | oct update "Confirm SDA date" driving out |  |  |  |
|  | 16 | **CFPP - COLA Prep - Part 02 - Chap 03 -Appendix 3C Method'gy for Enviro Quals of Elect and Mech Equip** |  | 2022-12-19 | 2023-04-25 |  |  |  |  |  |  |  |  |  |  |  |  |  |  |  |  |  |  |  |  |  |  |  |  |  |  |  |  |  |  |  |  |  |  |  |  |  |  |  |  |  |  |
|  | 02 | **CFPP - COLA Prep - Part 02 - Chapter 03 - Appendix 3C - Section Writing** |  | 2022-12-19 | 2023-04-25 |  |  |  |  |  |  |  |  |  |  |  |  |  |  |  |  |  |  |  |  |  |  |  |  |  |  |  |  |  |  |  |  |  |  |  |  |  |  |  |  |  |  |
| CP-P2-03-APC-SW-0000 |  | Prepare Draft Rev A -Check Updated Supporting Documents -FSAR Appendix 3C | 25d | 2022-12-19 A | 2023-03-29 | IFM-SDA-TO4-0070, CP-P2-03-11-SD-0000 |  | 0d | 2023-03-02 | 2023-04-05 | 134d | 0d |  | 2023-01-30 | Yes | Yes |  | FL4 |  | deliv | NS-REVA | as of 30dec22 updated | as of 30dec22 updated | 2023-01-30 |  | 03 | NuScale | FNTP | P2 | 3 | 3C | SDA Tie | 1 |  |  |  |  |  |  |  |  |  |  |  |  |  |  |
| CP-P2-03-APC-SW-0005 |  | Review Draft Rev A - FSAR Appendix 3C (TO4 Team Review) | 10d | 2023-03-29 | 2023-04-11 | CP-P2-03-APC-SW-0000 |  |  |  |  | 134d | 0d |  |  | Yes | Yes |  | FL4 |  | deliv |  |  |  |  |  | 03 | TO4 | FNTP | P2 | 3 |  |  | 2 | UDF_G1 | FIX |  |  |  |  |  |  |  |  |  |  |  |  |
| CP-P2-03-APC-SW-0010 |  | Resolve Rev A Comments - FSAR Appendix 3C | 5d | 2023-04-12 | 2023-04-18 | CP-P2-03-APC-SW-0005 |  |  |  |  | 134d | 0d |  |  | Yes | Yes |  | FL4 |  | deliv |  |  |  |  |  | 03 | NuScale | FNTP | P2 | 3 | 3C |  | 3 |  |  |  |  |  |  |  |  |  |  |  |  |  |  |
| CP-P2-03-APC-SW-0012 |  | Confirm SDA Information and Inform Reviewers - FSAR Section 3C | 5d | 2023-04-19 | 2023-04-19 | CP-P2-03-APC-SW-0010, PKM-0125 |  |  | 2023-04-19 | 2023-04-25 | 134d | 0d |  |  | Yes | Yes |  | FL4 |  | deliv |  | In parallel with Team Review (hold duration at 5d) |  |  |  | 03 | FL4 | FNTP | P2 | 1 | 1.1 | SDA Tie | 4 | UDF_G1 | FIX | Matt-TBD | checked pushed out by pred | N | NS-REV0 |  |  |  |  |  |  |  |  |
| CP-P2-03-APC-SW-0015 |  | Issue Rev 0 - FSAR Appendix 3C | 5d | 2023-04-19 | 2023-04-25 | CP-P2-03-APC-SW-0012 |  |  |  |  | 134d | 125d |  |  | Yes | Yes |  | FL4 |  | deliv |  |  |  |  |  | 03 | NuScale | FNTP | P2 | 3 | 3C | SDA Tie | 5 | UDF_G3 |  |  |  | N | NS-REV0 | 2023-06-01 | 2 | 56COL.P2.CH03.730 | nuscale |  |  |  |  |

Notes:
- CP-P2-03-13-SW-0000: 11B NOV EOM Notes: As of 29nov22 start slip from 16dec22 / 10C OCT Monthly Report Notes: in Nuscale report as delayed (no change in excel report)
- CP-P2-03-13-SW-0010: 10C OCT Monthly Report Notes: in Nuscale report as delayed (no change in excel report)
- CP-P2-03-13-SW-0015: 10C OCT Monthly Report Notes: in Nuscale report as delayed (no change in excel report)
- CP-P2-03-APA-SW-0000: 10B OCT EOM Notes: oct update start slip from 08nov22 / 11B NOV EOM Notes: As of 29nov22 started
- CP-P2-03-APA-SW-0005: 12A DEC MIDMONTH Notes: As of 12dec22 Nuscale update ignores 6jan23 SDA content predecessor (need to revise SDA relationship if want to start early)
- CP-P2-03-APA-SW-0010: 11B NOV EOM Notes: As of 29nov22 pred start slip out / 12A DEC MIDMONTH Notes: As of 12dec22 Nuscale update ignores TO4 review & 6jan23 SDA content predecessor
- CP-P2-03-APA-SW-0015: 11B NOV EOM Notes: As of 29nov22 pred start slip out / 12A DEC MIDMONTH Notes: As of 12dec22 Nuscale update ignores TO4 review
- CP-P2-03-APB-SW-0000: 10B OCT EOM Notes: oct update start slip from 03oct22 / 11B NOV EOM Notes: As of 29nov22 finish slip from 22nov22 tied to completion of harmonic analysis / 10C OCT Monthly Report Notes: in Nuscale report as delayed
- CP-P2-03-APB-SW-0005: 10B OCT EOM Notes: oct update start slip out / 11B NOV EOM Notes: As of 29nov22 pred start slip out
- CP-P2-03-APB-SW-0010: 10B OCT EOM Notes: oct update tie to double build & harmonics analysis start constraint 23apr23 pending change order (require more details) / 11B NOV EOM Notes: As of 29nov22 pred start slip out / 10C OCT Monthly Report Notes: in Nuscale report as delayed start move from 21nov22 to 24apr23
- CP-P2-03-APB-SW-0015: 11B NOV EOM Notes: As of 29nov22 pred start slip out / 10C OCT Monthly Report Notes: in Nuscale report as delayed

| ID | WBS | Activity | Duration | Start | Finish | Predecessors | Complete | Remaining | Planned start | Planned finish | Total float | Free float | Constraint | Expected finish | zText_02 | zText_Level 3 Schedule | Rebaseline details | Monthly Variance | doc type | PREPDRFTREVA | 12B DEC EOM Notes | CFPP - Contractor's Remarks | Forecast Finish | CFPP, LLC WBS Structure | Author | Period of Performance | Part | Chapter | Section | SDA needed | activity step | UDF Indicator 01 | SDA ties | Deliverable Owner | SDA cleanup notes | SDA ACT | REV0 - SDA | Contractor Date | DELTA | Nuscale ACT Number | nuscale comp | 10A OCT MIDMONTH Notes | 11B NOV EOM Notes | CFPP Eval | Progress Deliv Sheet Milestone # | Other |
| --- | --- | --- | --- | --- | --- | --- | --- | --- | --- | --- | --- | --- | --- | --- | --- | --- | --- | --- | --- | --- | --- | --- | --- | --- | --- | --- | --- | --- | --- | --- | --- | --- | --- | --- | --- | --- | --- | --- | --- | --- | --- | --- | --- | --- | --- | --- |
|  | 04 | **CFPP - COLA Prep - Part 02 - Chapter 04 Reactor** |  | 2022-12-29 | 2023-03-15 |  |  |  |  |  |  |  |  |  |  |  |  |  |  |  |  |  |  |  |  |  |  |  |  |  |  |  |  |  |  |  |  |  |  |  |  |  |  |  |  |  |
|  | 01 | **CFPP - COLA Prep - Part 02 - Chapter 04 - Section 1 Reactor** |  | 2022-12-29 | 2023-03-15 |  |  |  |  |  |  |  |  |  |  |  |  |  |  |  |  |  |  |  |  |  |  |  |  |  |  |  |  |  |  |  |  |  |  |  |  |  |  |  |  |  |
|  | 01 | **CFPP - COLA Prep - Part 02 - Chapter 04 - Section 1 - Support Documents** |  |  |  |  |  |  |  |  |  |  |  |  |  |  |  |  |  |  |  |  |  |  |  |  |  |  |  |  |  |  |  |  |  |  |  |  |  |  |  |  |  |  |  |  |
|  | 02 | **CFPP - COLA Prep - Part 02 - Chapter 04 - Section 1 - Section Writing** |  | 2022-12-29 | 2023-03-15 |  |  |  |  |  |  |  |  |  |  |  |  |  |  |  |  |  |  |  |  |  |  |  |  |  |  |  |  |  |  |  |  |  |  |  |  |  |  |  |  |  |
| CP-P2-04-01-SW-0000 |  | Prepare Draft Rev A -Check Updated Supporting Documents -FSAR Chapter 04 | 70d | 2022-12-29 A | 2023-02-15 | IFM-SDA-TO4-0110 |  | 33d | 2022-12-19 | 2023-03-27 | 73d | 0d |  | 2023-02-15 | Yes | Yes | NUSCALE | Oct | deliv | NS-REVA | as of 30dec22 updated | as of 30dec22 updated | 2023-02-15 | 03 | NuScale | FNTP | P2 | 4 | 1 | SDA Tie | 1 |  |  |  |  |  |  |  |  |  |  |  |  |  |  |  |
| CP-P2-04-01-SW-0005 |  | Review Draft Rev A - FSAR Chapter 04 (TO4 Team Review) | 10d | 2023-02-16 | 2023-03-01 | CP-P2-04-01-SW-0000 |  |  |  |  | 73d | 0d |  |  | Yes | Yes | NUSCALE |  | deliv |  |  |  |  | 03 | TO4 | FNTP | P2 |  |  |  | 2 | UDF_G3 | FIX |  |  |  |  |  |  |  |  |  |  |  |  |  |
| CP-P2-04-01-SW-0010 |  | Resolve Rev A Comments - FSAR Chapter 04 | 5d | 2023-03-02 | 2023-03-08 | CP-P2-04-01-SW-0005 |  |  |  |  | 163d | 0d |  |  | Yes | Yes | NUSCALE |  | deliv |  |  |  |  | 03 | NuScale | FNTP | P2 | 4 | 1 |  | 3 |  |  |  |  |  |  |  |  |  |  |  |  |  |  |  |
| CP-P2-04-01-SW-0012 |  | Confirm SDA Information and Inform Reviewers - FSAR Section 4.1 | 5d | 2023-03-09 | 2023-03-09 | CP-P2-04-01-SW-0010, PKM-0125 |  |  | 2023-03-09 | 2023-03-15 | 163d | 0d |  |  | Yes | Yes | FL4 |  | deliv |  | In parallel with Team Review (hold duration at 5d) |  |  | 03 | FL4 | FNTP | P2 | 1 | 1.1 | SDA Tie | 4 | UDF_G1 | FIX | Matt-TBD | checked pushed out by pred | N | NS-REV0 |  |  |  |  |  |  |  |  |  |
| CP-P2-04-01-SW-0015 |  | Issue Rev 0 - FSAR Chapter 04 | 5d | 2023-03-09 | 2023-03-15 | CP-P2-04-01-SW-0012 |  |  |  |  | 163d | 0d |  |  | Yes | Yes | NUSCALE |  | deliv |  |  |  |  | 03 | NuScale | FNTP | P2 | 4 | 1 | SDA Tie | 5 | UDF_G3 |  |  |  | N | NS-REV0 | 2023-05-17 | -61 | 56COL.P2.CH04 | nuscale | oct update pushed out receipt of SDA info 19dec22 |  |  |  |  |
|  | 05 | **CFPP - COLA Prep - Part 02 - Chapter 05 Reactor Coolant Sys's and Connected Sys's** |  | 2022-10-17 | 2023-05-19 |  |  |  |  |  |  |  |  |  |  |  |  |  |  |  |  |  |  |  |  |  |  |  |  |  |  |  |  |  |  |  |  |  |  |  |  |  |  |  |  |  |
|  | 01 | **CFPP - COLA Prep - Part 02 - Chapter 05 - Section 1 - Reactor Coolant Sys's and Connected Sys's** |  | 2022-10-17 | 2023-05-19 |  |  |  |  |  |  |  |  |  |  |  |  |  |  |  |  |  |  |  |  |  |  |  |  |  |  |  |  |  |  |  |  |  |  |  |  |  |  |  |  |  |
|  | 01 | **CFPP - COLA Prep - Part 02 - Chapter 05 - Section 1 - Support Documents** |  | 2022-10-17 | 2023-02-27 |  |  |  |  |  |  |  |  |  |  |  |  |  |  |  |  |  |  |  |  |  |  |  |  |  |  |  |  |  |  |  |  |  |  |  |  |  |  |  |  |  |
| CP-P2-05-01-SD-0000 |  | Develop Support Documents - FSAR Chapter 5 | 163d | 2022-10-17 A | 2023-02-27 | CP-P2-02-01-SD-0000 |  | 41d | 2022-11-21 | 2023-07-11 | 50d | 0d |  | 2023-02-27 | Yes | Yes | NUSCALE | Oct | supt |  | as of 30dec22 updated | as of 30dec22 updated | 2023-02-27 | 03 | NuScale | FNTP | P2 | 5 | 1 |  |  |  |  |  |  |  |  |  |  |  |  |  | As of 29nov22 17oct22 start |  |  |  |
|  | 02 | **CFPP - COLA Prep - Part 02 - Chapter 05 - Section 1 - Section Writing** |  | 2022-12-01 | 2023-05-19 |  |  |  |  |  |  |  |  |  |  |  |  |  |  |  |  |  |  |  |  |  |  |  |  |  |  |  |  |  |  |  |  |  |  |  |  |  |  |  |  |  |
| CP-P2-05-01-SW-0000 |  | Prepare Draft Rev A -Check Updated Supporting Documents -FSAR Chapter 05 | 70d | 2022-12-01 A | 2023-04-21 | CP-P2-05-01-SD-0000 SS, IFM-SPD-TO4-0015, IFM-SDA-TO4-0140 |  | 80d | 2022-12-12 | 2023-03-20 | 116d | 0d | start on or after 2022-12-01 | 2023-04-21 | Yes | Yes | NUSCALE |  | deliv | NS-REVA | as of 30dec22 updated | as of 30dec22 updated | 2023-04-23 | 03 | NuScale | FNTP | P2 | 5 | 1 | SDA Tie | 1 |  |  |  |  |  |  |  |  |  |  |  |  |  |  |  |
| CP-P2-05-01-SW-0005 |  | Review Draft Rev A - FSAR Chapter 05 (TO4 Team Review) | 10d | 2023-04-24 | 2023-05-05 | CP-P2-05-01-SW-0000 |  |  |  |  | 116d | 0d |  |  | Yes | Yes | NUSCALE |  | deliv |  |  |  |  | 03 | TO4 | FNTP | P2 |  |  |  | 2 | UDF_G3 | FIX |  |  |  |  |  |  |  |  |  |  |  |  |  |
| CP-P2-05-01-SW-0010 |  | Resolve Rev A Comments - FSAR Chapter 05 | 5d | 2023-05-08 | 2023-05-12 | CP-P2-05-01-SW-0005 |  |  |  |  | 116d | 0d |  |  | Yes | Yes | NUSCALE |  | deliv |  |  |  |  | 03 | NuScale | FNTP | P2 | 5 | 1 |  | 3 |  |  |  |  |  |  |  |  |  |  |  |  |  |  |  |
| CP-P2-05-01-SW-0012 |  | Confirm SDA Information and Inform Reviewers - FSAR Section 5.1 | 5d | 2023-05-15 | 2023-05-15 | CP-P2-05-01-SW-0010, PKM-0125 |  |  | 2023-05-15 | 2023-05-19 | 116d | 0d |  |  | Yes | Yes | FL4 |  | deliv |  | In parallel with Team Review (hold duration at 5d) |  |  | 03 | FL4 | FNTP | P2 | 1 | 1.1 | SDA Tie | 4 | UDF_G1 | FIX | Matt-TBD | checked pushed out by pred | N | NS-REV0 |  |  |  |  |  |  |  |  |  |
| CP-P2-05-01-SW-0015 |  | Issue Rev 0 - FSAR Chapter 5 | 5d | 2023-05-15 | 2023-05-19 | CP-P2-05-01-SW-0012 |  |  |  |  | 116d | 0d |  |  | Yes | Yes | NUSCALE |  | deliv |  |  |  |  | 03 | NuScale | FNTP | P2 | 5 | 1 | SDA Tie | 5 | UDF_G3 |  |  |  | N | NS-REV0 | 2023-07-26 | -26 | 56COL.P2.CH05.230 | nuscale |  |  |  |  |  |
|  | 06 | **CFPP - COLA Prep - Part 02 - Chapter 06 Engineered Safety Features** |  | 2022-08-24 | 2023-06-22 |  |  |  |  |  |  |  |  |  |  |  |  |  |  |  |  |  |  |  |  |  |  |  |  |  |  |  |  |  |  |  |  |  |  |  |  |  |  |  |  |  |
|  | 01 | **CFPP - COLA Prep - Part 02 - Chapter 06 - Section 1 Engineered Safety Features** |  | 2022-08-24 | 2023-06-22 |  |  |  |  |  |  |  |  |  |  |  |  |  |  |  |  |  |  |  |  |  |  |  |  |  |  |  |  |  |  |  |  |  |  |  |  |  |  |  |  |  |
|  | 01 | **CFPP - COLA Prep - Part 02 - Chapter 06 - Section 1- Support Documents** |  | 2022-08-24 | 2023-04-13 |  |  |  |  |  |  |  |  |  |  |  |  |  |  |  |  |  |  |  |  |  |  |  |  |  |  |  |  |  |  |  |  |  |  |  |  |  |  |  |  |  |
| CP-P2-06-01-SD-0005 |  | Develop Supporting Documents FSAR Chapter 6 | 179d | 2022-08-24 A | 2023-01-30 |  |  | 21d | 2022-08-24 | 2023-05-04 | 93d | 0d |  | 2023-01-30 | Yes | Yes | NUSCALE | Oct | supt |  | as of 30dec22 updated | as of 30dec22 updated | 2023-01-30 | 03 | NuScale | FNTP | P2 | 6 | 1 |  |  |  |  |  |  |  |  |  |  |  |  |  |  |  |  |  |
| CP-P2-06-01-SD-0000 |  | Provide Description of Toxic Gas Analysis - Prepare | 45d | 2022-11-22 A | 2023-03-16 | CP-P2-02-02-SD-0035 SS | 50% | 54d | 2023-01-13 | 2023-03-16 | 82d | 0d |  | 2023-03-16 | Yes | Yes | S&L |  | supt |  |  |  | 2023-03-16 | 03 | S&L | FNTP | P2 | 6 | 1 |  |  | UDF_G3 |  |  |  |  |  |  |  |  |  |  | As of 29nov22 start moved in from 13jan23 | CC | 35 |  |
| CP-P2-06-01-SD-0001 |  | Provide Description of Toxic Gas Analysis - TO4 External Review / Comments Received | 10d | 2023-03-17 | 2023-03-30 | CP-P2-06-01-SD-0000 |  |  |  |  | 122d | 0d |  |  |  |  |  |  | supt |  |  |  |  |  | TO4 |  |  |  |  |  |  |  |  |  |  |  |  |  |  |  |  |  |  |  |  | cal |
| CP-P2-06-01-SD-0002 |  | Provide Description of Toxic Gas Analysis - Comment Resolution / Issue Final | 10d | 2023-03-31 | 2023-04-13 | CP-P2-06-01-SD-0001 |  |  |  |  | 122d | 29d |  |  |  |  |  |  | supt |  |  |  |  |  | S&L |  | P2 | 6 | 1 |  |  |  |  |  |  |  |  |  |  |  |  |  |  |  |  | cal |

Notes:
- CP-P2-04-01-SW-0000: 10B OCT EOM Notes: oct update
- CP-P2-04-01-SW-0015: 10B OCT EOM Notes: oct update Nuscale finish 22mar23
- CP-P2-05-01-SD-0000: 10B OCT EOM Notes: oct update start slip from 01nov22 finish slip from 10mar23(verify duration increase from 78 to 130)
- CP-P2-05-01-SW-0000: 12A DEC MIDMONTH Notes: As of 12dec22 Nuscale update ignores predecessor finish 10mar23 (revise pred to ss) and SDA content pred 12dec22
- CP-P2-06-01-SD-0005: 10B OCT EOM Notes: oct update finish slip from 24feb23 / 12A DEC MIDMONTH Notes: As of 12dec22 finish slip from 10apr23

| ID | WBS | Activity | Duration | Start | Finish | Predecessors | Remaining | Planned start | Planned finish | Total float | Free float | Constraint | Expected finish | zText_02 | zText_Level 3 Schedule | Rebaseline details | doc type | PREPDRFTREVA | Forecast Finish | Forecast Start | CFPP, LLC WBS Structure | Author | Period of Performance | Part | Chapter | Section | SDA needed | activity step | UDF Indicator 01 | SDA ties | Deliverable Owner | SDA ACT | REV0 - SDA | Contractor Date | DELTA | Nuscale ACT Number | nuscale comp | 10B OCT EOM Notes | CFPP Eval | ETAP DETAILS | 11B NOV EOM Notes |
| --- | --- | --- | --- | --- | --- | --- | --- | --- | --- | --- | --- | --- | --- | --- | --- | --- | --- | --- | --- | --- | --- | --- | --- | --- | --- | --- | --- | --- | --- | --- | --- | --- | --- | --- | --- | --- | --- | --- | --- | --- | --- |
|  | 02 | **CFPP - COLA Prep - Part 02 - Chapter 06 - Section 1- Section Writing** |  | 2023-01-31 | 2023-06-22 |  |  |  |  |  |  |  |  |  |  |  |  |  |  |  |  |  |  |  |  |  |  |  |  |  |  |  |  |  |  |  |  |  |  |  |  |
| CP-P2-06-01-SW-0000 |  | Prepare Draft Rev A -Check Updated Supporting Documents -FSAR Chapter 06 | 70d | 2023-01-31 | 2023-05-24 | CP-P2-06-01-SD-0000 FF, CP-P2-06-01-SD-0005, IFM-SDA-TO4-0155, CP-P2-06-01-SD-0002 FF |  | 2023-01-31 | 2023-05-08 | 93d | 0d | start on or after 2023-01-31 |  | Yes | Yes | NUSCALE | deliv | NS-REVA | 2023-05-24 | 2023-01-31 | 03 | NuScale | FNTP | P2 | 6 | 1 | SDA Tie | 1 |  |  |  |  |  |  |  |  |  |  |  |  |  |
| CP-P2-06-01-SW-0005 |  | Review Draft Rev A - FSAR Chapter 06 (TO4 Team Review) | 10d | 2023-05-25 | 2023-06-08 | CP-P2-06-01-SW-0000 |  |  |  | 93d | 0d |  |  | Yes | Yes | NUSCALE | deliv |  |  |  | 03 | TO4 | FNTP | P2 |  |  |  | 2 | UDF_G1 | FIX |  |  |  |  |  |  |  |  |  |  |  |
| CP-P2-06-01-SW-0010 |  | Resolve Rev A Comments - FSAR Chapter 06 | 5d | 2023-06-09 | 2023-06-15 | CP-P2-06-01-SW-0005 |  |  |  | 93d | 0d |  |  | Yes | Yes | NUSCALE | deliv |  |  |  | 03 | NuScale | FNTP | P2 | 6 | 1 |  | 3 |  |  |  |  |  |  |  |  |  |  |  |  |  |
| CP-P2-06-01-SW-0012 |  | Confirm SDA Information and Inform Reviewers - FSAR Section 6.1 | 5d | 2023-06-16 | 2023-06-16 | CP-P2-06-01-SW-0010, PKM-0125 |  | 2023-06-16 | 2023-06-22 | 93d | 0d |  |  | Yes | Yes | FL4 | deliv |  |  |  | 03 | FL4 | FNTP | P2 | 1 | 1.1 | SDA Tie | 4 | UDF_G1 | FIX | Matt-TBD | N | NS-REV0 |  |  |  |  |  |  |  |  |
| CP-P2-06-01-SW-0015 |  | Issue Rev 0 - FSAR Chapter 06 | 5d | 2023-06-16 | 2023-06-22 | CP-P2-06-01-SW-0012 |  |  |  | 93d | 0d |  |  | Yes | Yes | NUSCALE | deliv |  |  |  | 03 | NuScale | FNTP | P2 | 6 | 1 | SDA Tie | 5 | UDF_G3 |  |  | N | NS-REV0 | 2023-09-11 | 9 | 56COL.P2.CH06.185 | nuscale | oct update Nuscale finish 26jul23 |  |  |  |
|  | 07 | **CFPP - COLA Prep - Part 02 - Chapter 07 Instrumentation and Controls** |  | 2023-03-03 | 2023-09-18 |  |  |  |  |  |  |  |  |  |  |  |  |  |  |  |  |  |  |  |  |  |  |  |  |  |  |  |  |  |  |  |  |  |  |  |  |
|  | 1 | **CFPP - COLA Prep - Part 02 - Chapter 07 - Section 1 Instrumentation and Controls** |  | 2023-03-03 | 2023-09-18 |  |  |  |  |  |  |  |  |  |  |  |  |  |  |  |  |  |  |  |  |  |  |  |  |  |  |  |  |  |  |  |  |  |  |  |  |
|  | 01 | **CFPP - COLA Prep - Part 02 - Chapter 07 - Section 1 - Support Documents** |  | 2023-03-03 | 2023-06-09 |  |  |  |  |  |  |  |  |  |  |  |  |  |  |  |  |  |  |  |  |  |  |  |  |  |  |  |  |  |  |  |  |  |  |  |  |
| CP-P2-07-01-SD-0000 |  | Develop Digital I&C Plan | 70d | 2023-03-03 | 2023-06-09 | IFM-CFP-TO4-0055 FS+60d, CP-P2-07-01-SD-0005 FF |  |  |  | 82d | 49d | start on or after 2023-02-27 |  | Yes | Yes | NUSCALE | supt |  | 2023-04-13 | 2023-02-27 | 03 | NuScale | FNTP | P2 | 7 | 1 |  |  |  |  |  |  |  |  |  |  |  |  | CC |  |  |
| CP-P2-07-01-SD-0005 |  | Develop Design of Toxic Gas Sensor | 60d | 2023-03-17 | 2023-06-09 | CP-P2-06-01-SD-0000 |  |  |  | 82d | 0d |  |  | Yes | Yes | NUSCALE | supt |  |  |  | 03 | NuScale | FNTP | P2 | 7 | 1 |  |  |  |  |  |  |  |  |  |  |  |  | CC |  |  |
|  | 02 | **CFPP - COLA Prep - Part 02 - Chapter 07 - Section 1 - Section Writing** |  | 2023-04-13 | 2023-09-18 |  |  |  |  |  |  |  |  |  |  |  |  |  |  |  |  |  |  |  |  |  |  |  |  |  |  |  |  |  |  |  |  |  |  |  |  |
| CP-P2-07-01-SW-0000 |  | Prepare Draft Rev A -Check Updated Supporting Documents -FSAR Chapter 07 | 70d | 2023-04-13 | 2023-08-18 | CP-P2-07-01-SD-0000 FF, CP-P2-07-01-SD-0005 FF, IFM-SDA-TO4-0145 |  | 2023-04-13 | 2023-07-21 | 33d | 0d | start on or after 2023-04-13 |  | Yes | Yes | NUSCALE | deliv | NS-REVA | 2023-07-28 | 2023-04-13 | 03 | NuScale | FNTP | P2 | 7 | 1 | SDA Tie | 1 |  |  |  |  |  |  |  |  |  |  | CC |  |  |
| CP-P2-07-01-SW-0005 |  | Review Draft Rev A - FSAR Chapter 07 (TO4 Team Review) | 10d | 2023-08-21 | 2023-09-01 | CP-P2-07-01-SW-0000 |  |  |  | 33d | 0d |  |  | Yes | Yes | NUSCALE | deliv |  |  |  | 03 | TO4 | FNTP | P2 |  |  |  | 2 | UDF_G3 | FIX |  |  |  |  |  |  | nuscale7 |  | CC |  |  |
| CP-P2-07-01-SW-0010 |  | Resolve Rev A Comments - FSAR Chapter 07 | 5d | 2023-09-05 | 2023-09-11 | CP-P2-07-01-SW-0005 |  |  |  | 33d | 0d |  |  | Yes | Yes | NUSCALE | deliv |  |  |  | 03 | NuScale | FNTP | P2 | 7 | 1 |  | 3 |  |  |  |  |  |  |  |  | nuscale7 |  | CC |  |  |
| CP-P2-07-01-SW-0012 |  | Confirm SDA Information and Inform Reviewers - FSAR Chapter 07 | 5d | 2023-09-12 | 2023-09-12 | CP-P2-07-01-SW-0010, PKM-0125 |  | 2023-09-12 | 2023-09-18 | 33d | 0d |  |  | Yes | Yes | FL4 | deliv |  |  |  | 03 | FL4 | FNTP | P2 | 1 | 1.1 | SDA Tie | 4 | UDF_G1 | FIX | Matt-TBD | N | NS-REV0 |  |  |  | nuscale7 |  | CC |  |  |
| CP-P2-07-01-SW-0015 |  | Issue Rev 0 - FSAR Chapter 07 | 5d | 2023-09-12 | 2023-09-18 | CP-P2-07-01-SW-0012 |  |  |  | 33d | 0d |  |  | Yes | Yes | NUSCALE | deliv |  |  |  | 03 | NuScale | FNTP | P2 | 7 | 1 | SDA Tie | 5 | UDF_G3 |  |  | N | NS-REV0 | 2023-12-06 | -49 | 56COL.P2.CH07.140 | nuscale7 | oct update Nuscale finish 06oct23 | CC |  |  |
|  | 08 | **CFPP - COLA Prep - Part 02 - Chapter 08 Electric Power** |  | 2022-08-22 | 2023-06-08 |  |  |  |  |  |  |  |  |  |  |  |  |  |  |  |  |  |  |  |  |  |  |  |  |  |  |  |  |  |  |  |  |  |  |  |  |
|  | 01 | **CFPP - COLA Prep - Part 02 - Chapter 08 - Section 1 Introduction** |  | 2022-12-01 | 2023-02-27 |  |  |  |  |  |  |  |  |  |  |  |  |  |  |  |  |  |  |  |  |  |  |  |  |  |  |  |  |  |  |  |  |  |  |  |  |
|  | 01 | **CFPP - COLA Prep - Part 02 - Chapter 08 - Section 1 - Support Documents** |  |  |  |  |  |  |  |  |  |  |  |  |  |  |  |  |  |  |  |  |  |  |  |  |  |  |  |  |  |  |  |  |  |  |  |  |  |  |  |
|  | 02 | **CFPP - COLA Prep - Part 02 - Chapter 08 - Section 1 - Section Writing** |  | 2022-12-01 | 2023-02-27 |  |  |  |  |  |  |  |  |  |  |  |  |  |  |  |  |  |  |  |  |  |  |  |  |  |  |  |  |  |  |  |  |  |  |  |  |
| CP-P2-08-01-SW-0000 |  | Prepare Draft Rev A -Check Updated Supporting Documents -FSAR Section 8.1 | 25d | 2022-12-01 A | 2023-01-30 | IFM-TO5-TO4-0205, IFM-TO5-TO4-0250, IFM-TO5-TO4-0025, IFM-TO5-TO4-0030, IFM-SDA-TO4-0210, IFM-CFP-TO4-0020 | 21d | 2022-12-12 | 2023-01-16 | 175d | 0d |  | 2023-01-30 | Yes | Yes | NUSCALE | deliv | NS-REVA | 2023-01-30 |  | 03 | NuScale | FNTP | P2 | 8 | 1 | SDA Tie | 1 |  |  |  |  |  |  |  |  |  |  |  | X | As of 29nov22 revised start 12dec22, driven out by pred |
| CP-P2-08-01-SW-0005 |  | Review Draft Rev A - FSAR Section 8.1 (TO4 Team Review) | 10d | 2023-01-31 | 2023-02-13 | CP-P2-08-01-SW-0000 |  |  |  | 175d | 0d |  |  | Yes | Yes | NUSCALE | deliv |  |  |  | 03 | TO4 | FNTP | P2 |  |  |  | 2 | UDF_G1 | FIX |  |  |  |  |  |  |  |  |  |  |  |
| CP-P2-08-01-SW-0010 |  | Resolve Rev A Comments - FSAR Section 8.1 | 5d | 2023-02-14 | 2023-02-20 | CP-P2-08-01-SW-0005 |  |  |  | 175d | 0d |  |  | Yes | Yes | NUSCALE | deliv |  |  |  | 03 | NuScale | FNTP | P2 | 8 | 1 |  | 3 |  |  |  |  |  |  |  |  |  |  |  |  |  |
| CP-P2-08-01-SW-0012 |  | Confirm SDA Information and Inform Reviewers - FSAR Section 8.1 | 5d | 2023-02-21 | 2023-02-21 | CP-P2-08-01-SW-0010, PKM-0125 |  | 2023-02-21 | 2023-02-27 | 175d | 0d |  |  | Yes | Yes | FL4 | deliv |  |  |  | 03 | FL4 | FNTP | P2 | 1 | 1.1 | SDA Tie | 4 | UDF_G1 | FIX | Matt-TBD | N | NS-REV0 |  |  |  |  |  |  |  |  |
| CP-P2-08-01-SW-0015 |  | Issue Rev 0 - FSAR Section 8.1 | 5d | 2023-02-21 | 2023-02-27 | CP-P2-08-01-SW-0012 |  |  |  | 175d | 72d |  |  | Yes | Yes | NUSCALE | deliv |  |  |  | 03 | NuScale | FNTP | P2 | 8 | 1 | SDA Tie | 5 | UDF_G3 |  |  | N | NS-REV0 | 2023-02-15 | 3 | 56COL.P2.CH08.150 | nuscale |  |  |  |  |

Notes:
- CP-P2-06-01-SW-0000: 12B DEC EOM Notes: as of 30dec22 updated revised pred CP-P2-06-01-SD-0000 from FS to FF / CFPP - Contractor's Remarks: as of 30dec22 updated revised pred CP-P2-06-01-SD-0000 from FS to FF
- CP-P2-06-01-SW-0012: SDA cleanup notes: checked pushed out by pred / 12B DEC EOM Notes: In parallel with Team Review (hold duration at 5d)
- CP-P2-07-01-SD-0000: 12A DEC MIDMONTH Notes: As of 12dec22 Nuscale update ignores predecessor finish (need revised predecessor or delete) / 12B DEC EOM Notes: as of 30dec22 updated / CFPP - Contractor's Remarks: as of 30dec22 updated
- CP-P2-07-01-SD-0005: Schedule Notes: Nuscale update out to 22DEC22 / 12A DEC MIDMONTH Notes: As of 12dec22 S&L pred finish still 16mar23 (Nuscale update slips start out to 13apr23 / 12B DEC EOM Notes: as of 30dec22 updated pending deletion / CFPP - Contractor's Remarks: as of 30dec22 updated pending deletion
- CP-P2-07-01-SW-0000: 12A DEC MIDMONTH Notes: As of 12dec22 Nuscale update ignores predecessor finish (revised predecessor SD-0000 & sd-0005 to ff) / 12B DEC EOM Notes: as of 30dec22 updated / CFPP - Contractor's Remarks: as of 30dec22 updated
- CP-P2-07-01-SW-0012: SDA cleanup notes: checked pushed out by pred / 12B DEC EOM Notes: In parallel with Team Review (hold duration at 5d)
- CP-P2-08-01-SW-0000: SDA cleanup notes: verify predecessors from Fluor - Site specific regulatory criteria predecessor? / 12A DEC MIDMONTH Notes: As of 12dec22 Nuscale update ignores 12dec22 SDA content predecessor (need to revise SDA relationship if want to start early Nuscale forecast 28nov22) / 12B DEC EOM Notes: as of 30dec22 updated / CFPP - Contractor's Remarks: as of 30dec22 updated
- CP-P2-08-01-SW-0012: SDA cleanup notes: checked pushed out by pred / 12B DEC EOM Notes: In parallel with Team Review (hold duration at 5d)

| ID | WBS | Activity | Duration | Start | Finish | Predecessors | Complete | Remaining | Planned start | Planned finish | Total float | Free float | Constraint | Expected finish | UDF Indicator 01 | zText_02 | Remarks | zText_Level 3 Schedule | SDA cleanup notes | Rebaseline details | NEED UPDATE | doc type | nuscale comp | ETAP DETAILS | CFPP, LLC WBS Structure | Author | Period of Performance | Part | Chapter | Section | Progress Deliv Sheet Milestone # | Monthly Variance | 10A OCT MIDMONTH Notes | Forecast Finish | 11B NOV EOM Notes | 10C OCT Monthly Report Notes | PREPDRFTREVA | SDA needed | activity step | SDA ties | Deliverable Owner | SDA ACT | REV0 - SDA | Contractor Date | DELTA | Nuscale ACT Number |
| --- | --- | --- | --- | --- | --- | --- | --- | --- | --- | --- | --- | --- | --- | --- | --- | --- | --- | --- | --- | --- | --- | --- | --- | --- | --- | --- | --- | --- | --- | --- | --- | --- | --- | --- | --- | --- | --- | --- | --- | --- | --- | --- | --- | --- | --- | --- |
|  | 02 | **CFPP - COLA Prep - Part 02 - Chapter 08 - Section 2 Offsite Power System** |  | 2022-08-22 | 2023-06-08 |  |  |  |  |  |  |  |  |  |  |  |  |  |  |  |  |  |  |  |  |  |  |  |  |  |  |  |  |  |  |  |  |  |  |  |  |  |  |  |  |  |
|  | 01 | **CFPP - COLA Prep - Part 02 - Chapter 08 - Section 2 - Support Documents** |  | 2022-08-22 | 2023-04-26 |  |  |  |  |  |  |  |  |  |  |  |  |  |  |  |  |  |  |  |  |  |  |  |  |  |  |  |  |  |  |  |  |  |  |  |  |  |  |  |  |  |
| CP-P2-08-02-SD-0005 |  | Provide ETAP Model Info | 30d | 2022-08-22 A | 2022-10-24 A | IFM-TO5-TO4-0086 FS+23d | 100% |  | 2022-08-22 | 2022-10-03 |  |  |  |  | UDF_G3 | Yes | SL-FL-0012 Added 06/2922 | Yes | NEW ACTIVITY | S&L | OCT | supt | etap | X | 03 | S&L | FNTP | P2 | 8 | 2.0 | 40 |  |  |  |  |  |  |  |  |  |  |  |  |  |  |  |
| CP-P2-08-02-SD-0040 |  | Prepare Description of Testing and Inspection Requirements for OSP | 50d | 2022-09-25 A | 2023-04-13 | CP-P2-08-02-SD-0020 FF, CP-P2-08-02-SD-0015 FF | 15% | 74d | 2022-12-20 | 2023-02-28 | 22d | 0d |  | 2023-04-13 | UDF_G3 | Yes | SL-FL-0012 Added 06/2922 | Yes | NEW ACTIVITY | S&L |  | supt | etap | X | 03 | S&L | FNTP | P2 | 8 | 2.0 | 40 | Oct | oct update reduce duration from 60 days | 2023-04-13 |  |  |  |  |  |  |  |  |  |  |  |  |
| CP-P2-08-02-SD-0010 |  | Provide Interconnection System Impact Study (Pacific Corp) | 40d | 2022-10-24 A | 2022-12-15 A | CP-P2-08-02-SD-0005 | 100% |  | 2022-10-24 | 2022-12-19 |  |  |  |  | UDF_G3 | Yes | New Activity added 6/29/22 | Yes | NEW ACTIVITY | S&L | OCT | supt | etap | X | 03 | CFPP | FNTP | P2 | 8 | 2.0 | 40 |  |  |  | As of 29nov22 no slip verify this finish date | In S&L report as delayed (confirmed) |  |  |  |  |  |  |  |  |  |  |
| CP-P2-08-02-SD-0015 |  | Prepare Description of Offsite Power LIne Configuration | 30d | 2022-12-01 A | 2023-02-01 | CP-P2-08-02-SD-0010 | 10% | 23d | 2022-12-20 | 2023-01-31 | 13d | 0d |  | 2023-02-01 | UDF_G3 | Yes | SL-FL-0012 Added 06/2922 | Yes | NEW ACTIVITY | S&L |  | supt | etap | X | 03 | S&L | FNTP | P2 | 8 | 2.0 | 40 |  |  | 2023-02-01 |  |  |  |  |  |  |  |  |  |  |  |  |
| CP-P2-08-02-SD-0020 |  | Perform Analysis of Offsite Power System Conformance with Regulatory | 20d | 2023-01-19 | 2023-02-15 | CP-P2-08-02-SD-0010 |  |  |  |  | 63d | 41d | start on or after 2023-01-19 |  | UDF_G3 | Yes | SL-FL-0012 Added 06/2922 | Yes | NEW ACTIVITY | S&L |  | supt | etap | X | 03 | S&L | FNTP | P2 | 8 | 2.0 | 40 |  |  |  |  |  |  |  |  |  |  |  |  |  |  |  |
| CP-P2-08-02-SD-0025 |  | Prepare 1- Line and GA's with OSP system interconnection | 50d | 2023-02-02 | 2023-04-12 | CP-P2-08-02-SD-0015 |  |  |  |  | 13d | 0d |  |  | UDF_G3 | Yes | SL-FL-0012 Added 06/2922 | Yes | NEW ACTIVITY | S&L |  | supt |  | X | 03 | S&L | FNTP | P2 | 8 | 2.0 | 40 | Oct | oct update reduce duration from 63 days |  |  | In S&L report as delayed S&L duration increase (confirmed) |  |  |  |  |  |  |  |  |  |  |
| CP-P2-08-02-SD-0030 |  | Review 1 - Line and GA's with OSP system interconnection | 10d | 2023-04-13 | 2023-04-26 | CP-P2-08-02-SD-0025 |  |  |  |  | 13d | 0d |  |  | UDF_G3 | Yes | New Activity added 6/29/22 | Yes | NEW ACTIVITY | S&L |  | supt |  | X | 03 | FL4 | FNTP | P2 | 8 | 2.0 | 40 |  |  |  |  |  |  |  |  |  |  |  |  |  |  |  |
|  | 02 | **CFPP - COLA Prep - Part 02 - Chapter 08 - Section 2 - Section Writing** |  | 2023-04-27 | 2023-06-08 |  |  |  |  |  |  |  |  |  |  |  |  |  |  |  |  |  |  |  |  |  |  |  |  |  |  |  |  |  |  |  |  |  |  |  |  |  |  |  |  |  |
| CP-P2-08-02-SW-0000 |  | Prepare Draft Rev A - FSAR Section 8.2 | 10d | 2023-04-27 | 2023-05-10 | IFM-TO5-TO4-0250, IFM-TO5-TO4-0205, IFM-TO5-TO4-0025, IFM-TO5-TO4-0030, CP-P2-08-02-SD-0030, CP-P2-08-02-SD-0040 |  |  |  |  | 13d | 0d |  |  | UDF_G3 | Yes | Awaiting approval of scope per letter SL-FL-0002 | Yes | Adding to S&L scope (waiting on scope change) | S&L |  | deliv | etap | X | 03 | S&L | FNTP | P2 | 8 | 2.0 |  |  |  |  |  |  | S&L-REVA | No SDA | 1 |  |  |  |  |  |  |  |
| CP-P2-08-02-SW-0005 |  | Review Draft Rev A - FSAR Section 8.2 (TO4 Team Review) | 10d | 2023-05-11 | 2023-05-24 | CP-P2-08-02-SW-0000 |  |  |  |  | 13d | 0d |  |  | UDF_G1 | Yes | Awaiting approval of scope per letter SL-FL-0002 | Yes |  | S&L |  | deliv | etap | X | 03 | TO4 | FNTP | P2 | 8 | 2.0 |  |  |  |  |  |  |  |  | 2 | FIX |  |  |  |  |  |  |
| CP-P2-08-02-SW-0010 |  | Resolve Rev A Comments - FSAR Section 8.2 | 5d | 2023-05-25 | 2023-06-01 | CP-P2-08-02-SW-0005 |  |  |  |  | 103d | 0d |  |  | UDF_G1 | Yes | Awaiting approval of scope per letter SL-FL-0002 | Yes | Adding to S&L scope (waiting on scope change) | S&L |  | deliv | etap | X | 03 | S&L | FNTP | P2 | 8 | 2.0 |  |  |  |  |  |  |  |  | 3 |  |  |  |  |  |  |  |
| CP-P2-08-02-SW-0012 |  | Confirm SDA Information and Inform Reviewers - FSAR Section 8.2 | 5d | 2023-06-02 | 2023-06-02 | CP-P2-08-02-SW-0010, PKM-0125 |  |  | 2023-06-02 | 2023-06-08 | 103d | 0d |  |  | UDF_G1 | Yes |  | Yes | checked pushed out by pred | FL4 |  | deliv | etap | X | 03 | FL4 | FNTP | P2 | 1 | 1.1 |  |  |  |  |  |  |  | SDA Tie | 4 | FIX | Matt-TBD | S | S&L-REV0 |  |  |  |
| CP-P2-08-02-SW-0015 |  | Issue Rev 0 - FSAR Section 8.2 | 5d | 2023-06-02 | 2023-06-08 | CP-P2-08-02-SW-0012 |  |  |  |  | 103d | 0d |  |  | UDF_G1 | Yes | Awaiting approval of scope per letter SL-FL-0002 | Yes | Adding to S&L scope (waiting on scope change) | S&L |  | deliv | etap | X | 03 | S&L | FNTP | P2 | 8 | 2.0 |  |  |  |  |  |  |  | SDA Tie | 5 |  |  | S | S&L-REV0 |  |  |  |
|  | 03 | **CFPP - COLA Prep - Part 02 - Chapter 08 - Section 3 Onsite Power Systems** |  | 2022-12-01 | 2023-02-27 |  |  |  |  |  |  |  |  |  |  |  |  |  |  |  |  |  |  |  |  |  |  |  |  |  |  |  |  |  |  |  |  |  |  |  |  |  |  |  |  |  |
|  | 01 | **CFPP - COLA Prep - Part 02 - Chapter 08 - Section 3 - Support Documents** |  |  |  |  |  |  |  |  |  |  |  |  |  |  |  |  |  |  |  |  |  |  |  |  |  |  |  |  |  |  |  |  |  |  |  |  |  |  |  |  |  |  |  |  |
|  | 02 | **CFPP - COLA Prep - Part 02 - Chapter 08 - Section 3 - Section Writing** |  | 2022-12-01 | 2023-02-27 |  |  |  |  |  |  |  |  |  |  |  |  |  |  |  |  |  |  |  |  |  |  |  |  |  |  |  |  |  |  |  |  |  |  |  |  |  |  |  |  |  |
| CP-P2-08-03-SW-0000 |  | Prepare Draft Rev A -Check Updated Supporting Documents -FSAR Section 8.3 | 25d | 2022-12-01 A | 2023-01-30 | IFM-TO5-TO4-0250, IFM-TO5-TO4-0205, IFM-TO5-TO4-0025, IFM-TO5-TO4-0030, FI-GI-SSI-ER-0005, IFM-SDA-TO4-0215, IFM-TO5-TO4-0000 |  | 21d | 2022-12-12 | 2023-01-16 | 95d | 0d |  | 2023-01-30 |  | Yes |  | Yes |  | NUSCALE |  | deliv |  | X | 03 | NuScale | FNTP | P2 | 8 | 3.0 |  |  |  | 2023-01-30 | As of 29nov22 revised start 12dec22, driven out by pred |  | NS-REVA | SDA Tie | 1 |  |  |  |  |  |  |  |
| CP-P2-08-03-SW-0005 |  | Review Draft Rev A - FSAR Section 8.3 (TO4 Team Review) | 10d | 2023-01-31 | 2023-02-13 | CP-P2-08-03-SW-0000 |  |  |  |  | 175d | 0d |  |  | UDF_G1 | Yes |  | Yes |  | NUSCALE |  | deliv |  |  | 03 | TO4 | FNTP | P2 |  |  |  |  |  |  |  |  |  |  | 2 | FIX |  |  |  |  |  |  |
| CP-P2-08-03-SW-0010 |  | Resolve Rev A Comments - FSAR Section 8.3 | 5d | 2023-02-14 | 2023-02-20 | CP-P2-08-03-SW-0005 |  |  |  |  | 175d | 0d |  |  |  | Yes |  | Yes |  | NUSCALE |  | deliv |  |  | 03 | NuScale | FNTP | P2 | 8 | 3.0 |  |  |  |  |  |  |  |  | 3 |  |  |  |  |  |  |  |
| CP-P2-08-03-SW-0012 |  | Confirm SDA Information and Inform Reviewers - FSAR Section 8.3 | 5d | 2023-02-21 | 2023-02-21 | CP-P2-08-03-SW-0010, PKM-0125 |  |  | 2023-02-21 | 2023-02-27 | 175d | 0d |  |  | UDF_G1 | Yes |  | Yes | checked pushed out by pred | FL4 |  | deliv |  |  | 03 | FL4 | FNTP | P2 | 1 | 1.1 |  |  |  |  |  |  |  | SDA Tie | 4 | FIX | Matt-TBD | N | NS-REV0 |  |  |  |
| CP-P2-08-03-SW-0015 |  | Issue Rev 0 - FSAR Section 8.3 | 5d | 2023-02-21 | 2023-02-27 | CP-P2-08-03-SW-0012 |  |  |  |  | 175d | 72d |  |  | UDF_G3 | Yes |  | Yes |  | NUSCALE |  | deliv | nuscale |  | 03 | NuScale | FNTP | P2 | 8 | 3.0 |  |  |  |  |  |  |  | SDA Tie | 5 |  |  | N | NS-REV0 | 2023-02-15 | 3 | 56COL.P2.CH08.160 |
|  | 04 | **CFPP - COLA Prep - Part 02 - Chapter 08 - Section 4 Station Blackout** |  | 2022-12-01 | 2023-02-27 |  |  |  |  |  |  |  |  |  |  |  |  |  |  |  |  |  |  |  |  |  |  |  |  |  |  |  |  |  |  |  |  |  |  |  |  |  |  |  |  |  |
|  | 01 | **CFPP - COLA Prep - Part 02 - Chapter 08 - Section 4 - Support Documents** |  |  |  |  |  |  |  |  |  |  |  |  |  |  |  |  |  |  |  |  |  |  |  |  |  |  |  |  |  |  |  |  |  |  |  |  |  |  |  |  |  |  |  |  |
|  | 02 | **CFPP - COLA Prep - Part 02 - Chapter 08 - Section 4 - Section Writing** |  | 2022-12-01 | 2023-02-27 |  |  |  |  |  |  |  |  |  |  |  |  |  |  |  |  |  |  |  |  |  |  |  |  |  |  |  |  |  |  |  |  |  |  |  |  |  |  |  |  |  |
| CP-P2-08-04-SW-0000 |  | Prepare Draft Rev A -Check Updated Supporting Documents -FSAR Section 8.4 | 25d | 2022-12-01 A | 2023-01-30 | IFM-SDA-TO4-0075 |  | 21d | 2022-11-28 | 2023-01-02 | 175d | 0d | start on or after 2022-11-28 | 2023-01-30 |  | Yes |  | Yes |  | NUSCALE |  | deliv |  |  | 03 | NuScale | FNTP | P2 | 8 | 4.0 |  | Oct |  | 2023-01-30 | As of 29nov22 start slip from 18nov22 |  | NS-REVA | SDA Tie | 1 |  |  |  |  |  |  |  |
| CP-P2-08-04-SW-0005 |  | Review Draft Rev A - FSAR Section 8.4 (TO4 Team Review) | 10d | 2023-01-31 | 2023-02-13 | CP-P2-08-04-SW-0000 |  |  |  |  | 175d | 0d |  |  | UDF_G1 | Yes |  | Yes |  | NUSCALE |  | deliv |  |  | 03 | TO4 | FNTP | P2 |  |  |  |  |  |  |  |  |  |  | 2 | FIX |  |  |  |  |  |  |
| CP-P2-08-04-SW-0010 |  | Resolve Rev A Comments - FSAR Section 8.4 | 5d | 2023-02-14 | 2023-02-20 | CP-P2-08-04-SW-0005 |  |  |  |  | 175d | 0d |  |  |  | Yes |  | Yes |  | NUSCALE |  | deliv |  |  | 03 | NuScale | FNTP | P2 | 8 | 4.0 |  |  |  |  | As of 29nov22 pred start slip out |  |  |  | 3 |  |  |  |  |  |  |  |
| CP-P2-08-04-SW-0012 |  | Confirm SDA Information and Inform Reviewers - FSAR Section 8.4 | 5d | 2023-02-21 | 2023-02-21 | CP-P2-08-04-SW-0010, PKM-0125 |  |  | 2023-02-21 | 2023-02-27 | 175d | 0d |  |  | UDF_G1 | Yes |  | Yes |  | FL4 |  | deliv |  |  | 03 | FL4 | FNTP | P2 |  |  |  |  |  |  |  |  |  | SDA Tie | 4 | FIX | Matt-TBD | N | NS-REV0 |  |  |  |
| CP-P2-08-04-SW-0015 |  | Issue Rev 0 - FSAR Section 8.4 | 5d | 2023-02-21 | 2023-02-27 | CP-P2-08-04-SW-0012 |  |  |  |  | 175d | 72d |  |  | UDF_G3 | Yes |  | Yes |  | NUSCALE |  | deliv | nuscale |  | 03 | NuScale | FNTP | P2 | 8 | 4.0 |  |  |  |  | As of 29nov22 pred start slip out |  |  | SDA Tie | 5 |  |  | N | NS-REV0 | 2023-01-26 | -0 | 56COL.P2.CH08.170 |

Notes:
- CP-P2-08-02-SD-0005: 10B OCT EOM Notes: oct update finish slip from 21oct22
- CP-P2-08-02-SD-0040: 10B OCT EOM Notes: oct update finish moved forward from 11apr23 pred change from monthly report not noted in excel file add CP_P2-08-02-SD-0015 FF SD-0020 FF / 12B DEC EOM Notes: as of 30dec22 updated GA not available until 12-Apr-23; Forecast Date not incorprated PDL EF 4/13/23 / CFPP - Contractor's Remarks: as of 30dec22 updated GA not available until 12-Apr-23; Forecast Date not incorprated PDL EF 4/13/23
- CP-P2-08-02-SD-0010: 10B OCT EOM Notes: oct update (need update, show started at this point) / 12B DEC EOM Notes: As of 30dec22 updated per KK
- CP-P2-08-02-SD-0015: 12B DEC EOM Notes: as of 30dec22 updated calendar var? / CFPP - Contractor's Remarks: as of 30dec22 updated calendar var
- CP-P2-08-02-SD-0020: 12B DEC EOM Notes: As of 30dec22 delayed pushed out start (pacific corp deliverable) / CFPP - Contractor's Remarks: as of 30dec22 pushed out start (pacific corp deliverable)
- CP-P2-08-02-SD-0025: 10B OCT EOM Notes: oct update duration from 20 to 50 days / 12B DEC EOM Notes: as of 30dec22 updated pred slip
- CP-P2-08-02-SD-0030: 12B DEC EOM Notes: as of 30dec22 updated pred slip
- CP-P2-08-02-SW-0000: 12B DEC EOM Notes: as of 30dec22 updated pred slip
- CP-P2-08-02-SW-0005: 12B DEC EOM Notes: as of 30dec22 updated pred slip
- CP-P2-08-02-SW-0012: 12B DEC EOM Notes: In parallel with Team Review (hold duration at 5d)
- CP-P2-08-03-SW-0000: 12A DEC MIDMONTH Notes: As of 12dec22 Nuscale update ignores 12dec22 SDA content predecessor (need to revise SDA relationship if want to start early Nuscale forecast 28nov22) / 12B DEC EOM Notes: as of 30dec22 updated / CFPP - Contractor's Remarks: as of 30dec22 updated
- CP-P2-08-03-SW-0012: 12B DEC EOM Notes: In parallel with Team Review (hold duration at 5d)
- CP-P2-08-04-SW-0000: 10B OCT EOM Notes: oct update finish slip from 12dec22 / 12A DEC MIDMONTH Notes: As of 12dec22 Nuscale update ignores 12dec22 SDA content predecessor (need to revise SDA relationship if want to start early Nuscale forecast 28nov22) / 12B DEC EOM Notes: as of 30dec22 updated / CFPP - Contractor's Remarks: as of 30dec22 updated
- CP-P2-08-04-SW-0012: 12B DEC EOM Notes: In parallel with Team Review (hold duration at 5d)

| ID | WBS | Activity | Type | Duration | Start | Finish | Predecessors | Complete | Remaining | Planned start | Planned finish | Total float | Free float | Constraint | Expected finish | zText_02 | Rebaseline details | 9A SEP EOM Notes | NEED UPDATE | Monthly Variance | doc type | 10B OCT EOM Notes | 11A NOV MIDMONTH Notes | CFPP, LLC WBS Structure | Author | Period of Performance | Part | Chapter | Section | nuscale comp | zText_Level 3 Schedule | VERIFIED MONTHLY UPDATE | PREPDRFTREVA | 12B DEC EOM Notes | CFPP - Contractor's Remarks | Forecast Finish | SDA needed | activity step | UDF Indicator 01 | SDA ties | Deliverable Owner | SDA cleanup notes | SDA ACT | REV0 - SDA | Contractor Date | DELTA | Nuscale ACT Number | 12A DEC MIDMONTH Notes | Forecast Start |
| --- | --- | --- | --- | --- | --- | --- | --- | --- | --- | --- | --- | --- | --- | --- | --- | --- | --- | --- | --- | --- | --- | --- | --- | --- | --- | --- | --- | --- | --- | --- | --- | --- | --- | --- | --- | --- | --- | --- | --- | --- | --- | --- | --- | --- | --- | --- | --- | --- | --- |
|  | 09 | **CFPP - COLA Prep - Part 02 - Chapter 09 Auxiliary Systems** |  |  | 2022-08-24 | 2023-10-05 |  |  |  |  |  |  |  |  |  |  |  |  |  |  |  |  |  |  |  |  |  |  |  |  |  |  |  |  |  |  |  |  |  |  |  |  |  |  |  |  |  |  |  |
|  | 01 | **CFPP - COLA Prep - Part 02 - Chapter 09 - Section 1 Fuel Storage and Handling** |  |  | 2022-08-24 | 2023-10-05 |  |  |  |  |  |  |  |  |  |  |  |  |  |  |  |  |  |  |  |  |  |  |  |  |  |  |  |  |  |  |  |  |  |  |  |  |  |  |  |  |  |  |  |
|  | 01 | **CFPP - COLA Prep - Part 02 - Chapter 09 - Section 1 - Support Documents** |  |  | 2022-08-24 | 2023-09-26 |  |  |  |  |  |  |  |  |  |  |  |  |  |  |  |  |  |  |  |  |  |  |  |  |  |  |  |  |  |  |  |  |  |  |  |  |  |  |  |  |  |  |  |
| CP-P2-09-01-SD-0000 |  | Develop Operations Procedures for SFS |  | 30d | 2022-08-24 A | 2022-11-16 A | PKM-0065, IFM-CFP-TO4-0055 FS+60d | 100% |  | 2022-08-25 | 2022-10-06 |  |  |  |  | Yes | NUSCALE | Sep update | OCT | Oct | supt | oct update finish slip from 05oct22 | As of 15nov22 16nov22 finish | 03 | NuScale | FNTP | P2 | 9 | 1 |  |  |  |  |  |  |  |  |  |  |  |  |  |  |  |  |  |  |  |  |
| CP-P2-09-01-SD-0100 |  | Spent Fuel Pool Storage rack - Topical report Rev - Complete | milestone | 0d | 2023-09-26 | 2023-09-26 | PKM-0065, IFM-CFP-TO4-0055 FS+60d |  |  |  |  | 7d | 0d | finish on or after 2023-09-26 |  | Yes | NUSCALE |  |  |  | supt |  |  | 03 | NuScale | FNTP | P2 | 9 | 1 | nuscalex6.2 |  |  |  |  |  |  |  |  |  |  |  |  |  |  |  |  |  |  |  |
|  | 02 | **CFPP - COLA Prep - Part 02 - Chapter 09 - Section 1 - Section Writing** |  |  | 2022-12-21 | 2023-10-05 |  |  |  |  |  |  |  |  |  |  |  |  |  |  |  |  |  |  |  |  |  |  |  |  |  |  |  |  |  |  |  |  |  |  |  |  |  |  |  |  |  |  |  |
| CP-P2-09-01-SW-0000 |  | Prepare Draft Rev A -Check Updated Supporting Documents -FSAR Section 9.1 |  | 70d | 2022-12-21 A | 2023-09-07 | CP-P2-09-01-SD-0000, IFM-SDA-TO4-0095 |  | 176d | 2022-12-22 | 2023-03-30 | 20d | 0d | start on or after 2022-12-22 | 2023-09-07 | Yes | NUSCALE | Sep update from 2nov22 remove 30may23 start from sep update |  | Oct | deliv | oct update start slip from 02nov22 |  | 03 | NuScale | FNTP | P2 | 9 | 1 |  | Yes | x | NS-REVA | as of 30dec22 updated finish slip from 30mar23 | as of 30dec22 updated | 2023-09-07 | SDA Tie | 1 |  |  |  |  |  |  |  |  |  |  |  |
| CP-P2-09-01-SW-0005 |  | Review Draft Rev A - FSAR Section 9.1 (TO4 Team Review) |  | 10d | 2023-09-08 | 2023-09-21 | CP-P2-09-01-SW-0000 |  |  |  |  | 20d | 0d |  |  | Yes | NUSCALE |  |  |  | deliv |  |  | 03 | TO4 | FNTP | P2 |  |  |  | Yes |  |  |  |  |  |  | 2 | UDF_G3 | FIX |  |  |  |  |  |  |  |  |  |
| CP-P2-09-01-SW-0010 |  | Resolve Rev A Comments - FSAR Section 9.1 |  | 5d | 2023-09-22 | 2023-09-28 | CP-P2-09-01-SW-0005 |  |  |  |  | 20d | 0d |  |  | Yes | NUSCALE |  |  |  | deliv |  |  | 03 | NuScale | FNTP | P2 | 9 | 1 |  | Yes |  |  |  |  |  |  | 3 |  |  |  |  |  |  |  |  |  |  |  |
| CP-P2-09-01-SW-0012 |  | Confirm SDA Information and Inform Reviewers - FSAR Section 9.1 |  | 5d | 2023-09-29 | 2023-09-29 | CP-P2-09-01-SW-0010, PKM-0125 |  |  | 2023-09-29 | 2023-10-05 | 20d | 0d |  |  | Yes | FL4 |  |  |  | deliv |  |  | 03 | FL4 | FNTP | P2 | 1 | 1.1 |  | Yes |  |  | In parallel with Team Review (hold duration at 5d) |  |  | SDA Tie | 4 | UDF_G1 | FIX | Matt-TBD | checked pushed out by pred | N | NS-REV0 |  |  |  |  |  |
| CP-P2-09-01-SW-0015 |  | Issue Rev 0 - FSAR Section 9.1 |  | 5d | 2023-09-29 | 2023-10-05 | CP-P2-09-01-SD-0100, CP-P2-09-01-SW-0012 |  |  |  |  | 20d | 0d |  |  | Yes | NUSCALE |  |  |  | deliv |  |  | 03 | NuScale | FNTP | P2 | 9 | 1 | nuscale | Yes |  |  |  |  |  | SDA Tie | 5 | UDF_G3 |  |  |  | N | NS-REV0 | 2023-09-18 | -185 | 56COL.P2.CH09 |  |  |
|  | 02 | **CFPP - COLA Prep - Part 02 - Chapter 09 - Section 2 Water Systems** |  |  | 2022-11-30 | 2023-02-27 |  |  |  |  |  |  |  |  |  |  |  |  |  |  |  |  |  |  |  |  |  |  |  |  |  |  |  |  |  |  |  |  |  |  |  |  |  |  |  |  |  |  |  |
|  | 01 | **CFPP - COLA Prep - Part 02 - Chapter 09 - Section 2 - Support Documents** |  |  |  |  |  |  |  |  |  |  |  |  |  |  |  |  |  |  |  |  |  |  |  |  |  |  |  |  |  |  |  |  |  |  |  |  |  |  |  |  |  |  |  |  |  |  |  |
|  | 02 | **CFPP - COLA Prep - Part 02 - Chapter 09 - Section 2 - Section Writing** |  |  | 2022-11-30 | 2023-02-27 |  |  |  |  |  |  |  |  |  |  |  |  |  |  |  |  |  |  |  |  |  |  |  |  |  |  |  |  |  |  |  |  |  |  |  |  |  |  |  |  |  |  |  |
| CP-P2-09-02-SW-0000 |  | Prepare Draft Rev A -Check Updated Supporting Documents -FSAR Section 9.2 |  | 130d | 2022-11-30 A | 2023-01-30 | IFM-SDA-TO4-0220 |  | 21d | 2022-11-30 | 2023-06-01 | 90d | 0d |  | 2023-01-30 | Yes | NUSCALE |  |  |  | deliv |  |  | 03 | NuScale | FNTP | P2 | 9 | 2.0 |  | Yes |  | NS-REVA | as of 30dec22 updated | as of 30dec22 updated | 2023-01-30 | SDA Tie | 1 |  |  |  |  |  |  |  |  |  | As of 12dec22 finish move forward from 1jun23 |  |
| CP-P2-09-02-SW-0005 |  | Review Draft Rev A - FSAR Section 9.2 (TO4 Team Review) |  | 10d | 2023-01-31 | 2023-02-13 | CP-P2-09-02-SW-0000 |  |  |  |  | 90d | 0d |  |  | Yes | NUSCALE |  |  |  | deliv |  |  | 03 | TO4 | FNTP | P2 |  |  |  | Yes |  |  |  |  |  |  | 2 | UDF_G1 | FIX |  |  |  |  |  |  |  |  |  |
| CP-P2-09-02-SW-0010 |  | Resolve Rev A Comments - FSAR Section 9.2 |  | 5d | 2023-02-14 | 2023-02-20 | CP-P2-09-02-SW-0005 |  |  |  |  | 175d | 0d |  |  | Yes | NUSCALE |  |  |  | deliv |  |  | 03 | NuScale | FNTP | P2 | 9 | 2.0 |  | Yes |  |  |  |  |  |  | 3 |  |  |  |  |  |  |  |  |  |  |  |
| CP-P2-09-02-SW-0012 |  | Confirm SDA Information and Inform Reviewers - FSAR Section 9.2 |  | 5d | 2023-02-21 | 2023-02-21 | CP-P2-09-02-SW-0010, PKM-0125 |  |  | 2023-02-21 | 2023-02-27 | 175d | 0d |  |  | Yes | FL4 |  |  |  | deliv |  |  | 03 | FL4 | FNTP | P2 | 1 | 1.1 |  | Yes |  |  | In parallel with Team Review (hold duration at 5d) |  |  | SDA Tie | 4 | UDF_G1 | FIX | Matt-TBD | checked pushed out by pred | N | NS-REV0 |  |  |  |  |  |
| CP-P2-09-02-SW-0015 |  | Issue Rev 0 - FSAR Section 9.2 |  | 5d | 2023-02-21 | 2023-02-27 | CP-P2-09-02-SW-0012 |  |  |  |  | 175d | 155d |  |  | Yes | NUSCALE |  |  |  | deliv |  |  | 03 | NuScale | FNTP | P2 | 9 | 2.0 | nuscale | Yes |  |  |  |  |  | SDA Tie | 5 | UDF_G3 |  |  |  | N | NS-REV0 | 2023-07-03 | 4 | 56COL.P2.CH09.360 |  |  |
|  | 03 | **CFPP - COLA Prep - Part 02 - Chapter 09 - Section 3 Process Auxiliaries** |  |  | 2022-11-28 | 2023-04-20 |  |  |  |  |  |  |  |  |  |  |  |  |  |  |  |  |  |  |  |  |  |  |  |  |  |  |  |  |  |  |  |  |  |  |  |  |  |  |  |  |  |  |  |
|  | 01 | **CFPP - COLA Prep - Part 02 - Chapter 09 - Section 3 - Support Documents** |  |  | 2022-11-28 | 2023-01-25 |  |  |  |  |  |  |  |  |  |  |  |  |  |  |  |  |  |  |  |  |  |  |  |  |  |  |  |  |  |  |  |  |  |  |  |  |  |  |  |  |  |  |  |
| CP-P2-09-03-SD-0005 |  | Develop Leak Control Program |  | 40d | 2022-11-28 A | 2023-01-25 |  |  | 18d | 2022-11-28 | 2023-01-23 | 137d | 0d | start on or after 2022-11-28 | 2023-01-25 | Yes | NUSCALE |  | OCT | Oct | supt | oct update start slip from 13oct22 |  | 03 | NuScale | FNTP | P2 | 9 | 3.0 |  | Yes |  |  | as of 30dec22 updated | as of 30dec22 updated | 2023-01-25 |  |  |  |  |  |  |  |  |  |  |  |  |  |
|  | 02 | **CFPP - COLA Prep - Part 02 - Chapter 09 - Section 3 - Section Writing** |  |  | 2023-01-26 | 2023-04-20 |  |  |  |  |  |  |  |  |  |  |  |  |  |  |  |  |  |  |  |  |  |  |  |  |  |  |  |  |  |  |  |  |  |  |  |  |  |  |  |  |  |  |  |
| CP-P2-09-03-SW-0000 |  | Prepare Draft Rev A -Check Updated Supporting Documents -FSAR Section 9.3 |  | 23d | 2023-01-26 | 2023-03-23 | IFM-TO5-TO4-0285, IFM-TO5-TO4-0290, CP-P2-09-03-SD-0005, IFM-SDA-TO4-0150, IFM-TO5-TO4-0045, IFM-TO5-TO4-0260, IFM-TO5-TO4-0255 |  |  | 2023-01-26 | 2023-02-27 | 137d | 0d | start on or after 2023-01-26 |  | Yes | NUSCALE |  |  | Oct | deliv | oct update start slip from 12dec22 |  | 03 | NuScale | FNTP | P2 | 9 | 3.0 |  | Yes |  | NS-REVA | as of 30dec22 updated | as of 30dec22 updated | 2023-03-22 | SDA Tie | 1 |  |  |  |  |  |  |  |  |  |  | 2023-01-26 |
| CP-P2-09-03-SW-0005 |  | Review Draft Rev A - FSAR Section 9.3 (TO4 Team Review) |  | 10d | 2023-03-24 | 2023-04-06 | CP-P2-09-03-SW-0000 |  |  |  |  | 137d | 0d |  |  | Yes | NUSCALE |  |  |  | deliv |  |  | 03 | TO4 | FNTP | P2 |  |  |  | Yes |  |  |  |  |  |  | 2 | UDF_G1 | FIX |  |  |  |  |  |  |  |  |  |
| CP-P2-09-03-SW-0010 |  | Resolve Rev A Comments - FSAR Section 9.3 |  | 5d | 2023-04-07 | 2023-04-13 | CP-P2-09-03-SW-0005 |  |  |  |  | 137d | 0d |  |  | Yes | NUSCALE |  |  |  | deliv |  |  | 03 | NuScale | FNTP | P2 | 9 | 3.0 |  | Yes |  |  |  |  |  |  | 3 |  |  |  |  |  |  |  |  |  |  |  |
| CP-P2-09-03-SW-0012 |  | Confirm SDA Information and Inform Reviewers - FSAR Section 9.3 |  | 5d | 2023-04-14 | 2023-04-14 | CP-P2-09-03-SW-0010, PKM-0125 |  |  | 2023-04-14 | 2023-04-20 | 137d | 0d |  |  | Yes | FL4 |  |  |  | deliv |  |  | 03 | FL4 | FNTP | P2 | 1 | 1.1 |  | Yes |  |  | In parallel with Team Review (hold duration at 5d) |  |  | SDA Tie | 4 | UDF_G1 | FIX | Matt-TBD | checked pushed out by pred | N | NS-REV0 |  |  |  |  |  |
| CP-P2-09-03-SW-0015 |  | Issue Rev 0 - FSAR Section 9.3 |  | 5d | 2023-04-14 | 2023-04-20 | CP-P2-09-03-SW-0012 |  |  |  |  | 137d | 117d |  |  | Yes | NUSCALE |  |  |  | deliv |  |  | 03 | NuScale | FNTP | P2 | 9 | 3.0 | nuscale | Yes |  |  |  |  |  | SDA Tie | 5 | UDF_G3 |  |  |  | N | NS-REV0 | 2023-02-15 | 1 | 56COL.P2.CH09.370 |  |  |

Notes:
- CP-P2-09-01-SD-0000: 11B NOV EOM Notes: As of 29nov22 finish slip from 7nov22 / 10C OCT Monthly Report Notes: in Nuscale report as delayed (1 month slip in excel report)
- CP-P2-09-01-SW-0000: 11B NOV EOM Notes: As of 29nov22 finish slip from 30mar23 to 7sep23 pushes COLA delivery -50d / 10C OCT Monthly Report Notes: in Nuscale report as delayed (1 month slip in excel report)
- CP-P2-09-01-SW-0010: 10C OCT Monthly Report Notes: in Nuscale report as delayed (1 month slip in excel report)
- CP-P2-09-01-SW-0015: 10A OCT MIDMONTH Notes: oct update verify correct pred is CP-P2-09-01-SD-0100 driving out / 10C OCT Monthly Report Notes: in Nuscale report as delayed (no delay, driven out by topical report completion)
- CP-P2-09-03-SD-0005: 11B NOV EOM Notes: As of 29nov22 start slip from 7nov22
- CP-P2-09-03-SW-0000: 11B NOV EOM Notes: As of 29nov22 finish slip from 8feb23 (submit in December)
- CP-P2-09-03-SW-0010: 11B NOV EOM Notes: As of 29nov22 pred start slip out
- CP-P2-09-03-SW-0015: 11B NOV EOM Notes: As of 29nov22 pred start slip out

| ID | WBS | Activity | Duration | Start | Finish | Predecessors | Complete | Remaining | Planned start | Planned finish | Total float | Free float | Constraint | Expected finish | zText_02 | zText_Level 3 Schedule | VERIFIED MONTHLY UPDATE | Rebaseline details | 9A SEP EOM Notes | Monthly Variance | doc type | PREPDRFTREVA | 11B NOV EOM Notes | CFPP - Contractor's Remarks | Forecast Finish | CFPP, LLC WBS Structure | Author | Period of Performance | Part | Chapter | Section | SDA needed | activity step | UDF Indicator 01 | SDA ties | 10B OCT EOM Notes | Deliverable Owner | SDA ACT | REV0 - SDA | Contractor Date | DELTA | Nuscale ACT Number | nuscale comp | 10A OCT MIDMONTH Notes | SDA cleanup notes |
| --- | --- | --- | --- | --- | --- | --- | --- | --- | --- | --- | --- | --- | --- | --- | --- | --- | --- | --- | --- | --- | --- | --- | --- | --- | --- | --- | --- | --- | --- | --- | --- | --- | --- | --- | --- | --- | --- | --- | --- | --- | --- | --- | --- | --- | --- |
|  | 04 | **CFPP - COLA Prep - Part 02 - Chapter 09 - Section 4 A/C, Heat, Cooling, & Vent Sys's** |  | 2022-10-31 | 2023-02-13 |  |  |  |  |  |  |  |  |  |  |  |  |  |  |  |  |  |  |  |  |  |  |  |  |  |  |  |  |  |  |  |  |  |  |  |  |  |  |  |  |
|  | 01 | **CFPP - COLA Prep - Part 02 - Chapter 09 - Section 4 - Support Documents** |  |  |  |  |  |  |  |  |  |  |  |  |  |  |  |  |  |  |  |  |  |  |  |  |  |  |  |  |  |  |  |  |  |  |  |  |  |  |  |  |  |  |  |
|  | 02 | **CFPP - COLA Prep - Part 02 - Chapter 09 - Section 4 - Section Writing** |  | 2022-10-31 | 2023-02-13 |  |  |  |  |  |  |  |  |  |  |  |  |  |  |  |  |  |  |  |  |  |  |  |  |  |  |  |  |  |  |  |  |  |  |  |  |  |  |  |  |
| CP-P2-09-04-SW-0000 |  | Prepare Draft Rev A -Check Updated Supporting Documents -FSAR Section 9.4 | 25d | 2022-10-31 A | 2023-01-16 |  |  | 11d | 2022-10-31 | 2022-12-05 | 185d | 0d |  | 2023-01-16 | Yes | Yes | x | NUSCALE | Sep update added constraint removed pred 09-04-sd-0000 | Oct | deliv | NS-REVA | As of 29nov22 finish slip from 5dec22 | as of 30dec22 updated | 2023-01-16 | 03 | NuScale | FNTP | P2 | 9 | 4.0 | SDA Tie | 1 |  |  |  |  |  |  |  |  |  |  |  |  |
| CP-P2-09-04-SW-0005 |  | Review Draft Rev A - FSAR Section 9.4 (TO4 Team Review) | 10d | 2023-01-17 | 2023-01-30 | CP-P2-09-04-SW-0000, PKM-0125 |  |  |  |  | 185d | 0d |  |  | Yes | Yes |  | NUSCALE |  |  | deliv |  |  |  |  | 03 | TO4 | FNTP | P2 |  |  |  | 2 | UDF_G1 | FIX | oct update start slip out |  |  |  |  |  |  |  |  |  |
| CP-P2-09-04-SW-0010 |  | Resolve Rev A Comments - FSAR Section 9.4 | 5d | 2023-01-31 | 2023-02-06 | CP-P2-09-04-SW-0005 |  |  |  |  | 185d | 0d |  |  | Yes | Yes |  | NUSCALE |  |  | deliv |  | As of 29nov22 pred start slip out |  |  | 03 | NuScale | FNTP | P2 | 9 | 4.0 |  | 3 |  |  |  |  |  |  |  |  |  |  |  |  |
| CP-P2-09-04-SW-0012 |  | Confirm SDA Information and Inform Reviewers - FSAR Section 9 | 5d | 2023-02-07 | 2023-02-07 | CP-P2-09-04-SW-0010, PKM-0125 |  |  | 2023-02-07 | 2023-02-13 | 185d | 0d |  |  | Yes | Yes |  | FL4 |  |  | deliv |  |  |  |  | 03 | FL4 | FNTP | P2 |  |  | SDA Tie | 4 | UDF_G1 | FIX |  | Matt-TBD | N | NS-REV0 |  |  |  |  |  |  |
| CP-P2-09-04-SW-0015 |  | Issue Rev 0 - FSAR Section 9.4 | 5d | 2023-02-07 | 2023-02-13 | CP-P2-09-04-SW-0012 |  |  |  |  | 185d | 165d |  |  | Yes | Yes |  | NUSCALE |  |  | deliv |  | As of 29nov22 pred start slip out |  |  | 03 | NuScale | FNTP | P2 | 9 | 4.0 | SDA Tie | 5 | UDF_G1 |  |  |  | N | NS-REV0 | 2023-01-20 | 12 | 56COL.P2.CH09.380 | nuscale | oct update pushed out by revised Draft Rev A start date |  |
|  | 05 | **CFPP - COLA Prep - Part 02 - Chapter 09 - Section 5 - Other Auxiliary Systems / Fire Hazard Analysi** |  | 2022-11-28 | 2023-03-03 |  |  |  |  |  |  |  |  |  |  |  |  |  |  |  |  |  |  |  |  |  |  |  |  |  |  |  |  |  |  |  |  |  |  |  |  |  |  |  |  |
|  | 1 | **CFPP - COLA Prep - Part 02 - Chapter 09 - Section 5 - Support Documents** |  |  |  |  |  |  |  |  |  |  |  |  |  |  |  |  |  |  |  |  |  |  |  |  |  |  |  |  |  |  |  |  |  |  |  |  |  |  |  |  |  |  |  |
|  | 02 | **CFPP - COLA Prep - Part 02 - Chapter 09 - Section 5 - Section Writing** |  | 2022-11-28 | 2023-03-03 |  |  |  |  |  |  |  |  |  |  |  |  |  |  |  |  |  |  |  |  |  |  |  |  |  |  |  |  |  |  |  |  |  |  |  |  |  |  |  |  |
| CP-P2-09-05-SW-0000 |  | Prepare Draft Rev A -Check Updated Supporting Documents -FSAR Section 9.5 / 9A | 70d | 2022-11-28 A | 2023-02-03 | IFM-CFP-TO4-0055, CP-P2-01-02-SD-0000, IFM-CFP-TO4-0025, IFM-CFP-TO4-0030, IFM-TO5-TO4-0270, IFM-SDA-TO4-0225 |  | 25d | 2022-11-28 | 2023-03-06 | 171d | 0d | start on or after 2022-11-28 | 2023-02-03 | Yes | Yes | x | NUSCALE |  |  | deliv | NS-REVA | As of 29nov22 start slip from 18nov22 | as of 30dec22 updated | 2023-02-03 | 03 | NuScale | FNTP | P2 | 9 | 5.0 | SDA Tie | 1 |  |  |  |  |  |  |  |  |  |  |  |  |
| CP-P2-09-05-SW-0005 |  | Review Draft Rev A - FSAR Section 09.05 / 09A (TO4 Team Review) | 10d | 2023-02-06 | 2023-02-17 | CP-P2-09-05-SW-0000 |  |  |  |  | 171d | 0d |  |  | Yes | Yes |  | NUSCALE |  |  | deliv |  |  |  |  | 03 | TO4 | FNTP | P2 |  |  |  | 2 | UDF_G1 | FIX |  |  |  |  |  |  |  |  |  |  |
| CP-P2-09-05-SW-0010 |  | Resolve Rev A Comments - FSAR Section 09.05 / 09A | 5d | 2023-02-20 | 2023-02-24 | CP-P2-09-05-SW-0005 |  |  |  |  | 171d | 0d |  |  | Yes | Yes |  | NUSCALE |  |  | deliv |  |  |  |  | 03 | NuScale | FNTP | P2 | 9 | 5.0 |  | 3 |  |  |  |  |  |  |  |  |  |  |  |  |
| CP-P2-09-05-SW-0012 |  | Confirm SDA Information and Inform Reviewers - FSAR Section 09.05 / 09A | 5d | 2023-02-27 | 2023-02-27 | CP-P2-09-05-SW-0010, PKM-0125 |  |  | 2023-02-27 | 2023-03-03 | 171d | 0d |  |  | Yes | Yes |  | FL4 |  |  | deliv |  |  |  |  | 03 | FL4 | FNTP | P2 | 1 | 1.1 | SDA Tie | 4 | UDF_G1 | FIX |  | Matt-TBD | N | NS-REV0 |  |  |  |  |  | checked pushed out by pred |
| CP-P2-09-05-SW-0015 |  | Issue Rev 0 - FSAR Section 9.05 / 09A | 5d | 2023-02-27 | 2023-03-03 | CP-P2-09-05-SW-0012 |  |  |  |  | 171d | 151d |  |  | Yes | Yes |  | NUSCALE |  |  | deliv |  |  |  |  | 03 | NuScale | FNTP | P2 | 9 | 5.0 | SDA Tie | 5 | UDF_G3 |  |  |  | N | NS-REV0 | 2023-03-09 | 5 | 56COL.P2.CH09.390 | nuscale |  |  |
|  | 10 | **CFPP - COLA Prep - Part 02 - Chapter 10 Steam & Power Conversion System** |  | 2022-04-25 | 2023-02-23 |  |  |  |  |  |  |  |  |  |  |  |  |  |  |  |  |  |  |  |  |  |  |  |  |  |  |  |  |  |  |  |  |  |  |  |  |  |  |  |  |
|  | 01 | **CFPP - COLA Prep - Part 02 - Chapter 10 - Section 1 Summary Description** |  | 2022-04-25 | 2023-01-16 |  |  |  |  |  |  |  |  |  |  |  |  |  |  |  |  |  |  |  |  |  |  |  |  |  |  |  |  |  |  |  |  |  |  |  |  |  |  |  |  |
|  | 01 | **CFPP - COLA Prep - Part 02 - Chapter 10 - Section 1 - Support Documents** |  |  |  |  |  |  |  |  |  |  |  |  |  |  |  |  |  |  |  |  |  |  |  |  |  |  |  |  |  |  |  |  |  |  |  |  |  |  |  |  |  |  |  |
|  | 02 | **CFPP - COLA Prep - Part 02 - Chapter 10 - Section 1 - Section Writing** |  | 2022-04-25 | 2023-01-16 |  |  |  |  |  |  |  |  |  |  |  |  |  |  |  |  |  |  |  |  |  |  |  |  |  |  |  |  |  |  |  |  |  |  |  |  |  |  |  |  |
| CP-P2-10-01-SW-0000 |  | Prepare Draft Rev A -Check Updated Supporting Documents -FSAR Section 10.01 | 128d | 2022-04-25 A | 2022-11-22 A | IFM-TO5-TO4-0035, IFM-TO5-TO4-0115 SS, CP-P2-03-05-SD-0000 FF, IFM-SDA-TO4-0360 FF+20d | 100% |  | 2022-04-25 | 2022-10-24 |  |  |  |  | Yes | Yes |  | FL4 |  |  | deliv | FL4-REVA | As of 29nov22 finish slip from 31oct22 complete |  |  | 03 | FL4 | FNTP | P2 | 10 |  | SDA Tie | 1 | UDF_G3 |  | oct update finish slip from 31oct22 | Chris |  |  |  |  |  |  |  |  |
| CP-P2-10-01-SW-0005 |  | Review Draft Rev A - FSAR Section 10.01 (TO4 Team Review) | 10d | 2022-12-19 A | 2023-01-02 | CP-P2-10-01-SW-0000 |  | 1d |  |  | 205d | 0d |  | 2023-01-02 | Yes | Yes |  | FL4 |  |  | deliv |  | As of 29nov22 delay by SDA content availability |  |  | 03 | TO4 | FNTP | P2 |  |  |  | 2 | UDF_G1 | FIX |  | Chris |  |  |  |  |  |  |  |  |
| CP-P2-10-01-SW-0010 |  | Resolve Rev A Comments - FSAR Section 10.01 | 5d | 2023-01-03 | 2023-01-09 | CP-P2-10-01-SW-0005 |  |  |  |  | 205d | 0d |  |  | Yes | Yes |  | FL4 |  |  | deliv |  | As of 29nov22 delay by SDA content availability |  |  | 03 | FL4 | FNTP | P2 |  |  |  | 3 | UDF_G1 |  |  | Chris |  |  |  |  |  |  |  |  |
| CP-P2-10-01-SW-0012 |  | Confirm SDA Information and Inform Reviewers - FSAR Section 10.1 | 5d | 2023-01-10 | 2023-01-10 | CP-P2-10-01-SW-0010, PKM-0125 |  |  | 2023-01-10 | 2023-01-16 | 205d | 0d |  |  | Yes | Yes |  | FL4 |  |  | deliv |  |  | as of 30dec22 updated pred delayed |  | 03 | FL4 | FNTP | P2 |  |  | SDA Tie | 4 | UDF_G1 | FIX |  | Matt-TBD | F | FL4-REV0 |  |  |  |  |  |  |
| CP-P2-10-01-SW-0015 |  | Issue Rev 0 - FSAR Section 10.01 | 5d | 2023-01-10 | 2023-01-16 | CP-P2-10-01-SW-0012 |  |  |  |  | 205d | 28d |  |  | Yes | Yes |  | FL4 |  |  | deliv |  |  |  |  | 03 | FL4 | FNTP | P2 |  |  | SDA Tie | 5 | UDF_G1 |  |  | Chris | F | FL4-REV0 |  |  |  |  | oct update "Confirm SDA date" driving out |  |

Notes:
- CP-P2-09-04-SW-0000: 12B DEC EOM Notes: as of 30dec22 updated
- CP-P2-09-04-SW-0012: 12B DEC EOM Notes: In parallel with Team Review (hold duration at 5d)
- CP-P2-09-05-SW-0000: 12B DEC EOM Notes: as of 30dec22 updated
- CP-P2-09-05-SW-0012: 12B DEC EOM Notes: In parallel with Team Review (hold duration at 5d)
- CP-P2-10-01-SW-0005: 12B DEC EOM Notes: as of 30dec22 updated
- CP-P2-10-01-SW-0012: 12B DEC EOM Notes: as of 30dec22 updated pred delayed In parallel with Team Review (hold duration at 5d)

| ID | WBS | Activity | Duration | Start | Finish | Predecessors | Complete | Remaining | Planned start | Planned finish | Total float | Free float | Expected finish | UDF Indicator 01 | zText_02 | zText_Level 3 Schedule | Deliverable Owner | Rebaseline details | doc type | 10B OCT EOM Notes | PREPDRFTREVA | 11B NOV EOM Notes | CFPP, LLC WBS Structure | Author | Period of Performance | Part | Chapter | SDA needed | activity step | SDA ties | CFPP - Contractor's Remarks | SDA ACT | REV0 - SDA | 10A OCT MIDMONTH Notes | zText_CFPP Look Ahead Notes | Monthly Variance | SDA cleanup notes | Section | Comments | VERIFIED MONTHLY UPDATE | 9A SEP EOM Notes |
| --- | --- | --- | --- | --- | --- | --- | --- | --- | --- | --- | --- | --- | --- | --- | --- | --- | --- | --- | --- | --- | --- | --- | --- | --- | --- | --- | --- | --- | --- | --- | --- | --- | --- | --- | --- | --- | --- | --- | --- | --- | --- |
|  | 02 | **CFPP - COLA Prep - Part 02 - Chapter 10 - Section 2 Turbine Generator** |  | 2022-04-25 | 2023-01-16 |  |  |  |  |  |  |  |  |  |  |  |  |  |  |  |  |  |  |  |  |  |  |  |  |  |  |  |  |  |  |  |  |  |  |  |  |
|  | 01 | **CFPP - COLA Prep - Part 02 - Chapter 10 - Section 2 - Support Documents** |  |  |  |  |  |  |  |  |  |  |  |  |  |  |  |  |  |  |  |  |  |  |  |  |  |  |  |  |  |  |  |  |  |  |  |  |  |  |  |
|  | 02 | **CFPP - COLA Prep - Part 02 - Chapter 10 - Section 2 - Section Writing** |  | 2022-04-25 | 2023-01-16 |  |  |  |  |  |  |  |  |  |  |  |  |  |  |  |  |  |  |  |  |  |  |  |  |  |  |  |  |  |  |  |  |  |  |  |  |
| CP-P2-10-02-SW-0000 |  | Prepare Draft Rev A -Check Updated Supporting Documents -FSAR Section 10.02 | 128d | 2022-04-25 A | 2022-11-16 A | IFM-TO5-TO4-0035, IFM-TO5-TO4-0115 SS, CP-P2-03-05-SD-0000 FF, IFM-SDA-TO4-0370 FF+20d | 100% |  | 2022-04-25 | 2022-10-24 |  |  |  | UDF_G3 | Yes | Yes | Chris | FL4 | deliv | oct update finish slip from 31oct22 | FL4-REVA | As of 29nov22 finish slip from 31oct22 complete | 03 | FL4 | FNTP | P2 | 10 | SDA Tie | 1 |  |  |  |  |  |  |  |  |  |  |  |  |
| CP-P2-10-02-SW-0005 |  | Review Draft Rev A - FSAR Section 10.02 (TO4 Team Review) | 10d | 2022-12-19 A | 2023-01-02 | CP-P2-10-02-SW-0000 |  | 1d | 2023-01-03 | 2023-01-16 | 205d | 0d | 2023-01-02 | UDF_G1 | Yes | Yes | Chris | FL4 | deliv |  |  | As of 29nov22 delay by SDA content availability | 03 | TO4 | FNTP | P2 |  |  | 2 | FIX | as of 30dec22 updated |  |  |  |  |  |  |  |  |  |  |
| CP-P2-10-02-SW-0010 |  | Resolve Rev A Comments - FSAR Section 10.02 | 5d | 2023-01-03 | 2023-01-09 | CP-P2-10-02-SW-0005 |  |  |  |  | 205d | 0d |  | UDF_G1 | Yes | Yes | Chris | FL4 | deliv | oct update finish MF 22dec22 |  | As of 29nov22 delay by SDA content availability | 03 | FL4 | FNTP | P2 |  |  | 3 |  |  |  |  |  |  |  |  |  |  |  |  |
| CP-P2-10-02-SW-0012 |  | Confirm SDA Information and Inform Reviewers - FSAR Section 10.2 | 5d | 2023-01-10 | 2023-01-10 | CP-P2-10-02-SW-0010, PKM-0125 |  |  | 2023-01-10 | 2023-01-16 | 205d | 0d |  | UDF_G1 | Yes | Yes | Matt-TBD | FL4 | deliv |  |  |  | 03 | FL4 | FNTP | P2 |  | SDA Tie | 4 | FIX | as of 30dec22 updated pred delayed | F | FL4-REV0 |  |  |  |  |  |  |  |  |
| CP-P2-10-02-SW-0015 |  | Issue Rev 0 - FSAR Section 10.02 | 5d | 2023-01-10 | 2023-01-16 | CP-P2-10-02-SW-0012 |  |  |  |  | 205d | 28d |  | UDF_G1 | Yes | Yes | Chris | FL4 | deliv |  |  |  | 03 | FL4 | FNTP | P2 |  | SDA Tie | 5 |  |  | F | FL4-REV0 | oct update "Confirm SDA date" driving out |  |  |  |  |  |  |  |
|  | 03 | **CFPP - COLA Prep - Part 02 - Chapter 10 - Section 3 Main Steam System** |  | 2022-04-25 | 2023-02-23 |  |  |  |  |  |  |  |  |  |  |  |  |  |  |  |  |  |  |  |  |  |  |  |  |  |  |  |  |  |  |  |  |  |  |  |  |
|  | 01 | **CFPP - COLA Prep - Part 02 - Chapter 10 - Section 3 - Support Documents** |  |  |  |  |  |  |  |  |  |  |  |  |  |  |  |  |  |  |  |  |  |  |  |  |  |  |  |  |  |  |  |  |  |  |  |  |  |  |  |
|  | 02 | **CFPP - COLA Prep - Part 02 - Chapter 10 - Section 3 - Section Writing** |  | 2022-04-25 | 2023-02-23 |  |  |  |  |  |  |  |  |  |  |  |  |  |  |  |  |  |  |  |  |  |  |  |  |  |  |  |  |  |  |  |  |  |  |  |  |
| CP-P2-10-03-SW-0000 |  | Prepare Draft Rev A -Check Updated Supporting Documents -FSAR Section 10.03 | 128d | 2022-04-25 A | 2023-01-26 | IFM-TO5-TO4-0115 SS, IFM-SDA-TO4-0380 FF+20d |  | 19d | 2022-04-25 | 2022-10-24 | 177d | 0d | 2023-01-26 | UDF_G3 | Yes | Yes | Chris | FL4 | deliv | oct update finish slip from 31oct22 | FL4-REVA | As of 29nov22 finish slip from 30nov22 Need SDA | 03 | FL4 | FNTP | P2 | 10 | SDA Tie | 1 |  |  |  |  |  | Y | Oct |  |  |  |  |  |
| CP-P2-10-03-SW-0005 |  | Review Draft Rev A - FSAR Section 10.03 (TO4 Team Review) | 10d | 2023-01-27 | 2023-02-09 | CP-P2-10-03-SW-0000 |  |  |  |  | 177d | 0d |  | UDF_G1 | Yes | Yes | Chris | FL4 | deliv | oct update start slip out |  | As of 29nov22 pred finish slip out | 03 | TO4 | FNTP | P2 |  |  | 2 | FIX |  |  |  |  |  |  |  |  |  |  |  |
| CP-P2-10-03-SW-0010 |  | Resolve Rev A Comments - FSAR Section 10.03 | 5d | 2023-02-10 | 2023-02-16 | CP-P2-10-03-SW-0005 |  |  |  |  | 177d | 0d |  | UDF_G1 | Yes | Yes | Chris | FL4 | deliv | oct update finish MF 22dec22 |  |  | 03 | FL4 | FNTP | P2 |  |  | 3 |  |  |  |  |  |  |  |  |  |  |  |  |
| CP-P2-10-03-SW-0012 |  | Confirm SDA Information and Inform Reviewers - FSAR Section 10.3 | 5d | 2023-02-17 | 2023-02-17 | CP-P2-10-03-SW-0010, PKM-0125 |  |  | 2023-02-17 | 2023-02-23 | 177d | 0d |  | UDF_G1 | Yes | Yes | Matt-TBD | FL4 | deliv |  |  |  | 03 | FL4 | FNTP | P2 |  | SDA Tie | 4 | FIX |  | F | FL4-REV0 |  |  |  |  |  |  |  |  |
| CP-P2-10-03-SW-0015 |  | Issue Rev 0 - FSAR Section 10.03 | 5d | 2023-02-17 | 2023-02-23 | CP-P2-10-03-SW-0012 |  |  |  |  | 177d | 0d |  | UDF_G1 | Yes | Yes | Chris | FL4 | deliv |  |  |  | 03 | FL4 | FNTP | P2 |  | SDA Tie | 5 |  |  | F | FL4-REV0 | oct update "Confirm SDA date" driving out |  |  |  |  |  |  |  |
|  | 04 | **CFPP - COLA Prep - Part 02 - Chapt 10 - Section 4 Other Features of Steam & Power Conversion System** |  | 2022-04-25 | 2023-02-23 |  |  |  |  |  |  |  |  |  |  |  |  |  |  |  |  |  |  |  |  |  |  |  |  |  |  |  |  |  |  |  |  |  |  |  |  |
|  | 01 | **CFPP - COLA Prep - Part 02 - Chapter 10 - Section 4 - Support Documents** |  | 2022-05-02 | 2022-11-17 |  |  |  |  |  |  |  |  |  |  |  |  |  |  |  |  |  |  |  |  |  |  |  |  |  |  |  |  |  |  |  |  |  |  |  |  |
| CP-P2-10-04-SD-0000 |  | Provide Aux boiler system fuel supply | 4d | 2022-05-02 A | 2022-05-05 A | IFM-TO5-TO4-0115 | 100% |  |  |  |  |  |  | UDF_G3 | Yes | Yes | Chris | FL4 | supt |  |  |  | 03 | FL4 | FNTP | P2 |  |  |  |  |  |  |  |  |  |  |  |  |  |  |  |
| CP-P2-10-04-SD-0010 |  | Description Secondary side chemistry from EPRI PWR Guidelines & NEI 97-06 (Delete - Pending PDN) | 40d | 2022-05-13 A | 2022-05-31 A | PKM-0000, PKM-0035, IFM-TO5-TO4-0115 | 100% |  | 2022-05-02 | 2022-06-27 |  |  |  | UDF_G3 | Yes | Yes | Chris | FL4 | supt |  |  |  | 03 | NuScale | FNTP | P2 | 10 |  |  |  |  |  |  |  |  |  | completed as RFI response need forecast finish date | 4.0 |  |  |  |
| CP-P2-10-04-SD-0005 |  | CPS polisher resin volume per train/frequency of transport for regeneration | 40d | 2022-06-15 A | 2022-08-18 A | PKM-0000, PKM-0035, IFM-TO5-TO4-0115 | 100% |  | 2022-05-31 | 2022-07-27 |  |  |  | UDF_G3 | Yes | Yes | Chris | FL4 | supt |  |  |  | 03 | FL4 | FNTP | P2 |  |  |  |  |  |  |  |  |  |  | checked no update |  | 1 |  |  |
| CP-P2-10-04-SD-0015 |  | Calculation for number/size of new/spent resin tanks & quantity of resin in condensate polishing | 50d | 2022-07-28 A | 2022-11-17 A | CP-P2-10-04-SD-0005 SS | 100% |  | 2022-07-28 | 2022-10-06 |  |  |  | UDF_G3 | Yes | Yes | Chris | FL4 | supt |  |  | As of 29nov22 complete | 03 | FL4 | FNTP | P2 |  |  |  |  |  |  |  |  | Y |  | checked no update |  |  | x | Sep update finish slip from 6oct |
|  | 02 | **CFPP - COLA Prep - Part 02 - Chapter 10 - Section 4 - Section Writing** |  | 2022-04-25 | 2023-02-23 |  |  |  |  |  |  |  |  |  |  |  |  |  |  |  |  |  |  |  |  |  |  |  |  |  |  |  |  |  |  |  |  |  |  |  |  |
| CP-P2-10-04-SW-0000 |  | Prepare Draft Rev A -Check Updated Supporting Documents -FSAR Section 10.04 | 128d | 2022-04-25 A | 2023-01-26 | CP-P2-10-04-SD-0000 FF, CP-P2-10-04-SD-0005 FF, CP-P2-10-04-SD-0010 FF, CP-P2-10-04-SD-0015 FF, IFM-SDA-TO4-0390 FF+20d |  | 19d | 2022-04-25 | 2022-10-24 | 152d | 0d | 2023-01-26 | UDF_G3 | Yes | Yes | Chris | FL4 | deliv |  | FL4-REVA | As of 29nov22 finish slip from 23nov22 Need SDA | 03 | FL4 | FNTP | P2 | 10 | SDA Tie | 1 |  |  |  |  |  |  |  |  |  |  | x | Sep update finish slip from 31oct |
| CP-P2-10-04-SW-0005 |  | Review Draft Rev A - FSAR Section 10.04 (TO4 Team Review) | 10d | 2023-01-27 | 2023-02-09 | CP-P2-10-04-SW-0000 |  |  |  |  | 152d | 0d |  | UDF_G1 | Yes | Yes | Chris | FL4 | deliv |  |  | As of 29nov22 pred finish slip out | 03 | TO4 | FNTP | P2 |  |  | 2 | FIX |  |  |  |  |  |  |  |  |  |  |  |
| CP-P2-10-04-SW-0010 |  | Resolve Rev A Comments - FSAR Section 10.04 | 5d | 2023-02-10 | 2023-02-16 | CP-P2-10-04-SW-0005 |  |  |  |  | 177d | 0d |  | UDF_G1 | Yes | Yes | Chris | FL4 | deliv |  |  |  | 03 | FL4 | FNTP | P2 |  |  | 3 |  |  |  |  |  |  |  |  |  |  |  |  |
| CP-P2-10-04-SW-0012 |  | Confirm SDA Information and Inform Reviewers - FSAR Section 10.4 | 5d | 2023-02-17 | 2023-02-17 | CP-P2-10-04-SW-0010, PKM-0125 |  |  | 2023-02-17 | 2023-02-23 | 177d | 0d |  | UDF_G1 | Yes | Yes | Matt-TBD | FL4 | deliv |  |  |  | 03 | FL4 | FNTP | P2 |  | SDA Tie | 4 | FIX |  | F | FL4-REV0 |  |  |  |  |  |  |  |  |
| CP-P2-10-04-SW-0015 |  | Issue Rev 0 - FSAR Section 10.04 | 5d | 2023-02-17 | 2023-02-23 | CP-P2-10-04-SW-0012 |  |  |  |  | 177d | 0d |  | UDF_G1 | Yes | Yes | Chris | FL4 | deliv |  |  |  | 03 | FL4 | FNTP | P2 |  | SDA Tie | 5 |  |  | F | FL4-REV0 | oct update "Confirm SDA date" driving out |  |  |  |  |  |  |  |

Notes:
- CP-P2-10-02-SW-0005: 12B DEC EOM Notes: as of 30dec22 updated
- CP-P2-10-02-SW-0012: 12B DEC EOM Notes: as of 30dec22 updated pred delayed In parallel with Team Review (hold duration at 5d)
- CP-P2-10-03-SW-0012: 12B DEC EOM Notes: In parallel with Team Review (hold duration at 5d)
- CP-P2-10-04-SW-0012: 12B DEC EOM Notes: In parallel with Team Review (hold duration at 5d)

| ID | WBS | Activity | Duration | Start | Finish | Predecessors | Complete | Remaining | Planned start | Planned finish | Total float | Free float | Constraint | Expected finish | zText_02 | zText_Level 3 Schedule | VERIFIED MONTHLY UPDATE | Rebaseline details | 9A SEP EOM Notes | NEED UPDATE | Monthly Variance | doc type | nuscale comp | 10A OCT MIDMONTH Notes | PREPDRFTREVA | 10C OCT Monthly Report Notes | Forecast Finish | Forecast Start | CFPP, LLC WBS Structure | Author | Period of Performance | Part | Chapter | Section | SDA needed | activity step | UDF Indicator 01 | SDA ties | Deliverable Owner | SDA ACT | REV0 - SDA | 12B DEC EOM Notes | Contractor Date | DELTA | Nuscale ACT Number | Reconcile Rev 0 Milestones | 11A NOV MIDMONTH Notes | CFPP - Contractor's Remarks | Progress Deliv Sheet Milestone # | zText_CFPP Look Ahead Notes | Critcal Path | z_Text-4 |
| --- | --- | --- | --- | --- | --- | --- | --- | --- | --- | --- | --- | --- | --- | --- | --- | --- | --- | --- | --- | --- | --- | --- | --- | --- | --- | --- | --- | --- | --- | --- | --- | --- | --- | --- | --- | --- | --- | --- | --- | --- | --- | --- | --- | --- | --- | --- | --- | --- | --- | --- | --- | --- |
|  | 11 | **CFPP - COLA Prep - Part 02 - Chapter 11 Radioactive Waste Management** |  | 2022-06-30 | 2023-11-02 |  |  |  |  |  |  |  |  |  |  |  |  |  |  |  |  |  |  |  |  |  |  |  |  |  |  |  |  |  |  |  |  |  |  |  |  |  |  |  |  |  |  |  |  |  |  |  |
|  | 01 | **CFPP - COLA Prep - Part 02 - Chapter 11 - Section 1 Source Terms** |  | 2023-01-06 | 2023-03-30 |  |  |  |  |  |  |  |  |  |  |  |  |  |  |  |  |  |  |  |  |  |  |  |  |  |  |  |  |  |  |  |  |  |  |  |  |  |  |  |  |  |  |  |  |  |  |  |
|  | 01 | **CFPP - COLA Prep - Part 02 - Chapter 11 - Section 1 - Support Documents** |  |  |  |  |  |  |  |  |  |  |  |  |  |  |  |  |  |  |  |  |  |  |  |  |  |  |  |  |  |  |  |  |  |  |  |  |  |  |  |  |  |  |  |  |  |  |  |  |  |  |
|  | 02 | **CFPP - COLA Prep - Part 02 - Chapter 11 - Section 1 - Section Writing** |  | 2023-01-06 | 2023-03-30 |  |  |  |  |  |  |  |  |  |  |  |  |  |  |  |  |  |  |  |  |  |  |  |  |  |  |  |  |  |  |  |  |  |  |  |  |  |  |  |  |  |  |  |  |  |  |  |
| CP-P2-11-01-SW-0000 |  | Prepare Draft Rev A -Check Updated Supporting Documents -FSAR Section 11.01 | 25d | 2023-01-06 | 2023-03-02 | IFM-SDA-TO4-0125 |  |  | 2023-01-06 | 2023-02-09 | 103d | 0d | start on or after 2023-01-06 |  | Yes | Yes | x | NUSCALE | Sep update start slip from 30sep | OCT | Oct | deliv | nuscalex11. | oct update start moving out to 5jan23 | NS-REVA | in Nuscale report as delayed (confirmed) | 2023-03-02 | 2023-01-06 | 03 | NuScale | FNTP | P2 | 11 | 1 | SDA Tie | 1 |  |  |  |  |  |  |  |  |  |  |  |  |  |  |  |  |
| CP-P2-11-01-SW-0005 |  | Review Draft Rev A - FSAR Section 11.01 (TO4 Team Review) | 10d | 2023-03-03 | 2023-03-16 | CP-P2-11-01-SW-0000 |  |  |  |  | 152d | 0d |  |  | Yes | Yes |  | NUSCALE |  |  |  | deliv | nuscalex11. |  |  |  |  |  | 03 | TO4 | FNTP | P2 |  |  |  | 2 | UDF_G1 | FIX |  |  |  |  |  |  |  |  |  |  |  |  |  |  |
| CP-P2-11-01-SW-0010 |  | Resolve Rev A Comments - FSAR Section 11.01 | 5d | 2023-03-17 | 2023-03-23 | CP-P2-11-01-SW-0005 |  |  |  |  | 152d | 0d |  |  | Yes | Yes |  | NUSCALE |  |  |  | deliv | nuscalex11. |  |  | in Nuscale report as delayed (confirmed) |  |  | 03 | NuScale | FNTP | P2 | 11 | 1 |  | 3 |  |  |  |  |  |  |  |  |  |  |  |  |  |  |  |  |
| CP-P2-11-01-SW-0012 |  | Confirm SDA Information and Inform Reviewers - FSAR Section 11.01 | 5d | 2023-03-24 | 2023-03-24 | CP-P2-11-01-SW-0010, PKM-0125 |  |  | 2023-03-24 | 2023-03-30 | 152d | 0d |  |  | Yes | Yes |  | FL4 |  |  |  | deliv | nuscalex11. |  |  |  |  |  | 03 | FL4 | FNTP | P2 |  |  | SDA Tie | 4 | UDF_G1 | FIX | Matt-TBD | N | NS-REV0 | In parallel with Team Review (hold duration at 5d) |  |  |  |  |  |  |  |  |  |  |
| CP-P2-11-01-SW-0015 |  | Issue Rev 0 - FSAR Section 11.01 | 5d | 2023-03-24 | 2023-03-30 | CP-P2-11-01-SW-0012 |  |  |  |  | 152d |  |  |  | Yes | Yes |  | NUSCALE |  |  |  | deliv | nuscalex11. | oct update "Confirm SDA date" driving out |  | in Nuscale report as delayed (confirmed) |  |  | 03 | NuScale | FNTP | P2 | 11 | 1 | SDA Tie | 5 | UDF_G3 |  |  | N | NS-REV0 |  | 2022-11-30 | 8 | 56COL.P2.CH11.200 |  |  |  |  |  |  |  |
|  | 02 | **CFPP - COLA Prep - Part 02 - Chapter 11 - Section 2 Liquid Waste Management System** |  | 2022-09-23 | 2023-06-05 |  |  |  |  |  |  |  |  |  |  |  |  |  |  |  |  |  |  |  |  |  |  |  |  |  |  |  |  |  |  |  |  |  |  |  |  |  |  |  |  |  |  |  |  |  |  |  |
|  | 01 | **CFPP - COLA Prep - Part 02 - Chapter 11 - Section 2 - Support Documents** |  | 2022-09-23 | 2023-06-05 |  |  |  |  |  |  |  |  |  |  |  |  |  |  |  |  |  |  |  |  |  |  |  |  |  |  |  |  |  |  |  |  |  |  |  |  |  |  |  |  |  |  |  |  |  |  |  |
| CP-P2-11-02-SD-0000 |  | Provide NuScale Liquid Radwaste Source Items | 30d | 2022-09-23 A | 2022-09-23 A | IFM-TO5-TO4-0210 | 100% |  | 2022-10-17 | 2022-11-28 |  |  |  |  | Yes | Yes |  | NUSCALE |  | OCT |  | supt | zld |  |  | in Nuscale report as delayed (actually accelerated finish) |  |  | 03 | NuScale | FNTP | P2 | 11 | 2.0 |  |  |  |  |  |  |  |  |  |  |  |  |  |  |  |  |  |  |
| CP-P2-11-02-SD-0015 |  | Description of Radwaste Tank Failure Analysis | 80d | 2022-10-17 A | 2023-02-10 | IFM-TO5-TO4-0210 |  | 30d | 2022-12-16 | 2023-04-07 | 146d | 0d |  | 2023-02-10 | Yes | Yes |  | NUSCALE |  |  | Oct | supt |  |  |  | in Nuscale report as delayed (actually accelerated finish) | 2023-02-10 |  | 03 | NuScale | FNTP | P2 | 11 | 2.0 |  |  |  |  |  |  |  |  |  |  |  | 11.02 | As of 15nov22 10feb23 new forecast finish |  |  |  |  |  |
| CP-P2-11-02-SD-0010 |  | Perform Dose Analysis for Liquid Effluents Based on the NuScale Source Terms | 50d | 2023-02-13 | 2023-04-07 | CP-P2-11-02-SD-0000 SS |  |  | 2023-02-13 | 2023-04-21 | 65d | 0d | start on or after 2023-02-13 |  | Yes | Yes |  | NUSCALE |  |  |  | supt | zld |  |  | in Nuscale report as delayed (no change) | 2023-04-07 | 2023-02-13 | 03 | NuScale | FNTP | P2 | 11 | 2.0 |  |  |  |  |  |  |  |  |  |  |  |  |  |  |  |  |  |  |
| CP-P2-11-02-SD-0005 |  | Perform Radwaste System Cost-Benefit Analysis | 40d | 2023-04-10 | 2023-06-05 | IFM-TO5-TO4-0210, CP-P2-11-02-SD-0010, CP-P2-11-02-SD-0015 |  |  |  |  | 226d |  | start on or after 2023-04-10 |  | Yes | Yes |  | NUSCALE |  |  |  | supt |  |  |  | in Nuscale report as delayed (no change) | 2023-06-05 | 2023-04-10 | 03 | NuScale | FNTP | P2 | 11 | 2.0 |  |  |  |  |  |  |  |  |  |  |  | 11.02 |  |  |  |  |  |  |
|  | 02 | **CFPP - COLA Prep - Part 02 - Chapter 11 - Section 2 - Section Writing** |  | 2023-02-13 | 2023-05-19 |  |  |  |  |  |  |  |  |  |  |  |  |  |  |  |  |  |  |  |  |  |  |  |  |  |  |  |  |  |  |  |  |  |  |  |  |  |  |  |  |  |  |  |  |  |  |  |
| CP-P2-11-02-SW-0000 |  | Prepare Draft Rev A -Check Updated Supporting Documents -FSAR Section 11.02 | 50d | 2023-02-13 | 2023-04-21 | CP-P2-11-02-SD-0000, CP-P2-11-02-SD-0015 SS, CP-P2-11-02-SD-0010 SS, IFM-SDA-TO4-0230 |  |  |  |  | 116d | 0d | start on or after 2023-02-13 |  | Yes | Yes |  | NUSCALE |  |  |  | deliv | zld nuscalex11. | oct update start moving out to 5jan23 Critical Path? | NS-REVA | in Nuscale report as delayed (no change) | 2023-08-01 | 2023-02-13 | 03 | NuScale | FNTP | P2 | 11 | 2.0 | SDA Tie | 1 |  |  |  |  |  | as of 30dec22 updated remove pred CP-P2-11-02-SD-0005 FF |  |  |  | 11.02 |  | as of 30dec22 updated remove pred CP-P2-11-02-SD-0005 FF |  |  |  |  |
| CP-P2-11-02-SW-0005 |  | Review Draft Rev A - FSAR Section 11.02 (TO4 Team Review) | 10d | 2023-04-24 | 2023-05-05 | CP-P2-11-02-SW-0000 |  |  |  |  | 116d | 0d |  |  | Yes | Yes |  | NUSCALE |  |  |  | deliv | zld nuscalex11. |  |  |  |  |  | 03 | TO4 | FNTP | P2 |  |  |  | 2 | UDF_G1 | FIX |  |  |  |  |  |  |  | 11.02 |  |  |  |  |  |  |
| CP-P2-11-02-SW-0010 |  | Resolve Rev A Comments - FSAR Section 11.02 | 5d | 2023-05-08 | 2023-05-12 | CP-P2-11-02-SW-0005 |  |  |  |  | 116d | 0d |  |  | Yes | Yes |  | NUSCALE |  |  |  | deliv | zld nuscalex11. |  |  | in Nuscale report as delayed (no change) |  |  | 03 | NuScale | FNTP | P2 | 11 | 2.0 |  | 3 |  |  |  |  |  |  |  |  |  | 11.02 |  |  |  |  |  |  |
| CP-P2-11-02-SW-0012 |  | Confirm SDA Information and Inform Reviewers - FSAR Section 11.02 | 5d | 2023-05-15 | 2023-05-15 | CP-P2-11-02-SW-0010, PKM-0125 |  |  | 2023-05-15 | 2023-05-19 | 116d | 0d |  |  | Yes | Yes |  | FL4 |  |  |  | deliv | zld nuscalex11. |  |  |  |  |  | 03 | FL4 | FNTP | P2 | 1 | 1.1 | SDA Tie | 4 | UDF_G1 | FIX | Matt-TBD | N | NS-REV0 | In parallel with Team Review (hold duration at 5d) |  |  |  |  |  |  |  |  |  |  |
| CP-P2-11-02-SW-0015 |  | Issue Rev 0 - FSAR Section 11.02 | 5d | 2023-05-15 | 2023-05-19 | CP-P2-11-02-SW-0012 |  |  |  |  | 116d |  |  |  | Yes | Yes |  | NUSCALE |  |  |  | deliv | nuscalex11. |  |  | in Nuscale report as delayed (no change) |  |  | 03 | NuScale | FNTP | P2 | 11 | 2.0 | SDA Tie | 5 | UDF_G1 |  |  | N | NS-REV0 |  | 2023-07-28 | 62 | 56COL.P2.CH11.210. | 11.02 |  |  |  |  |  |  |
|  | 03 | **CFPP - COLA Prep - Part 02 - Chapter 11 - Section 3 Gaseous Waste Management System** |  | 2022-06-30 | 2023-11-02 |  |  |  |  |  |  |  |  |  |  |  |  |  |  |  |  |  |  |  |  |  |  |  |  |  |  |  |  |  |  |  |  |  |  |  |  |  |  |  |  |  |  |  |  |  |  |  |
|  | 01 | **CFPP - COLA Prep - Part 02 - Chapter 11 - Section 3 - Support Documents** |  | 2022-06-30 | 2023-09-07 |  |  |  |  |  |  |  |  |  |  |  |  |  |  |  |  |  |  |  |  |  |  |  |  |  |  |  |  |  |  |  |  |  |  |  |  |  |  |  |  |  |  |  |  |  |  |  |
| CP-P2-11-03-SD-0000 |  | Provide info on Sensitive Receptors near CFPP Site - Prepare | 50d | 2022-06-30 A | 2022-08-08 A | IFM-TO5-TO4-0265 | 100% |  | 2022-07-01 | 2022-09-12 |  |  |  |  | Yes | Yes |  | S&L |  |  |  | supt |  |  |  |  |  |  | 03 | S&L | FNTP | P2 | 11 | 3.0 |  |  | UDF_G3 |  |  |  |  |  |  |  |  |  |  |  | 49 |  |  |  |
| CP-P2-11-03-SD-0005 |  | Provide info on Sensitive Receptors near CFPP Site - TO4 External Review / Comments Received | 50d | 2022-08-09 A | 2022-08-22 A | CP-P2-11-03-SD-0000 | 100% |  | 2022-08-09 | 2022-10-18 |  |  |  |  | Yes | Yes |  | S&L | Sep update |  |  | supt |  |  |  |  |  |  | 03 | S&L | FNTP | P2 | 11 | 3.0 |  |  | UDF_G3 |  |  |  |  |  |  |  |  |  |  |  | 49 |  |  |  |
| CP-P2-11-03-SD-0007 |  | Provide info on Sensitive Receptors near CFPP Site - Comment Resolution / Issue Final | 50d | 2022-08-23 A | 2022-09-30 A | CP-P2-11-03-SD-0005 | 100% |  | 2022-08-23 | 2022-11-01 |  |  |  |  | Yes | Yes |  | S&L | Sep update |  |  | supt |  |  |  |  |  |  | 03 | S&L | FNTP | P2 | 11 | 3.0 |  |  | UDF_G3 |  |  |  |  |  |  |  |  |  |  |  | 49 | Y |  |  |
| CP-P2-11-03-SD-0020 |  | Perform Dose Analysis for Gaseous Effluents Based on the NuScale Source Terms | 40d | 2023-05-15 | 2023-07-11 | PKM-0120, CP-P2-02-03-SD-0125, CP-P2-11-03-SD-0007 |  |  |  |  | 41d | 28d | start on or after 2023-05-15 |  | Yes | Yes |  | NUSCALE |  |  |  | supt |  |  |  | in Nuscale report as delayed (no change) | 2023-07-11 | 2023-05-15 | 03 | NuScale | FNTP | P2 | 11 | 3.0 |  |  |  |  |  |  |  | as of 30dec22 updated |  |  |  |  |  | as of 30dec22 updated |  |  |  |  |
| CP-P2-11-03-SD-0015 |  | Perform Dose Analysis for Waste Gas System Failure | 40d | 2023-05-16 | 2023-07-12 | CP-P2-15-01-SD-0005 |  |  |  |  | 0d |  |  |  | Yes | Yes |  | NUSCALE |  |  |  | supt |  |  |  | in Nuscale report as delayed (no change) | 2023-07-11 | 2023-05-15 | 03 | NuScale | FNTP | P2 | 11 | 3.0 |  |  |  |  |  |  |  | as of 30dec22 updated pred slip |  |  |  |  |  |  |  |  | 2 | CP-2 |
| CP-P2-11-03-SD-0010 |  | Perform Gaseous Radwaste System Cost-Benefit Analysis | 40d | 2023-07-13 | 2023-09-07 | CP-P2-11-03-SD-0015 |  |  |  |  | 0d |  |  |  | Yes | Yes |  | NUSCALE |  |  |  | supt | nuscalex5.11 |  |  | in Nuscale report as delayed (no change) | 2023-09-06 | 2023-07-12 | 03 | NuScale | FNTP | P2 | 11 | 3.0 |  |  |  |  |  |  |  | as of 30dec22 updated pred slip |  |  |  |  |  |  |  |  | 2 | CP-2 |

Notes:
- CP-P2-11-01-SW-0000: 10B OCT EOM Notes: oct update start slip from 03oct22
- CP-P2-11-02-SD-0000: SDA cleanup notes: verify predecessors from Fluor / S&L revise title DELETE carried over from SDA / 10B OCT EOM Notes: oct update finish move forward
- CP-P2-11-02-SD-0015: SDA cleanup notes: IFM-TO5-TO4-0210 Site Specific Rad Waste Equipment Design, Capabilities and Capacities - from Fluor S&L Radwaste Tank design as predecessor Site Specific Liquid Dose Calculation Radiological Consequences of a Radwaste Tank Failure Report / 10B OCT EOM Notes: oct update remove CP-P2-11-02-sd-0010 FF pred add actual start finish move forward from 07apr23 / 11B NOV EOM Notes: As of 29nov22 finish slip from 1nov22 delayed start date waiting for ZLD
- CP-P2-11-02-SW-0000: 12A DEC MIDMONTH Notes: As of 12dec22 Nuscale update ignores predecessor finish (revised predecessor SD-0005 to ff, sd-0010 and sd-0015 to ss)
- CP-P2-11-02-SW-0012: SDA cleanup notes: checked pushed out by pred
- CP-P2-11-02-SW-0015: 10B OCT EOM Notes: oct update Nuscale finish 6sep23
- CP-P2-11-03-SD-0020: 11B NOV EOM Notes: As of 29nov22 pred start slip out / 12A DEC MIDMONTH Notes: As of 12dec22 start slip from 7mar23
- CP-P2-11-03-SD-0015: 12A DEC MIDMONTH Notes: As of 12dec22 start slip from 25jan23
- CP-P2-11-03-SD-0010: 12A DEC MIDMONTH Notes: As of 12dec22 start slip from 13mar23

| ID | WBS | Activity | Duration | Start | Finish | Predecessors | Planned start | Planned finish | Total float | Free float | Constraint | UDF Indicator 01 | zText_02 | Critcal Path | zText_Level 3 Schedule | Rebaseline details | doc type | 10A OCT MIDMONTH Notes | PREPDRFTREVA | 12B DEC EOM Notes | CFPP, LLC WBS Structure | Author | Period of Performance | Part | Chapter | Section | Progress Deliv Sheet Milestone # | SDA needed | activity step | SDA ties | Deliverable Owner | SDA cleanup notes | SDA ACT | REV0 - SDA | VERIFIED MONTHLY UPDATE | 9A SEP EOM Notes | NEED UPDATE | Monthly Variance | nuscale comp | 10B OCT EOM Notes | 10C OCT Monthly Report Notes | Forecast Finish | Forecast Start | Contractor Date | DELTA | Nuscale ACT Number | Reconcile Rev 0 Milestones | CFPP - Contractor's Remarks |
| --- | --- | --- | --- | --- | --- | --- | --- | --- | --- | --- | --- | --- | --- | --- | --- | --- | --- | --- | --- | --- | --- | --- | --- | --- | --- | --- | --- | --- | --- | --- | --- | --- | --- | --- | --- | --- | --- | --- | --- | --- | --- | --- | --- | --- | --- | --- | --- | --- |
|  | 02 | **CFPP - COLA Prep - Part 02 - Chapter 11 - Section 3 - Section Writing** |  | 2023-09-08 | 2023-11-02 |  |  |  |  |  |  |  |  |  |  |  |  |  |  |  |  |  |  |  |  |  |  |  |  |  |  |  |  |  |  |  |  |  |  |  |  |  |  |  |  |  |  |  |
| CP-P2-11-03-SW-0000 |  | Prepare Draft Rev A - FSAR Section 11.03 | 10d | 2023-09-08 | 2023-09-21 | CP-P2-11-03-SD-0015, CP-P2-11-03-SD-0020, CP-P2-11-03-SD-0010 |  |  | 0d |  |  | UDF_G3 | Yes | 2 | Yes | S&L | deliv | oct update | S&L-REVA | as of 30dec22 updated pred slip | 03 | S&L | FNTP | P2 | 11 | 3.0 | 48 | No SDA | 1 |  |  |  |  |  |  |  |  |  |  |  |  |  |  |  |  |  |  |  |
| CP-P2-11-03-SW-0005 |  | Review Draft Rev A - FSAR Section 11.03 (TO4 Team Review) | 10d | 2023-09-22 | 2023-10-05 | CP-P2-11-03-SW-0000 |  |  | 0d |  |  | UDF_G1 | Yes | 2 | Yes | S&L | deliv | oct update |  |  | 03 | TO4 | FNTP | P2 |  |  | 48 |  | 2 | FIX |  |  |  |  |  |  |  |  |  |  |  |  |  |  |  |  |  |  |
| CP-P2-11-03-SW-0012 |  | Confirm SDA Information and Inform Reviewers - FSAR Section 11.03 | 0d | 2023-09-22 | 2023-09-28 | CP-P2-11-03-SW-0005 SS, PKM-0125 | 2023-09-22 | 2023-09-22 | 5d |  |  | UDF_G1 | Yes | 2 | Yes | FL4 | deliv | oct update |  | In parallel with Team Review (hold duration at 5d) | 03 | FL4 | FNTP | P2 | 1 | 1.1 |  | SDA Tie | 4 | FIX | Matt-TBD | checked pushed out by pred | S | S&L-REV0 |  |  |  |  |  |  |  |  |  |  |  |  |  |  |
| CP-P2-11-03-SW-0010 |  | Resolve Rev A Comments - FSAR Section 11.03 | 10d | 2023-10-06 | 2023-10-19 | CP-P2-11-03-SW-0012, CP-P2-11-03-SW-0005 |  |  | 0d |  |  | UDF_G1 | Yes | 2 | Yes | S&L | deliv | oct update |  | as of 30dec22 updated pred slip | 03 | S&L | FNTP | P2 | 11 | 3.0 | 48 |  | 3 |  |  |  |  |  |  |  |  |  |  |  |  |  |  |  |  |  |  |  |
| CP-P2-11-03-SW-0015 |  | Issue Rev 0 - FSAR Section 11.03 | 10d | 2023-10-20 | 2023-11-02 | CP-P2-11-03-SW-0010, CP-P2-11-03-SW-0012 |  |  | 0d |  |  | UDF_G1 | Yes | 2 | Yes | S&L | deliv | oct update |  |  | 03 | S&L | FNTP | P2 | 11 | 3.0 | 48 | SDA Tie | 5 |  |  |  | S | S&L-REV0 |  |  |  |  |  |  |  |  |  |  |  |  |  |  |
|  | 04 | **CFPP - COLA Prep - Part 02 - Chapter 11 - Section 4 Solid Waste Management System** |  | 2023-01-06 | 2023-03-30 |  |  |  |  |  |  |  |  |  |  |  |  |  |  |  |  |  |  |  |  |  |  |  |  |  |  |  |  |  |  |  |  |  |  |  |  |  |  |  |  |  |  |  |
|  | 01 | **CFPP - COLA Prep - Part 02 - Chapter 11 - Section 4 - Support Documents** |  |  |  |  |  |  |  |  |  |  |  |  |  |  |  |  |  |  |  |  |  |  |  |  |  |  |  |  |  |  |  |  |  |  |  |  |  |  |  |  |  |  |  |  |  |  |
|  | 02 | **CFPP - COLA Prep - Part 02 - Chapter 11 - Section 4 - Section Writing** |  | 2023-01-06 | 2023-03-30 |  |  |  |  |  |  |  |  |  |  |  |  |  |  |  |  |  |  |  |  |  |  |  |  |  |  |  |  |  |  |  |  |  |  |  |  |  |  |  |  |  |  |  |
| CP-P2-11-04-SW-0000 |  | Prepare Draft Rev A -Check Updated Supporting Documents -FSAR Section 11.04 | 25d | 2023-01-06 | 2023-03-02 | IFM-SDA-TO4-0060 | 2023-01-06 | 2023-02-09 | 57d | 0d | start on or after 2023-01-06 |  | Yes |  | Yes | NUSCALE | deliv | oct update start moving out to 5jan23 | NS-REVA |  | 03 | NuScale | FNTP | P2 | 11 | 4.0 |  | SDA Tie | 1 |  |  |  |  |  | X | Sep update start slip from 29sep | OCT | Oct | nuscalex11. | oct update start slip from 03oct22 | in Nuscale report as delayed (confirmed) | 2023-03-02 | 2023-01-06 |  |  |  |  |  |
| CP-P2-11-04-SW-0005 |  | Review Draft Rev A - FSAR Section 11.04 (TO4 Team Review) | 10d | 2023-03-03 | 2023-03-16 | CP-P2-11-04-SW-0000 |  |  | 57d | 0d |  | UDF_G1 | Yes |  | Yes | NUSCALE | deliv |  |  |  | 03 | TO4 | FNTP | P2 |  |  |  |  | 2 | FIX |  |  |  |  |  |  |  |  | nuscalex11. |  | in Nuscale report as delayed (confirmed) |  |  |  |  |  |  |  |
| CP-P2-11-04-SW-0010 |  | Resolve Rev A Comments - FSAR Section 11.04 | 5d | 2023-03-17 | 2023-03-23 | CP-P2-11-04-SW-0005 |  |  | 88d | 0d |  |  | Yes |  | Yes | NUSCALE | deliv |  |  |  | 03 | NuScale | FNTP | P2 | 11 | 4.0 |  |  | 3 |  |  |  |  |  |  |  |  |  | nuscalex11. |  | in Nuscale report as delayed (confirmed) |  |  |  |  |  |  |  |
| CP-P2-11-04-SW-0012 |  | Confirm SDA Information and Inform Reviewers - FSAR Section 11.4 | 5d | 2023-03-24 | 2023-03-24 | CP-P2-11-04-SW-0010, PKM-0125 | 2023-03-24 | 2023-03-30 | 88d | 0d |  | UDF_G1 | Yes |  | Yes | FL4 | deliv |  |  | In parallel with Team Review (hold duration at 5d) | 03 | FL4 | FNTP | P2 |  |  |  | SDA Tie | 4 | FIX | Matt-TBD |  | N | NS-REV0 |  |  |  |  | nuscalex11. |  | in Nuscale report as delayed (confirmed) |  |  |  |  |  |  |  |
| CP-P2-11-04-SW-0015 |  | Issue Rev 0 - FSAR Section 11.04 | 5d | 2023-03-24 | 2023-03-30 | CP-P2-11-04-SW-0012 |  |  | 88d | 0d |  | UDF_G3 | Yes |  | Yes | NUSCALE | deliv | oct update "Confirm SDA date" driving out |  |  | 03 | NuScale | FNTP | P2 | 11 | 4.0 |  | SDA Tie | 5 |  |  |  | N | NS-REV0 |  |  |  |  | nuscalex11. |  | in Nuscale report as delayed (confirmed) |  |  | 2022-12-02 | 6 | 56COL.P2.CH11.220 |  |  |
|  | 05 | **CFPP - COLA Prep - Part 02 - Chapter 11 -Section 5 Process & Effluent Rad Monitor Instru. & Sampling** |  | 2023-01-06 | 2023-03-23 |  |  |  |  |  |  |  |  |  |  |  |  |  |  |  |  |  |  |  |  |  |  |  |  |  |  |  |  |  |  |  |  |  |  |  |  |  |  |  |  |  |  |  |
|  | 01 | **CFPP - COLA Prep - Part 02 - Chapter 11 - Section 5 - Support Documents** |  |  |  |  |  |  |  |  |  |  |  |  |  |  |  |  |  |  |  |  |  |  |  |  |  |  |  |  |  |  |  |  |  |  |  |  |  |  |  |  |  |  |  |  |  |  |
|  | 02 | **CFPP - COLA Prep - Part 02 - Chapter 11 - Section 5 - Section Writing** |  | 2023-01-06 | 2023-03-23 |  |  |  |  |  |  |  |  |  |  |  |  |  |  |  |  |  |  |  |  |  |  |  |  |  |  |  |  |  |  |  |  |  |  |  |  |  |  |  |  |  |  |  |
| CP-P2-11-05-SW-0000 |  | Prepare Draft Rev A -Check Updated Supporting Documents -FSAR Section 11.05 | 50d | 2023-01-06 | 2023-02-23 | IFM-SDA-TO4-0235 | 2023-01-06 | 2023-03-16 | 96d | 0d | start on or after 2023-01-06 |  | Yes |  | Yes | NUSCALE | deliv | oct update start moving out to 5jan23 Critical Path? | NS-REVA | as of 30dec22 updated | 03 | NuScale | FNTP | P2 | 11 | 5.0 |  | SDA Tie | 1 |  |  |  |  |  | X | Sep update added constraint |  |  | nuscalex11. |  | in Nuscale report as delayed (no change) | 2023-03-02 | 2023-01-06 |  |  |  | 11.05 | as of 30dec22 updated |
| CP-P2-11-05-SW-0005 |  | Review Draft Rev A - FSAR Section 11.05 (TO4 Team Review) | 10d | 2023-02-24 | 2023-03-09 | CP-P2-11-05-SW-0000 |  |  | 96d | 0d |  | UDF_G1 | Yes |  | Yes | NUSCALE | deliv |  |  |  | 03 | TO4 | FNTP | P2 |  |  |  |  | 2 | FIX |  |  |  |  |  |  |  |  | nuscalex11. |  | in Nuscale report as delayed (no change) |  |  |  |  |  | 11.05 |  |
| CP-P2-11-05-SW-0010 |  | Resolve Rev A Comments - FSAR Section 11.05 | 5d | 2023-03-10 | 2023-03-16 | CP-P2-11-05-SW-0005 |  |  | 157d | 0d |  |  | Yes |  | Yes | NUSCALE | deliv |  |  |  | 03 | NuScale | FNTP | P2 | 11 | 5.0 |  |  | 3 |  |  |  |  |  |  |  |  |  | nuscalex11. |  | in Nuscale report as delayed (no change) |  |  |  |  |  | 11.05 |  |
| CP-P2-11-05-SW-0012 |  | Confirm SDA Information and Inform Reviewers - FSAR Section 11.05 | 5d | 2023-03-17 | 2023-03-17 | CP-P2-11-05-SW-0010, PKM-0125 | 2023-03-17 | 2023-03-23 | 157d | 0d |  | UDF_G1 | Yes |  | Yes | FL4 | deliv |  |  | In parallel with Team Review (hold duration at 5d) | 03 | FL4 | FNTP | P2 | 1 | 1.1 |  | SDA Tie | 4 | FIX | Matt-TBD | checked pushed out by pred | N | NS-REV0 |  |  |  |  | nuscalex11. |  | in Nuscale report as delayed (no change) |  |  |  |  |  |  |  |
| CP-P2-11-05-SW-0015 |  | Issue Rev 0 - FSAR Section 11.05 | 5d | 2023-03-17 | 2023-03-23 | CP-P2-11-05-SW-0012 |  |  | 157d |  |  | UDF_G3 | Yes |  | Yes | NUSCALE | deliv | oct update pushed out by revised Draft Rev A start date |  |  | 03 | NuScale | FNTP | P2 | 11 | 5.0 |  | SDA Tie | 5 |  |  |  | N | NS-REV0 |  |  |  |  | nuscalex11. |  | in Nuscale report as delayed (no change) |  |  | 2023-09-01 | -150 | 56COL.P2.CH11.230 | 11.05 |  |
|  | 06 | **CFPP - COLA Prep - Pt 02 - Chap 11 - Sect 6 Instru & Cntr'l Design Feat for Process/Effluent Monitor** |  | 2023-01-06 | 2023-03-30 |  |  |  |  |  |  |  |  |  |  |  |  |  |  |  |  |  |  |  |  |  |  |  |  |  |  |  |  |  |  |  |  |  |  |  |  |  |  |  |  |  |  |  |
|  | 01 | **CFPP - COLA Prep - Part 02 - Chapter 11 - Section 6 - Support Documents** |  |  |  |  |  |  |  |  |  |  |  |  |  |  |  |  |  |  |  |  |  |  |  |  |  |  |  |  |  |  |  |  |  |  |  |  |  |  |  |  |  |  |  |  |  |  |
|  | 02 | **CFPP - COLA Prep - Part 02 - Chapter 11 - Section 6 - Section Writing** |  | 2023-01-06 | 2023-03-30 |  |  |  |  |  |  |  |  |  |  |  |  |  |  |  |  |  |  |  |  |  |  |  |  |  |  |  |  |  |  |  |  |  |  |  |  |  |  |  |  |  |  |  |
| CP-P2-11-06-SW-0000 |  | Prepare Draft Rev A -Check Updated Supporting Documents -FSAR Section 11.06 | 25d | 2023-01-06 | 2023-03-02 | IFM-SDA-TO4-0015 | 2023-01-06 | 2023-02-09 | 152d | 0d | start on or after 2023-01-06 |  | Yes |  | Yes | NUSCALE | deliv | oct update start moving out to 5jan23 Critical Path? | NS-REVA |  | 03 | NuScale | FNTP | P2 | 11 | 6.0 |  | SDA Tie | 1 |  |  |  |  |  |  |  |  | Oct | nuscalex11. | oct update start slip from 21nov22 | in Nuscale report as delayed (confirmed) | 2023-03-02 | 2023-01-06 |  |  |  |  |  |
| CP-P2-11-06-SW-0005 |  | Review Draft Rev A - FSAR Section 11.06 (TO4 Team Review) | 10d | 2023-03-03 | 2023-03-16 | CP-P2-11-06-SW-0000 |  |  | 152d | 0d |  | UDF_G1 | Yes |  | Yes | NUSCALE | deliv |  |  |  | 03 | TO4 | FNTP | P2 |  |  |  |  | 2 | FIX |  |  |  |  |  |  |  |  | nuscalex11. |  | in Nuscale report as delayed (confirmed) |  |  |  |  |  |  |  |
| CP-P2-11-06-SW-0010 |  | Resolve Rev A Comments - FSAR Section 11.06 | 5d | 2023-03-17 | 2023-03-23 | CP-P2-11-06-SW-0005 |  |  | 152d | 0d |  |  | Yes |  | Yes | NUSCALE | deliv |  |  |  | 03 | NuScale | FNTP | P2 | 11 | 6.0 |  |  | 3 |  |  |  |  |  |  |  |  |  | nuscalex11. |  | in Nuscale report as delayed (confirmed) |  |  |  |  |  |  |  |
| CP-P2-11-06-SW-0012 |  | Confirm SDA Information and Inform Reviewers - FSAR Section 11.06 | 5d | 2023-03-24 | 2023-03-24 | CP-P2-11-06-SW-0010, PKM-0125 | 2023-03-24 | 2023-03-30 | 152d | 0d |  | UDF_G1 | Yes |  | Yes | FL4 | deliv |  |  | In parallel with Team Review (hold duration at 5d) | 03 | FL4 | FNTP | P2 | 1 | 1.1 |  | SDA Tie | 4 | FIX | Matt-TBD | checked pushed out by pred | N | NS-REV0 |  |  |  |  | nuscalex11. |  | in Nuscale report as delayed (confirmed) |  |  |  |  |  |  |  |
| CP-P2-11-06-SW-0015 |  | Issue Rev 0 - FSAR Section 11.06 | 5d | 2023-03-24 | 2023-03-30 | CP-P2-11-06-SW-0012 |  |  | 152d |  |  | UDF_G3 | Yes |  | Yes | NUSCALE | deliv |  |  |  | 03 | NuScale | FNTP | P2 | 11 | 6.0 |  | SDA Tie | 5 |  |  |  | N | NS-REV0 |  |  |  |  | nuscalex11. | oct update Nuscale finish 6apr23 | in Nuscale report as delayed (confirmed) |  |  | 2023-01-27 | 5 | 56COL.P2.CH11.240 |  |  |

Notes:
- CP-P2-11-03-SW-0012: 12A DEC MIDMONTH Notes: As of 12dec22 revised duration from 5d to 0d
- CP-P2-11-05-SW-0000: 12A DEC MIDMONTH Notes: As of 12dec22 Nuscale update ignores predecessor finish (revised predecessor SD-0005 to ss)

| ID | WBS | Activity | Duration | Start | Finish | Predecessors | Remaining | Planned start | Planned finish | Total float | Free float | Constraint | Expected finish | zText_02 | zText_Level 3 Schedule | Rebaseline details | 9A SEP EOM Notes | Reconcile Rev 0 Milestones | doc type | 11A NOV MIDMONTH Notes | 11B NOV EOM Notes | 12B DEC EOM Notes | CFPP - Contractor's Remarks | Forecast Finish | CFPP, LLC WBS Structure | Author | Period of Performance | Part | Chapter | Section | Monthly Variance | 10B OCT EOM Notes | PREPDRFTREVA | 10C OCT Monthly Report Notes | Forecast Start | SDA needed | activity step | UDF Indicator 01 | SDA ties | Deliverable Owner | SDA cleanup notes | SDA ACT | REV0 - SDA | Contractor Date | DELTA | Nuscale ACT Number | nuscale comp | VERIFIED MONTHLY UPDATE |
| --- | --- | --- | --- | --- | --- | --- | --- | --- | --- | --- | --- | --- | --- | --- | --- | --- | --- | --- | --- | --- | --- | --- | --- | --- | --- | --- | --- | --- | --- | --- | --- | --- | --- | --- | --- | --- | --- | --- | --- | --- | --- | --- | --- | --- | --- | --- | --- | --- |
|  | 12 | **CFPP - COLA Prep - Part 02 - Chapter 12 Radiation Protection** |  | 2022-08-24 | 2023-05-17 |  |  |  |  |  |  |  |  |  |  |  |  |  |  |  |  |  |  |  |  |  |  |  |  |  |  |  |  |  |  |  |  |  |  |  |  |  |  |  |  |  |  |  |
|  | 01 | **CFPP - COLA Prep - PT 2 - Chap 12 -Sect 1 Ensure Occupatn'l Rad Exposures Low as Reason'y Achievable** |  | 2022-08-24 | 2023-05-17 |  |  |  |  |  |  |  |  |  |  |  |  |  |  |  |  |  |  |  |  |  |  |  |  |  |  |  |  |  |  |  |  |  |  |  |  |  |  |  |  |  |  |  |
|  | 01 | **CFPP - COLA Prep - Part 02 - Chapter 12 - Section 1 - Support Documents** |  | 2022-08-24 | 2023-01-13 |  |  |  |  |  |  |  |  |  |  |  |  |  |  |  |  |  |  |  |  |  |  |  |  |  |  |  |  |  |  |  |  |  |  |  |  |  |  |  |  |  |  |  |
| CP-P2-12-01-SD-0000 |  | Develop CRN ALARA Program Description | 56d | 2022-08-24 A | 2023-01-13 | IFM-CFP-TO4-0055 FS+60d | 10d | 2022-08-25 | 2022-11-11 | 83d | 0d |  | 2023-01-13 | Yes | Yes | NUSCALE | Sep update | 12.01 | supt | As of 15nov22 30nov22 forecast finish | As of 29nov22 finish slip from 11nov22 | As of 30dec22 delayed | as of 30dec22 updated | 2023-01-13 | 03 | NuScale | FNTP | P2 | 12 | 1 |  |  |  |  |  |  |  |  |  |  |  |  |  |  |  |  |  |  |
|  | 02 | **CFPP - COLA Prep - Part 02 - Chapter 12 - Section 1 - Section Writing** |  | 2023-01-16 | 2023-05-17 |  |  |  |  |  |  |  |  |  |  |  |  |  |  |  |  |  |  |  |  |  |  |  |  |  |  |  |  |  |  |  |  |  |  |  |  |  |  |  |  |  |  |  |
| CP-P2-12-01-SW-0000 |  | Prepare Draft Rev A -Check Updated Supporting Documents -FSAR Section 12.01 | 70d | 2023-01-16 | 2023-04-19 | CP-P2-12-01-SD-0000, IFM-SDA-TO4-0240 |  | 2023-01-16 | 2023-04-21 | 83d | 0d | start on or after 2023-01-16 |  | Yes | Yes | NUSCALE |  | 12.01 | deliv |  |  | as of 30dec22 updated | as of 30dec22 updated | 2023-03-17 | 03 | NuScale | FNTP | P2 | 12 | 1 | Oct | oct update start slip from 16nov22 | NS-REVA | in Nuscale report as delayed (confirmed) | 2023-01-16 | SDA Tie | 1 |  |  |  |  |  |  |  |  |  |  |  |
| CP-P2-12-01-SW-0005 |  | Review Draft Rev A - FSAR Section 12.01 (TO4 Team Review) | 10d | 2023-04-20 | 2023-05-03 | CP-P2-12-01-SW-0000 |  |  |  | 83d | 0d |  |  | Yes | Yes | NUSCALE |  | 12.01 | deliv |  |  |  |  |  | 03 | TO4 | FNTP | P2 |  |  |  |  |  | in Nuscale report as delayed (confirmed) |  |  | 2 | UDF_G1 | FIX |  |  |  |  |  |  |  |  |  |
| CP-P2-12-01-SW-0010 |  | Resolve Rev A Comments - FSAR Section 12.01 | 5d | 2023-05-04 | 2023-05-10 | CP-P2-12-01-SW-0005 |  |  |  | 118d | 0d |  |  | Yes | Yes | NUSCALE |  | 12.01 | deliv |  |  |  |  |  | 03 | NuScale | FNTP | P2 | 12 | 1 |  |  |  | in Nuscale report as delayed (confirmed) |  |  | 3 |  |  |  |  |  |  |  |  |  |  |  |
| CP-P2-12-01-SW-0012 |  | Confirm SDA Information and Inform Reviewers - FSAR Section 12.01 | 5d | 2023-05-11 | 2023-05-11 | CP-P2-12-01-SW-0010, PKM-0125 |  | 2023-05-11 | 2023-05-17 | 118d | 0d |  |  | Yes | Yes | FL4 |  |  | deliv |  |  | In parallel with Team Review (hold duration at 5d) |  |  | 03 | FL4 | FNTP | P2 | 1 | 1.1 |  |  |  | in Nuscale report as delayed (confirmed) |  | SDA Tie | 4 | UDF_G1 | FIX | Matt-TBD | checked pushed out by pred | N | NS-REV0 |  |  |  |  |  |
| CP-P2-12-01-SW-0015 |  | Issue Rev 0 - FSAR Section 12.01 | 5d | 2023-05-11 | 2023-05-17 | CP-P2-12-01-SW-0012 |  |  |  | 118d | 0d |  |  | Yes | Yes | NUSCALE |  | 12.01 | deliv |  |  |  |  |  | 03 | NuScale | FNTP | P2 | 12 | 1 |  | oct update Nuscale 25apr23 |  | in Nuscale report as delayed (confirmed) |  | SDA Tie | 5 | UDF_G1 |  |  |  | N | NS-REV0 | 2023-02-16 | 41 | 56COL.P2.CH12.220 | nuscalex |  |
|  | 02 | **CFPP - COLA Prep - Part 02 - Chapter 12 - Section 2 Radiation Sources** |  | 2022-09-20 | 2023-04-27 |  |  |  |  |  |  |  |  |  |  |  |  |  |  |  |  |  |  |  |  |  |  |  |  |  |  |  |  |  |  |  |  |  |  |  |  |  |  |  |  |  |  |  |
|  | 01 | **CFPP - COLA Prep - Part 02 - Chapter 12 - Section 2 - Support Documents** |  | 2022-09-20 | 2023-01-26 |  |  |  |  |  |  |  |  |  |  |  |  |  |  |  |  |  |  |  |  |  |  |  |  |  |  |  |  |  |  |  |  |  |  |  |  |  |  |  |  |  |  |  |
| CP-P2-12-02-SD-0000 |  | Develop Source Database & Management Program Description | 80d | 2022-09-20 A | 2023-01-26 | IFM-CFP-TO4-0055 FS+60d | 19d | 2022-09-19 | 2023-01-10 | 132d | 0d |  | 2023-01-26 | Yes | Yes | NUSCALE | Sep update |  | supt | As of 15nov22 21dec22 new forecast finish | As of 29nov22 finish slip from 11nov22 | As of 30dec22 delayed | as of 30dec22 updated | 2023-01-26 | 03 | NuScale | FNTP | P2 | 12 | 2.0 |  |  |  |  |  |  |  |  |  |  |  |  |  |  |  |  |  | X |
|  | 02 | **CFPP - COLA Prep - Part 02 - Chapter 12 - Section 2 - Section Writing** |  | 2023-01-27 | 2023-04-27 |  |  |  |  |  |  |  |  |  |  |  |  |  |  |  |  |  |  |  |  |  |  |  |  |  |  |  |  |  |  |  |  |  |  |  |  |  |  |  |  |  |  |  |
| CP-P2-12-02-SW-0000 |  | Prepare Draft Rev A -Check Updated Supporting Documents -FSAR Section 12.02 | 25d | 2023-01-27 | 2023-03-30 | CP-P2-12-02-SD-0000, IFM-SDA-TO4-0050 |  | 2023-01-27 | 2023-03-02 | 132d | 0d | start on or after 2023-01-27 |  | Yes | Yes | NUSCALE |  |  | deliv |  |  | as of 30dec22 updated | as of 30dec22 updated | 2023-03-30 | 03 | NuScale | FNTP | P2 | 12 | 2.0 | Oct | oct update start slip from 14nov22 | NS-REVA | in Nuscale report as delayed (confirmed) | 2023-01-27 | SDA Tie | 1 |  |  |  |  |  |  |  |  |  |  |  |
| CP-P2-12-02-SW-0005 |  | Review Draft Rev A - FSAR Section 12.02 (TO4 Team Review) | 10d | 2023-03-31 | 2023-04-13 | CP-P2-12-02-SW-0000 |  |  |  | 132d | 0d |  |  | Yes | Yes | NUSCALE |  |  | deliv |  |  |  |  |  | 03 | TO4 | FNTP | P2 |  |  |  |  |  | in Nuscale report as delayed (confirmed) |  |  | 2 | UDF_G1 | FIX |  |  |  |  |  |  |  |  |  |
| CP-P2-12-02-SW-0010 |  | Resolve Rev A Comments - FSAR Section 12.02 | 5d | 2023-04-14 | 2023-04-20 | CP-P2-12-02-SW-0005 |  |  |  | 132d | 0d |  |  | Yes | Yes | NUSCALE |  |  | deliv |  |  |  |  |  | 03 | NuScale | FNTP | P2 | 12 | 2.0 |  |  |  | in Nuscale report as delayed (confirmed) |  |  | 3 |  |  |  |  |  |  |  |  |  |  |  |
| CP-P2-12-02-SW-0012 |  | Confirm SDA Information and Inform Reviewers - FSAR Section 12.02 | 5d | 2023-04-21 | 2023-04-21 | CP-P2-12-02-SW-0010, PKM-0125 |  | 2023-04-21 | 2023-04-27 | 132d | 0d |  |  | Yes | Yes | FL4 |  |  | deliv |  |  | In parallel with Team Review (hold duration at 5d) |  |  | 03 | FL4 | FNTP | P2 | 1 | 1.1 |  |  |  | in Nuscale report as delayed (confirmed) |  | SDA Tie | 4 | UDF_G1 | FIX | Matt-TBD | checked pushed out by pred | N | NS-REV0 |  |  |  |  |  |
| CP-P2-12-02-SW-0015 |  | Issue Rev 0 - FSAR Section 12.02 | 5d | 2023-04-21 | 2023-04-27 | CP-P2-12-02-SW-0012 |  |  |  | 132d | 14d |  |  | Yes | Yes | NUSCALE |  |  | deliv |  |  |  |  |  | 03 | NuScale | FNTP | P2 | 12 | 2.0 |  | oct update Nuscale 2may23 |  | in Nuscale report as delayed (confirmed) |  | SDA Tie | 5 | UDF_G3 |  |  |  | N | NS-REV0 | 2023-02-22 | 6 | 56COL.P2.CH12.230 | nuscalex |  |
|  | 03 | **CFPP - COLA Prep - Part 02 - Chapter 12 - Section 3 Rad Protection Design Features** |  | 2022-08-24 | 2023-03-17 |  |  |  |  |  |  |  |  |  |  |  |  |  |  |  |  |  |  |  |  |  |  |  |  |  |  |  |  |  |  |  |  |  |  |  |  |  |  |  |  |  |  |  |
|  | 01 | **CFPP - COLA Prep - Part 02 - Chapter 12 - Section 3 - Support Documents** |  | 2022-08-24 | 2023-01-13 |  |  |  |  |  |  |  |  |  |  |  |  |  |  |  |  |  |  |  |  |  |  |  |  |  |  |  |  |  |  |  |  |  |  |  |  |  |  |  |  |  |  |  |
| CP-P2-12-03-SD-0015 |  | Develop Supporting Documents | 100d | 2022-08-24 A | 2023-01-13 | IFM-CFP-TO4-0055 FS+60d | 10d | 2022-08-25 | 2023-01-16 | 161d | 0d |  | 2023-01-13 | Yes | Yes | NUSCALE |  |  | supt | As of 15nov22 | As of 29nov22 finish slip from 14nov22 | As of 30dec22 delayed | as of 30dec22 updated | 2023-01-13 | 03 | NuScale | FNTP | P2 | 12 | 3.0 | Oct | oct update finish move forward from 12dec22 |  | in Nuscale report as delayed (finish moved forward) |  |  |  |  |  |  |  |  |  |  |  |  |  |  |
|  | 02 | **CFPP - COLA Prep - Part 02 - Chapter 12 - Section 3 - Section Wrting** |  | 2023-01-16 | 2023-03-17 |  |  |  |  |  |  |  |  |  |  |  |  |  |  |  |  |  |  |  |  |  |  |  |  |  |  |  |  |  |  |  |  |  |  |  |  |  |  |  |  |  |  |  |
| CP-P2-12-03-SW-0000 |  | Prepare Draft Rev A -Check Updated Supporting Documents -FSAR Section 12.03 | 25d | 2023-01-16 | 2023-02-17 | CP-P2-12-03-SD-0015, IFM-SDA-TO4-0245 |  |  |  | 161d | 0d | start on or after 2023-01-16 |  | Yes | Yes | NUSCALE |  |  | deliv |  | As of 29nov22 start slip from 15nov22 resources | as of 30dec22 updated | as of 30dec22 updated | 2023-03-17 | 03 | NuScale | FNTP | P2 | 12 | 3.0 |  |  | NS-REVA | in Nuscale report as delayed (finish moved forward) | 2023-01-16 | SDA Tie | 1 |  |  |  |  |  |  |  |  |  |  |  |
| CP-P2-12-03-SW-0005 |  | Review Draft Rev A - FSAR Section 12.03 (TO4 Team Review) | 10d | 2023-02-20 | 2023-03-03 | CP-P2-12-03-SW-0000 |  |  |  | 161d | 0d |  |  | Yes | Yes | NUSCALE |  |  | deliv |  |  |  |  |  | 03 | TO4 | FNTP | P2 |  |  |  |  |  | in Nuscale report as delayed (finish moved forward) |  |  | 2 | UDF_G1 | FIX |  |  |  |  |  |  |  |  |  |
| CP-P2-12-03-SW-0010 |  | Resolve Rev A Comments - FSAR Section 12.03 | 5d | 2023-03-06 | 2023-03-10 | CP-P2-12-03-SW-0005 |  |  |  | 161d | 0d |  |  | Yes | Yes | NUSCALE |  |  | deliv |  | As of 29nov22 pred start slip out |  |  |  | 03 | NuScale | FNTP | P2 | 12 | 3.0 |  |  |  | in Nuscale report as delayed (finish moved forward) |  |  | 3 |  |  |  |  |  |  |  |  |  |  |  |
| CP-P2-12-03-SW-0012 |  | Confirm SDA Information and Inform Reviewers - FSAR Section 12.03 | 5d | 2023-03-13 | 2023-03-13 | CP-P2-12-03-SW-0010, PKM-0125 |  | 2023-03-13 | 2023-03-17 | 161d | 0d |  |  | Yes | Yes | FL4 |  |  | deliv |  |  | In parallel with Team Review (hold duration at 5d) |  |  | 03 | FL4 | FNTP | P2 | 1 | 1.1 |  |  |  | in Nuscale report as delayed (finish moved forward) |  | SDA Tie | 4 | UDF_G1 | FIX | Matt-TBD | checked pushed out by pred | N | NS-REV0 |  |  |  |  |  |
| CP-P2-12-03-SW-0015 |  | Issue Rev 0 - FSAR Section 12.03 | 5d | 2023-03-13 | 2023-03-17 | CP-P2-12-03-SW-0012 |  |  |  | 161d | 43d |  |  | Yes | Yes | NUSCALE |  |  | deliv |  | As of 29nov22 pred start slip out |  |  |  | 03 | NuScale | FNTP | P2 | 12 | 3.0 |  | oct update Nuscale finish 23may23 |  | in Nuscale report as delayed (finish moved forward) |  | SDA Tie | 5 | UDF_G3 |  |  |  | N | NS-REV0 | 2023-03-22 | 1 | 56COL.P2.CH12.240 | nuscalex |  |

Notes:
- CP-P2-12-01-SW-0015: 10A OCT MIDMONTH Notes: oct update start moving out to 5jan23
- CP-P2-12-02-SW-0015: 10A OCT MIDMONTH Notes: oct update start moving out to 5jan23 pushed out by 12.2 sd delivery
- CP-P2-12-03-SW-0015: 10A OCT MIDMONTH Notes: oct update start moving out to 5jan23

| ID | WBS | Activity | Duration | Start | Finish | Predecessors | Complete | Remaining | Planned start | Planned finish | Total float | Free float | Constraint | Expected finish | UDF Indicator 01 | zText_02 | zText_Level 3 Schedule | Rebaseline details | NEED UPDATE | doc type | 10B OCT EOM Notes | 11A NOV MIDMONTH Notes | CFPP, LLC WBS Structure | Author | Period of Performance | Part | Chapter | Section | Progress Deliv Sheet Milestone # | Other | zText_CFPP Look Ahead Notes | 9A SEP EOM Notes | Monthly Variance | Deliverable Owner | 12B DEC EOM Notes | CFPP - Contractor's Remarks | Forecast Finish | PREPDRFTREVA | SDA needed | activity step | SDA ties | SDA cleanup notes | SDA ACT | REV0 - SDA | VERIFIED MONTHLY UPDATE | 10C OCT Monthly Report Notes | Forecast Start | Contractor Date | DELTA | Nuscale ACT Number | nuscale comp |
| --- | --- | --- | --- | --- | --- | --- | --- | --- | --- | --- | --- | --- | --- | --- | --- | --- | --- | --- | --- | --- | --- | --- | --- | --- | --- | --- | --- | --- | --- | --- | --- | --- | --- | --- | --- | --- | --- | --- | --- | --- | --- | --- | --- | --- | --- | --- | --- | --- | --- | --- | --- |
|  | 04 | **CFPP - COLA Prep - Part 02 - Chapter 12 - Section 4 Dose Assessment** |  | 2022-10-27 | 2023-02-27 |  |  |  |  |  |  |  |  |  |  |  |  |  |  |  |  |  |  |  |  |  |  |  |  |  |  |  |  |  |  |  |  |  |  |  |  |  |  |  |  |  |  |  |  |  |  |
|  | 01 | **CFPP - COLA Prep - Part 02 - Chapter 12 - Section 4 - Support Documents** |  | 2022-10-27 | 2023-01-16 |  |  |  |  |  |  |  |  |  |  |  |  |  |  |  |  |  |  |  |  |  |  |  |  |  |  |  |  |  |  |  |  |  |  |  |  |  |  |  |  |  |  |  |  |  |  |
| CP-P2-12-04-SD-0000 |  | Perform Construction Worker Dose Analysis - Prepare | 30d | 2022-10-27 A | 2022-11-18 A | IFM-TO3-TO4-0015, IFM-TO3-TO4-0020, IFM-TO3-TO4-0025 | 100% |  | 2022-10-03 | 2022-11-11 |  |  |  |  | UDF_G3 | Yes | Yes | S&L | OCT | supt | oct update finish slip from 11nov22 | As of 15nov 22 forecast 11nov22 | 03 | S&L | FNTP | P2 | 12 | 4.0 | 51 |  |  |  |  |  |  |  |  |  |  |  |  |  |  |  |  |  |  |  |  |  |  |
| CP-P2-12-04-SD-0005 |  | E2-12.04-RFI-102 Provide info on effluent doses from existing facilities at INL site - Prepare | 30d | 2022-10-27 A | 2022-11-18 A |  | 100% |  | 2022-10-03 | 2022-11-11 |  |  |  |  |  |  |  |  | OCT | supt | oct update finish slip from 11nov22 | As of 15nov 22 on track |  | S&L |  | P2 | 12 | 4.0 |  | cal | Y | Sep update | Oct |  |  |  |  |  |  |  |  |  |  |  |  |  |  |  |  |  |  |
| CP-P2-12-04-SD-0001 |  | Perform Construction Worker Dose Analysis - TO4 External Review / Comments Received | 10d | 2022-11-21 A | 2023-01-03 | CP-P2-12-04-SD-0000 |  | 2d | 2022-11-10 | 2022-11-23 | 94d | 0d |  | 2023-01-03 |  |  |  |  |  | supt |  |  |  | TO4 |  |  |  |  |  | cal |  |  |  | Brian/Doug | As of 30dec22 delayed |  |  |  |  |  |  |  |  |  |  |  |  |  |  |  |  |
| CP-P2-12-04-SD-0006 |  | E2-12.04-RFI-102 Provide info on effluent doses from existing facilities at INL site - TO4 External Review / Comments Re | 10d | 2022-11-21 A | 2023-01-03 | CP-P2-12-04-SD-0005 |  | 2d | 2022-11-18 | 2022-12-02 | 94d | 0d |  | 2023-01-03 |  |  |  |  |  | supt |  |  |  | TO4 |  |  |  |  |  | cal |  |  |  | Brian/Doug | As of 30dec22 delayed |  |  |  |  |  |  |  |  |  |  |  |  |  |  |  |  |
| CP-P2-12-04-SD-0002 |  | Perform Construction Worker Dose Analysis - Comment Resolution / Issue Final | 10d | 2022-12-01 A | 2023-01-16 | CP-P2-12-04-SD-0001 | 95% | 9d | 2022-12-01 | 2022-12-14 | 94d | 0d |  | 2023-01-16 |  |  |  |  |  | supt |  |  |  | S&L |  | P2 | 12 | 4.0 |  | cal |  |  |  |  | As of 30dec22 updated | as of 30dec22 updated | 2023-01-16 |  |  |  |  |  |  |  |  |  |  |  |  |  |  |
| CP-P2-12-04-SD-0007 |  | E2-12.04-RFI-102 Provide info on effluent doses from existing facilities at INL site - Comment Resolution / Issue Final | 10d | 2022-12-09 A | 2023-01-04 | CP-P2-12-04-SD-0006 | 95% | 0d | 2022-12-20 | 2023-01-03 | 94d | 0d |  | 2023-01-03 |  |  |  |  |  | supt |  |  |  | S&L |  | P2 | 12 | 4.0 |  | cal |  |  |  |  | as of 30dec22 updated calendar var? | as of 30dec22 updated calendar var | 2023-01-03 |  |  |  |  |  |  |  |  |  |  |  |  |  |  |
|  | 02 | **CFPP - COLA Prep - Part 02 - Chapter 12 - Section 4 - Section Writing** |  | 2022-12-16 | 2023-02-27 |  |  |  |  |  |  |  |  |  |  |  |  |  |  |  |  |  |  |  |  |  |  |  |  |  |  |  |  |  |  |  |  |  |  |  |  |  |  |  |  |  |  |  |  |  |  |
| CP-P2-12-04-SW-0000 |  | Prepare Draft Rev A - FSAR Section 12.04 | 10d | 2022-12-16 A | 2023-01-16 | CP-P2-12-04-SD-0000, CP-P2-12-04-SD-0007, CP-P2-12-04-SD-0002 FF | 79% | 9d | 2023-01-04 | 2023-01-17 | 94d | 0d |  | 2023-01-16 | UDF_G3 | Yes | Yes | S&L |  | deliv |  |  | 03 | S&L | FNTP | P2 | 12 | 4.0 | 50 |  |  |  |  |  | as of 30dec22 updated | as of 30dec22 updated | 2023-01-16 | S&L-REVA | No SDA | 1 |  |  |  |  |  |  |  |  |  |  |  |
| CP-P2-12-04-SW-0005 |  | Review Draft Rev A - FSAR Section 12.04 (TO4 Team Review) | 10d | 2023-01-17 | 2023-01-30 | CP-P2-12-04-SW-0000 |  |  |  |  | 94d | 0d |  |  | UDF_G1 | Yes | Yes | S&L |  | deliv |  |  | 03 | TO4 | FNTP | P2 |  |  | 50 |  |  |  |  |  |  |  |  |  |  | 2 | FIX |  |  |  |  |  |  |  |  |  |  |
| CP-P2-12-04-SW-0010 |  | Resolve Rev A Comments - FSAR Section 12.04 | 10d | 2023-01-31 | 2023-02-13 | CP-P2-12-04-SW-0005 |  |  |  |  | 94d | 0d |  |  | UDF_G1 | Yes | Yes | S&L |  | deliv |  |  | 03 | S&L | FNTP | P2 | 12 | 4.0 | 50 |  |  |  |  |  |  |  |  |  |  | 3 |  |  |  |  |  |  |  |  |  |  |  |
| CP-P2-12-04-SW-0012 |  | Confirm SDA Information and Inform Reviewers - FSAR Section 12.04 | 5d | 2023-02-14 | 2023-02-14 | CP-P2-12-04-SW-0010, PKM-0125 |  |  | 2023-02-14 | 2023-02-20 | 94d | 0d |  |  | UDF_G1 | Yes | Yes | FL4 |  | deliv |  |  | 03 | FL4 | FNTP | P2 | 1 | 1.1 |  |  |  |  |  | Matt-TBD | In parallel with Team Review (hold duration at 5d) |  |  |  | SDA Tie | 4 | FIX | checked pushed out by pred | S | S&L-REV0 |  |  |  |  |  |  |  |
| CP-P2-12-04-SW-0015 |  | Issue Rev 0 - FSAR Section 12.04 | 10d | 2023-02-14 | 2023-02-27 | CP-P2-12-04-SW-0012 |  |  |  |  | 94d | 57d |  |  | UDF_G1 | Yes | Yes | S&L |  | deliv |  |  | 03 | S&L | FNTP | P2 | 12 | 4.0 | 50 |  |  |  |  |  |  |  |  |  | SDA Tie | 5 |  |  | S | S&L-REV0 |  |  |  |  |  |  |  |
|  | 05 | **CFPP - COLA Prep - Part 02 - Chapter 12 - Section 5 Operational Rad Protection Program** |  | 2022-08-24 | 2023-03-24 |  |  |  |  |  |  |  |  |  |  |  |  |  |  |  |  |  |  |  |  |  |  |  |  |  |  |  |  |  |  |  |  |  |  |  |  |  |  |  |  |  |  |  |  |  |  |
|  | 01 | **CFPP - COLA Prep - Part 02 - Chapter 12 - Section 5 - Support Documents** |  | 2022-08-24 | 2023-03-03 |  |  |  |  |  |  |  |  |  |  |  |  |  |  |  |  |  |  |  |  |  |  |  |  |  |  |  |  |  |  |  |  |  |  |  |  |  |  |  |  |  |  |  |  |  |  |
| CP-P2-12-05-SD-0100 |  | Develop RP Plant Program Document | 30d | 2022-08-24 A | 2023-01-13 | IFM-CFP-TO4-0055 FS+60d |  | 10d | 2022-08-25 | 2022-10-06 | 161d | 0d |  | 2023-01-13 |  | Yes | Yes | NUSCALE |  | supt |  | As of 15nov22 30nov22 forecast finish | 03 | NuScale | FNTP | P2 | 12 | 5.0 |  |  |  | Sep update finish slip from 6oct |  |  | As of 30dec22 delayed | as of 30dec22 updated | 2023-01-13 |  |  |  |  |  |  |  | X | in Nuscale report as delayed (no change) |  |  |  |  |  |
| CP-P2-12-05-SD-0000 |  | Provide Site Groundwater Monitoring Program Info Consistent w/ NEI 08-08A | 30d | 2023-01-23 | 2023-03-03 | CP-P2-02-04-SD-0220 |  |  |  |  | 90d | 0d |  |  | UDF_G1 | Yes | Yes | FL4 |  | supt |  |  | 03 | FL4 | FNTP | P2 |  |  |  |  |  |  |  |  |  |  |  |  |  |  |  |  |  |  |  | in Nuscale report as delayed (no change) |  |  |  |  |  |
|  | 02 | **CFPP - COLA Prep - Part 02 - Chapter 12 - Section 5 - Section Writing** |  | 2023-01-23 | 2023-03-24 |  |  |  |  |  |  |  |  |  |  |  |  |  |  |  |  |  |  |  |  |  |  |  |  |  |  |  |  |  |  |  |  |  |  |  |  |  |  |  |  |  |  |  |  |  |  |
| CP-P2-12-05-SW-0000 |  | Prepare Draft Rev A -Check Updated Supporting Documents -FSAR Section 12.05 | 25d | 2023-01-23 | 2023-02-24 | CP-P2-12-05-SD-0100, IFM-SDA-TO4-0065, CP-P2-12-05-SD-0000 SS |  |  |  |  | 156d | 0d | start on or after 2023-01-16 |  |  | Yes | Yes | NUSCALE |  | deliv |  |  | 03 | NuScale | FNTP | P2 | 12 | 5.0 |  |  |  |  |  |  | as of 30dec22 updated | as of 30dec22 updated | 2023-03-17 | NS-REVA | SDA Tie | 1 |  |  |  |  |  | in Nuscale report as delayed (no change) | 2023-01-16 |  |  |  |  |
| CP-P2-12-05-SW-0005 |  | Review Draft Rev A - FSAR Section 12.05 (TO4 Team Review) | 10d | 2023-02-27 | 2023-03-10 | CP-P2-12-05-SW-0000 |  |  |  |  | 156d | 0d |  |  | UDF_G1 | Yes | Yes | NUSCALE |  | deliv |  |  | 03 | TO4 | FNTP | P2 |  |  |  |  |  |  |  |  |  |  |  |  |  | 2 | FIX |  |  |  |  | in Nuscale report as delayed (no change) |  |  |  |  |  |
| CP-P2-12-05-SW-0010 |  | Resolve Rev A Comments - FSAR Section 12.05 | 5d | 2023-03-13 | 2023-03-17 | CP-P2-12-05-SW-0005 |  |  |  |  | 156d | 0d |  |  |  | Yes | Yes | NUSCALE |  | deliv |  |  | 03 | NuScale | FNTP | P2 | 12 | 5.0 |  |  |  |  |  |  |  |  |  |  |  | 3 |  |  |  |  |  | in Nuscale report as delayed (no change) |  |  |  |  |  |
| CP-P2-12-05-SW-0012 |  | Confirm SDA Information and Inform Reviewers - FSAR Section 12.05 | 5d | 2023-03-20 | 2023-03-20 | CP-P2-12-05-SW-0010, PKM-0125 |  |  | 2023-03-20 | 2023-03-24 | 156d | 0d |  |  | UDF_G1 | Yes | Yes | FL4 |  | deliv |  |  | 03 | FL4 | FNTP | P2 | 1 | 1.1 |  |  |  |  |  | Matt-TBD | In parallel with Team Review (hold duration at 5d) |  |  |  | SDA Tie | 4 | FIX | checked pushed out by pred | N | NS-REV0 |  | in Nuscale report as delayed (no change) |  |  |  |  |  |
| CP-P2-12-05-SW-0015 |  | Issue Rev 0 - FSAR Section 12.05 | 5d | 2023-03-20 | 2023-03-24 | CP-P2-12-05-SW-0012 |  |  |  |  | 156d | 38d |  |  | UDF_G3 | Yes | Yes | NUSCALE |  | deliv | oct update Nuscale finish 02may23 |  | 03 | NuScale | FNTP | P2 | 12 | 5.0 |  |  |  |  |  |  |  |  |  |  | SDA Tie | 5 |  |  | N | NS-REV0 |  | in Nuscale report as delayed (no change) |  | 2023-02-08 | 6 | 56COL.P2.CH12.250 | nuscalex |

Notes:
- CP-P2-12-04-SD-0000: 11B NOV EOM Notes: As of 29nov22 complete
- CP-P2-12-04-SD-0005: 11B NOV EOM Notes: As of 29nov22 complete
- CP-P2-12-04-SD-0001: 11B NOV EOM Notes: As of 29nov22 started
- CP-P2-12-04-SD-0006: 11B NOV EOM Notes: As of 29nov22 finish slip from 2dec22
- CP-P2-12-05-SD-0100: 11B NOV EOM Notes: As of 29nov22 finish slip from 2nov22
- CP-P2-12-05-SD-0000: 11B NOV EOM Notes: As of 29nov22 pred finish slip out Pred is RIZZO act (GUS- David S-Lorena)
- CP-P2-12-05-SW-0000: 11B NOV EOM Notes: As of 29nov22 pred start slip out / 12A DEC MIDMONTH Notes: As of 12dec22 Nuscale update ignores predecessor finish (revised predecessor SD-0000 to ss)
- CP-P2-12-05-SW-0010: 11B NOV EOM Notes: As of 29nov22 pred start slip out
- CP-P2-12-05-SW-0015: 10A OCT MIDMONTH Notes: oct update start moving out to 5jan23 pushed out by 2.4sd-0220 delivery / 11B NOV EOM Notes: As of 29nov22 pred start slip out

| ID | WBS | Activity | Type | Duration | Start | Finish | Predecessors | Complete | Remaining | Planned start | Planned finish | Total float | Free float | Constraint | Expected finish | zText_02 | zText_Level 3 Schedule | VERIFIED MONTHLY UPDATE | Rebaseline details | Monthly Variance | doc type | 10B OCT EOM Notes | 10C OCT Monthly Report Notes | Forecast Finish | CFPP, LLC WBS Structure | Author | Period of Performance | Part | Chapter | Section | PREPDRFTREVA | Forecast Start | SDA needed | activity step | UDF Indicator 01 | SDA ties | Deliverable Owner | SDA cleanup notes | SDA ACT | REV0 - SDA | Contractor Date | DELTA | Nuscale ACT Number | nuscale comp | 10A OCT MIDMONTH Notes | Other | Comments | Reconcile Rev 0 Milestones |
| --- | --- | --- | --- | --- | --- | --- | --- | --- | --- | --- | --- | --- | --- | --- | --- | --- | --- | --- | --- | --- | --- | --- | --- | --- | --- | --- | --- | --- | --- | --- | --- | --- | --- | --- | --- | --- | --- | --- | --- | --- | --- | --- | --- | --- | --- | --- | --- | --- |
|  | 13 | **CFPP - COLA Prep - Part 02 - Chapter 13 Conduct of Operations** |  |  | 2022-05-13 | 2023-09-28 |  |  |  |  |  |  |  |  |  |  |  |  |  |  |  |  |  |  |  |  |  |  |  |  |  |  |  |  |  |  |  |  |  |  |  |  |  |  |  |  |  |  |
|  | 01 | **CFPP - COLA Prep - Part 02 - Chapter 13 - Section 1 Organizational Structure** |  |  | 2022-09-22 | 2023-06-22 |  |  |  |  |  |  |  |  |  |  |  |  |  |  |  |  |  |  |  |  |  |  |  |  |  |  |  |  |  |  |  |  |  |  |  |  |  |  |  |  |  |  |
|  | 01 | **CFPP - COLA Prep - Part 02 - Chapter 13 - Section 1 - Support Documents** |  |  | 2022-09-22 | 2023-03-15 |  |  |  |  |  |  |  |  |  |  |  |  |  |  |  |  |  |  |  |  |  |  |  |  |  |  |  |  |  |  |  |  |  |  |  |  |  |  |  |  |  |  |
| CP-P2-13-01-SD-0000 |  | Develop COLA Support Documents - FSAR Section 13.01 |  | 40d | 2022-09-22 A | 2023-03-15 | IFM-CFP-TO4-0060 FF, IFM-CFP-TO4-0055 FS+60d |  | 53d | 2022-09-15 | 2022-11-09 | 114d | 0d |  | 2023-03-15 | Yes | Yes | X | NUSCALE | Oct | supt | oct update finish slip from 16nov22 | in Nuscale report as delayed (confirmed) | 2023-03-15 | 03 | NuScale | FNTP | P2 | 13 | 1 |  |  |  |  |  |  |  |  |  |  |  |  |  |  |  |  |  |  |
|  | 02 | **CFPP - COLA Prep - Part 02 - Chapter 13 - Section 1 - Section Writing** |  |  | 2023-01-31 | 2023-06-22 |  |  |  |  |  |  |  |  |  |  |  |  |  |  |  |  |  |  |  |  |  |  |  |  |  |  |  |  |  |  |  |  |  |  |  |  |  |  |  |  |  |  |
| CP-P2-13-01-SW-0000 |  | Prepare Draft Rev A -Check Updated Supporting Documents -FSAR Section 13.01 |  | 175d | 2023-01-31 | 2023-05-24 | CP-P2-13-01-SD-0000 SS |  |  | 2023-01-31 | 2023-10-05 | 93d | 0d | start on or after 2023-01-31 |  | Yes | Yes |  | NUSCALE |  | deliv |  | in Nuscale report as delayed (confirmed) | 2023-05-24 | 03 | NuScale | FNTP | P2 | 13 | 1 | NS-REVA | 2023-01-31 | No SDA | 1 |  |  |  |  |  |  |  |  |  |  |  |  |  |  |
| CP-P2-13-01-SW-0005 |  | Review Draft Rev A - FSAR Section 13.01 (TO4 Team Review) |  | 10d | 2023-05-25 | 2023-06-08 | CP-P2-13-01-SW-0000 |  |  |  |  | 93d | 0d |  |  | Yes | Yes |  | NUSCALE |  | deliv |  | in Nuscale report as delayed (confirmed) |  | 03 | TO4 | FNTP | P2 |  |  |  |  |  | 2 | UDF_G1 | FIX |  |  |  |  |  |  |  |  |  |  |  |  |
| CP-P2-13-01-SW-0010 |  | Resolve Rev A Comments - FSAR Section 13.01 |  | 5d | 2023-06-09 | 2023-06-15 | CP-P2-13-01-SW-0005 |  |  |  |  | 93d | 0d |  |  | Yes | Yes |  | NUSCALE |  | deliv |  | in Nuscale report as delayed (confirmed) |  | 03 | NuScale | FNTP | P2 | 13 | 1 |  |  |  | 3 |  |  |  |  |  |  |  |  |  |  |  |  |  |  |
| CP-P2-13-01-SW-0012 |  | Confirm SDA Information and Inform Reviewers - FSAR Section 13.01 |  | 5d | 2023-06-16 | 2023-06-16 | CP-P2-13-01-SW-0010, PKM-0125 |  |  | 2023-06-16 | 2023-06-22 | 93d | 0d |  |  | Yes | Yes |  | FL4 |  | deliv |  | in Nuscale report as delayed (confirmed) |  | 03 | FL4 | FNTP | P2 | 1 | 1.1 |  |  | SDA Tie | 4 | UDF_G1 | FIX | Matt-TBD | checked pushed out by pred | N | NS-REV0 |  |  |  |  |  |  |  |  |
| CP-P2-13-01-SW-0015 |  | Issue Rev 0 - FSAR Section 13.01 |  | 5d | 2023-06-16 | 2023-06-22 | CP-P2-13-01-SW-0012 |  |  |  |  | 93d | 68d |  |  | Yes | Yes | X | NUSCALE |  | deliv | oct update Nuscale finish 28jun23 | in Nuscale report as delayed (confirmed) |  | 03 | NuScale | FNTP | P2 | 13 | 1 |  |  | SDA Tie | 5 | UDF_G1 |  |  |  | N | NS-REV0 | 2023-07-21 | 13 | 56COL.P2.CH13.250 | nuscale |  |  |  |  |
|  | 02 | **CFPP - COLA Prep - Part 02 - Chapter 13 - Section 2 Training** |  |  | 2022-09-19 | 2023-04-24 |  |  |  |  |  |  |  |  |  |  |  |  |  |  |  |  |  |  |  |  |  |  |  |  |  |  |  |  |  |  |  |  |  |  |  |  |  |  |  |  |  |  |
|  | 01 | **CFPP - COLA Prep - Part 02 - Chapter 13 - Section 2 - Support Documents** |  |  | 2022-09-19 | 2023-01-30 |  |  |  |  |  |  |  |  |  |  |  |  |  |  |  |  |  |  |  |  |  |  |  |  |  |  |  |  |  |  |  |  |  |  |  |  |  |  |  |  |  |  |
| CP-P2-13-02-SD-0000 |  | Develop COLA Support Documents - FSAR Section 13.02 |  | 30d | 2022-09-19 A | 2023-01-30 | IFM-CFP-TO4-0055 FS+60d |  | 21d | 2023-01-31 | 2023-03-13 | 135d | 0d |  | 2023-01-30 | Yes | Yes |  | NUSCALE |  | supt |  | in Nuscale report as delayed (no change) | 2023-01-30 | 03 | NuScale | FNTP | P2 | 13 | 2.0 |  |  |  |  |  |  |  |  |  |  |  |  |  |  |  |  |  |  |
|  | 02 | **CFPP - COLA Prep - Part 02 - Chapter 13 - Section 2 - Section Writing** |  |  | 2023-01-31 | 2023-04-24 |  |  |  |  |  |  |  |  |  |  |  |  |  |  |  |  |  |  |  |  |  |  |  |  |  |  |  |  |  |  |  |  |  |  |  |  |  |  |  |  |  |  |
| CP-P2-13-02-SW-0000 |  | Prepare Draft Rev A -Check Updated Supporting Documents -FSAR Section 13.02 |  | 25d | 2023-01-31 | 2023-03-27 | CP-P2-13-02-SD-0000, IFM-SDA-TO4-0020 |  |  | 2023-01-31 | 2023-03-06 | 135d | 0d | start on or after 2023-01-31 |  | Yes | Yes |  | NUSCALE |  | deliv |  | in Nuscale report as delayed (no change) | 2023-03-27 | 03 | NuScale | FNTP | P2 | 13 | 2.0 | NS-REVA | 2023-01-31 | SDA Tie | 1 |  |  |  |  |  |  |  |  |  |  |  |  |  |  |
| CP-P2-13-02-SW-0005 |  | Review Draft Rev A - FSAR Section 13.02 (TO4 Team Review) |  | 10d | 2023-03-28 | 2023-04-10 | CP-P2-13-02-SW-0000 |  |  |  |  | 135d | 0d |  |  | Yes | Yes |  | NUSCALE |  | deliv |  | in Nuscale report as delayed (no change) |  | 03 | TO4 | FNTP | P2 |  |  |  |  |  | 2 | UDF_G3 | FIX |  |  |  |  |  |  |  |  |  |  |  |  |
| CP-P2-13-02-SW-0010 |  | Resolve Rev A Comments - FSAR Section 13.02 |  | 5d | 2023-04-11 | 2023-04-17 | CP-P2-13-02-SW-0005 |  |  |  |  | 135d | 0d |  |  | Yes | Yes |  | NUSCALE |  | deliv |  | in Nuscale report as delayed (no change) |  | 03 | NuScale | FNTP | P2 | 13 | 2.0 |  |  |  | 3 |  |  |  |  |  |  |  |  |  |  |  |  |  |  |
| CP-P2-13-02-SW-0012 |  | Confirm SDA Information and Inform Reviewers - FSAR Section 13.02 |  | 5d | 2023-04-18 | 2023-04-18 | CP-P2-13-02-SW-0010, PKM-0125 |  |  | 2023-04-18 | 2023-04-24 | 135d | 0d |  |  | Yes | Yes |  | FL4 |  | deliv |  | in Nuscale report as delayed (no change) |  | 03 | FL4 | FNTP | P2 |  |  |  |  | SDA Tie | 4 | UDF_G3 | FIX | Matt-TBD |  | N | NS-REV0 |  |  |  |  |  |  |  |  |
| CP-P2-13-02-SW-0015 |  | Issue Rev 0 - FSAR Section 13.02 |  | 5d | 2023-04-18 | 2023-04-24 | CP-P2-13-02-SW-0012 |  |  |  |  | 135d | 110d |  |  | Yes | Yes |  | NUSCALE |  | deliv | oct update Nuscale finish 19jun23 | in Nuscale report as delayed (no change) |  | 03 | NuScale | FNTP | P2 | 13 | 2.0 |  |  | SDA Tie | 5 | UDF_G3 |  |  |  | N | NS-REV0 | 2023-02-15 | -57 | 56COL.P2.CH13.260 | nuscale | oct update pushed out by revised Draft Rev A start date |  |  |  |
|  | 03 | **CFPP - COLA Prep - Part 02 - Chapter 13 - Section 3 Emergency Planning** |  |  | 2022-05-13 | 2023-09-28 |  |  |  |  |  |  |  |  |  |  |  |  |  |  |  |  |  |  |  |  |  |  |  |  |  |  |  |  |  |  |  |  |  |  |  |  |  |  |  |  |  |  |
|  | 01 | **CFPP - COLA Prep - Part 02 - Chapter 13 - Section 3 - Support Documents** |  |  | 2022-05-13 | 2023-09-21 |  |  |  |  |  |  |  |  |  |  |  |  |  |  |  |  |  |  |  |  |  |  |  |  |  |  |  |  |  |  |  |  |  |  |  |  |  |  |  |  |  |  |
| CP-P2-13-03-SD-0025 |  | Entry Criteria: SDA Melcor Base Model | milestone | 0d | 2022-05-13 A | 2022-05-13 A |  | 100% |  |  |  |  |  |  |  |  |  |  |  |  | supt |  |  |  |  | NuScale |  | P2 | 13 | 3.0 |  |  |  |  |  |  |  |  |  |  |  |  |  |  |  | cal |  |  |
| CP-P2-13-03-SD-0020 |  | Entry Criteria: Site Specific Design Complete (Need better definition for receivable) | milestone | 0d | 2022-08-01 A | 2022-08-01 A | PKM-0065 | 100% |  |  |  |  |  |  |  |  |  |  |  |  | supt |  |  |  |  | FL4 |  | P2 |  |  |  |  |  |  |  |  |  | from TO5 |  |  |  |  |  |  |  | cal | x |  |
| CP-P2-13-03-SD-0030 |  | Entry Criteria: SDA MACCS Base Model | milestone | 0d | 2022-08-01 A | 2022-08-01 A | PKM-0065 | 100% |  |  |  |  |  |  |  |  |  |  |  |  | supt |  |  |  |  | NuScale |  | P2 | 13 | 3.0 |  |  |  |  |  |  |  | moved from 2 may |  |  |  |  |  |  |  | cal |  |  |
| CP-P2-13-03-SD-0050 |  | COL Item 13.03 - Defense in Depth Report - new for EPZ Methodology |  | 25d | 2023-01-09 | 2023-02-10 | CP-P2-13-03-SD-0020 |  |  |  |  | 256d | 126d | start on or after 2023-01-09 |  |  |  | X |  |  | supt |  | in Nuscale report as delayed (no change) | 2023-02-10 |  | NuScale |  | P2 | 13 | 3.0 |  | 2023-01-09 |  |  |  |  |  |  |  |  |  |  |  |  |  | cal |  |  |
| CP-P2-13-03-SD-0060 |  | MELCOR module drop calc |  | 40d | 2023-01-09 | 2023-03-03 | CP-P2-19-01-SD-0065 SS |  |  |  |  | 106d | 0d | start on or after 2023-01-09 |  |  |  |  |  |  | supt |  | in Nuscale report as delayed (no change) | 2023-03-03 |  | NuScale |  | P2 | 13 | 3.0 |  | 2023-01-09 |  |  |  |  |  |  |  |  |  |  |  |  |  | cal |  | 13.03 |
| CP-P2-13-03-SD-0065 |  | COL Item 13.03 - Spent Fuel Pool Advanced Report *7125 |  | 16d | 2023-01-09 | 2023-02-10 | CP-P2-13-03-SD-0020 |  |  | 2023-01-09 | 2023-01-30 | 105d | 56d | start on or after 2023-01-09 |  |  |  | X |  |  | supt |  | in Nuscale report as delayed (no change) | 2023-02-10 |  | NuScale |  | P2 | 13 | 3.0 |  | 2023-01-09 |  |  |  |  |  |  |  |  |  |  |  |  | oct update slip start from 8may | cal |  |  |
| CP-P2-13-03-SD-0040 |  | COL Item 13.03-02 - Description of Near-Site Emergency Operations Facility |  | 30d | 2023-02-01 | 2023-03-14 |  |  |  |  |  | 119d | 34d | start on or after 2023-02-01 |  |  |  | X |  |  | supt | oct update Nuscale finish 04jan23 | in Nuscale report as delayed (no change) | 2023-03-14 |  | NuScale |  | P2 | 13 | 3.0 |  | 2023-02-01 |  |  |  |  |  |  |  |  |  |  |  |  |  | cal |  |  |
| CP-P2-13-03-SD-0045 |  | COL Item 13.03-01: Provide a description of the onsite operational support center (OSC) |  | 30d | 2023-02-01 | 2023-03-14 |  |  |  |  |  | 119d | 34d | start on or after 2023-02-01 |  |  |  | X |  |  | supt |  | in Nuscale report as delayed (no change) | 2023-03-14 |  | NuScale |  | P2 | 13 | 3.0 |  | 2023-02-01 |  |  |  |  |  |  |  |  |  |  |  |  |  | cal |  |  |
| CP-P2-13-03-SD-0055 |  | COL Item 13.03 - LRF Fraction Determination *7005 (COL Item 19.1) |  | 25d | 2023-02-17 | 2023-03-23 | CP-P2-13-03-SD-0020, CP-P2-13-03-SD-0030, CP-P2-19-01-SD-0065 |  |  |  |  | 16d | 0d | start on or after 2023-02-17 |  |  |  |  |  |  | supt |  | in Nuscale report as delayed (no change) | 2023-03-23 |  | NuScale |  | P2 | 13 | 3.0 |  | 2023-02-17 |  |  |  |  |  |  |  |  |  |  |  | nuscalex5.11 |  | cal |  | 19 |
| CP-P2-13-03-SD-0070 |  | MACCS module drop calc |  | 20d | 2023-03-06 | 2023-03-31 | CP-P2-13-03-SD-0025, CP-P2-13-03-SD-0030, CP-P2-13-03-SD-0060, CP-P2-19-01-SD-0065 |  |  |  |  | 106d | 21d | start on or after 2023-03-06 |  |  |  |  |  |  | supt |  | in Nuscale report as delayed (no change) | 2023-03-31 |  | NuScale |  | P2 | 13 | 3.0 |  | 2023-03-06 |  |  |  |  |  |  |  |  |  |  |  |  |  | cal |  |  |
| CP-P2-13-03-SD-0075 |  | MELCOR uncertainty runs |  | 40d | 2023-04-11 | 2023-06-06 | CP-P2-13-03-SD-0060 |  |  |  |  | 85d | 0d | start on or after 2023-04-11 |  |  |  |  |  |  | supt |  | in Nuscale report as delayed (no change) | 2023-06-06 |  | NuScale |  | P2 | 13 | 3.0 |  | 2023-04-11 |  |  |  |  |  |  |  |  |  |  |  |  |  | cal |  | 13.03 |
| CP-P2-13-03-SD-0085 |  | COL Item 13.03 - Identification of Accidents Used in Emergency Planning Zone Sizing Analyses *5808 |  | 30d | 2023-04-25 | 2023-06-06 | CP-P2-19-01-SD-0085, CP-P2-19-01-SD-0105 SS, CP-P2-19-01-SD-0110 SS, CP-P2-19-01-SD-0115 SS, CP-P2-19-01-SD-0145 SS, CP-P2-19-01-SD-0140 SS, CP-P2-19-01-SD-0130 SS |  |  |  |  | 85d | 0d | start on or after 2023-04-25 |  |  |  |  |  |  | supt |  | in Nuscale report as delayed (no change) | 2023-06-06 |  | NuScale |  | P2 | 13 | 3.0 |  | 2023-04-25 |  |  |  |  |  |  |  |  |  |  |  |  |  | cal |  |  |
| CP-P2-13-03-SD-0062 |  | EPZ Topical Report Approved by NRC | milestone | 0d | 2023-04-28 | 2023-04-28 | CP-P2-13-03-SD-0020, PKM-0110 FF |  |  |  |  | 251d |  |  |  |  |  |  |  |  | supt |  | in Nuscale report as delayed (no change) |  |  | NuScale |  | P2 | 13 | 3.0 |  |  |  |  |  |  |  |  |  |  |  |  |  |  |  | cal |  |  |
| CP-P2-13-03-SD-0095 |  | COL Item 13.03 - MACCS Simulation of EPZ Sequence |  | 25d | 2023-06-07 | 2023-07-12 | CP-P2-13-03-SD-0085, CP-P2-19-01-SD-0065 |  |  |  |  | 180d | 50d | start on or after 2023-06-07 |  |  |  | X |  |  | supt |  | in Nuscale report as delayed (no change) | 2023-07-12 |  | NuScale |  | P2 | 13 | 3.0 |  | 2023-06-07 |  |  |  |  |  |  |  |  |  |  |  |  |  | cal |  |  |
| CP-P2-13-03-SD-0080 |  | Develop *4844 - Severe Accident Inter-Module Interaction Analysis |  | 30d | 2023-06-08 | 2023-07-20 | CP-P2-19-01-SD-0085, CP-P2-19-01-SD-0105, CP-P2-19-01-SD-0110, CP-P2-19-01-SD-0115, CP-P2-19-01-SD-0145, CP-P2-19-01-SD-0140 |  |  |  |  | 144d | 14d | start on or after 2023-06-07 |  |  |  |  |  |  | supt |  | in Nuscale report as delayed (no change) | 2023-07-19 |  | NuScale |  | P2 | 13 | 3.0 |  | 2023-06-07 |  |  |  |  |  |  |  |  |  |  |  |  |  | cal |  |  |
| CP-P2-13-03-SD-0090 |  | MACCS uncertainty runs |  | 20d | 2023-07-13 | 2023-08-09 | CP-P2-13-03-SD-0075, CP-P2-19-01-SD-0065 |  |  |  |  | 130d | 0d | start on or after 2023-07-13 |  |  |  |  |  |  | supt |  | in Nuscale report as delayed (no change) | 2023-07-19 |  | NuScale |  | P2 | 13 | 3.0 |  | 2023-07-13 |  |  |  |  |  |  |  |  |  |  |  |  |  | cal |  | 13.03 |
| CP-P2-13-03-SD-0100 |  | COL Item 13.03 - EPZ Determination Report |  | 30d | 2023-08-10 | 2023-09-21 | CP-P2-13-03-SD-0065, CP-P2-13-03-SD-0070, CP-P2-13-03-SD-0080, CP-P2-13-03-SD-0085, CP-P2-13-03-SD-0090, CP-P2-13-03-SD-0095 FF, CP-P2-13-03-SD-0050 |  |  |  |  | 130d | 0d | start on or after 2023-08-10 |  |  |  |  |  |  | supt |  | in Nuscale report as delayed (no change) | 2023-09-21 |  | NuScale |  | P2 | 13 | 3.0 |  | 2023-08-10 |  |  |  |  |  |  |  |  |  |  |  |  |  | cal |  | 13.03 |

Notes:
- CP-P2-13-01-SD-0000: 9A SEP EOM Notes: Sep update / 11B NOV EOM Notes: As of 29nov22 finish slip from 28feb23 / 12B DEC EOM Notes: as of 30dec22 updated / CFPP - Contractor's Remarks: as of 30dec22 updated
- CP-P2-13-01-SW-0000: 9A SEP EOM Notes: Sep update reduced from 175 days / 11B NOV EOM Notes: As of 29nov22 start move to 31jan23, still driven out by pred / 12A DEC MIDMONTH Notes: As of 12dec22 Nuscale update ignores predecessor finish (revised predecessor SD-0000 to ss) / 12B DEC EOM Notes: as of 30dec22 updated / CFPP - Contractor's Remarks: as of 30dec22 updated
- CP-P2-13-01-SW-0010: 11B NOV EOM Notes: As of 29nov22 pred start slip out
- CP-P2-13-01-SW-0012: 12B DEC EOM Notes: In parallel with Team Review (hold duration at 5d)
- CP-P2-13-01-SW-0015: 9A SEP EOM Notes: Sep update Nuscale finish 8feb23 / 11B NOV EOM Notes: As of 29nov22 pred start slip out
- CP-P2-13-02-SD-0000: 11B NOV EOM Notes: As of 29nov22 finish move in from 13mar23
- CP-P2-13-02-SW-0000: 12B DEC EOM Notes: as of 30dec22 updated / CFPP - Contractor's Remarks: as of 30dec22 updated
- CP-P2-13-02-SW-0012: 12B DEC EOM Notes: In parallel with Team Review (hold duration at 5d)
- CP-P2-13-03-SD-0050: 9A SEP EOM Notes: Sep update Nuscale start date 27feb(held out to 1may by PKM-0110 pred) / 12A DEC MIDMONTH Notes: As of 12dec22 Nuscale update ignores predecessor finish (revise predecessor SD-0020 and sd-0052 to make date) / 12B DEC EOM Notes: as of 30dec22 updated remove pred p2-13-03-sd-0062 FF and PKM-0110 FF to meet forrecast date / CFPP - Contractor's Remarks: as of 30dec22 updated remove pred p2-13-03-sd-0062 FF and PKM-0110 FF to meet forrecast date
- CP-P2-13-03-SD-0060: 12A DEC MIDMONTH Notes: As of 12dec22 Nuscale update ignores predecessor finish (revised predecessor SD-0065 to ss)
- CP-P2-13-03-SD-0065: 9A SEP EOM Notes: Sep update start slip from 8may23 moved back from 12jun forecast driving out finish / 12A DEC MIDMONTH Notes: As of 12dec22 start move forward from 5jun23
- CP-P2-13-03-SD-0040: 9A SEP EOM Notes: Sep update added constraint removed pred sd-0035 / 11B NOV EOM Notes: As of 29nov22 start slip from 22nov 22 (50.150 decision from NRC)
- CP-P2-13-03-SD-0045: 9A SEP EOM Notes: Sep update added constraint removed pred sd-0035 / 11B NOV EOM Notes: As of 29nov22 start slip from 22nov 22 (50.150 decision from NRC)
- CP-P2-13-03-SD-0070: 12A DEC MIDMONTH Notes: As of 12dec22 revised by indirect changes
- CP-P2-13-03-SD-0075: 12B DEC EOM Notes: as of 30dec22 updated / CFPP - Contractor's Remarks: as of 30dec22 updated
- CP-P2-13-03-SD-0085: 12A DEC MIDMONTH Notes: As of 12dec22 Nuscale update ignores predecessor finish (revised all predecessor to ss)
- CP-P2-13-03-SD-0095: 9A SEP EOM Notes: Sep update Nuscale start 19jun (held out by SD-0085 finish 19jul) / 12A DEC MIDMONTH Notes: As of 12dec22 revised by indirect changes
- CP-P2-13-03-SD-0080: 12A DEC MIDMONTH Notes: As of 12dec22 start slip from 30may23
- CP-P2-13-03-SD-0090: 12A DEC MIDMONTH Notes: As of 12dec22 start slip from 1may23 / 12B DEC EOM Notes: as of 30dec22 updated / CFPP - Contractor's Remarks: as of 30dec22 updated
- CP-P2-13-03-SD-0100: 12A DEC MIDMONTH Notes: As of 12dec22 revised by indirect changes

| ID | WBS | Activity | Duration | Start | Finish | Predecessors | Complete | Remaining | Planned start | Planned finish | Total float | Free float | Constraint | Expected finish | zText_33 | zText_02 | zText_Level 3 Schedule | Rebaseline details | Reconcile Rev 0 Milestones | doc type | PREPDRFTREVA | 10C OCT Monthly Report Notes | Forecast Finish | Forecast Start | CFPP, LLC WBS Structure | Author | Period of Performance | Part | Chapter | Section | SDA needed | activity step | UDF Indicator 01 | SDA ties | Deliverable Owner | SDA cleanup notes | SDA ACT | REV0 - SDA | Contractor Date | DELTA | Nuscale ACT Number | nuscale comp | 10B OCT EOM Notes | VERIFIED MONTHLY UPDATE | 9A SEP EOM Notes | NEED UPDATE | Monthly Variance | 11A NOV MIDMONTH Notes | 11B NOV EOM Notes | 10A OCT MIDMONTH Notes |
| --- | --- | --- | --- | --- | --- | --- | --- | --- | --- | --- | --- | --- | --- | --- | --- | --- | --- | --- | --- | --- | --- | --- | --- | --- | --- | --- | --- | --- | --- | --- | --- | --- | --- | --- | --- | --- | --- | --- | --- | --- | --- | --- | --- | --- | --- | --- | --- | --- | --- | --- |
|  | 02 | **CFPP - COLA Prep - Part 02 - Chapter 13 - Section 3 - Section Writing** |  | 2023-05-02 | 2023-09-28 |  |  |  |  |  |  |  |  |  |  |  |  |  |  |  |  |  |  |  |  |  |  |  |  |  |  |  |  |  |  |  |  |  |  |  |  |  |  |  |  |  |  |  |  |  |
| CP-P2-13-03-SW-0000 |  | Prepare Draft Rev A -Check Updated Supporting Documents -FSAR Section 13.03 | 25d | 2023-05-02 | 2023-06-06 | CP-P2-03-07-SD-0040, IFM-SDA-TO4-0250, CP-P2-13-03-SD-0040, CP-P2-13-03-SD-0045, CP-P2-13-03-SD-0055, CP-P2-13-03-SD-0060, CP-P2-13-03-SD-0065, CP-P2-13-03-SD-0070, CP-P2-13-03-SD-0075 FF, CP-P2-13-03-SD-0085 FF |  |  |  |  | 85d | 0d | start on or after 2023-05-01 |  | Critical Path | Yes | Yes | NUSCALE | 13.03 | deliv | NS-REVA | in Nuscale report as delayed (no change) | 2023-06-26 | 2023-05-01 | 03 | NuScale | FNTP | P2 | 13 | 3.0 | SDA Tie | 1 |  |  |  |  |  |  |  |  |  |  |  |  |  |  |  |  |  |  |
| CP-P2-13-03-SW-0005 |  | Review Draft Rev A - FSAR Section 13.03 (TO4 Team Review) | 10d | 2023-06-07 | 2023-06-20 | CP-P2-13-03-SW-0000 |  |  |  |  | 85d | 0d |  |  | Critical Path | Yes | Yes | NUSCALE | 13.03 | deliv |  | in Nuscale report as delayed (no change) |  |  | 03 | TO4 | FNTP | P2 |  |  |  | 2 | UDF_G1 | FIX |  |  |  |  |  |  |  |  |  |  |  |  |  |  |  |  |
| CP-P2-13-03-SW-0010 |  | Resolve Rev A Comments - FSAR Section 13.03 | 5d | 2023-06-21 | 2023-06-27 | CP-P2-13-03-SW-0005 |  |  |  |  | 85d | 0d |  |  |  | Yes | Yes | NUSCALE | 13.03 | deliv |  | in Nuscale report as delayed (no change) |  |  | 03 | NuScale | FNTP | P2 | 13 | 3.0 |  | 3 |  |  |  |  |  |  |  |  |  |  |  |  |  |  |  |  |  |  |
| CP-P2-13-03-SW-0012 |  | Confirm SDA Information and Inform Reviewers - FSAR Section 13.03 | 5d | 2023-06-28 | 2023-06-28 | CP-P2-13-03-SW-0010, PKM-0125 |  |  | 2023-06-28 | 2023-07-05 | 85d | 60d |  |  |  | Yes | Yes | FL4 |  | deliv |  | in Nuscale report as delayed (no change) |  |  | 03 | FL4 | FNTP | P2 | 1 | 1.1 | SDA Tie | 4 | UDF_G1 | FIX | Matt-TBD | checked pushed out by pred | N | NS-REV0 |  |  |  |  |  |  |  |  |  |  |  |  |
| CP-P2-13-03-SW-0015 |  | Issue Rev 0 - FSAR Section 13.03 | 5d | 2023-09-22 | 2023-09-28 | CP-P2-13-03-SW-0012 |  |  |  |  | 25d | 0d | start on or after 2023-09-22 |  |  | Yes | Yes | NUSCALE | 13.03 | deliv |  | in Nuscale report as delayed (no change) | 2023-09-25 | 2023-09-22 | 03 | NuScale | FNTP | P2 | 13 | 3.0 | SDA Tie | 5 | UDF_G1 |  |  |  | N | NS-REV0 | 2023-10-19 | -13 | 56COL.P2.CH13.270 | nuscale | oct update Nuscale finish 19oct23 |  |  |  |  |  |  |  |
|  | 04 | **CFPP - COLA Prep - Part 02 - Chapter 13 - Section 4 Operational Programs** |  | 2022-08-30 | 2023-04-07 |  |  |  |  |  |  |  |  |  |  |  |  |  |  |  |  |  |  |  |  |  |  |  |  |  |  |  |  |  |  |  |  |  |  |  |  |  |  |  |  |  |  |  |  |  |
|  | 01 | **CFPP - COLA Prep - Part 02 - Chapter 13 - Section 4 - Support Documents** |  | 2022-08-30 | 2023-01-13 |  |  |  |  |  |  |  |  |  |  |  |  |  |  |  |  |  |  |  |  |  |  |  |  |  |  |  |  |  |  |  |  |  |  |  |  |  |  |  |  |  |  |  |  |  |
| CP-P2-13-04-SD-0000 |  | Develop Operation Program Description | 28d | 2022-08-30 A | 2023-01-13 | IFM-CFP-TO4-0055 FS+60d |  | 10d | 2022-08-30 | 2022-10-07 | 146d | 0d |  | 2023-01-13 |  | Yes | Yes | NUSCALE |  | supt |  | in Nuscale report as delayed (confirmed) | 2023-01-13 |  | 03 | NuScale | FNTP | P2 | 13 | 4.0 |  |  |  |  |  |  |  |  |  |  |  |  | oct update finish slip from 25oct22 | X | Sep update finish slip from 7oct | OCT | Oct |  |  |  |
|  | 02 | **CFPP - COLA Prep - Part 02 - Chapter 13 - Section 4 - Section Writing** |  | 2023-01-16 | 2023-04-07 |  |  |  |  |  |  |  |  |  |  |  |  |  |  |  |  |  |  |  |  |  |  |  |  |  |  |  |  |  |  |  |  |  |  |  |  |  |  |  |  |  |  |  |  |  |
| CP-P2-13-04-SW-0000 |  | Prepare Draft Rev A -Check Updated Supporting Documents -FSAR Section 13.04 | 70d | 2023-01-16 | 2023-03-10 | IFM-CFP-TO4-0055, CP-P2-13-04-SD-0000, IFM-SDA-TO4-0025 |  |  | 2023-01-16 | 2023-04-21 | 146d | 0d | start on or after 2023-01-16 |  |  | Yes | Yes | NUSCALE |  | deliv | NS-REVA | in Nuscale report as delayed (confirmed) | 2023-03-10 | 2023-01-16 | 03 | NuScale | FNTP | P2 | 13 | 4.0 | SDA Tie | 1 |  |  |  |  |  |  |  |  |  |  | oct update pred slip |  |  | OCT |  |  |  |  |
| CP-P2-13-04-SW-0005 |  | Review Draft Rev A - FSAR Section 13.04 (TO4 Team Review) | 10d | 2023-03-13 | 2023-03-24 | CP-P2-13-04-SW-0000 |  |  |  |  | 146d | 0d |  |  |  | Yes | Yes | NUSCALE |  | deliv |  | in Nuscale report as delayed (confirmed) |  |  | 03 | TO4 | FNTP | P2 |  |  |  | 2 | UDF_G1 | FIX |  |  |  |  |  |  |  |  |  |  |  |  |  |  |  |  |
| CP-P2-13-04-SW-0010 |  | Resolve Rev A Comments - FSAR Section 13.04 | 5d | 2023-03-27 | 2023-03-31 | CP-P2-13-04-SW-0005 |  |  |  |  | 146d | 0d |  |  |  | Yes | Yes | NUSCALE |  | deliv |  | in Nuscale report as delayed (confirmed) |  |  | 03 | NuScale | FNTP | P2 | 13 | 4.0 |  | 3 |  |  |  |  |  |  |  |  |  |  |  |  |  |  |  |  |  |  |
| CP-P2-13-04-SW-0012 |  | Confirm SDA Information and Inform Reviewers - FSAR Section 13.04 | 5d | 2023-04-03 | 2023-04-03 | CP-P2-13-04-SW-0010, PKM-0125 |  |  | 2023-04-03 | 2023-04-07 | 146d | 0d |  |  |  | Yes | Yes | FL4 |  | deliv |  | in Nuscale report as delayed (confirmed) |  |  | 03 | FL4 | FNTP | P2 | 1 | 1.1 | SDA Tie | 4 | UDF_G1 | FIX | Matt-TBD | checked pushed out by pred | N | NS-REV0 |  |  |  |  |  |  |  |  |  |  |  |  |
| CP-P2-13-04-SW-0015 |  | Issue Rev 0 - FSAR Section 13.04 | 5d | 2023-04-03 | 2023-04-07 | CP-P2-13-04-SW-0012 |  |  |  |  | 146d | 121d |  |  |  | Yes | Yes | NUSCALE |  | deliv |  | in Nuscale report as delayed (confirmed) |  |  | 03 | NuScale | FNTP | P2 | 13 | 4.0 | SDA Tie | 5 | UDF_G3 |  |  |  | N | NS-REV0 | 2023-02-15 | 2 | 56COL.P2.CH13.280 | nuscale | oct update Nuscale finish 9may23 |  |  |  |  |  |  |  |
|  | 05 | **CFPP - COLA Prep - Part 02 - Chapter 13 - Section 5 Plant Procedures** |  | 2022-08-26 | 2023-04-18 |  |  |  |  |  |  |  |  |  |  |  |  |  |  |  |  |  |  |  |  |  |  |  |  |  |  |  |  |  |  |  |  |  |  |  |  |  |  |  |  |  |  |  |  |  |
|  | 01 | **CFPP - COLA Prep - Part 02 - Chapter 13 - Section 5 - Support Documents** |  | 2022-08-26 | 2022-11-18 |  |  |  |  |  |  |  |  |  |  |  |  |  |  |  |  |  |  |  |  |  |  |  |  |  |  |  |  |  |  |  |  |  |  |  |  |  |  |  |  |  |  |  |  |  |
| CP-P2-13-05-SD-0015 |  | Develop Supporting Documents - FSAR 13.05 | 40d | 2022-08-26 A | 2022-11-18 A | IFM-CFP-TO4-0055 FS+60d | 100% |  | 2022-09-01 | 2022-10-27 |  |  |  |  |  | Yes | Yes | NUSCALE | 13.05 | supt |  | in Nuscale report as delayed (no change) |  |  | 03 | NuScale | FNTP | P2 | 13 | 5.0 |  |  |  |  |  | 6 supporting documents |  |  |  |  |  | nuscalex13.5 |  |  | Sep update |  |  | As of 15nov22 pending review of fluor deliverables | As of 29nov22 finish slip from 31oct22 |  |
|  | 02 | **CFPP - COLA Prep - Part 02 - Chapter 13 - Section 5 - Section Writing** |  | 2023-01-03 | 2023-04-18 |  |  |  |  |  |  |  |  |  |  |  |  |  |  |  |  |  |  |  |  |  |  |  |  |  |  |  |  |  |  |  |  |  |  |  |  |  |  |  |  |  |  |  |  |  |
| CP-P2-13-05-SW-0000 |  | Prepare Draft Rev A -Check Updated Supporting Documents -FSAR Section 13.05 | 110d | 2023-01-03 | 2023-03-21 | CP-P2-13-05-SD-0015, IFM-SDA-TO4-0255 |  |  | 2023-01-03 | 2023-06-06 | 139d | 0d | start on or after 2023-01-03 |  |  | Yes | Yes | NUSCALE | 13.05 | deliv | NS-REVA | in Nuscale report as delayed (no change) | 2023-03-03 | 2023-01-03 | 03 | NuScale | FNTP | P2 | 13 | 5.0 | SDA Tie | 1 |  |  |  |  |  |  |  |  |  | nuscalex13.5 |  |  |  |  |  |  | As of 29nov22 start slip from 01nov22 | oct update reduced duration from 115 days |
| CP-P2-13-05-SW-0005 |  | Review Draft Rev A - FSAR Section 13.05 (TO4 Team Review) | 10d | 2023-03-22 | 2023-04-04 | CP-P2-13-05-SW-0000 |  |  |  |  | 139d | 0d |  |  |  | Yes | Yes | NUSCALE | 13.05 | deliv |  | in Nuscale report as delayed (no change) |  |  | 03 | TO4 | FNTP | P2 |  |  |  | 2 | UDF_G1 | FIX |  |  |  |  |  |  |  | nuscalex13.5 |  |  |  |  |  |  | As of 29nov22 pred start slip out |  |
| CP-P2-13-05-SW-0010 |  | Resolve Rev A Comments - FSAR Section 13.05 | 5d | 2023-04-05 | 2023-04-11 | CP-P2-13-05-SW-0005 |  |  |  |  | 139d | 0d |  |  |  | Yes | Yes | NUSCALE | 13.05 | deliv |  | in Nuscale report as delayed (no change) |  |  | 03 | NuScale | FNTP | P2 | 13 | 5.0 |  | 3 |  |  |  |  |  |  |  |  |  | nuscalex13.5 |  |  |  |  |  |  | As of 29nov22 pred start slip out |  |
| CP-P2-13-05-SW-0012 |  | Confirm SDA Information and Inform Reviewers - FSAR Section 13.05 | 5d | 2023-04-12 | 2023-04-12 | CP-P2-13-05-SW-0010, PKM-0125 |  |  | 2023-04-12 | 2023-04-18 | 139d | 0d |  |  |  | Yes | Yes | FL4 |  | deliv |  | in Nuscale report as delayed (no change) |  |  | 03 | FL4 | FNTP | P2 | 1 | 1.1 | SDA Tie | 4 | UDF_G1 | FIX | Matt-TBD | checked pushed out by pred | N | NS-REV0 |  |  |  | nuscalex13.5 |  |  |  |  |  |  | As of 29nov22 pred start slip out |  |
| CP-P2-13-05-SW-0015 |  | Issue Rev 0 - FSAR Section 13.05 | 5d | 2023-04-12 | 2023-04-18 | CP-P2-13-05-SW-0012 |  |  |  |  | 139d | 114d |  |  |  | Yes | Yes | NUSCALE | 13.05 | deliv |  | in Nuscale report as delayed (no change) |  |  | 03 | NuScale | FNTP | P2 | 13 | 5.0 | SDA Tie | 5 | UDF_G3 |  |  |  | N | NS-REV0 | 2023-09-05 | 1 | 56COL.P2.CH13.290 | nuscalex13.5 | oct update Nuscale finish 13mar23 |  |  |  |  |  | As of 29nov22 pred start slip out |  |

Notes:
- CP-P2-13-03-SW-0000: 12A DEC MIDMONTH Notes: As of 12dec22 revised remove EPZ pred 13-03-sd-0100 (start still driven out by sd-0090) / 12B DEC EOM Notes: as of 30dec22 revised pred CP-P2-13-03-SD-0090, CP-P2-13-03-SD-0080, FS to FF Removed pred CP-P2-13-03-SD-0090, 0095, 0080 FF / CFPP - Contractor's Remarks: as of 30dec22 updated prep can start upon completion of Part 5 draft
- CP-P2-13-03-SW-0012: 12B DEC EOM Notes: In parallel with Team Review (hold duration at 5d)
- CP-P2-13-03-SW-0015: 12B DEC EOM Notes: as of 30dec22 updated final issuance tied to 13.3 validation materials / CFPP - Contractor's Remarks: as of 30dec22 updated final issuance tied to 13.3 validation materials
- CP-P2-13-04-SD-0000: 12B DEC EOM Notes: as of 30dec22 updated / CFPP - Contractor's Remarks: as of 30dec22 updated
- CP-P2-13-04-SW-0000: 12B DEC EOM Notes: as of 30dec22 updated / CFPP - Contractor's Remarks: as of 30dec22 updated
- CP-P2-13-04-SW-0012: 12B DEC EOM Notes: In parallel with Team Review (hold duration at 5d)
- CP-P2-13-05-SW-0000: 12B DEC EOM Notes: As of 30dec22 delayed / CFPP - Contractor's Remarks: as of 30dec22 updated
- CP-P2-13-05-SW-0012: 12B DEC EOM Notes: In parallel with Team Review (hold duration at 5d)

| ID | WBS | Activity | Duration | Start | Finish | Predecessors | Remaining | Planned start | Planned finish | Total float | Free float | Constraint | Expected finish | zText_02 | zText_Level 3 Schedule | Rebaseline details | Reconcile Rev 0 Milestones | doc type | PREPDRFTREVA | 12A DEC MIDMONTH Notes | 12B DEC EOM Notes | 10C OCT Monthly Report Notes | CFPP - Contractor's Remarks | Forecast Finish | Forecast Start | CFPP, LLC WBS Structure | Author | Period of Performance | Part | Chapter | Section | SDA needed | activity step | UDF Indicator 01 | SDA ties | Deliverable Owner | SDA cleanup notes | SDA ACT | REV0 - SDA | Contractor Date | DELTA | Nuscale ACT Number | nuscale comp | 10B OCT EOM Notes | VERIFIED MONTHLY UPDATE | 9A SEP EOM Notes | NEED UPDATE | Monthly Variance | 11B NOV EOM Notes | 10A OCT MIDMONTH Notes |
| --- | --- | --- | --- | --- | --- | --- | --- | --- | --- | --- | --- | --- | --- | --- | --- | --- | --- | --- | --- | --- | --- | --- | --- | --- | --- | --- | --- | --- | --- | --- | --- | --- | --- | --- | --- | --- | --- | --- | --- | --- | --- | --- | --- | --- | --- | --- | --- | --- | --- | --- |
|  | 06 | **CFPP - COLA Prep - Part 02 - Chapter 13 - Section 6 Security** |  | 2023-02-27 | 2023-05-19 |  |  |  |  |  |  |  |  |  |  |  |  |  |  |  |  |  |  |  |  |  |  |  |  |  |  |  |  |  |  |  |  |  |  |  |  |  |  |  |  |  |  |  |  |  |
|  | 01 | **CFPP - COLA Prep - Part 02 - Chapter 13 - Section 6 - Support Documents** |  |  |  |  |  |  |  |  |  |  |  |  |  |  |  |  |  |  |  |  |  |  |  |  |  |  |  |  |  |  |  |  |  |  |  |  |  |  |  |  |  |  |  |  |  |  |  |  |
|  | 02 | **CFPP - COLA Prep - Part 02 - Chapter 13 - Section 6 - Section Writing** |  | 2023-02-27 | 2023-05-19 |  |  |  |  |  |  |  |  |  |  |  |  |  |  |  |  |  |  |  |  |  |  |  |  |  |  |  |  |  |  |  |  |  |  |  |  |  |  |  |  |  |  |  |  |  |
| CP-P2-13-06-SW-0000 |  | Prepare Draft Rev A -Check Updated Supporting Documents -FSAR Section 13.06 | 25d | 2023-02-27 | 2023-04-21 | IFM-CFP-TO4-0055 FS+60d, IFM-SDA-TO4-0260 |  | 2023-02-27 | 2023-03-31 | 116d | 0d | start on or after 2023-02-27 |  | Yes | Yes | NUSCALE | 13.06 | deliv | NS-REVA | As of 12dec22 start slip from 30may23 | as of 30dec22 updated removed tie from Part 6 security plans | in Nuscale report as delayed (no change) | as of 30dec22 updated removed tie from Part 6 security plans | 2023-04-21 | 2023-02-27 | 03 | NuScale | FNTP | P2 | 13 | 6.0 | SDA Tie | 1 |  |  |  |  |  |  |  |  |  |  |  |  |  |  |  |  |  |
| CP-P2-13-06-SW-0005 |  | Review Draft Rev A - FSAR Section 13.06 (TO4 Team Review) | 10d | 2023-04-24 | 2023-05-05 | CP-P2-13-06-SW-0000 |  |  |  | 116d | 0d |  |  | Yes | Yes | NUSCALE | 13.06 | deliv |  |  |  | in Nuscale report as delayed (no change) |  |  |  | 03 | TO4 | FNTP | P2 |  |  |  | 2 | UDF_G1 | FIX |  |  |  |  |  |  |  |  |  |  |  |  |  |  |  |
| CP-P2-13-06-SW-0010 |  | Resolve Rev A Comments - FSAR Section 13.06 | 5d | 2023-05-08 | 2023-05-12 | CP-P2-13-06-SW-0005 |  |  |  | 116d | 0d |  |  | Yes | Yes | NUSCALE | 13.06 | deliv |  |  |  | in Nuscale report as delayed (no change) |  |  |  | 03 | NuScale | FNTP | P2 | 13 | 6.0 |  | 3 |  |  |  |  |  |  |  |  |  |  |  |  |  |  |  |  |  |
| CP-P2-13-06-SW-0012 |  | Confirm SDA Information and Inform Reviewers - FSAR Section 13.06 | 5d | 2023-05-15 | 2023-05-15 | CP-P2-13-06-SW-0010, PKM-0125 |  | 2023-05-15 | 2023-05-19 | 116d | 0d |  |  | Yes | Yes | FL4 |  | deliv |  |  | In parallel with Team Review (hold duration at 5d) | in Nuscale report as delayed (no change) |  |  |  | 03 | FL4 | FNTP | P2 | 1 | 1.1 | SDA Tie | 4 | UDF_G1 | FIX | Matt-TBD | checked pushed out by pred | N | NS-REV0 |  |  |  |  |  |  |  |  |  |  |  |
| CP-P2-13-06-SW-0015 |  | Issue Rev 0 - FSAR Section 13.06 | 5d | 2023-05-15 | 2023-05-19 | CP-P2-13-06-SW-0012 |  |  |  | 116d | 91d |  |  | Yes | Yes | NUSCALE | 13.06 | deliv |  |  |  | in Nuscale report as delayed (no change) |  |  |  | 03 | NuScale | FNTP | P2 | 13 | 6.0 | SDA Tie | 5 | UDF_G1 |  |  |  | N | NS-REV0 | 2023-10-10 | -19 | 56COL.P2.CH13.300 | nuscale | oct update Nuscale finish 04oct23 |  |  |  |  |  |  |
|  | 07 | **CFPP - COLA Prep - Part 02 - Chapter 13 - Section 7 Fitness for Duty** |  | 2022-11-22 | 2023-02-27 |  |  |  |  |  |  |  |  |  |  |  |  |  |  |  |  |  |  |  |  |  |  |  |  |  |  |  |  |  |  |  |  |  |  |  |  |  |  |  |  |  |  |  |  |  |
|  | 01 | **CFPP - COLA Prep - Part 02 - Chapter 13 - Section 7 - Support Documents** |  |  |  |  |  |  |  |  |  |  |  |  |  |  |  |  |  |  |  |  |  |  |  |  |  |  |  |  |  |  |  |  |  |  |  |  |  |  |  |  |  |  |  |  |  |  |  |  |
|  | 02 | **CFPP - COLA Prep - Part 02 - Chapter 13 - Section 7 - Section Writing** |  | 2022-11-22 | 2023-02-27 |  |  |  |  |  |  |  |  |  |  |  |  |  |  |  |  |  |  |  |  |  |  |  |  |  |  |  |  |  |  |  |  |  |  |  |  |  |  |  |  |  |  |  |  |  |
| CP-P2-13-07-SW-0000 |  | Prepare Draft Rev A -Check Updated Supporting Documents -FSAR Section 13.07 | 25d | 2022-11-22 A | 2023-01-30 | IFM-SDA-TO4-0030 | 21d | 2022-11-09 | 2022-12-14 | 175d | 0d |  | 2023-01-30 | Yes | Yes | NUSCALE |  | deliv | NS-REVA |  | as of 30dec22 updated | in Nuscale report as delayed (confirmed) | as of 30dec22 updated | 2023-01-30 |  | 03 | NuScale | FNTP | P2 | 13 | 7 | SDA Tie | 1 |  |  |  |  |  |  |  |  |  |  | oct update start slip from 18oct22 | X | Sep update start slip from 27sep | OCT | Oct | As of 29nov22 start slip from 9nov22 |  |
| CP-P2-13-07-SW-0005 |  | Review Draft Rev A - FSAR Section 13.07 (TO4 Team Review) | 10d | 2023-01-31 | 2023-02-13 | CP-P2-13-07-SW-0000 |  |  |  | 175d | 0d |  |  | Yes | Yes | NUSCALE |  | deliv |  |  |  | in Nuscale report as delayed (confirmed) |  |  |  | 03 | TO4 | FNTP | P2 |  |  |  | 2 | UDF_G1 | FIX |  |  |  |  |  |  |  |  |  |  |  |  |  | As of 29nov22 pred start slip out |  |
| CP-P2-13-07-SW-0010 |  | Resolve Rev A Comments - FSAR Section 13.07 | 5d | 2023-02-14 | 2023-02-20 | CP-P2-13-07-SW-0005 |  |  |  | 175d | 0d |  |  | Yes | Yes | NUSCALE |  | deliv |  |  |  | in Nuscale report as delayed (confirmed) |  |  |  | 03 | NuScale | FNTP | P2 | 13 | 7 |  | 3 |  |  |  |  |  |  |  |  |  |  |  |  |  |  |  | As of 29nov22 pred start slip out |  |
| CP-P2-13-07-SW-0012 |  | Confirm SDA Information and Inform Reviewers - FSAR Section 13.07 | 5d | 2023-02-21 | 2023-02-21 | CP-P2-13-07-SW-0010, PKM-0125 |  | 2023-02-21 | 2023-02-27 | 175d | 0d |  |  | Yes | Yes | FL4 |  | deliv |  |  | In parallel with Team Review (hold duration at 5d) | in Nuscale report as delayed (confirmed) |  |  |  | 03 | FL4 | FNTP | P2 |  |  | SDA Tie | 4 | UDF_G1 | FIX | Matt-TBD |  | N | NS-REV0 |  |  |  |  |  |  |  |  |  | As of 29nov22 pred start slip out |  |
| CP-P2-13-07-SW-0015 |  | Issue Rev 0 - FSAR Section 13.07 | 5d | 2023-02-21 | 2023-02-27 | CP-P2-13-07-SW-0012 |  |  |  | 175d | 150d |  |  | Yes | Yes | NUSCALE |  | deliv |  |  |  | in Nuscale report as delayed (confirmed) |  |  |  | 03 | NuScale | FNTP | P2 | 13 | 7 | SDA Tie | 5 | UDF_G3 |  |  |  | N | NS-REV0 | 2022-11-30 | 8 | 56COL.P2.CH13.310 | nuscale | oct update Nuscale finish 14feb23 |  |  |  |  | As of 29nov22 pred start slip out | oct update "Confirm SDA date" driving out |
|  | 14 | **CFPP - COLA Prep - Part 02 - Chapter 14 Initial Test Program and ITAAC** |  | 2022-08-01 | 2023-05-01 |  |  |  |  |  |  |  |  |  |  |  |  |  |  |  |  |  |  |  |  |  |  |  |  |  |  |  |  |  |  |  |  |  |  |  |  |  |  |  |  |  |  |  |  |  |
|  | 01 | **CFPP - COLA Prep - Part 02 - Chapter 14 -Sec 1 Verify Programs/Specific Info to be Addressed for ITP** |  | 2022-12-12 | 2023-02-24 |  |  |  |  |  |  |  |  |  |  |  |  |  |  |  |  |  |  |  |  |  |  |  |  |  |  |  |  |  |  |  |  |  |  |  |  |  |  |  |  |  |  |  |  |  |
|  | 01 | **CFPP - COLA Prep - Part 02 - Chapter 14 -Section 1 - Support Documents** |  |  |  |  |  |  |  |  |  |  |  |  |  |  |  |  |  |  |  |  |  |  |  |  |  |  |  |  |  |  |  |  |  |  |  |  |  |  |  |  |  |  |  |  |  |  |  |  |
|  | 02 | **CFPP - COLA Prep - Part 02 - Chapter 14 - Section 1 - Section Writing** |  | 2022-12-12 | 2023-02-24 |  |  |  |  |  |  |  |  |  |  |  |  |  |  |  |  |  |  |  |  |  |  |  |  |  |  |  |  |  |  |  |  |  |  |  |  |  |  |  |  |  |  |  |  |  |
| CP-P2-14-01-SW-0000 |  | Prepare Draft Rev A -Check Updated Supporting Documents -FSAR Sections 14.0 / 14.1 | 25d | 2022-12-12 A | 2023-01-27 | IFM-SDA-TO4-0115, IFM-SDA-TO4-0117 | 20d | 2022-12-12 | 2023-01-16 | 142d | 0d |  | 2023-01-27 | Yes | Yes | NUSCALE |  | deliv | NS-REVA |  | as of 30dec22 updated | in Nuscale report as delayed (confirmed) | as of 30dec22 updated | 2023-01-27 |  | 03 | NuScale | FNTP | P2 | 14 | 1 | SDA Tie | 1 |  |  |  |  |  |  |  |  |  |  | oct update finish slip from 16jan23 |  |  |  | Oct |  |  |
| CP-P2-14-01-SW-0005 |  | Review Draft Rev A - FSAR Section 14.00 / 14.01 (TO4 Team Review) | 10d | 2023-01-30 | 2023-02-10 | CP-P2-14-01-SW-0000 |  |  |  | 176d | 0d |  |  | Yes | Yes | NUSCALE |  | deliv |  |  |  | in Nuscale report as delayed (confirmed) |  |  |  | 03 | TO4 | FNTP | P2 |  |  |  | 2 | UDF_G1 | FIX |  |  |  |  |  |  |  |  |  |  |  |  |  |  |  |
| CP-P2-14-01-SW-0010 |  | Resolve Rev A Comments - FSAR Section 14.00 / 14.01 | 5d | 2023-02-13 | 2023-02-17 | CP-P2-14-01-SW-0005 |  |  |  | 176d | 0d |  |  | Yes | Yes | NUSCALE |  | deliv |  |  |  | in Nuscale report as delayed (confirmed) |  |  |  | 03 | NuScale | FNTP | P2 | 14 | 1 |  | 3 |  |  |  |  |  |  |  |  |  |  |  |  |  |  |  |  |  |
| CP-P2-14-01-SW-0012 |  | Confirm SDA Information and Inform Reviewers - FSAR Section 14.00 / 14.01 | 5d | 2023-02-20 | 2023-02-20 | CP-P2-14-01-SW-0010, PKM-0125 |  | 2023-02-20 | 2023-02-24 | 176d | 0d |  |  | Yes | Yes | FL4 |  | deliv |  |  | In parallel with Team Review (hold duration at 5d) | in Nuscale report as delayed (confirmed) |  |  |  | 03 | FL4 | FNTP | P2 | 1 | 1.1 | SDA Tie | 4 | UDF_G1 | FIX | Matt-TBD | checked pushed out by pred | N | NS-REV0 |  |  |  |  |  |  |  |  |  |  |  |
| CP-P2-14-01-SW-0015 |  | Issue Rev 0 - FSAR Section 14.00 / 14.01 | 5d | 2023-02-20 | 2023-02-24 | CP-P2-14-01-SW-0012 |  |  |  | 176d | 46d |  |  | Yes | Yes | NUSCALE |  | deliv |  |  |  | in Nuscale report as delayed (confirmed) |  |  |  | 03 | NuScale | FNTP | P2 | 14 | 1 | SDA Tie | 5 | UDF_G3 |  |  |  | N | NS-REV0 | 2023-02-15 | 3 | 56COL.P2.CH14.200 | nuscale | oct update Nuscale finish 15mar23 |  |  |  |  |  |  |

| ID | WBS | Activity | Duration | Start | Finish | Predecessors | Complete | Remaining | Planned start | Planned finish | Total float | Free float | Constraint | Expected finish | zText_02 | Change Management # (Project, CM#) | zText_Level 3 Schedule | Rebaseline details | Monthly Variance | doc type | 10B OCT EOM Notes | CFPP, LLC WBS Structure | Author | Period of Performance | Part | Chapter | Section | VERIFIED MONTHLY UPDATE | NEED UPDATE | Reconcile Rev 0 Milestones | nuscale comp | PREPDRFTREVA | Forecast Finish | SDA needed | activity step | UDF Indicator 01 | SDA ties | Deliverable Owner | SDA ACT | REV0 - SDA | Contractor Date | DELTA | Nuscale ACT Number | 11B NOV EOM Notes | Forecast Start | Critcal Path | 12A DEC MIDMONTH Notes | 10A OCT MIDMONTH Notes |
| --- | --- | --- | --- | --- | --- | --- | --- | --- | --- | --- | --- | --- | --- | --- | --- | --- | --- | --- | --- | --- | --- | --- | --- | --- | --- | --- | --- | --- | --- | --- | --- | --- | --- | --- | --- | --- | --- | --- | --- | --- | --- | --- | --- | --- | --- | --- | --- | --- |
|  | 02 | **CFPP - COLA Prep - Part 02 - Chapter 14 - Section 2 Initial Plant Test Program** |  | 2022-08-01 | 2023-05-01 |  |  |  |  |  |  |  |  |  |  |  |  |  |  |  |  |  |  |  |  |  |  |  |  |  |  |  |  |  |  |  |  |  |  |  |  |  |  |  |  |  |  |  |
|  | 01 | **CFPP - COLA Prep - Part 02 - Chapter 14 - Section 2 - Support Documents** |  | 2022-08-01 | 2022-11-23 |  |  |  |  |  |  |  |  |  |  |  |  |  |  |  |  |  |  |  |  |  |  |  |  |  |  |  |  |  |  |  |  |  |  |  |  |  |  |  |  |  |  |  |
| CP-P2-14-02-SD-0000 |  | Develop Supporting Documents FSAR Section 14.02 | 86d | 2022-08-01 A | 2022-11-23 A | IFM-TO3-TO4-0010, IFM-TO5-TO4-0015, IFM-TO5-TO4-0070, IFM-TO5-TO4-0250, IFM-CFP-TO4-0055, IFM-TO5-TO4-0025, IFM-TO5-TO4-0030 | 100% |  | 2022-10-19 | 2023-02-17 |  |  |  |  | Yes | UAMPS TO#4 C-012 | Yes | NUSCALE | Oct | supt | oct update finish slip from 17jan23 | 03 | NuScale | FNTP | P2 | 14 | 2.0 |  |  |  |  |  |  |  |  |  |  |  |  |  |  |  |  |  |  |  |  |  |
|  | 02 | **CFPP - COLA Prep - Part 02 - Chapter 14 - Section 2 - Section Writing** |  | 2022-10-05 | 2023-05-01 |  |  |  |  |  |  |  |  |  |  |  |  |  |  |  |  |  |  |  |  |  |  |  |  |  |  |  |  |  |  |  |  |  |  |  |  |  |  |  |  |  |  |  |
| CP-P2-14-02-SW-0000 |  | Prepare Draft Rev A -Check Updated Supporting Documents -FSAR Section 14.2 | 125d | 2022-10-05 A | 2023-04-03 | CP-P2-14-02-SD-0000 FF, IFM-SDA-TO4-0265 FF |  | 66d | 2022-10-03 | 2023-03-28 | 130d | 0d |  | 2023-04-03 | Yes |  | Yes | NUSCALE | Oct | deliv | oct update finish move forward from 31mar23 | 03 | NuScale | FNTP | P2 | 14 | 2.0 | X | OCT | 14.02 | nuscalex | NS-REVA | 2023-04-03 | SDA Tie | 1 |  |  |  |  |  |  |  |  |  |  |  |  |  |
| CP-P2-14-02-SW-0005 |  | Review Draft Rev A - FSAR Section 14.02 (TO4 Team Review) | 10d | 2023-04-04 | 2023-04-17 | CP-P2-14-02-SW-0000 |  |  |  |  | 130d | 0d |  |  | Yes |  | Yes | NUSCALE |  | deliv |  | 03 | TO4 | FNTP | P2 |  |  |  |  | 14.02 | nuscalex |  |  |  | 2 | UDF_G1 | FIX |  |  |  |  |  |  |  |  |  |  |  |
| CP-P2-14-02-SW-0010 |  | Resolve Rev A Comments - FSAR Section 14.02 | 5d | 2023-04-18 | 2023-04-24 | CP-P2-14-02-SW-0005 |  |  |  |  | 130d | 0d |  |  | Yes |  | Yes | NUSCALE |  | deliv |  | 03 | NuScale | FNTP | P2 | 14 | 2.0 |  |  | 14.02 | nuscalex |  |  |  | 3 |  |  |  |  |  |  |  |  |  |  |  |  |  |
| CP-P2-14-02-SW-0012 |  | Confirm SDA Information and Inform Reviewers - FSAR Section 14.02 | 5d | 2023-04-25 | 2023-04-25 | CP-P2-14-02-SW-0010, PKM-0125 |  |  | 2023-04-25 | 2023-05-01 | 130d | 0d |  |  | Yes |  | Yes | FL4 |  | deliv |  | 03 | FL4 | FNTP | P2 | 1 | 1.1 |  |  |  | nuscalex |  |  | SDA Tie | 4 | UDF_G1 | FIX | Matt-TBD | N | NS-REV0 |  |  |  |  |  |  |  |  |
| CP-P2-14-02-SW-0015 |  | Issue Rev 0 - FSAR Section 14.02 | 5d | 2023-04-25 | 2023-05-01 | CP-P2-14-02-SW-0012 |  |  |  |  | 130d | 0d |  |  | Yes |  | Yes | NUSCALE |  | deliv | oct update Nuscale finish 14apr23 | 03 | NuScale | FNTP | P2 | 14 | 2.0 |  |  | 14.02 | nuscalex |  |  | SDA Tie | 5 | UDF_G3 |  |  | N | NS-REV0 | 2023-07-12 | -0 | 56COL.P2.CH14.210 |  |  |  |  |  |
|  | 03 | **CFPP - COLA Prep - PT2 - Chap14 Sec 3 Cert'd Design Mat'l&Inspect,Tests, Analyses, & Accept Criteria** |  | 2022-11-01 | 2023-03-15 |  |  |  |  |  |  |  |  |  |  |  |  |  |  |  |  |  |  |  |  |  |  |  |  |  |  |  |  |  |  |  |  |  |  |  |  |  |  |  |  |  |  |  |
|  | 01 | **CFPP - COLA Prep - Part 02 - Chapter 14 - Section 3 - Support Documents** |  | 2022-11-01 | 2022-12-29 |  |  |  |  |  |  |  |  |  |  |  |  |  |  |  |  |  |  |  |  |  |  |  |  |  |  |  |  |  |  |  |  |  |  |  |  |  |  |  |  |  |  |  |
| CP-P2-14-03-SD-0000 |  | Develop Site Specific Selection Methodology & Inspections / Tests / Analysis / Acceptance Criteria | 20d | 2022-11-01 A | 2022-12-29 A | IFM-CFP-TO4-0055 FS+60d | 100% |  | 2022-11-01 | 2022-11-29 |  |  |  |  | Yes |  | Yes | NUSCALE |  | supt | oct update finish slip from 01nov22 to 01nov23(verify date) | 03 | NuScale | FNTP | P2 | 14 | 3.0 |  |  |  |  |  |  |  |  |  |  |  |  |  |  |  |  | As of 29nov22 finish slip from 14dec22 |  |  |  |  |
|  | 02 | **CFPP - COLA Prep - Part 02 - Chapter 14 - Section 3 - Section Wrting** |  | 2023-01-10 | 2023-03-15 |  |  |  |  |  |  |  |  |  |  |  |  |  |  |  |  |  |  |  |  |  |  |  |  |  |  |  |  |  |  |  |  |  |  |  |  |  |  |  |  |  |  |  |
| CP-P2-14-03-SW-0000 |  | Prepare Draft Rev A -Check Updated Supporting Documents -FSAR Section 14.3 | 22d | 2023-01-10 | 2023-02-15 | CP-P2-14-03-SD-0000, IFM-SDA-TO4-0120 |  |  | 2023-01-10 | 2023-02-08 | 136d | 0d | start on or after 2023-01-10 |  | Yes |  | Yes | NUSCALE | Oct | deliv | oct update finish slip from 16jan23 | 03 | NuScale | FNTP | P2 | 14 | 3.0 |  |  | 14.03 |  | NS-REVA | 2023-02-13 | SDA Tie | 1 |  |  |  |  |  |  |  |  | As of 29nov22 pred start slip out | 2023-01-10 |  |  |  |
| CP-P2-14-03-SW-0005 |  | Review Draft Rev A - FSAR Section 14.03 (TO4 Team Review) | 10d | 2023-02-16 | 2023-03-01 | CP-P2-14-03-SW-0000 |  |  |  |  | 163d | 0d |  |  | Yes |  | Yes | NUSCALE |  | deliv |  | 03 | TO4 | FNTP | P2 |  |  |  |  | 14.03 |  |  |  |  | 2 | UDF_G1 | FIX |  |  |  |  |  |  | As of 29nov22 pred start slip out |  |  |  |  |
| CP-P2-14-03-SW-0010 |  | Resolve Rev A Comments - FSAR Section 14.03 | 5d | 2023-03-02 | 2023-03-08 | CP-P2-14-03-SW-0005 |  |  |  |  | 163d | 0d |  |  | Yes |  | Yes | NUSCALE |  | deliv |  | 03 | NuScale | FNTP | P2 | 14 | 3.0 |  |  | 14.03 |  |  |  |  | 3 |  |  |  |  |  |  |  |  | As of 29nov22 pred start slip out |  |  |  |  |
| CP-P2-14-03-SW-0012 |  | Confirm SDA Information and Inform Reviewers - FSAR Section 14.03 | 5d | 2023-03-09 | 2023-03-09 | CP-P2-14-03-SW-0010, PKM-0125 |  |  | 2023-03-09 | 2023-03-15 | 163d | 0d |  |  | Yes |  | Yes | FL4 |  | deliv |  | 03 | FL4 | FNTP | P2 | 1 | 1.1 |  |  |  |  |  |  | SDA Tie | 4 | UDF_G1 | FIX | Matt-TBD | N | NS-REV0 |  |  |  | As of 29nov22 pred start slip out |  |  |  |  |
| CP-P2-14-03-SW-0015 |  | Issue Rev 0 - FSAR Section 14.03 | 5d | 2023-03-09 | 2023-03-15 | CP-P2-14-03-SW-0012 |  |  |  |  | 163d | 33d |  |  | Yes |  | Yes | NUSCALE |  | deliv |  | 03 | NuScale | FNTP | P2 | 14 | 3.0 |  |  | 14.03 | nuscale |  |  | SDA Tie | 5 | UDF_G3 |  |  | N | NS-REV0 | 2023-02-15 | -0 | 56COL.P2.CH14.220 | As of 29nov22 pred start slip out |  |  |  |  |
|  | 15 | **CFPP - COLA Prep - Part 02 - Chapter 15 Transient and Accident Analyses** |  | 2023-04-03 | 2023-08-09 |  |  |  |  |  |  |  |  |  |  |  |  |  |  |  |  |  |  |  |  |  |  |  |  |  |  |  |  |  |  |  |  |  |  |  |  |  |  |  |  |  |  |  |
|  | 01 | **CFPP - COLA Prep - Part 02 - Chapter 15 - Section 1 - Transient and Accident Analyses** |  | 2023-04-03 | 2023-08-09 |  |  |  |  |  |  |  |  |  |  |  |  |  |  |  |  |  |  |  |  |  |  |  |  |  |  |  |  |  |  |  |  |  |  |  |  |  |  |  |  |  |  |  |
|  | 01 | **CFPP - COLA Prep - Part 02 - Chapter 15 - Section 1 - Support Documents** |  | 2023-04-03 | 2023-05-15 |  |  |  |  |  |  |  |  |  |  |  |  |  |  |  |  |  |  |  |  |  |  |  |  |  |  |  |  |  |  |  |  |  |  |  |  |  |  |  |  |  |  |  |
| CP-P2-15-01-SD-0000 |  | Develop Control Room Atmospheric Dispersion Factors | 40d | 2023-04-03 | 2023-05-12 | CP-P2-02-03-SD-0125 |  |  | 2023-04-03 | 2023-05-26 | 81d | 36d | start on or after 2023-04-03 |  | Yes |  | Yes | NUSCALE |  | supt |  | 03 | NuScale | FNTP | P2 | 15 | 1 |  |  |  | x/q |  | 2023-05-12 |  |  |  |  |  |  |  |  |  |  | As of 29nov22 start slip from 6mar23 | 2023-04-03 |  |  |  |
| CP-P2-15-01-SD-0005 |  | Confirm X/Q Calculation | 30d | 2023-04-04 | 2023-05-15 | CP-P2-02-03-SD-0125, CP-P2-02-03-SD-0127 |  |  |  |  | 0d |  |  |  | Yes |  | Yes | NUSCALE |  | supt |  | 03 | NuScale | FNTP | P2 | 15 | 1 |  |  | 15 | x/q nuscalex15 |  | 2023-05-12 |  |  |  |  |  |  |  |  |  |  | As of 29nov22 pred start slip out | 2023-04-03 | 2 | As of 12dec22 start slip from 7mar23 |  |
|  | 02 | **CFPP - COLA Prep - Part 02 - Chapter 15 - Section 1 - Section Writing** |  | 2023-05-16 | 2023-08-09 |  |  |  |  |  |  |  |  |  |  |  |  |  |  |  |  |  |  |  |  |  |  |  |  |  |  |  |  |  |  |  |  |  |  |  |  |  |  |  |  |  |  |  |
| CP-P2-15-01-SW-0000 |  | Prepare Draft Rev A -Check Updated Supporting Documents -FSAR Chapter 15 | 40d | 2023-05-16 | 2023-07-12 | CP-P2-15-01-SD-0005 |  |  |  |  | 60d | 0d | start on or after 2023-05-05 |  | Yes |  | Yes | NUSCALE |  | deliv |  | 03 | NuScale | FNTP | P2 | 15 | 1 |  |  | 15 | x/q nuscalex15 | NS-REVA | 2023-07-03 | No SDA | 1 |  |  |  |  |  |  |  |  | As of 29nov22 pred start slip out | 2023-05-05 |  |  |  |
| CP-P2-15-01-SW-0005 |  | Review Draft Rev A - FSAR Chapter 15 (TO4 Team Review) | 10d | 2023-07-13 | 2023-07-26 | CP-P2-15-01-SW-0000 |  |  |  |  | 60d | 0d |  |  | Yes |  | Yes | NUSCALE |  | deliv |  | 03 | TO4 | FNTP | P2 |  |  |  |  | 15 | x/q nuscalex15 |  |  |  | 2 | UDF_G3 | FIX |  |  |  |  |  |  |  |  |  |  | oct update |
| CP-P2-15-01-SW-0010 |  | Resolve Rev A Comments - FSAR Chapter 15 | 5d | 2023-07-27 | 2023-08-02 | CP-P2-15-01-SW-0005 |  |  |  |  | 60d | 0d |  |  | Yes |  | Yes | NUSCALE |  | deliv |  | 03 | NuScale | FNTP | P2 | 15 | 1 |  |  | 15 | x/q nuscalex15 |  |  |  | 3 |  |  |  |  |  |  |  |  | As of 29nov22 pred start slip out |  |  |  |  |
| CP-P2-15-01-SW-0012 |  | Confirm SDA Information and Inform Reviewers - FSAR Section 15.1 | 5d | 2023-08-03 | 2023-08-03 | CP-P2-15-01-SW-0010, PKM-0125 |  |  | 2023-08-03 | 2023-08-09 | 60d | 0d |  |  | Yes |  | Yes | FL4 |  | deliv |  | 03 | FL4 | FNTP | P2 | 1 | 1.1 |  |  |  | x/q nuscalex15 |  |  | SDA Tie | 4 | UDF_G1 | FIX | Matt-TBD | N | NS-REV0 |  |  |  |  |  |  |  | oct update |
| CP-P2-15-01-SW-0015 |  | Issue Rev 0 - FSAR Chapter 15 | 5d | 2023-08-03 | 2023-08-09 | CP-P2-15-01-SW-0012 |  |  |  |  | 60d | 0d |  |  | Yes |  | Yes | NUSCALE |  | deliv | oct update Nuscale finish 08aug23 | 03 | NuScale | FNTP | P2 | 15 | 1 |  |  | 15 | nuscalex15 |  |  | SDA Tie | 5 | UDF_G3 |  |  | N | NS-REV0 | 2023-10-09 | -76 | 56COL.P2.CH15.135 | As of 29nov22 pred start slip out |  |  |  | oct update |

Notes:
- CP-P2-14-02-SD-0000: Schedule Notes: from fluor Study of Island Test Mode / Configurations / SDA cleanup notes: 7 supporting documents see notebook notes new pred nuc island pushing out / 12B DEC EOM Notes: as of 30dec22 updated deleting final deliverable within this group. All others complete / 10C OCT Monthly Report Notes: in Nuscale report as delayed (confirmed) / CFPP - Contractor's Remarks: as of 30dec22 updated deleting final deliverable within this group. All others complete
- CP-P2-14-02-SW-0000: 9A SEP EOM Notes: Sep update start slip from 29aug / 12B DEC EOM Notes: as of 30dec22 updated / 10C OCT Monthly Report Notes: in Nuscale report as delayed (finish moved forward) / CFPP - Contractor's Remarks: as of 30dec22 updated
- CP-P2-14-02-SW-0005: 10C OCT Monthly Report Notes: in Nuscale report as delayed (finish moved forward)
- CP-P2-14-02-SW-0010: 10C OCT Monthly Report Notes: in Nuscale report as delayed (finish moved forward)
- CP-P2-14-02-SW-0012: SDA cleanup notes: checked pushed out by pred / 12B DEC EOM Notes: In parallel with Team Review (hold duration at 5d) / 10C OCT Monthly Report Notes: in Nuscale report as delayed (finish moved forward)
- CP-P2-14-02-SW-0015: 10C OCT Monthly Report Notes: in Nuscale report as delayed (finish moved forward)
- CP-P2-14-03-SD-0000: 12B DEC EOM Notes: as of 30dec22 updated / 10C OCT Monthly Report Notes: in Nuscale report as delayed (excel file has confusing detail) / CFPP - Contractor's Remarks: as of 30dec22 updated
- CP-P2-14-03-SW-0000: 12B DEC EOM Notes: As of 30dec22 delayed / 10C OCT Monthly Report Notes: in Nuscale report as delayed (excel file has confusing detail) / CFPP - Contractor's Remarks: as of 30dec22 updated start delayed
- CP-P2-14-03-SW-0005: 10C OCT Monthly Report Notes: in Nuscale report as delayed (excel file has confusing detail)
- CP-P2-14-03-SW-0010: 10C OCT Monthly Report Notes: in Nuscale report as delayed (excel file has confusing detail)
- CP-P2-14-03-SW-0012: SDA cleanup notes: checked pushed out by pred / 12B DEC EOM Notes: In parallel with Team Review (hold duration at 5d) / 10C OCT Monthly Report Notes: in Nuscale report as delayed (excel file has confusing detail)
- CP-P2-14-03-SW-0015: 10C OCT Monthly Report Notes: in Nuscale report as delayed (excel file has confusing detail)
- CP-P2-15-01-SD-0000: SDA cleanup notes: moved to 23 dec 22 by nuscale -predecessor? / 9A SEP EOM Notes: Sep update Nuscale has reduced from 40 days / 12B DEC EOM Notes: as of 30dec22 updated / CFPP - Contractor's Remarks: as of 30dec22 updated
- CP-P2-15-01-SD-0005: 9A SEP EOM Notes: Sep update removed fs pred CP-P2-15-01-sd-0000 per nuscale schedule / 12B DEC EOM Notes: as of 30dec22 updated pred slip
- CP-P2-15-01-SW-0000: 12B DEC EOM Notes: as of 30dec22 updated pred slip / CFPP - Contractor's Remarks: as of 30dec22 updated
- CP-P2-15-01-SW-0012: SDA cleanup notes: checked pushed out by pred / 12B DEC EOM Notes: In parallel with Team Review (hold duration at 5d)

| ID | WBS | Activity | Duration | Start | Finish | Predecessors | Complete | Remaining | Planned start | Planned finish | Total float | Free float | Constraint | Expected finish | zText_02 | zText_Level 3 Schedule | Rebaseline details | doc type | PREPDRFTREVA | 12B DEC EOM Notes | CFPP - Contractor's Remarks | Forecast Finish | Forecast Start | CFPP, LLC WBS Structure | Author | Period of Performance | Part | Chapter | Section | SDA needed | activity step | UDF Indicator 01 | SDA ties | Deliverable Owner | SDA cleanup notes | SDA ACT | REV0 - SDA | Contractor Date | DELTA | Nuscale ACT Number | nuscale comp | 10B OCT EOM Notes | VERIFIED MONTHLY UPDATE | 9A SEP EOM Notes | Monthly Variance | 10A OCT MIDMONTH Notes | NEED UPDATE | cfpp two week acts | 11A NOV MIDMONTH Notes |
| --- | --- | --- | --- | --- | --- | --- | --- | --- | --- | --- | --- | --- | --- | --- | --- | --- | --- | --- | --- | --- | --- | --- | --- | --- | --- | --- | --- | --- | --- | --- | --- | --- | --- | --- | --- | --- | --- | --- | --- | --- | --- | --- | --- | --- | --- | --- | --- | --- | --- |
|  | 16 | **CFPP - COLA Prep - Part 02 - Chapter 16 Technical Specifications** |  | 2023-04-24 | 2023-09-13 |  |  |  |  |  |  |  |  |  |  |  |  |  |  |  |  |  |  |  |  |  |  |  |  |  |  |  |  |  |  |  |  |  |  |  |  |  |  |  |  |  |  |  |  |
|  | 01 | **CFPP - COLA Prep - Part 02 - Chapter 16 - Section 1 - Technical Specifications** |  | 2023-04-24 | 2023-09-13 |  |  |  |  |  |  |  |  |  |  |  |  |  |  |  |  |  |  |  |  |  |  |  |  |  |  |  |  |  |  |  |  |  |  |  |  |  |  |  |  |  |  |  |  |
|  | 01 | **CFPP - COLA Prep - Part 02 - Chapter 16 - Section 1 - Support Documents** |  |  |  |  |  |  |  |  |  |  |  |  |  |  |  |  |  |  |  |  |  |  |  |  |  |  |  |  |  |  |  |  |  |  |  |  |  |  |  |  |  |  |  |  |  |  |  |
|  | 02 | **CFPP - COLA Prep - Part 02 - Chapter 16 - Section 1 - Section Writing** |  | 2023-04-24 | 2023-09-13 |  |  |  |  |  |  |  |  |  |  |  |  |  |  |  |  |  |  |  |  |  |  |  |  |  |  |  |  |  |  |  |  |  |  |  |  |  |  |  |  |  |  |  |  |
| CP-P2-16-01-SW-0000 |  | Prepare Draft Rev A -Check Updated Supporting Documents -FSAR Chapter 16 | 60d | 2023-04-24 | 2023-08-15 | CP-P4-01-01-SW-0000 SS, IFM-SDA-TO4-0160 |  |  | 2023-04-24 | 2023-07-18 | 36d | 0d | start on or after 2023-04-24 |  | Yes | Yes | NUSCALE | deliv | NS-REVA | as of 30dec22 updated | as of 30dec22 updated | 2023-07-18 | 2023-04-24 | 03 | NuScale | FNTP | P2 | 16 | 1 | SDA Tie | 1 |  |  |  |  |  |  |  |  |  |  |  |  |  |  |  |  |  |  |
| CP-P2-16-01-SW-0005 |  | Review Draft Rev A - FSAR Chapter 16 (TO4 Team Review) | 10d | 2023-08-16 | 2023-08-29 | CP-P2-16-01-SW-0000 |  |  |  |  | 36d | 0d |  |  | Yes | Yes | NUSCALE | deliv |  |  |  |  |  | 03 | TO4 | FNTP | P2 |  |  |  | 2 | UDF_G1 | FIX |  |  |  |  |  |  |  |  |  |  |  |  |  |  |  |  |
| CP-P2-16-01-SW-0010 |  | Resolve Rev A Comments - FSAR Chapter 16 | 5d | 2023-08-30 | 2023-09-06 | CP-P2-16-01-SW-0005 |  |  |  |  | 36d | 0d |  |  | Yes | Yes | NUSCALE | deliv |  |  |  |  |  | 03 | NuScale | FNTP | P2 | 16 | 1 |  | 3 |  |  |  |  |  |  |  |  |  |  |  |  |  |  |  |  |  |  |
| CP-P2-16-01-SW-0012 |  | Confirm SDA Information and Inform Reviewers - FSAR Section 16.1 | 5d | 2023-09-07 | 2023-09-07 | CP-P2-16-01-SW-0010, PKM-0125 |  |  | 2023-09-07 | 2023-09-13 | 36d | 0d |  |  | Yes | Yes | FL4 | deliv |  | In parallel with Team Review (hold duration at 5d) |  |  |  | 03 | FL4 | FNTP | P2 | 1 | 1.1 | SDA Tie | 4 | UDF_G1 | FIX | Matt-TBD | checked pushed out by pred | N | NS-REV0 |  |  |  |  |  |  |  |  |  |  |  |  |
| CP-P2-16-01-SW-0015 |  | Issue Rev 0 - FSAR Chapter 16 | 5d | 2023-09-07 | 2023-09-13 | CP-P2-16-01-SW-0012 |  |  |  |  | 36d | 0d |  |  | Yes | Yes | NUSCALE | deliv |  |  |  |  |  | 03 | NuScale | FNTP | P2 | 16 | 1 | SDA Tie | 5 | UDF_G1 |  |  |  | N | NS-REV0 | 2023-08-21 | -18 | 56COL.P2.CH16.135 | nuscale | oct update Nuscale finish 13sep23 |  |  |  |  |  |  |  |
|  | 17 | **CFPP - COLA Prep - Part 02 - Chapter 17 QA and Reliability Assurance** |  | 2022-08-18 | 2023-08-15 |  |  |  |  |  |  |  |  |  |  |  |  |  |  |  |  |  |  |  |  |  |  |  |  |  |  |  |  |  |  |  |  |  |  |  |  |  |  |  |  |  |  |  |  |
|  | 03 | **CFPP - COLA Prep - Part 02 - Chapter 17 - Section 1&3 QA Design/Construction & Op Phases/QAPD** |  | 2023-01-10 | 2023-03-20 |  |  |  |  |  |  |  |  |  |  |  |  |  |  |  |  |  |  |  |  |  |  |  |  |  |  |  |  |  |  |  |  |  |  |  |  |  |  |  |  |  |  |  |  |
|  | 01 | **CFPP - COLA Prep - Part 02 - Chapter 17 - Section 1&3 - Support Documents** |  |  |  |  |  |  |  |  |  |  |  |  |  |  |  |  |  |  |  |  |  |  |  |  |  |  |  |  |  |  |  |  |  |  |  |  |  |  |  |  |  |  |  |  |  |  |  |
|  | 02 | **CFPP - COLA Prep - Part 02 - Chapter 17 - Section 1&3 - Section Writing** |  | 2023-01-10 | 2023-03-20 |  |  |  |  |  |  |  |  |  |  |  |  |  |  |  |  |  |  |  |  |  |  |  |  |  |  |  |  |  |  |  |  |  |  |  |  |  |  |  |  |  |  |  |  |
| CP-P2-17-01-SW-0000 |  | Prepare Draft Rev A -Check Updated Supporting Documents -FSAR Sections 17.01 / .02 / .03 | 25d | 2023-01-10 | 2023-02-20 | IFM-SDA-TO4-0035, IFM-SDA-TO4-0037, IFM-SDA-TO4-0039, CP-P10-01-01-SD-0000 SS |  |  | 2023-01-10 | 2023-02-13 | 160d | 0d | start on or after 2023-01-10 |  | Yes | Yes | NUSCALE | deliv | NS-REVA |  |  | 2023-02-20 | 2023-01-10 | 03 | NuScale | FNTP | P2 | 17 | 1 | SDA Tie | 1 |  |  |  |  |  |  |  |  |  |  | oct update finish slip from 18apr23 | X | Sep update start slip from 27sep CONFIRM | Oct |  |  |  |  |
| CP-P2-17-01-SW-0005 |  | Review Draft Rev A - FSAR Section 17.01 / 17.02 / 17.03 (TO4 Team Review) | 10d | 2023-02-21 | 2023-03-06 | CP-P2-17-01-SW-0000 |  |  |  |  | 160d | 0d |  |  | Yes | Yes | NUSCALE | deliv |  |  |  |  |  | 03 | TO4 | FNTP | P2 |  |  |  | 2 | UDF_G1 | FIX |  |  |  |  |  |  |  |  |  |  |  |  |  |  |  |  |
| CP-P2-17-01-SW-0010 |  | Resolve Rev A Comments - FSAR Section 17.01 / 17.02 / 17.03 | 5d | 2023-03-07 | 2023-03-13 | CP-P2-17-01-SW-0005 |  |  |  |  | 160d | 0d |  |  | Yes | Yes | NUSCALE | deliv |  |  |  |  |  | 03 | NuScale | FNTP | P2 | 17 | 1 |  | 3 |  |  |  |  |  |  |  |  |  |  |  |  |  |  |  |  |  |  |
| CP-P2-17-01-SW-0012 |  | Confirm SDA Information and Inform Reviewers - FSAR Section 17.01 / 17.02 / 17.03 | 5d | 2023-03-14 | 2023-03-14 | CP-P2-17-01-SW-0010, PKM-0125 |  |  | 2023-03-14 | 2023-03-20 | 160d | 0d |  |  | Yes | Yes | FL4 | deliv |  | In parallel with Team Review (hold duration at 5d) |  |  |  | 03 | FL4 | FNTP | P2 |  |  | SDA Tie | 4 | UDF_G1 | FIX | Matt-TBD |  | N | NS-REV0 |  |  |  |  |  |  |  |  |  |  |  |  |
| CP-P2-17-01-SW-0015 |  | Issue Rev 0 - FSAR Section 17.01 / 17.02 / 17.03 | 5d | 2023-03-14 | 2023-03-20 | CP-P2-17-01-SW-0012 |  |  |  |  | 160d | 104d |  |  | Yes | Yes | NUSCALE | deliv |  |  |  |  |  | 03 | NuScale | FNTP | P2 | 17 | 1 | SDA Tie | 5 | UDF_G3 |  |  |  | N | NS-REV0 | 2022-11-30 | 8 | 56COL.P2.CH17.155 | nuscale |  |  |  |  | oct update pushed out by revised Draft Rev A start date |  |  |  |
|  | 04 | **CFPP - COLA Prep - Part 02 - Chapter 17 - Section 4 Reliability Assurance Program** |  | 2022-08-18 | 2023-08-15 |  |  |  |  |  |  |  |  |  |  |  |  |  |  |  |  |  |  |  |  |  |  |  |  |  |  |  |  |  |  |  |  |  |  |  |  |  |  |  |  |  |  |  |  |
|  | 01 | **CFPP - COLA Prep - Part 02 - Chapter 17 - Section 4 - Support Documents** |  | 2022-08-18 | 2022-12-08 |  |  |  |  |  |  |  |  |  |  |  |  |  |  |  |  |  |  |  |  |  |  |  |  |  |  |  |  |  |  |  |  |  |  |  |  |  |  |  |  |  |  |  |  |
| CP-P2-17-04-SD-0000 |  | Develop Reliability Assurance Program Document | 40d | 2022-08-18 A | 2022-12-08 A |  | 100% |  | 2022-08-18 | 2022-10-13 |  |  |  |  | Yes | Yes | NUSCALE | supt |  | as of 30dec22 updated Nuscale date supplied act fin 12/8/23 | as of 30dec22 updated Nuscale date supplied act fin 12/8/23 |  |  | 03 | NuScale | FNTP | P2 | 17 | 4.0 |  |  |  |  | Paul/Beth | no predecessor ALAP |  |  |  |  |  | nuscalex17.04 | oct update finish slip from 28oct22 | X | Sep update finish slip from 10oct | Oct |  | OCT | x | As of 15nov22 30nov22 forecast finish |
|  | 02 | **CFPP - COLA Prep - Part 02 - Chapter 17 - Section 4 - Section Writing** |  | 2022-12-02 | 2023-08-15 |  |  |  |  |  |  |  |  |  |  |  |  |  |  |  |  |  |  |  |  |  |  |  |  |  |  |  |  |  |  |  |  |  |  |  |  |  |  |  |  |  |  |  |  |
| CP-P2-17-04-SW-0000 |  | Prepare Draft Rev A -Check Updated Supporting Documents -FSAR Section 17.04 | 25d | 2022-12-02 A | 2023-07-18 | CP-P2-17-04-SD-0000, IFM-SDA-TO4-0130 |  | 140d | 2022-12-21 | 2023-01-25 | 56d | 0d |  | 2023-07-18 | Yes | Yes | NUSCALE | deliv | NS-REVA | as of 30dec22 updated | as of 30dec22 updated | 2023-07-18 |  | 03 | NuScale | FNTP | P2 | 17 | 4.0 | SDA Tie | 1 |  |  |  |  |  |  |  |  |  | nuscalex17.04 | oct update finish slip from 25jan23 tied to QAPD |  |  | Oct |  |  |  |  |
| CP-P2-17-04-SW-0005 |  | Review Draft Rev A - FSAR Section 17.04 (TO4 Team Review) | 10d | 2023-07-19 | 2023-08-01 | CP-P2-17-04-SW-0000 |  |  |  |  | 56d | 0d |  |  | Yes | Yes | NUSCALE | deliv |  |  |  |  |  | 03 | TO4 | FNTP | P2 |  |  |  | 2 | UDF_G1 | FIX |  |  |  |  |  |  |  | nuscalex17.04 |  |  |  |  |  |  |  |  |
| CP-P2-17-04-SW-0010 |  | Resolve Rev A Comments - FSAR Section 17.04 | 5d | 2023-08-02 | 2023-08-08 | CP-P2-17-04-SW-0005 |  |  |  |  | 56d | 0d |  |  | Yes | Yes | NUSCALE | deliv |  |  |  |  |  | 03 | NuScale | FNTP | P2 | 17 | 4.0 |  | 3 |  |  |  |  |  |  |  |  |  | nuscalex17.04 |  |  |  |  |  |  |  |  |
| CP-P2-17-04-SW-0012 |  | Confirm SDA Information and Inform Reviewers - FSAR Section 17.04 | 5d | 2023-08-09 | 2023-08-09 | CP-P2-17-04-SW-0010, PKM-0125 |  |  | 2023-08-09 | 2023-08-15 | 56d | 0d |  |  | Yes | Yes | FL4 | deliv |  | In parallel with Team Review (hold duration at 5d) |  |  |  | 03 | FL4 | FNTP | P2 | 1 | 1.1 | SDA Tie | 4 | UDF_G1 | FIX | Matt-TBD | checked pushed out by pred | N | NS-REV0 |  |  |  | nuscalex17.04 |  |  |  |  |  |  |  |  |
| CP-P2-17-04-SW-0015 |  | Issue Rev 0 - FSAR Section 17.04 | 5d | 2023-08-09 | 2023-08-15 | CP-P2-17-04-SW-0012 |  |  |  |  | 56d | 0d |  |  | Yes | Yes | NUSCALE | deliv |  |  |  |  |  | 03 | NuScale | FNTP | P2 | 17 | 4.0 | SDA Tie | 5 | UDF_G3 |  |  |  | N | NS-REV0 | 2023-02-24 | 5 | 56COL.P2.CH17.165 | nuscalex17.04 |  |  |  |  |  |  |  |  |

Notes:
- CP-P2-16-01-SW-0000: 12A DEC MIDMONTH Notes: As of 12dec22 Nuscale update ignores predecessor finish (revised sw-0000 to ss)
- CP-P2-17-01-SW-0000: 12A DEC MIDMONTH Notes: As of12dec22 start move forward from 4apr23 (revise pred to ss)
- CP-P2-17-04-SW-0000: 12A DEC MIDMONTH Notes: As of 12dec22 Nuscale update ignores 21dec22 SDA content predecessor (need to revise SDA relationship to start early Nuscale forecast 1dec22)

| ID | WBS | Activity | Duration | Start | Finish | Predecessors | Complete | Remaining | Planned start | Planned finish | Total float | Free float | Constraint | Expected finish | zText_02 | zText_Level 3 Schedule | Rebaseline details | doc type | nuscale comp | PREPDRFTREVA | 12A DEC MIDMONTH Notes | 12B DEC EOM Notes | CFPP - Contractor's Remarks | Forecast Finish | CFPP, LLC WBS Structure | Author | Period of Performance | Part | Chapter | Section | SDA needed | activity step | UDF Indicator 01 | SDA ties | Deliverable Owner | SDA cleanup notes | SDA ACT | REV0 - SDA | Contractor Date | DELTA | Nuscale ACT Number | 10B OCT EOM Notes | VERIFIED MONTHLY UPDATE | 9A SEP EOM Notes | Monthly Variance | 10A OCT MIDMONTH Notes | Forecast Start |
| --- | --- | --- | --- | --- | --- | --- | --- | --- | --- | --- | --- | --- | --- | --- | --- | --- | --- | --- | --- | --- | --- | --- | --- | --- | --- | --- | --- | --- | --- | --- | --- | --- | --- | --- | --- | --- | --- | --- | --- | --- | --- | --- | --- | --- | --- | --- | --- |
|  | 05 | **CFPP - COLA Prep - Part 02 - Chapter 17 - Section 5 Quality Assurance Program Descript** |  | 2023-01-23 | 2023-08-08 |  |  |  |  |  |  |  |  |  |  |  |  |  |  |  |  |  |  |  |  |  |  |  |  |  |  |  |  |  |  |  |  |  |  |  |  |  |  |  |  |  |  |
|  | 01 | **CFPP - COLA Prep - Part 02 - Chapter 17 - Section 5 - Support Documents** |  |  |  |  |  |  |  |  |  |  |  |  |  |  |  |  |  |  |  |  |  |  |  |  |  |  |  |  |  |  |  |  |  |  |  |  |  |  |  |  |  |  |  |  |  |
|  | 02 | **CFPP - COLA Prep - Part 02 - Chapter 17 - Section 5 - Section Writing** |  | 2023-01-23 | 2023-08-08 |  |  |  |  |  |  |  |  |  |  |  |  |  |  |  |  |  |  |  |  |  |  |  |  |  |  |  |  |  |  |  |  |  |  |  |  |  |  |  |  |  |  |
| CP-P2-17-05-SW-0000 |  | Prepare Draft Rev A -Check Updated Supporting Documents -FSAR Section 17.05 | 10d | 2023-01-23 | 2023-07-12 | IFM-SDA-TO4-0040, CP-P10-01-01-SW-0000 FF |  |  | 2023-01-23 | 2023-02-03 | 61d | 0d | start on or after 2023-01-10 |  | Yes | Yes | NUSCALE | deliv | nuscalex17.05 | NS-REVA | As of 12dec22 Nuscale update ignores predecessor finish | as of 30dec22 updated | as of 30dec22 updated | 2023-02-20 | 03 | NuScale | FNTP | P2 | 17 | 5.0 | SDA Tie | 1 |  |  |  |  |  |  |  |  |  |  |  |  |  |  |  |
| CP-P2-17-05-SW-0005 |  | Review Draft Rev A - FSAR Section 17.05 (TO4 Team Review) | 10d | 2023-07-12 | 2023-07-25 | CP-P2-17-05-SW-0000 |  |  |  |  | 61d | 0d |  |  | Yes | Yes | NUSCALE | deliv | nuscalex17.05 |  |  |  |  |  | 03 | TO4 | FNTP | P2 |  |  |  | 2 | UDF_G3 | FIX |  |  |  |  |  |  |  |  |  |  |  |  |  |
| CP-P2-17-05-SW-0010 |  | Resolve Rev A Comments - FSAR Section 17.05 | 5d | 2023-07-26 | 2023-08-01 | CP-P2-17-05-SW-0005 |  |  |  |  | 61d | 0d |  |  | Yes | Yes | NUSCALE | deliv | nuscalex17.05 |  |  |  |  |  | 03 | NuScale | FNTP | P2 | 17 | 5.0 |  | 3 |  |  |  |  |  |  |  |  |  |  |  |  |  |  |  |
| CP-P2-17-05-SW-0012 |  | Confirm SDA Information and Inform Reviewers - FSAR Section 17.05 | 5d | 2023-08-02 | 2023-08-02 | CP-P2-17-05-SW-0010, PKM-0125 |  |  | 2023-08-02 | 2023-08-08 | 61d | 0d |  |  | Yes | Yes | FL4 | deliv | nuscalex17.05 |  |  | In parallel with Team Review (hold duration at 5d) |  |  | 03 | FL4 | FNTP | P2 | 1 | 1.1 | SDA Tie | 4 | UDF_G1 | FIX | Matt-TBD | checked pushed out by pred | N | NS-REV0 |  |  |  |  |  |  |  |  |  |
| CP-P2-17-05-SW-0015 |  | Issue Rev 0 - FSAR Section 17.05 | 5d | 2023-08-02 | 2023-08-08 | CP-P2-17-05-SW-0012 |  |  |  |  | 61d | 5d |  |  | Yes | Yes | NUSCALE | deliv | nuscalex17.05 |  |  |  |  |  | 03 | NuScale | FNTP | P2 | 17 | 5.0 | SDA Tie | 5 | UDF_G3 |  |  |  | N | NS-REV0 | 2023-07-07 | -127 | 56COL.P2.CH17.175 | oct update Nuscale finish 20jun23 |  |  |  |  |  |
|  | 06 | **CFPP - COLA Prep - Part 02 - Chapter 17 - Section 6 Maintenance Rule** |  | 2022-11-30 | 2023-02-27 |  |  |  |  |  |  |  |  |  |  |  |  |  |  |  |  |  |  |  |  |  |  |  |  |  |  |  |  |  |  |  |  |  |  |  |  |  |  |  |  |  |  |
|  | 01 | **CFPP - COLA Prep - Part 02 - Chapter 17 - Section 6 - Support Documents** |  |  |  |  |  |  |  |  |  |  |  |  |  |  |  |  |  |  |  |  |  |  |  |  |  |  |  |  |  |  |  |  |  |  |  |  |  |  |  |  |  |  |  |  |  |
|  | 02 | **CFPP - COLA Prep - Part 02 - Chapter 17 - Section 6 - Section Writing** |  | 2022-11-30 | 2023-02-27 |  |  |  |  |  |  |  |  |  |  |  |  |  |  |  |  |  |  |  |  |  |  |  |  |  |  |  |  |  |  |  |  |  |  |  |  |  |  |  |  |  |  |
| CP-P2-17-06-SW-0000 |  | Prepare Draft Rev A -Check Updated Supporting Documents -FSAR Section 17.06 | 25d | 2022-11-30 A | 2023-01-30 | IFM-SDA-TO4-0045, CP-P2-17-04-SD-0000 FF |  | 21d | 2022-11-30 | 2023-01-04 | 175d | 0d |  | 2023-01-30 | Yes | Yes | NUSCALE | deliv |  | NS-REVA |  | As of 30dec22 updated | as of 30dec22 updated actual start 11/30/23 | 2023-01-30 | 03 | NuScale | FNTP | P2 | 17 | 6.0 | SDA Tie | 1 |  |  |  |  |  |  |  |  |  |  | X | Sep update start slip from 27sep | Oct |  |  |
| CP-P2-17-06-SW-0005 |  | Review Draft Rev A - FSAR Section 17.06 (TO4 Team Review) | 10d | 2023-01-31 | 2023-02-13 | CP-P2-17-06-SW-0000 |  |  |  |  | 175d | 0d |  |  | Yes | Yes | NUSCALE | deliv |  |  |  |  |  |  | 03 | TO4 | FNTP | P2 |  |  |  | 2 | UDF_G1 | FIX |  |  |  |  |  |  |  |  |  |  |  |  |  |
| CP-P2-17-06-SW-0010 |  | Resolve Rev A Comments - FSAR Section 17.06 | 5d | 2023-02-14 | 2023-02-20 | CP-P2-17-06-SW-0005 |  |  |  |  | 175d | 0d |  |  | Yes | Yes | NUSCALE | deliv |  |  |  |  |  |  | 03 | NuScale | FNTP | P2 | 17 | 6.0 |  | 3 |  |  |  |  |  |  |  |  |  |  |  |  |  |  |  |
| CP-P2-17-06-SW-0012 |  | Confirm SDA Information and Inform Reviewers - FSAR Section 17.06 | 5d | 2023-02-21 | 2023-02-21 | CP-P2-17-06-SW-0010, PKM-0125 |  |  | 2023-02-21 | 2023-02-27 | 175d | 0d |  |  | Yes | Yes | FL4 | deliv |  |  |  | In parallel with Team Review (hold duration at 5d) |  |  | 03 | FL4 | FNTP | P2 |  |  | SDA Tie | 4 | UDF_G1 | FIX | Matt-TBD |  | N | NS-REV0 |  |  |  |  |  |  |  |  |  |
| CP-P2-17-06-SW-0015 |  | Issue Rev 0 - FSAR Section 17.6 | 5d | 2023-02-21 | 2023-02-27 | CP-P2-17-06-SW-0012 |  |  |  |  | 175d | 119d |  |  | Yes | Yes | NUSCALE | deliv | nuscale |  |  |  |  |  | 03 | NuScale | FNTP | P2 | 17 | 6.0 | SDA Tie | 5 | UDF_G3 |  |  |  | N | NS-REV0 | 2022-11-30 | 8 | 56COL.P2.CH17.185 |  |  |  |  | oct update pushed out by revised Draft Rev A start date |  |
|  | 18 | **CFPP - COLA Prep - Part 02 - Chapter 18 Human Factors Engineering** |  | 2022-05-31 | 2023-03-29 |  |  |  |  |  |  |  |  |  |  |  |  |  |  |  |  |  |  |  |  |  |  |  |  |  |  |  |  |  |  |  |  |  |  |  |  |  |  |  |  |  |  |
|  | 01 | **CFPP - COLA Prep - Part 02 - Chapter 18 - Section 1 Human Factors Engineering** |  | 2022-05-31 | 2023-03-29 |  |  |  |  |  |  |  |  |  |  |  |  |  |  |  |  |  |  |  |  |  |  |  |  |  |  |  |  |  |  |  |  |  |  |  |  |  |  |  |  |  |  |
|  | 01 | **CFPP - COLA Prep - Part 02 - Chapter 18 - Section 1 - Support Documents** |  | 2022-05-31 | 2022-12-30 |  |  |  |  |  |  |  |  |  |  |  |  |  |  |  |  |  |  |  |  |  |  |  |  |  |  |  |  |  |  |  |  |  |  |  |  |  |  |  |  |  |  |
| CP-P2-18-01-SD-0000 |  | Develop Staffing & Qualifications of Non-license Operators | 120d | 2022-05-31 A | 2022-12-30 A | IFM-CFP-TO4-0055 | 100% |  | 2022-05-31 | 2022-11-16 |  |  |  |  | Yes | Yes | NUSCALE | supt |  |  |  | as of 30dec22 updated | as of 30dec22 updated |  | 03 | NuScale | FNTP | P2 | 18 | 1 |  |  |  |  |  |  |  |  |  |  |  | oct update finish slip from 11nov22 |  |  | Oct |  |  |
|  | 02 | **CFPP - COLA Prep - Part 02 - Chapter 18 - Section 1 - Section Writing** |  | 2023-01-03 | 2023-03-29 |  |  |  |  |  |  |  |  |  |  |  |  |  |  |  |  |  |  |  |  |  |  |  |  |  |  |  |  |  |  |  |  |  |  |  |  |  |  |  |  |  |  |
| CP-P2-18-01-SW-0000 |  | Prepare Draft Rev A -Check Updated Supporting Documents -FSAR Chapter 18 | 25d | 2023-01-03 | 2023-03-01 | CP-P2-18-01-SD-0000, IFM-SDA-TO4-0090 |  |  | 2023-01-03 | 2023-02-06 | 153d | 0d | start on or after 2023-01-03 |  | Yes | Yes | NUSCALE | deliv |  | NS-REVA |  | As of 30dec22 delayed | as of 30dec22 updated | 2023-02-27 | 03 | NuScale | FNTP | P2 | 18 | 1 | SDA Tie | 1 |  |  |  |  |  |  |  |  |  | oct update pred slip |  |  |  |  | 2023-01-03 |
| CP-P2-18-01-SW-0005 |  | Review Draft Rev A - FSAR Chapter 18 (TO4 Team Review) | 10d | 2023-03-02 | 2023-03-15 | CP-P2-18-01-SW-0000 |  |  |  |  | 153d | 0d |  |  | Yes | Yes | NUSCALE | deliv |  |  |  |  |  |  | 03 | TO4 | FNTP | P2 |  |  |  | 2 | UDF_G3 | FIX |  |  |  |  |  |  |  |  |  |  |  |  |  |
| CP-P2-18-01-SW-0010 |  | Resolve Rev A Comments - FSAR Chapter 18 | 5d | 2023-03-16 | 2023-03-22 | CP-P2-18-01-SW-0005 |  |  |  |  | 153d | 0d |  |  | Yes | Yes | NUSCALE | deliv |  |  |  |  |  |  | 03 | NuScale | FNTP | P2 | 18 | 1 |  | 3 |  |  |  |  |  |  |  |  |  |  |  |  |  |  |  |
| CP-P2-18-01-SW-0012 |  | Confirm SDA Information and Inform Reviewers - FSAR Section 18.1 | 5d | 2023-03-23 | 2023-03-23 | CP-P2-18-01-SW-0010, PKM-0125 |  |  | 2023-03-23 | 2023-03-29 | 153d | 0d |  |  | Yes | Yes | FL4 | deliv |  |  |  | In parallel with Team Review (hold duration at 5d) |  |  | 03 | FL4 | FNTP | P2 | 1 | 1.1 | SDA Tie | 4 | UDF_G1 | FIX | Matt-TBD | checked pushed out by pred | N | NS-REV0 |  |  |  |  |  |  |  |  |  |
| CP-P2-18-01-SW-0015 |  | Issue Rev 0 - FSAR Chapter 18 | 5d | 2023-03-23 | 2023-03-29 | CP-P2-18-01-SW-0012 |  |  |  |  | 153d | 0d |  |  | Yes | Yes | NUSCALE | deliv | nuscale |  |  |  |  |  | 03 | NuScale | FNTP | P2 | 18 | 1 | SDA Tie | 5 | UDF_G3 |  |  |  | N | NS-REV0 | 2023-02-10 | 74 | 56COL.P2.CH18.135 |  |  |  |  | oct update pushed out by 18.1sd-0000 delivery |  |

Notes:
- CP-P2-17-06-SW-0005: 11B NOV EOM Notes: As of 29nov22 (shows loaded into Certrec no updatre from Nuscale)
- CP-P2-18-01-SW-0000: 11B NOV EOM Notes: As of 29nov22 finish slip from 16jan23
- CP-P2-18-01-SW-0010: 11B NOV EOM Notes: As of 29nov22 pred start slip out
- CP-P2-18-01-SW-0015: 11B NOV EOM Notes: As of 29nov22 pred start slip out

| ID | WBS | Activity | Type | Duration | Start | Finish | Predecessors | Complete | Planned start | Planned finish | Total float | Free float | Constraint | Expected finish | Other | SDA cleanup notes | NEED UPDATE | doc type | Author | Part | Chapter | Section | VERIFIED MONTHLY UPDATE | Monthly Variance | ETAP DETAILS | 11A NOV MIDMONTH Notes | 11B NOV EOM Notes | zText_CFPP Look Ahead Notes | Forecast Finish | Forecast Start | Reconcile Rev 0 Milestones | nuscale comp |
| --- | --- | --- | --- | --- | --- | --- | --- | --- | --- | --- | --- | --- | --- | --- | --- | --- | --- | --- | --- | --- | --- | --- | --- | --- | --- | --- | --- | --- | --- | --- | --- | --- |
|  | 19 | **CFPP - COLA Prep - Part 02 - Chapter 19 Prob Risk Assessment & Severe Accident Eval** |  |  | 2022-10-11 | 2023-10-26 |  |  |  |  |  |  |  |  |  |  |  |  |  |  |  |  |  |  |  |  |  |  |  |  |  |  |
|  | 01 | **CFPP - COLA Prep - Part 02 - Chapter 19 - Section 1 - Prob Risk Assessment & Severe Accident Eval** |  |  | 2022-10-11 | 2023-10-26 |  |  |  |  |  |  |  |  |  |  |  |  |  |  |  |  |  |  |  |  |  |  |  |  |  |  |
|  | 01 | **CFPP - COLA Prep - Part 02 - Chapter 19 - Section 1 - Support Documents** |  |  | 2022-10-11 | 2023-09-15 |  |  |  |  |  |  |  |  |  |  |  |  |  |  |  |  |  |  |  |  |  |  |  |  |  |  |
| CP-P2-19-01-SD-0215 |  | VHA: Screen Potential Volcanic Hazards (CP-P2-02-05-PVH-1100) | milestone | 0d | 2022-10-11 A | 2022-10-11 A | CP-P2-02-05-PVH-1100 | 100% |  |  |  |  |  |  | cal | New Activity 56COL.P2.CH19.830 | OCT | supt | NuScale | P2 | 19 | 1 |  |  |  |  |  |  |  |  |  |  |
| CP-P2-19-01-SD-0200 |  | Entry Criteria: Site specific electrical design |  | 0d | 2022-10-20 A | 2022-10-31 A | IFM-TO5-TO4-0030, IFM-TO5-TO4-0025, IFM-TO5-TO4-0205, IFM-TO5-TO4-0250 | 100% | 2022-10-31 | 2022-10-31 |  |  |  |  | cal | New Activity 56COL.P2.CH19.805 | OCT | supt | NuScale | P2 | 19 | 1 | X | Oct | X | As of 15nov22 18nov22 forecast | As of 29nov22 complete |  |  |  |  |  |
| CP-P2-19-01-SD-0205 |  | Entry Criteria: Site specific design complete - i.e. cooling water, electrical transmission | milestone | 0d | 2022-10-31 A | 2022-10-31 A | IFM-TO5-TO4-0025, IFM-TO5-TO4-0030, IFM-TO5-TO4-0250, IFM-TO5-TO4-0205 | 100% |  |  |  |  |  |  | cal | New Activity 56COL.P2.CH19.810 | OCT | supt | NuScale | P2 | 19 | 1 | X | Oct | X | As of 15nov22 pending review of fluor deliverables | As of 29nov22 complete |  |  |  |  |  |
| CP-P2-19-01-SD-0135 |  | Entry Criteria - PRA Main Report for SDA | milestone | 0d | 2022-11-16 A | 2022-11-16 A | PKM-0065 | 100% | 2022-11-28 | 2022-11-28 |  |  | finish on or after 2022-11-17 |  | cal | New Activity 56COL.P2.CH19.520 |  | supt | NuScale | P2 | 19 | 1 |  | Oct |  | As of 15nov22 17nov22 finish | As of 29nov22 still need update fin 17nov22 | Y |  |  |  |  |
| CP-P2-19-01-SD-0095 |  | Develop *7004 - LRF Definition |  | 30d | 2023-01-02 | 2023-01-30 | CP-P2-19-01-SD-0135 |  | 2023-01-02 | 2023-02-10 | 54d | 0d | start on or after 2022-12-15 | 2023-01-30 | cal | New Activity 56COL.P2.CH19.460 |  | supt | NuScale | P2 | 19 | 1 |  |  |  |  | As of 29nov22 start slip from 18nov22 resources |  | 2023-01-30 |  |  |  |
| CP-P2-19-01-SD-0080 |  | Develop *7007 - Accident Sequence Analysis Notebook (Rev 0) |  | 30d | 2023-01-06 | 2023-02-16 | CP-P2-19-01-SD-0200, CP-P2-19-01-SD-0205, CP-P2-19-01-SD-0135 |  |  |  | 16d | 0d | start on or after 2023-01-06 |  | cal | New Activity 56COL.P2.CH19.440 |  | supt | NuScale | P2 | 19 | 1 |  |  | Z |  | As of 29nov22 start slip from 18nov22 resources |  | 2023-02-16 | 2023-01-06 |  |  |
| CP-P2-19-01-SD-0195 |  | Entry Criteria: Site Specific Hazard Information (High winds, temperatures, metrology) (PKM-0120) (CP-FI-MET-DC-0070) | milestone | 0d | 2023-01-06 | 2023-01-06 | PKM-0120 FF, CP-FI-MET-DC-0070 |  |  |  | 16d | 0d |  |  | cal | New Activity 56COL.P2.CH19.800 |  | supt | NuScale | P2 | 19 | 1 |  |  |  |  |  |  |  |  | 13.03 19 | nuscalex5.11 |
| CP-P2-19-01-SD-0050 |  | Update *7015 - Electrical Systems Notebook (Rev 0) |  | 40d | 2023-01-09 | 2023-02-10 | CP-P2-19-01-SD-0200, CP-P2-19-01-SD-0135, CP-P2-19-01-SD-0205 |  | 2023-01-09 | 2023-03-03 | 20d | 4d | start on or after 2023-01-09 |  | cal | New Activity 56COL.P2.CH19.120 |  | supt | NuScale | P2 | 19 | 1 |  | Oct | Z |  | As of 29nov22 start slip from 1dec22 |  | 2023-02-10 | 2023-01-09 |  |  |
| CP-P2-19-01-SD-0065 |  | Develop *4113 - MELCOR Accident Consequence Code System (MACCS) Base Model |  | 40d | 2023-01-09 | 2023-02-16 | CP-P2-19-01-SD-0195, CP-P2-13-03-SD-0025, IFM-TO5-TO4-0255, IFM-TO5-TO4-0260 |  | 2023-01-09 | 2023-03-03 | 16d | 0d | start on or after 2023-01-06 |  | cal | New Activity 56COL.P2.CH19.355 |  | supt | NuScale | P2 | 19 | 1 |  |  |  |  |  |  | 2023-02-16 | 2023-01-06 | 13.03 19 | nuscalex5.11 |
| CP-P2-19-01-SD-0055 |  | Develop *3954 Security Report Update (Internal support to Security group) |  | 60d | 2023-01-16 | 2023-04-07 | CP-P2-19-01-SD-0205, IFM-CFP-TO4-0055 FS+60d |  |  |  | 266d | 95d | start on or after 2023-01-16 |  | cal | New Activity 56COL.P2.CH19.145 |  | supt | NuScale | P2 | 19 | 1 |  |  | Z |  | As of 29nov22 start slip from 9jan23 |  | 2023-04-07 | 2023-01-16 |  |  |
| CP-P2-19-01-SD-0070 |  | Develop *7024 - Level 2 PRA Notebook (Rev 0) |  | 40d | 2023-01-27 | 2023-03-23 | CP-P2-19-01-SD-0095 FF, CP-P2-13-03-SD-0055 FF |  |  |  | 16d | 0d | start on or after 2023-01-23 |  | cal | New Activity 56COL.P2.CH19.385 |  | supt | NuScale | P2 | 19 | 1 |  |  |  |  |  |  | 2023-03-23 | 2023-01-23 | 19 | nuscalex5.11 |
| CP-P2-19-01-SD-0085 |  | Develop *7200 - NuScale SAPHIRE PRA Base Model (Rev 0) |  | 25d | 2023-02-17 | 2023-03-23 | CP-P2-19-01-SD-0050, CP-P2-19-01-SD-0080, CP-P2-19-01-SD-0070 FF |  |  |  | 16d | 0d | start on or after 2023-02-17 |  | cal | New Activity 56COL.P2.CH19.450 |  | supt | NuScale | P2 | 19 | 1 |  |  |  |  |  |  | 2023-03-23 | 2023-02-17 | 19 | nuscalex5.11 |
| CP-P2-19-01-SD-0210 |  | Entry Criteria: Site Specific Hazard Information - Volcanology (CP-P2-02-05-PVH-1155) | milestone | 0d | 2023-03-21 | 2023-03-21 | CP-P2-02-05-PVH-1145, CP-P2-19-01-SD-0215, CP-P2-02-05-PVH-1115 |  |  |  | 29d | 6d |  |  | cal | New Activity 56COL.P2.CH19.820 |  | supt | NuScale | P2 | 19 | 1 |  |  |  |  |  |  |  |  |  |  |
| CP-P2-19-01-SD-0075 |  | Develop *7109 - Equipment Survivability Methodology and Results (AST) (Rev 0) |  | 40d | 2023-03-24 | 2023-05-18 | CP-P2-19-01-SD-0205, CP-P2-19-01-SD-0070 |  |  |  | 97d | 92d | start on or after 2023-03-24 |  | cal | New Activity 56COL.P2.CH19.395 |  | supt | NuScale | P2 | 19 | 1 |  |  | Z |  |  |  | 2023-05-18 | 2023-03-24 |  |  |
| CP-P2-19-01-SD-0090 |  | Develop *7200 - NuScale SAPHIRE PRA Base Model Documentation |  | 16d | 2023-03-24 | 2023-04-14 | CP-P2-19-01-SD-0050, CP-P2-19-01-SD-0080, CP-P2-19-01-SD-0085, CP-P2-19-01-SD-0070 |  |  |  | 41d | 0d | start on or after 2023-03-24 |  | cal | New Activity 56COL.P2.CH19.455 |  | supt | NuScale | P2 | 19 | 1 |  |  |  |  |  |  | 2023-04-17 | 2023-03-24 |  |  |
| CP-P2-19-01-SD-0100 |  | Develop *7002 - Probabilistic Risk Assessment Quantification Notebook (Rev 0) |  | 33d | 2023-03-24 | 2023-05-09 | CP-P2-19-01-SD-0085, CP-P2-19-01-SD-0090 FF |  |  |  | 34d | 19d | start on or after 2023-03-24 |  | cal | New Activity 56COL.P2.CH19.470 |  | supt | NuScale | P2 | 19 | 1 |  |  |  |  |  |  | 2023-05-10 | 2023-03-24 |  |  |
| CP-P2-19-01-SD-0105 |  | Develop *7022 - Internal Fires Notebook |  | 41d | 2023-03-24 | 2023-05-19 | CP-P2-19-01-SD-0085 |  |  |  | 16d | 0d | start on or after 2023-03-24 |  | cal | New Activity 56COL.P2.CH19.475 |  | supt | NuScale | P2 | 19 | 1 |  |  |  |  |  |  | 2023-05-22 | 2023-03-24 | 19 | nuscalex5.11 |
| CP-P2-19-01-SD-0110 |  | Develop *7023 - Internal Floods Notebook (Rev 0) |  | 16d | 2023-03-24 | 2023-04-14 | CP-P2-19-01-SD-0085, CP-P2-19-01-SD-0090 FF |  |  |  | 41d | 22d | start on or after 2023-03-24 |  | cal | New Activity 56COL.P2.CH19.480 |  | supt | NuScale | P2 | 19 | 1 |  |  |  |  |  |  | 2023-04-17 | 2023-03-24 |  |  |
| CP-P2-19-01-SD-0120 |  | Develop *7028 - High Winds Notebook (Rev 0) |  | 30d | 2023-03-24 | 2023-05-04 | CP-P2-19-01-SD-0195, CP-P2-19-01-SD-0085, CP-P2-19-01-SD-0090 FF |  |  |  | 27d | 11d | start on or after 2023-03-24 |  | cal | New Activity 56COL.P2.CH19.495 |  | supt | NuScale | P2 | 19 | 1 |  |  |  |  |  |  | 2023-05-04 | 2023-03-24 |  |  |
| CP-P2-19-01-SD-0125 |  | Develop *7029 - External Floods Notebook (Rev 0) |  | 30d | 2023-03-24 | 2023-05-04 | CP-P2-19-01-SD-0195, CP-P2-19-01-SD-0085, CP-P2-19-01-SD-0090 FF |  |  |  | 27d | 11d | start on or after 2023-03-24 |  | cal | New Activity 56COL.P2.CH19.500 |  | supt | NuScale | P2 | 19 | 1 |  |  |  |  |  |  | 2023-05-04 | 2023-03-24 |  |  |
| CP-P2-19-01-SD-0130 |  | Develop *3938 - Shared System Hazards Analysis (Rev 0) |  | 30d | 2023-03-24 | 2023-05-04 | CP-P2-19-01-SD-0205, CP-P2-19-01-SD-0085, CP-P2-19-01-SD-0090 FF |  |  |  | 27d | 13d | start on or after 2023-03-24 |  | cal | New Activity 56COL.P2.CH19.510 |  | supt | NuScale | P2 | 19 | 1 |  |  | Z |  |  |  | 2023-05-04 | 2023-03-24 |  |  |
| CP-P2-19-01-SD-0115 |  | Develop *7027 - Other External Events Notebook (Rev 0) |  | 30d | 2023-03-30 | 2023-05-10 | CP-P2-02-05-PVH-1145, CP-P2-19-01-SD-0195, CP-P2-19-01-SD-0210, CP-P2-19-01-SD-0085, CP-P2-19-01-SD-0090 FF, CP-P2-02-05-PVH-1155 FF |  |  |  | 23d | 9d | start on or after 2023-03-30 |  | cal | New Activity 56COL.P2.CH19.490 |  | supt | NuScale | P2 | 19 | 1 |  |  |  |  |  |  | 2023-05-10 | 2023-03-30 |  |  |
| CP-P2-19-01-SD-0140 |  | Develop *7026 - Seismic Margins Assessment Notebook (Rev 0) |  | 40d | 2023-04-12 | 2023-06-07 | CP-P2-19-01-SD-0195, CP-P2-19-01-SD-0085, CP-P2-19-01-SD-0090 FF, CP-P2-03-07-SD-0055 |  |  |  | 64d | 0d | start on or after 2023-04-11 |  | cal | New Activity 56COL.P2.CH19.600 |  | supt | NuScale | P2 | 19 | 1 |  |  |  |  |  |  | 2023-06-06 | 2023-04-11 |  |  |
| CP-P2-19-01-SD-0145 |  | Develop *7026 - Seismic Margin Assessment (SMA) Model (Rev 0) |  | 30d | 2023-04-12 | 2023-05-23 | CP-P2-19-01-SD-0195, CP-P2-19-01-SD-0085, CP-P2-19-01-SD-0090 FF, CP-P2-03-07-SD-0055 |  |  |  | 14d | 0d | start on or after 2023-04-11 |  | cal | New Activity 56COL.P2.CH19.605 |  | supt | NuScale | P2 | 19 | 1 |  |  |  |  |  |  | 2023-05-22 | 2023-04-11 |  |  |
| CP-P2-19-01-SD-0155 |  | Develop *3751 SAMDA - Value of Maximum Risk Calculation (Rev 0) |  | 30d | 2023-05-22 | 2023-07-03 | CP-P2-19-01-SD-0080, CP-P2-19-01-SD-0090 FF, CP-P2-19-01-SD-0105, CP-P2-19-01-SD-0110, CP-P2-19-01-SD-0120, CP-P2-19-01-SD-0125, CP-P2-19-01-SD-0085, CP-P2-19-01-SD-0065 |  |  |  | 16d | 0d | start on or after 2023-05-22 |  | cal | New Activity 56COL.P2.CH19.625 |  | supt | NuScale | P2 | 19 | 1 |  |  |  |  |  |  | 2023-07-05 | 2023-05-22 |  | nuscalex5.11 |
| CP-P2-19-01-SD-0185 |  | COL Item 19.07 - External events hazards confirmation |  | 60d | 2023-05-24 | 2023-08-17 | CP-P2-03-07-SD-0055, CP-P2-19-01-SD-0105 FF, CP-P2-19-01-SD-0110, CP-P2-19-01-SD-0115, CP-P2-19-01-SD-0120, CP-P2-19-01-SD-0125, CP-P2-19-01-SD-0145, CP-P2-19-01-SD-0130, CP-P2-19-01-SD-0140 FF |  |  |  | 14d | 0d | start on or after 2023-05-23 |  | cal | New Activity 56COL.P2.CH19.670 |  | supt | NuScale | P2 | 19 | 1 |  |  |  |  |  |  | 2023-08-16 | 2023-05-23 |  |  |
| CP-P2-19-01-SD-0150 |  | Develop *7001 - PRA Main Report |  | 50d | 2023-06-07 | 2023-08-16 | CP-P2-19-01-SD-0085, CP-P2-19-01-SD-0090 FF, CP-P2-19-01-SD-0100, CP-P2-19-01-SD-0105, CP-P2-19-01-SD-0110, CP-P2-19-01-SD-0115, CP-P2-19-01-SD-0120, CP-P2-19-01-SD-0125, CP-P2-19-01-SD-0145, CP-P2-19-01-SD-0140 FF, CP-P2-19-01-SD-0120 FF |  |  |  | 15d | 0d | start on or after 2023-06-07 |  | cal | New Activity 56COL.P2.CH19.615 |  | supt | NuScale | P2 | 19 | 1 |  |  |  |  |  |  | 2023-08-16 | 2023-06-07 | 19 |  |
| CP-P2-19-01-SD-0160 |  | Develop *3753 SAMDA - Identification and Screening (Rev 0) |  | 30d | 2023-07-05 | 2023-08-15 | CP-P2-19-01-SD-0100, CP-P2-19-01-SD-0080, CP-P2-19-01-SD-0090 FF, CP-P2-19-01-SD-0105, CP-P2-19-01-SD-0110, CP-P2-19-01-SD-0120, CP-P2-19-01-SD-0125, CP-P2-19-01-SD-0070, CP-P2-19-01-SD-0155, CP-P2-19-01-SD-0085 |  |  |  | 16d | 0d | start on or after 2023-07-05 |  | cal | New Activity 56COL.P2.CH19.630 |  | supt | NuScale | P2 | 19 | 1 |  |  |  |  |  |  | 2023-08-16 | 2023-07-05 |  | nuscalex5.11 |
| CP-P2-19-01-SD-0060 |  | Develop *4474 - NuScale PRA Self-Assessment |  | 20d | 2023-07-20 | 2023-08-16 | CP-P2-19-01-SD-0175 FF |  |  |  | 35d | 30d | start on or after 2023-07-20 |  | cal | New Activity 56COL.P2.CH19.150 |  | supt | NuScale | P2 | 19 | 1 |  |  |  |  |  |  | 2023-08-16 | 2023-07-20 |  |  |
| CP-P2-19-01-SD-0180 |  | SAMDA Complete - EXIT CRITERIA - Environmental Report | milestone | 0d | 2023-08-15 | 2023-08-15 | CP-P2-19-01-SD-0160 |  |  |  | 16d | 3d |  |  | cal | New Activity 56COL.P2.CH19.655 |  | supt | NuScale | P2 | 19 | 1 |  |  |  |  |  |  | 2023-08-16 |  |  | nuscalex5.11 |
| CP-P2-19-01-SD-0175 |  | PRA Main Report Completion | milestone | 0d | 2023-08-16 | 2023-08-16 | CP-P2-19-01-SD-0150 |  |  |  | 15d | 0d |  |  | cal | New Activity 56COL.P2.CH19.645 |  | supt | NuScale | P2 | 19 | 1 |  |  |  |  |  |  | 2023-08-16 |  | 19 |  |
| CP-P2-19-01-SD-0170 |  | Milestone - Technical Deliverables Complete for COLA Chapter 19 | milestone | 0d | 2023-08-17 | 2023-08-17 | CP-P2-19-01-SD-0185 |  |  |  | 34d | 29d |  |  | cal | New Activity 56COL.P2.CH19.640 |  | supt | NuScale | P2 | 19 | 1 |  |  |  |  |  |  | 2023-09-14 |  |  |  |
| CP-P2-19-01-SD-0190 |  | Validation Materials Complete for Chapter 19 | milestone | 0d | 2023-08-17 | 2023-08-17 | CP-P2-19-01-SD-0185 |  |  |  | 34d | 29d |  |  | cal | New Activity 56COL.P2.CH19.720 |  | supt | NuScale | P2 | 19 | 1 |  |  |  |  |  |  | 2023-09-14 |  |  |  |
| CP-P2-19-01-SD-0165 |  | COLA PRA Confirmation Report (Delta Report) |  | 20d | 2023-08-18 | 2023-09-15 | CP-P2-19-01-SD-0185, CP-P2-19-01-SD-0140, CP-P2-19-01-SD-0150, CP-P2-19-01-SD-0175 |  |  |  | 14d | 9d | start on or after 2023-08-17 |  | cal | New Activity 56COL.P2.CH19.635 |  | supt | NuScale | P2 | 19 | 1 |  |  |  |  |  |  | 2023-09-14 | 2023-08-17 | 19 |  |

Notes:
- CP-P2-19-01-SD-0215: 9A SEP EOM Notes: Sep update finish slip from 12aug RIZZO not complete with predecessor activity / 10B OCT EOM Notes: oct update predecessor complete
- CP-P2-19-01-SD-0200: 10B OCT EOM Notes: oct update finish slip out waiting final confirmation of inputs
- CP-P2-19-01-SD-0205: 10B OCT EOM Notes: oct update finish slip out from 20oct
- CP-P2-19-01-SD-0135: 10B OCT EOM Notes: oct update finish move in from 22nov22 / 12B DEC EOM Notes: as of 30dec22 updated this was provided in the november update / CFPP - Contractor's Remarks: as of 30dec22 updated this was provided in the november update
- CP-P2-19-01-SD-0095: 12B DEC EOM Notes: As of 30dec22 delayed / CFPP - Contractor's Remarks: as of 30dec22 updated
- CP-P2-19-01-SD-0080: 12B DEC EOM Notes: as of 30dec22 updated / CFPP - Contractor's Remarks: as of 30dec22 updated
- CP-P2-19-01-SD-0195: 12B DEC EOM Notes: As of 30dec22 verify date
- CP-P2-19-01-SD-0050: 10B OCT EOM Notes: oct update start slip from 23nov22
- CP-P2-19-01-SD-0065: 12B DEC EOM Notes: as of 30dec22 updated / CFPP - Contractor's Remarks: as of 30dec22 updated
- CP-P2-19-01-SD-0070: 12B DEC EOM Notes: as of 30dec22 updated / CFPP - Contractor's Remarks: as of 30dec22 updated
- CP-P2-19-01-SD-0085: 12B DEC EOM Notes: as of 30dec22 updated / CFPP - Contractor's Remarks: as of 30dec22 updated
- CP-P2-19-01-SD-0090: 12B DEC EOM Notes: as of 30dec22 updated / CFPP - Contractor's Remarks: as of 30dec22 updated
- CP-P2-19-01-SD-0100: 12B DEC EOM Notes: as of 30dec22 updated / CFPP - Contractor's Remarks: as of 30dec22 updated
- CP-P2-19-01-SD-0105: 12B DEC EOM Notes: as of 30dec22 updated / CFPP - Contractor's Remarks: as of 30dec22 updated
- CP-P2-19-01-SD-0110: 12B DEC EOM Notes: as of 30dec22 updated / CFPP - Contractor's Remarks: as of 30dec22 updated
- CP-P2-19-01-SD-0120: 12B DEC EOM Notes: as of 30dec22 updated / CFPP - Contractor's Remarks: as of 30dec22 updated
- CP-P2-19-01-SD-0125: 12B DEC EOM Notes: as of 30dec22 updated / CFPP - Contractor's Remarks: as of 30dec22 updated
- CP-P2-19-01-SD-0130: 12B DEC EOM Notes: as of 30dec22 updated / CFPP - Contractor's Remarks: as of 30dec22 updated
- CP-P2-19-01-SD-0115: 12B DEC EOM Notes: as of 30dec22 updated / CFPP - Contractor's Remarks: as of 30dec22 updated
- CP-P2-19-01-SD-0140: 12B DEC EOM Notes: as of 30dec22 updated / CFPP - Contractor's Remarks: as of 30dec22 updated
- CP-P2-19-01-SD-0145: 12B DEC EOM Notes: as of 30dec22 updated / CFPP - Contractor's Remarks: as of 30dec22 updated
- CP-P2-19-01-SD-0155: 12B DEC EOM Notes: as of 30dec22 updated / CFPP - Contractor's Remarks: as of 30dec22 updated
- CP-P2-19-01-SD-0185: 12B DEC EOM Notes: as of 30dec22 updated / CFPP - Contractor's Remarks: as of 30dec22 updated
- CP-P2-19-01-SD-0150: 12B DEC EOM Notes: as of 30dec22 updated / CFPP - Contractor's Remarks: as of 30dec22 updated
- CP-P2-19-01-SD-0160: 12B DEC EOM Notes: as of 30dec22 updated / CFPP - Contractor's Remarks: as of 30dec22 updated
- CP-P2-19-01-SD-0060: 12B DEC EOM Notes: as of 30dec22 updated / CFPP - Contractor's Remarks: as of 30dec22 updated
- CP-P2-19-01-SD-0175: 12B DEC EOM Notes: as of 30dec22 updated / CFPP - Contractor's Remarks: as of 30dec22 updated
- CP-P2-19-01-SD-0170: 12B DEC EOM Notes: as of 30dec22 updated / CFPP - Contractor's Remarks: as of 30dec22 updated
- CP-P2-19-01-SD-0190: 12B DEC EOM Notes: as of 30dec22 updated / CFPP - Contractor's Remarks: as of 30dec22 updated
- CP-P2-19-01-SD-0165: 12B DEC EOM Notes: as of 30dec22 updated / CFPP - Contractor's Remarks: as of 30dec22 updated

| ID | WBS | Activity | Duration | Start | Finish | Predecessors | Complete | Remaining | Planned start | Planned finish | Total float | Free float | Expected finish | Areva - Item Number | zText_33 | UDF Text 02 | zText_02 | zText_Level 3 Schedule | Rebaseline details | Reconcile Rev 0 Milestones | doc type | PREPDRFTREVA | 12A DEC MIDMONTH Notes | Forecast Finish | CFPP, LLC WBS Structure | Author | Period of Performance | Part | Chapter | Section | SDA needed | activity step | UDF Indicator 01 | JLG - Generic Field | SDA ties | Deliverable Owner | SDA cleanup notes | SDA ACT | REV0 - SDA | Contractor Date | DELTA | Nuscale ACT Number | nuscale comp | 11B NOV EOM Notes | zText_RFI |
| --- | --- | --- | --- | --- | --- | --- | --- | --- | --- | --- | --- | --- | --- | --- | --- | --- | --- | --- | --- | --- | --- | --- | --- | --- | --- | --- | --- | --- | --- | --- | --- | --- | --- | --- | --- | --- | --- | --- | --- | --- | --- | --- | --- | --- | --- |
|  | 02 | **CFPP - COLA Prep - Part 02 - Chapter 19 - Section 1 - Section Writing** |  | 2022-11-28 | 2023-10-26 |  |  |  |  |  |  |  |  |  |  |  |  |  |  |  |  |  |  |  |  |  |  |  |  |  |  |  |  |  |  |  |  |  |  |  |  |  |  |  |  |
| CP-P2-19-01-SW-0000 |  | Prepare Draft Rev A -Check Updated Supporting Documents -FSAR Chapter 19 | 110d | 2022-11-28 A | 2023-09-28 | CP-P2-19-01-SD-0170 FF, CP-P2-19-01-SD-0190 FF, IFM-SDA-TO4-0270 FF, CP-P2-19-01-SD-0185 FF, CP-P2-19-01-SD-0165 FF, CP-P2-19-01-SD-0150 FF, CP-P2-19-01-SD-0075 FF, CP-P2-19-01-SD-0060 FF |  | 191d | 2023-04-03 | 2023-09-06 | 5d | 0d | 2023-09-28 | A143450 | Near Critical Path #1 - Probablistic Risk Analysis | Critical Path Item - FF | Yes | Yes | NUSCALE | 19 | deliv | NS-REVA | As of 12dec22 Nuscale update ignores predecessor finish | 2023-10-05 | 03 | NuScale | FNTP | P2 | 19 | 1 | SDA Tie | 1 |  |  |  |  |  |  |  |  |  |  |  |  |  |
| CP-P2-19-01-SW-0005 |  | Review Draft Rev A - FSAR Chapter 19 (TO4 Team Review) | 10d | 2023-09-29 | 2023-10-12 | CP-P2-19-01-SW-0000 |  |  |  |  | 5d | 0d |  | A143440 | Near Critical Path #1 - Probablistic Risk Analysis |  | Yes | Yes | NUSCALE | 19 | deliv |  |  |  | 03 | TO4 | FNTP | P2 |  |  |  | 2 | UDF_G1 | SI | FIX |  |  |  |  |  |  |  |  |  |  |
| CP-P2-19-01-SW-0010 |  | Resolve Rev A Comments - FSAR Chapter 19 | 5d | 2023-10-13 | 2023-10-19 | CP-P2-19-01-SW-0005 |  |  |  |  | 5d | 0d |  | A143440 | Near Critical Path #1 - Probablistic Risk Analysis |  | Yes | Yes | NUSCALE | 19 | deliv |  |  |  | 03 | NuScale | FNTP | P2 | 19 | 1 |  | 3 |  | SI |  |  |  |  |  |  |  |  |  |  |  |
| CP-P2-19-01-SW-0012 |  | Confirm SDA Information and Inform Reviewers - FSAR Section 19.1 | 5d | 2023-10-20 | 2023-10-20 | CP-P2-19-01-SW-0010, PKM-0125 |  |  | 2023-10-20 | 2023-10-26 | 5d | 0d |  |  |  |  | Yes | Yes | FL4 |  | deliv |  |  |  | 03 | FL4 | FNTP | P2 | 1 | 1.1 | SDA Tie | 4 | UDF_G1 |  | FIX | Matt-TBD | checked pushed out by pred | N | NS-REV0 |  |  |  |  |  |  |
| CP-P2-19-01-SW-0015 |  | Issue Rev 0 - FSAR Chapter 19 | 5d | 2023-10-20 | 2023-10-26 | CP-P2-19-01-SW-0012 |  |  |  |  | 5d | 0d |  | A143440 | Near Critical Path #1 - Probablistic Risk Analysis |  | Yes | Yes | NUSCALE | 19 | deliv |  |  |  | 03 | NuScale | FNTP | P2 | 19 | 1 | SDA Tie | 5 | UDF_G1 | SI |  |  |  | N | NS-REV0 | 2023-11-16 | -33 | 56COL.P2.CH19.675 | nuscale |  |  |
|  | 20 | **CFPP - COLA Prep - Part 02 - Chapter 20 Mitigation of Beyond-Design-Basis Events** |  |  |  |  |  |  |  |  |  |  |  |  |  |  |  |  |  |  |  |  |  |  |  |  |  |  |  |  |  |  |  |  |  |  |  |  |  |  |  |  |  |  |  |
|  | 01 | **CFPP - COLA Prep - Part 02 - Chapter 20 - Section 1 - Mitigation of Beyond-Design-Basis Events** |  |  |  |  |  |  |  |  |  |  |  |  |  |  |  |  |  |  |  |  |  |  |  |  |  |  |  |  |  |  |  |  |  |  |  |  |  |  |  |  |  |  |  |
|  | 01 | **CFPP - COLA Prep - Part 02 - Chapter 20 - Section 1 - Support Documents** |  |  |  |  |  |  |  |  |  |  |  |  |  |  |  |  |  |  |  |  |  |  |  |  |  |  |  |  |  |  |  |  |  |  |  |  |  |  |  |  |  |  |  |
|  | 02 | **CFPP - COLA Prep - Part 02 - Chapter 20 - Section 1 - Section Writing** |  |  |  |  |  |  |  |  |  |  |  |  |  |  |  |  |  |  |  |  |  |  |  |  |  |  |  |  |  |  |  |  |  |  |  |  |  |  |  |  |  |  |  |
|  | 21 | **CFPP - COLA Prep - Part 02 - Chapter 21 Multi-Module Design Considerations** |  |  |  |  |  |  |  |  |  |  |  |  |  |  |  |  |  |  |  |  |  |  |  |  |  |  |  |  |  |  |  |  |  |  |  |  |  |  |  |  |  |  |  |
|  | 1 | **CFPP - COLA Prep - Part 02 - Chapter 21 - Section 1 - Multi-Module Design Considerations** |  |  |  |  |  |  |  |  |  |  |  |  |  |  |  |  |  |  |  |  |  |  |  |  |  |  |  |  |  |  |  |  |  |  |  |  |  |  |  |  |  |  |  |
|  | 01 | **CFPP - COLA Prep - Part 02 - Chapter 21 - Section 1 - Support Documents** |  |  |  |  |  |  |  |  |  |  |  |  |  |  |  |  |  |  |  |  |  |  |  |  |  |  |  |  |  |  |  |  |  |  |  |  |  |  |  |  |  |  |  |
|  | 02 | **CFPP - COLA Prep - Part 02 - Chapter 21 - Section 1 - Section Writing** |  |  |  |  |  |  |  |  |  |  |  |  |  |  |  |  |  |  |  |  |  |  |  |  |  |  |  |  |  |  |  |  |  |  |  |  |  |  |  |  |  |  |  |
|  | 03 | **CFPP - COLA Prep - Part 03 Environmental Report** |  | 2022-01-03 | 2023-11-02 |  |  |  |  |  |  |  |  |  |  |  |  |  |  |  |  |  |  |  |  |  |  |  |  |  |  |  |  |  |  |  |  |  |  |  |  |  |  |  |  |
|  | 01 | **CFPP - COLA Prep - Part 03 - Chapter 01 Introduction** |  | 2022-04-01 | 2023-02-24 |  |  |  |  |  |  |  |  |  |  |  |  |  |  |  |  |  |  |  |  |  |  |  |  |  |  |  |  |  |  |  |  |  |  |  |  |  |  |  |  |
|  | 01 | **CFPP - COLA Prep - Part 03 - Chapter 01 - Section 1 Introduction** |  | 2022-04-01 | 2023-02-24 |  |  |  |  |  |  |  |  |  |  |  |  |  |  |  |  |  |  |  |  |  |  |  |  |  |  |  |  |  |  |  |  |  |  |  |  |  |  |  |  |
|  | 01 | **CFPP - COLA Prep - Part 03 - Chapter 01 - Section 1 - Support Documents** |  |  |  |  |  |  |  |  |  |  |  |  |  |  |  |  |  |  |  |  |  |  |  |  |  |  |  |  |  |  |  |  |  |  |  |  |  |  |  |  |  |  |  |
|  | 02 | **CFPP - COLA Prep - Part 03 - Chapter 01 - Section 1 - Section Writing** |  | 2022-04-01 | 2023-02-24 |  |  |  |  |  |  |  |  |  |  |  |  |  |  |  |  |  |  |  |  |  |  |  |  |  |  |  |  |  |  |  |  |  |  |  |  |  |  |  |  |
| CP-P3-01-01-SW-0000 |  | Prepare Draft Rev A -Check Updated Supporting Documents -ER Chapter 01 | 10d | 2022-04-01 A | 2022-11-28 A | CP-P2-01-02-SD-0030 FF+10d, CP-P2-01-04-SD-0000 SS | 100% |  | 2022-11-14 | 2022-11-28 |  |  |  |  |  |  | Yes | Yes | FL4 |  | deliv | FL4-REVA |  |  | 03 | FL4 | FNTP | P3 |  |  |  | 1 | UDF_G3 |  |  |  |  |  |  |  |  |  |  | As of 29nov22 complete 28nov22 |  |
| CP-P3-01-01-SW-0005 |  | Review Draft Rev A - ER Chapter 01 (TO4 Team Review) | 10d | 2022-11-29 A | 2022-12-19 A | CP-P3-01-01-SW-0000 | 100% |  | 2022-11-29 | 2022-12-12 |  |  |  |  |  |  | Yes | Yes | FL4 |  | deliv |  |  |  | 03 | TO4 | FNTP | P3 |  |  |  | 2 | UDF_G1 |  |  |  |  |  |  |  |  |  |  | As of 29nov22 added 4 days certrec upload started |  |
| CP-P3-01-01-SW-0010 |  | Resolve Rev A Comments - ER Chapter 01 | 5d | 2022-12-19 A | 2023-02-17 | CP-P3-01-01-SW-0005 |  | 35d | 2022-12-19 | 2022-12-23 | 176d | 0d | 2023-02-17 |  |  |  | Yes | Yes | FL4 |  | deliv |  |  |  | 03 | FL4 | FNTP | P3 |  |  |  | 3 | UDF_G1 |  |  |  |  |  |  |  |  |  |  | As of 29nov22 added 4 days certrec upload |  |
| CP-P3-01-01-SW-0015 |  | Issue Rev 0 - ER Chapter 01 | 5d | 2023-02-20 | 2023-02-24 | CP-P3-01-01-SW-0010 |  |  |  |  | 176d | 0d |  |  |  |  | Yes | Yes | FL4 |  | deliv |  |  |  | 03 | FL4 | FNTP | P3 |  |  | No SDA | 5 | UDF_G1 |  |  |  |  | N/A | FL4-REV0 |  |  |  |  |  |  |
|  | 02 | **CFPP - COLA Prep - Part 03 - Chapter 02 Proposed Site & Affected Environment** |  | 2022-01-03 | 2023-07-26 |  |  |  |  |  |  |  |  |  |  |  |  |  |  |  |  |  |  |  |  |  |  |  |  |  |  |  |  |  |  |  |  |  |  |  |  |  |  |  |  |
|  | 00 | **CFPP - COLA Prep - Part 03 - Chapter 02 - Section 0 The Proposed Site Contractor / Site Location** |  | 2022-01-24 | 2022-04-29 |  |  |  |  |  |  |  |  |  |  |  |  |  |  |  |  |  |  |  |  |  |  |  |  |  |  |  |  |  |  |  |  |  |  |  |  |  |  |  |  |
|  | 01 | **CFPP - COLA Prep - Part 03 - Chapter 02 - Section 0 - Support Documents** |  | 2022-01-24 | 2022-03-08 |  |  |  |  |  |  |  |  |  |  |  |  |  |  |  |  |  |  |  |  |  |  |  |  |  |  |  |  |  |  |  |  |  |  |  |  |  |  |  |  |
| CP-P3-02-00-SD-0010 |  | Provide Aerial Photo of CFPP Site | 5d | 2022-01-24 A | 2022-01-28 A | PKM-0070 FS+20d, IFM-TO5-TO4-0000 | 100% |  | 2022-02-01 | 2022-02-07 |  |  |  |  |  |  | Yes | Yes | FL4 |  | supt |  |  |  | 03 | FL4 | FNTP | P3 |  |  |  |  | UDF_G3 |  |  |  |  |  |  |  |  |  |  |  | RFI 102 |
| CP-P3-02-00-SD-0005 |  | Prepare Initial GIS Figure with Site Plan Overlay | 15d | 2022-03-01 A | 2022-03-07 A | CP-P2-02-01-SD-0025 | 100% |  | 2022-03-07 | 2022-03-25 |  |  |  |  |  |  | Yes | Yes | FL4 |  | supt |  |  |  | 03 | FL4 | FNTP | P3 |  |  |  |  | UDF_G3 |  |  |  |  |  |  |  |  |  |  |  |  |
| CP-P3-02-00-SD-0000 |  | Provide Info on CFPP Site Location | 15d | 2022-03-07 A | 2022-03-08 A | CP-P2-02-01-SD-0025 | 100% |  | 2022-03-07 | 2022-03-25 |  |  |  |  |  |  | Yes | Yes | FL4 |  | supt |  |  |  | 03 | FL4 | FNTP | P3 |  |  |  |  | UDF_G1 |  |  |  |  |  |  |  |  |  |  |  |  |

Notes:
- CP-P2-19-01-SW-0000: 12B DEC EOM Notes: as of 30dec22 updated forecast finish date (5oct23) pushing out COLA delivery date 1st mitigation moved forecast finish back to 28sep23 / CFPP - Contractor's Remarks: as of 30dec22 updated
- CP-P2-19-01-SW-0012: 12B DEC EOM Notes: In parallel with Team Review (hold duration at 5d)
- CP-P3-01-01-SW-0000: 12B DEC EOM Notes: as of 30dec22 updated
- CP-P3-01-01-SW-0005: 12B DEC EOM Notes: as of 30dec22 updated
- CP-P3-01-01-SW-0010: 12B DEC EOM Notes: As of 30dec22 delayed by 26jan23 NRC meeting / CFPP - Contractor's Remarks: this section will need to hold in review stage until Licensing decisions are made by CFPP
- CP-P3-01-01-SW-0015: 12B DEC EOM Notes: As of 30dec22 pred delayed / CFPP - Contractor's Remarks: as of 30dec22 updated pred delayed

| ID | WBS | Activity | Duration | Start | Finish | Predecessors | Complete | Remaining | Planned start | Planned finish | Total float | Free float | Expected finish | UDF Indicator 01 | zText_02 | Deliverable Owner | Rebaseline details | doc type | PREPDRFTREVA | CFPP, LLC WBS Structure | Author | Period of Performance | Part | activity step | zText_Level 3 Schedule | SDA ACT | REV0 - SDA | SDA needed | 9A SEP EOM Notes | zText_CFPP Look Ahead Notes | Monthly Variance | 12B DEC EOM Notes | CFPP - Contractor's Remarks | 11B NOV EOM Notes | zText_RFI | Chapter | Section |
| --- | --- | --- | --- | --- | --- | --- | --- | --- | --- | --- | --- | --- | --- | --- | --- | --- | --- | --- | --- | --- | --- | --- | --- | --- | --- | --- | --- | --- | --- | --- | --- | --- | --- | --- | --- | --- | --- |
|  | 02 | **CFPP - COLA Prep - Part 03 - Chapter 02 - Section 0 - Section Writing** |  | 2022-03-01 | 2022-04-29 |  |  |  |  |  |  |  |  |  |  |  |  |  |  |  |  |  |  |  |  |  |  |  |  |  |  |  |  |  |  |  |  |
| CP-P3-02-00-SW-0000 |  | Prepare Draft Rev A -Check Updated Supporting Documents -ER Section 2.0 | 15d | 2022-03-01 A | 2022-04-11 A | CP-P3-02-00-SD-0010, CP-P3-02-00-SD-0000, CP-P3-02-00-SD-0005 | 100% |  | 2022-03-28 | 2022-04-15 |  |  |  | UDF_G1 | Yes | kevin | FL4 | deliv | FL4-REVA | 03 | FL4 | FNTP | P3 | 1 |  |  |  |  |  |  |  |  |  |  |  |  |  |
| CP-P3-02-00-SW-0005 |  | Review Draft Rev A - ER Section 2.0 (TO4 Team Review) | 10d | 2022-04-12 A | 2022-04-22 A | CP-P3-02-00-SW-0000 | 100% |  | 2022-04-12 | 2022-04-25 |  |  |  | UDF_G1 | Yes |  | FL4 | deliv |  | 03 | TO4 | FNTP | P3 | 2 |  |  |  |  |  |  |  |  |  |  |  |  |  |
| CP-P3-02-00-SW-0010 |  | Resolve Rev A Comments - ER Section 2.0 | 5d | 2022-04-25 A | 2022-04-25 A | CP-P3-02-00-SW-0005 | 100% |  | 2022-04-26 | 2022-05-02 |  |  |  | UDF_G1 | Yes |  | FL4 | deliv |  | 03 | FL4 | FNTP | P3 | 3 | Yes |  |  |  |  |  |  |  |  |  |  |  |  |
| CP-P3-02-00-SW-0015 |  | Issue Rev 0 - ER Section 2.0 | 5d | 2022-04-26 A | 2022-04-29 A | CP-P3-02-00-SW-0010 | 100% |  | 2022-05-03 | 2022-05-09 |  |  |  | UDF_G1 | Yes |  | FL4 | deliv |  | 03 | FL4 | FNTP | P3 | 5 | Yes | N/A | FL4-REV0 | No SDA |  |  |  |  |  |  |  |  |  |
|  | 01 | **CFPP - COLA Prep - Part 03 - Chapter 02 - Section 1 Land Use** |  | 2022-03-01 | 2023-01-19 |  |  |  |  |  |  |  |  |  |  |  |  |  |  |  |  |  |  |  |  |  |  |  |  |  |  |  |  |  |  |  |  |
|  | 01 | **CFPP - COLA Prep - Part 03 - Chapter 02 - Section 1 - Support Documents** |  | 2022-03-01 | 2022-12-15 |  |  |  |  |  |  |  |  |  |  |  |  |  |  |  |  |  |  |  |  |  |  |  |  |  |  |  |  |  |  |  |  |
| CP-P3-02-01-SD-0000 |  | Conduct Research on Land Use Within Vicinity/Region of CFPP Site | 15d | 2022-03-01 A | 2022-06-10 A | CP-P2-02-01-SD-0025 | 100% |  | 2022-10-18 | 2022-11-07 |  |  |  | UDF_G3 | Yes |  | FL4 | supt |  | 03 | FL4 | FNTP | P3 |  | Yes |  |  |  |  |  |  |  |  |  |  |  |  |
| CP-P3-02-01-SD-0005 |  | Prepare GIS figures/Site Area Maps | 30d | 2022-03-01 A | 2022-09-16 A | CP-P3-02-00-SD-0005 SS, CP-P3-02-01-SD-0000 SS | 100% |  | 2022-11-08 | 2022-12-20 |  |  |  | UDF_G3 | Yes |  | FL4 | supt |  | 03 | FL4 | FNTP | P3 |  | Yes |  |  |  | Sep update |  |  |  |  |  |  |  |  |
| CP-P3-02-01-SD-0015 |  | Prepare Summary of Major Geological Features | 102d | 2022-04-11 A | 2022-09-16 A | CP-P2-02-01-SD-0025, CP-P2-02-02-SD-0025 FF, CP-P3-02-01-SD-0005 SS | 100% |  | 2022-04-11 | 2022-09-01 |  |  |  | UDF_G1 | Yes |  | FL4 | supt |  | 03 | FL4 | FNTP | P3 |  | Yes |  |  |  | Sep update | Y |  |  |  |  |  |  |  |
| CP-P3-02-01-SD-0020 |  | Prepare Info & Maps on New Transmission-related Facilities | 15d | 2022-10-03 A | 2022-12-15 A | CP-P3-02-01-SD-0015, IFM-CFP-TO4-0020 | 100% |  | 2022-10-03 | 2022-10-21 |  |  |  | UDF_G1 | Yes |  | CFPP | supt |  | 03 | CFPP | FNTP | P3 |  | Yes |  |  |  |  |  | Oct | as of 30dec22 updated considered complete 12/15/22 per KK | considered complete 12/15/22 per KK |  |  |  |  |
|  | 02 | **CFPP - COLA Prep - Part 03 - Chapter 02 - Section 1 - Section Writing** |  | 2022-04-13 | 2023-01-19 |  |  |  |  |  |  |  |  |  |  |  |  |  |  |  |  |  |  |  |  |  |  |  |  |  |  |  |  |  |  |  |  |
| CP-P3-02-01-SW-0000 |  | Prepare Draft Rev A -Check Updated Supporting Documents -ER Section 2.1 | 215d | 2022-04-13 A | 2022-11-15 A | CP-P3-02-01-SD-0020 SS, CP-P3-02-01-SD-0000 SS | 100% |  | 2022-04-13 | 2023-02-14 |  |  |  | UDF_G1 | Yes |  | FL4 | deliv | FL4-REVA | 03 | FL4 | FNTP | P3 | 1 | Yes |  |  |  |  |  | Oct |  |  | As of 29nov22 complete finish moved in from 15dec22 |  |  |  |
| CP-P3-02-01-SW-0005 |  | Review Draft Rev A - ER Section 2.1 (TO4 Team Review) | 10d | 2022-11-16 A | 2022-12-19 A | CP-P3-02-01-SW-0000 | 100% |  | 2022-12-16 | 2022-12-30 |  |  |  | UDF_G1 | Yes |  | FL4 | deliv |  | 03 | TO4 | FNTP | P3 | 2 | Yes |  |  |  |  |  |  | as of 30dec22 updated |  | As of 29nov22 added 4 days certrec upload |  |  |  |
| CP-P3-02-01-SW-0010 |  | Resolve Rev A Comments - ER Section 2.1 | 5d | 2022-12-19 A | 2023-01-12 | CP-P3-02-01-SW-0005 |  | 9d | 2022-12-19 | 2022-12-23 | 202d | 0d | 2023-01-12 | UDF_G1 | Yes |  | FL4 | deliv |  | 03 | FL4 | FNTP | P3 | 3 | Yes |  |  |  |  |  |  | as of 30dec22 updated | delayed due to Certrec SDA |  |  |  |  |
| CP-P3-02-01-SW-0015 |  | Issue Rev 0 - ER Section 2.1 | 5d | 2023-01-13 | 2023-01-19 | CP-P3-02-01-SW-0010 |  |  |  |  | 202d | 132d |  | UDF_G1 | Yes |  | FL4 | deliv |  | 03 | FL4 | FNTP | P3 | 5 | Yes | N/A | FL4-REV0 | No SDA |  |  |  | As of 30dec22 delayed | delayed due to Certrec SDA |  |  |  |  |
|  | 02 | **CFPP - COLA Prep - Part 03 - Chapter 02 - Section 2 Water Resources (Surface Water and Groundwater)** |  | 2023-01-23 | 2023-04-21 |  |  |  |  |  |  |  |  |  |  |  |  |  |  |  |  |  |  |  |  |  |  |  |  |  |  |  |  |  |  |  |  |
|  | 01 | **CFPP - COLA Prep - Part 03 - Chapter 02 - Section 2 - Support Documents** |  | 2023-01-23 | 2023-03-03 |  |  |  |  |  |  |  |  |  |  |  |  |  |  |  |  |  |  |  |  |  |  |  |  |  |  |  |  |  |  |  |  |
| CP-P3-02-02-SD-0000 |  | Provide Description of Pre-application Water Monitoring Program | 30d | 2023-01-23 | 2023-03-03 | CP-P2-02-04-SD-0215, CP-P2-02-04-SW-0065, CP-P2-02-04-SW-0025, CP-P2-02-04-SW-0245 FF |  |  |  |  | 6d | 0d |  | UDF_G3 | Yes |  | RIZZO | supt |  | 03 | RIZZO | FNTP | P3 |  | Yes |  |  |  |  |  |  |  |  |  | RFI-202 | 2 | 2.0 |
| CP-P3-02-02-SD-0005 |  | Provide Info on any CWA 303(d) Impaired Waters/Status of the CWA Permitting Process | 30d | 2023-01-23 | 2023-03-03 | CP-P2-02-04-SD-0215, CP-P2-02-04-SW-0065, CP-P2-02-04-SW-0025, CP-P2-02-04-SW-0245 FF |  |  |  |  | 6d | 0d |  | UDF_G3 | Yes |  | RIZZO | supt |  | 03 | RIZZO | FNTP | P3 |  | Yes |  |  |  |  |  |  |  |  |  | RFI-102 | 2 | 2.0 |
| CP-P3-02-02-SD-0010 |  | Conduct Research on Water Resources at CFPP Site/Vicinity | 30d | 2023-01-23 | 2023-03-03 | CP-P2-02-04-SW-0025, CP-P2-02-04-SW-0065, CP-P2-02-04-SD-0215, CP-P2-02-04-SW-0245 FF |  |  |  |  | 6d | 0d |  | UDF_G1 | Yes |  | RIZZO | supt |  | 03 | RIZZO | FNTP | P3 |  | Yes |  |  |  |  |  |  |  |  |  |  | 2 | 2.0 |
|  | 02 | **CFPP - COLA Prep - Part 03 - Chapter 02 - Section 2 - Section Writing** |  | 2023-03-06 | 2023-04-21 |  |  |  |  |  |  |  |  |  |  |  |  |  |  |  |  |  |  |  |  |  |  |  |  |  |  |  |  |  |  |  |  |
| CP-P3-02-02-SW-0000 |  | Prepare Draft Rev A -Check Updated Supporting Documents -ER Section 2.2 | 15d | 2023-03-06 | 2023-03-24 | CP-P3-02-02-SD-0000, CP-P3-02-02-SD-0005, CP-P3-02-02-SD-0010, CP-P2-02-04-SD-0020, CP-P2-02-04-SD-0015 |  |  |  |  | 6d | 0d |  | UDF_G1 | Yes |  | RIZZO | deliv | RZO-REVA | 03 | RIZZO | FNTP | P3 | 1 | Yes |  |  |  |  |  |  |  |  |  |  | 2 | 2.0 |
| CP-P3-02-02-SW-0005 |  | Review Draft Rev A - ER Section 2.2 (TO4 Team Review) | 10d | 2023-03-27 | 2023-04-07 | CP-P3-02-02-SW-0000 |  |  |  |  | 6d | 0d |  | UDF_G1 | Yes |  | RIZZO | deliv |  | 03 | TO4 | FNTP | P3 | 2 | Yes |  |  |  |  |  |  |  |  |  |  |  |  |
| CP-P3-02-02-SW-0010 |  | Resolve Rev A Comments - ER Section 2.2 | 5d | 2023-04-10 | 2023-04-14 | CP-P3-02-02-SW-0005 |  |  |  |  | 136d | 0d |  | UDF_G1 | Yes |  | RIZZO | deliv |  | 03 | RIZZO | FNTP | P3 | 3 | Yes |  |  |  |  |  |  |  |  |  |  | 2 | 2.0 |
| CP-P3-02-02-SW-0015 |  | Issue Rev 0 - ER Section 2.2 | 5d | 2023-04-17 | 2023-04-21 | CP-P3-02-02-SW-0010 |  |  |  |  | 136d | 66d |  | UDF_G1 | Yes |  | RIZZO | deliv |  | 03 | RIZZO | FNTP | P3 | 5 | Yes | N/A | RZO-REV0 | No SDA |  |  |  |  |  |  |  | 2 | 2.0 |

Notes:
- CP-P3-02-01-SD-0020: 10B OCT EOM Notes: oct update finish slip from 21oct22
- CP-P3-02-01-SW-0000: 10B OCT EOM Notes: oct update finish slip from 24oct22 pred driving out finish from 11nov22
- CP-P3-02-01-SW-0005: 10B OCT EOM Notes: oct update finish slip out from 28nov22

| ID | WBS | Activity | Duration | Start | Finish | Predecessors | Complete | Remaining | Planned start | Planned finish | Total float | Free float | Constraint | Expected finish | UDF Indicator 01 | zText_02 | zText_Level 3 Schedule | Rebaseline details | doc type | CFPP, LLC WBS Structure | Author | Period of Performance | Part | zText_RFI | 9A SEP EOM Notes | 10B OCT EOM Notes | 10A OCT MIDMONTH Notes | COLA Critical Path Sched | Critcal Path | PREPDRFTREVA | activity step | SDA ACT | REV0 - SDA | SDA needed | Deliverable Owner | Comments | VERIFIED MONTHLY UPDATE | Monthly Variance | 11B NOV EOM Notes | 12B DEC EOM Notes | CFPP - Contractor's Remarks |
| --- | --- | --- | --- | --- | --- | --- | --- | --- | --- | --- | --- | --- | --- | --- | --- | --- | --- | --- | --- | --- | --- | --- | --- | --- | --- | --- | --- | --- | --- | --- | --- | --- | --- | --- | --- | --- | --- | --- | --- | --- | --- |
|  | 03 | **CFPP - COLA Prep - Part 03 - Chapter 02 - Section 3 Ecological Resources** |  | 2022-01-03 | 2023-07-26 |  |  |  |  |  |  |  |  |  |  |  |  |  |  |  |  |  |  |  |  |  |  |  |  |  |  |  |  |  |  |  |  |  |  |  |  |
|  | 01 | **CFPP - COLA Prep - Part 03 - Chapter 02 - Section 3 - Support Documents** |  | 2022-01-03 | 2023-05-26 |  |  |  |  |  |  |  |  |  |  |  |  |  |  |  |  |  |  |  |  |  |  |  |  |  |  |  |  |  |  |  |  |  |  |  |  |
| CP-P3-02-03-SD-0000 |  | Conduct Research on the Ecological Resources at CFPP Site/Vicinity/Region | 30d | 2022-01-03 A | 2022-02-14 A | IFM-CFP-TO4-0065 | 100% |  | 2022-01-31 | 2022-03-11 |  |  |  |  | UDF_G3 | Yes | Yes | BEA | supt | 03 | BEA | FNTP | P3 |  |  |  |  |  |  |  |  |  |  |  |  |  |  |  |  |  |  |
| CP-P3-02-03-SD-0005 |  | Provide Info on Ecological Resources at INL Site | 30d | 2022-01-03 A | 2022-03-17 A | IFM-CFP-TO4-0065 | 100% |  | 2022-01-31 | 2022-03-11 |  |  |  |  | UDF_G3 | Yes | Yes | BEA | supt | 03 | BEA | FNTP | P3 | RFI 102 |  |  |  |  |  |  |  |  |  |  |  |  |  |  |  |  |  |
| CP-P3-02-03-SD-0010 |  | Conduct Field Ecology Survey (CFPP Site Vicinity) | 231d | 2022-05-02 A | 2023-03-30 | CP-P3-02-03-SD-0000 |  | 64d | 2022-05-02 | 2023-03-27 | 57d | 0d |  | 2023-03-30 | UDF_G3 | Yes |  | BEA | supt | 03 | BEA | FNTP | P3 |  |  |  |  |  |  |  |  |  |  |  |  |  |  |  |  |  |  |
| CP-P3-02-03-SD-0020 |  | Conduct Field Ecology Survey Permanent Power Corridor | 198d | 2022-09-29 A | 2023-05-26 | CP-P3-02-03-SD-0000, CP-P3-02-03-SD-0010 FF, IFM-CFP-TO4-0020 |  | 105d | 2023-04-03 | 2024-01-18 | 16d | 0d |  | 2023-05-26 | UDF_G3 | Yes |  | BEA | supt | 03 | BEA | FNTP | P3 |  | Sep update |  |  |  |  |  |  |  |  |  |  |  |  |  |  |  |  |
| CP-P3-02-03-SD-0015 |  | Conduct Field Ecology Survey Temporary Power corridor | 198d | 2023-04-03 | 2023-05-26 | IFM-CFP-TO4-0020 |  |  | 2023-04-03 | 2024-01-18 | 16d | 1d | start on or after 2023-04-03 |  | UDF_G3 | Yes |  | BEA | supt | 03 | BEA | FNTP | P3 |  |  |  |  |  |  |  |  |  |  |  |  |  |  |  |  |  |  |
| CP-P3-02-03-SD-0025 |  | Conduct Field Ecology Survey Water Pipeline Corridor | 198d | 2023-04-03 | 2023-05-26 | IFM-CFP-TO4-0090, IFM-CFP-TO4-0020 |  |  | 2023-04-03 | 2024-01-18 | 16d | 1d | start on or after 2023-04-03 |  | UDF_G3 | Yes |  | BEA | supt | 03 | BEA | FNTP | P3 |  |  | oct update added predecessor IFM-CFP-TO4-0090 | oct update added predecessor IFM-CFP-TO4-0090 |  |  |  |  |  |  |  |  |  |  |  |  |  |  |
|  | 02 | **CFPP - COLA Prep - Part 03 - Chapter 02 - Section 3 - Section Writing** |  | 2022-04-14 | 2023-07-26 |  |  |  |  |  |  |  |  |  |  |  |  |  |  |  |  |  |  |  |  |  |  |  |  |  |  |  |  |  |  |  |  |  |  |  |  |
| CP-P3-02-03-SW-0000 |  | Prepare Draft Rev A -Check Updated Supporting Documents -ER Section 2.3 | 15d | 2022-04-14 A | 2023-06-27 | CP-P3-02-03-SD-0010 FF, CP-P3-02-03-SD-0000, CP-P3-02-03-SD-0005 |  | 126d | 2023-03-31 | 2023-04-20 | 0d |  |  | 2023-06-27 | UDF_G3 | Yes | Yes | FL4 | deliv | 03 | FL4 | FNTP | P3 |  |  |  |  | 1 | 1 | FL4-REVA | 1 |  |  |  |  |  |  |  |  |  |  |
| CP-P3-02-03-SW-0005 |  | Review Draft Rev A - ER Section 2.3 (TO4 Team Review) | 10d | 2023-06-28 | 2023-07-12 | CP-P3-02-03-SW-0000 |  |  |  |  | 0d |  |  |  | UDF_G1 | Yes | Yes | FL4 | deliv | 03 | TO4 | FNTP | P3 |  |  |  |  | 1 | 1 |  | 2 |  |  |  |  |  |  |  |  |  |  |
| CP-P3-02-03-SW-0010 |  | Resolve Rev A Comments - ER Section 2.3 | 5d | 2023-07-13 | 2023-07-19 | CP-P3-02-03-SW-0005 |  |  |  |  | 70d | 0d |  |  | UDF_G1 | Yes | Yes | FL4 | deliv | 03 | FL4 | FNTP | P3 |  |  |  |  |  |  |  | 3 |  |  |  |  |  |  |  |  |  |  |
| CP-P3-02-03-SW-0015 |  | Issue Rev 0 - ER Section 2.3 | 5d | 2023-07-20 | 2023-07-26 | CP-P3-02-03-SW-0010 |  |  |  |  | 70d | 0d |  |  | UDF_G1 | Yes | Yes | FL4 | deliv | 03 | FL4 | FNTP | P3 |  |  |  | oct update Draft Rev A finish date moved out |  |  |  | 5 | N/A | FL4-REV0 | No SDA |  |  |  |  |  |  |  |
|  | 04 | **CFPP - COLA Prep - Part 03 - Chapter 02 - Section 4 Socioeconomics** |  | 2022-03-22 | 2023-01-13 |  |  |  |  |  |  |  |  |  |  |  |  |  |  |  |  |  |  |  |  |  |  |  |  |  |  |  |  |  |  |  |  |  |  |  |  |
|  | 01 | **CFPP - COLA Prep - Part 03 - Chapter 02 - Section 4 - Support Documents** |  | 2022-03-22 | 2022-05-20 |  |  |  |  |  |  |  |  |  |  |  |  |  |  |  |  |  |  |  |  |  |  |  |  |  |  |  |  |  |  |  |  |  |  |  |  |
| CP-P3-02-04-SD-0000 |  | Provide Info on Demography / Community Characteristics Within 50-mile Radius of CFPP Site | 30d | 2022-03-22 A | 2022-05-20 A | CP-P2-02-01-SD-0055 SS | 100% |  | 2022-05-04 | 2022-06-15 |  |  |  |  | UDF_G3 | Yes |  | FL4 | supt | 03 | FL4 | FNTP | P3 |  |  |  |  |  |  |  |  |  |  |  | Kevin |  |  |  |  |  |  |
| CP-P3-02-04-SD-0005 |  | Conduct Study on Community Characteristics | 30d | 2022-03-22 A | 2022-05-20 A | CP-P2-02-01-SD-0055 SS+5d | 100% |  | 2022-05-11 | 2022-06-22 |  |  |  |  | UDF_G3 | Yes |  | FL4 | supt | 03 | FL4 | FNTP | P3 |  |  |  |  |  |  |  |  |  |  |  | Kevin |  |  |  |  |  |  |
| CP-P3-02-04-SD-0010 |  | Provide Demographic Information | 41d | 2022-04-18 A | 2022-05-20 A | CP-P3-02-04-SD-0005 SS, CP-P3-02-04-SD-0000 SS | 100% |  | 2022-04-18 | 2022-06-14 |  |  |  |  | UDF_G1 | Yes | Yes | FL4 | supt | 03 | FL4 | FNTP | P3 |  |  |  |  |  |  |  |  |  |  |  |  |  |  |  |  |  |  |
|  | 02 | **CFPP - COLA Prep - Part 03 - Chapter 02 - Section 4 - Section Writing** |  | 2022-05-25 | 2023-01-13 |  |  |  |  |  |  |  |  |  |  |  |  |  |  |  |  |  |  |  |  |  |  |  |  |  |  |  |  |  |  |  |  |  |  |  |  |
| CP-P3-02-04-SW-0000 |  | Prepare Draft Rev A -Check Updated Supporting Documents -ER Section 2.4 | 15d | 2022-05-25 A | 2022-09-07 A | CP-P3-02-04-SD-0010 | 100% |  | 2022-06-29 | 2022-07-20 |  |  |  |  | UDF_G1 | Yes | Yes | FL4 | deliv | 03 | FL4 | FNTP | P3 |  | Sep update |  |  |  |  | FL4-REVA | 1 |  |  |  |  | x |  |  |  |  |  |
| CP-P3-02-04-SW-0005 |  | Review Draft Rev A - ER Section 2.4 (TO4 Team Review) | 10d | 2022-09-15 A | 2022-09-30 A | CP-P3-02-04-SW-0000 | 100% |  | 2022-09-06 | 2022-09-19 |  |  |  |  | UDF_G1 | Yes | Yes | FL4 | deliv | 03 | TO4 | FNTP | P3 |  | Sep update |  |  |  |  |  | 2 |  |  |  |  | x |  |  |  |  |  |
| CP-P3-02-04-SW-0010 |  | Resolve Rev A Comments - ER Section 2.4 | 5d | 2022-10-17 A | 2022-11-23 A | CP-P3-02-04-SW-0005 | 100% |  | 2022-10-03 | 2022-10-07 |  |  |  |  | UDF_G1 | Yes | Yes | FL4 | deliv | 03 | FL4 | FNTP | P3 |  | Sep update start slip from 20sep | oct update finish slip from 7oct22 |  |  |  |  | 3 |  |  |  |  |  | X | Oct | As of 29nov22 complete |  |  |
| CP-P3-02-04-SW-0015 |  | Issue Rev 0 - ER Section 2.4 | 5d | 2022-12-09 A | 2023-01-13 | CP-P3-02-04-SW-0010 |  | 10d | 2023-01-09 | 2023-01-13 | 206d | 0d |  | 2023-01-13 | UDF_G1 | Yes | Yes | FL4 | deliv | 03 | FL4 | FNTP | P3 |  | Sep update | oct update pred slip out | oct update Draft Rev A finish date moved out |  |  |  | 5 | N/A | FL4-REV0 | No SDA |  |  | X |  | As of 29nov22 start slip from 14nov22 | as of 30dec22 updated delayed due to Certrec SDA | delayed due to Certrec SDA |
|  | 05 | **CFPP - COLA Prep - Part 03 - Chapter 02 - Section 5 Environmental Justice** |  | 2022-08-22 | 2023-03-17 |  |  |  |  |  |  |  |  |  |  |  |  |  |  |  |  |  |  |  |  |  |  |  |  |  |  |  |  |  |  |  |  |  |  |  |  |
|  | 01 | **CFPP - COLA Prep - Part 03 - Chapter 02 - Section 5 - Support Documents** |  | 2022-08-22 | 2023-01-27 |  |  |  |  |  |  |  |  |  |  |  |  |  |  |  |  |  |  |  |  |  |  |  |  |  |  |  |  |  |  |  |  |  |  |  |  |
| CP-P3-02-05-SD-0000 |  | Provide Info on Minority / Low-income Populations & Communities Residing in 50-mile radius | 30d | 2022-08-22 A | 2023-01-13 | CP-P3-02-04-SD-0010 |  | 10d | 2022-08-22 | 2022-10-03 | 76d | 0d |  | 2023-01-13 | UDF_G3 | Yes | Yes | FL4 | supt | 03 | FL4 | FNTP | P3 |  |  | oct update finish slipped from 3oct 22 |  |  |  |  |  |  |  |  |  |  |  | Oct |  |  |  |
| CP-P3-02-05-SD-0005 |  | Conduct Environmental Justice Review | 10d | 2022-11-23 A | 2023-01-27 | CP-P3-02-05-SD-0000 SS |  | 20d | 2023-01-16 | 2023-01-27 | 76d | 0d |  | 2023-01-27 | UDF_G1 | Yes | Yes | FL4 | supt | 03 | FL4 | FNTP | P3 |  | Sep update start slip from 4oct | oct update predecessor finish slipped out 3 months |  |  |  |  |  |  |  |  |  |  | X |  | As of 29nov22 start moved in from 16jan23 | As of 30dec22 delayed resource issue |  |

| ID | WBS | Activity | Duration | Start | Finish | Predecessors | Complete | Remaining | Planned start | Planned finish | Total float | Free float | Expected finish | UDF Indicator 01 | zText_02 | zText_Level 3 Schedule | Rebaseline details | doc type | 10B OCT EOM Notes | PREPDRFTREVA | 12B DEC EOM Notes | CFPP - Contractor's Remarks | CFPP, LLC WBS Structure | Author | Period of Performance | Part | activity step | 10A OCT MIDMONTH Notes | SDA ACT | REV0 - SDA | SDA needed | 9A SEP EOM Notes | Monthly Variance | 11B NOV EOM Notes | Deliverable Owner | 11A NOV MIDMONTH Notes | Chapter | Section | JLG - Generic Field |
| --- | --- | --- | --- | --- | --- | --- | --- | --- | --- | --- | --- | --- | --- | --- | --- | --- | --- | --- | --- | --- | --- | --- | --- | --- | --- | --- | --- | --- | --- | --- | --- | --- | --- | --- | --- | --- | --- | --- | --- |
|  | 02 | **CFPP - COLA Prep - Part 03 - Chapter 02 - Section 5 - Section Writing** |  | 2023-01-30 | 2023-03-17 |  |  |  |  |  |  |  |  |  |  |  |  |  |  |  |  |  |  |  |  |  |  |  |  |  |  |  |  |  |  |  |  |  |  |
| CP-P3-02-05-SW-0000 |  | Prepare Draft Rev A -Check Updated Supporting Documents -ER Section 2.5 | 15d | 2023-01-30 | 2023-02-17 | CP-P3-02-05-SD-0005 |  |  |  |  | 76d | 0d |  | UDF_G1 | Yes | Yes | FL4 | deliv | oct update finish slipped out 3 months from 13dec22 | FL4-REVA | As of 30dec22 pred delayed | as of 30dec22 updated pred delayed | 03 | FL4 | FNTP | P3 | 1 |  |  |  |  |  |  |  |  |  |  |  |  |
| CP-P3-02-05-SW-0005 |  | Review Draft Rev A - ER Section 2.5 (TO4 Team Review) | 10d | 2023-02-20 | 2023-03-03 | CP-P3-02-05-SW-0000 |  |  |  |  | 76d | 0d |  | UDF_G1 | Yes | Yes | FL4 | deliv |  |  | As of 30dec22 delayed |  | 03 | TO4 | FNTP | P3 | 2 |  |  |  |  |  |  |  |  |  |  |  |  |
| CP-P3-02-05-SW-0010 |  | Resolve Rev A Comments - ER Section 2.5 | 5d | 2023-03-06 | 2023-03-10 | CP-P3-02-05-SW-0005 |  |  |  |  | 161d | 0d |  | UDF_G1 | Yes | Yes | FL4 | deliv |  |  |  |  | 03 | FL4 | FNTP | P3 | 3 |  |  |  |  |  |  |  |  |  |  |  |  |
| CP-P3-02-05-SW-0015 |  | Issue Rev 0 - ER Section 2.5 | 5d | 2023-03-13 | 2023-03-17 | CP-P3-02-05-SW-0010 |  |  |  |  | 161d | 91d |  | UDF_G1 | Yes | Yes | FL4 | deliv |  |  |  |  | 03 | FL4 | FNTP | P3 | 5 | oct update 2.5.sd-0005 finish date moved out | N/A | FL4-REV0 | No SDA |  |  |  |  |  |  |  |  |
|  | 06 | **CFPP - COLA Prep - Part 03 - Chapter 02 - Section 6 Historic & Cultural Resources** |  | 2022-01-03 | 2023-07-17 |  |  |  |  |  |  |  |  |  |  |  |  |  |  |  |  |  |  |  |  |  |  |  |  |  |  |  |  |  |  |  |  |  |  |
|  | 01 | **CFPP - COLA Prep - Part 03 - Chapter 02 - Section 6 - Support Documents** |  | 2022-01-03 | 2023-06-16 |  |  |  |  |  |  |  |  |  |  |  |  |  |  |  |  |  |  |  |  |  |  |  |  |  |  |  |  |  |  |  |  |  |  |
| CP-P3-02-06-SD-0000 |  | Provide Info on Historic/Cultural Resources near INL Site | 30d | 2022-01-03 A | 2022-02-10 A | IFM-CFP-TO4-0065 | 100% |  | 2022-01-31 | 2022-03-11 |  |  |  | UDF_G3 | Yes | Yes | BEA | supt |  |  |  |  | 03 | BEA | FNTP | P3 |  |  |  |  |  |  |  |  |  |  |  |  |  |
| CP-P3-02-06-SD-0005 |  | Conduct Historic/Cultural Resource Investigation (CFPP Site) | 55d | 2022-06-15 A | 2022-09-12 A | CP-P3-02-06-SD-0000, PKM-0000, IFM-CFP-TO4-0020 FF | 100% |  | 2022-06-15 | 2022-09-01 |  |  |  | UDF_G3 | Yes | Yes | BEA | supt |  |  |  |  | 03 | BEA | FNTP | P3 |  |  |  |  |  | Sep update |  |  |  |  |  |  |  |
| CP-P3-02-06-SD-0010 |  | Conduct Historic/Cultural Resource Investigation Temporary Power corridor | 54d | 2022-06-15 A | 2022-09-12 A | CP-P3-02-06-SD-0000, IFM-CFP-TO4-0020 FF | 100% |  | 2022-06-15 | 2022-08-31 |  |  |  | UDF_G3 | Yes | Yes | BEA | supt |  |  |  |  | 03 | BEA | FNTP | P3 |  |  |  |  |  | Sep update |  |  |  |  |  |  |  |
| CP-P3-02-06-SD-0015 |  | Conduct Historic/Cultural Resource Investigation Permanent Power corridor | 97d | 2022-09-12 A | 2023-02-17 | CP-P3-02-06-SD-0000, PKM-0000, IFM-CFP-TO4-0020 |  | 35d | 2022-10-04 | 2023-02-17 | 121d | 0d | 2023-02-17 | UDF_G3 | Yes | Yes | BEA | supt |  |  |  |  | 03 | BEA | FNTP | P3 |  |  |  |  |  | Sep update |  |  |  |  |  |  |  |
| CP-P3-02-06-SD-0020 |  | Conduct Historic/Cultural Resource Investigation (Water Pipeline corridor) | 97d | 2023-02-01 | 2023-06-16 | IFM-CFP-TO4-0090, PKM-0000, IFM-CFP-TO4-0020 |  |  |  |  | 37d | 0d |  | UDF_G3 | Yes | Yes | BEA | supt | oct update added predecessor IFM-CFP-TO4-0090 |  |  |  | 03 | BEA | FNTP | P3 |  |  |  |  |  |  | Oct | As of 29nov22 pred start slip out |  |  |  |  |  |
|  | 02 | **CFPP - COLA Prep - Part 03 - Chapter 02 - Section 6 - Section Writing** |  | 2022-03-01 | 2023-07-17 |  |  |  |  |  |  |  |  |  |  |  |  |  |  |  |  |  |  |  |  |  |  |  |  |  |  |  |  |  |  |  |  |  |  |
| CP-P3-02-06-SW-0000 |  | Prepare Draft Rev A -Check Updated Supporting Documents -ER Section 2.6 | 15d | 2022-03-01 A | 2023-06-16 | CP-P3-02-06-SD-0005 FF+9d, CP-P3-02-06-SD-0010 FF, CP-P3-02-06-SD-0015 FF, CP-P3-02-06-SD-0020 FF |  | 86d | 2022-07-06 | 2022-07-26 | 37d | 0d | 2023-05-31 | UDF_G3 | Yes |  | FL4 | deliv |  | FL4-REVA | as of 30dec22 updated |  | 03 | FL4 | FNTP | P3 | 1 |  |  |  |  |  |  |  | Kevin |  |  |  |  |
| CP-P3-02-06-SW-0005 |  | Review Draft Rev A - ER Section 2.6 (TO4 Team Review) | 10d | 2023-06-19 | 2023-06-30 | CP-P3-02-06-SW-0000 |  |  |  |  | 37d | 0d |  | UDF_G1 | Yes | Yes | FL4 | deliv |  |  |  |  | 03 | TO4 | FNTP | P3 | 2 |  |  |  |  |  |  |  |  |  |  |  |  |
| CP-P3-02-06-SW-0010 |  | Resolve Rev A Comments - ER Section 2.6 | 5d | 2023-07-03 | 2023-07-10 | CP-P3-02-06-SW-0005 |  |  |  |  | 77d | 0d |  | UDF_G1 | Yes | Yes | FL4 | deliv |  |  |  |  | 03 | FL4 | FNTP | P3 | 3 |  |  |  |  |  |  |  | Kevin |  |  |  |  |
| CP-P3-02-06-SW-0015 |  | Issue Rev 0 - ER Section 2.6 | 5d | 2023-07-11 | 2023-07-17 | CP-P3-02-06-SW-0010 |  |  |  |  | 77d | 7d |  | UDF_G1 | Yes | Yes | FL4 | deliv |  |  |  |  | 03 | FL4 | FNTP | P3 | 5 | oct update Draft Rev A finish date moved out | N/A | FL4-REV0 | No SDA |  |  |  | Kevin |  |  |  |  |
|  | 07 | **CFPP - COLA Prep - Part 03 - Chapter 02 - Section 7 Air Resources** |  | 2022-12-19 | 2023-03-10 |  |  |  |  |  |  |  |  |  |  |  |  |  |  |  |  |  |  |  |  |  |  |  |  |  |  |  |  |  |  |  |  |  |  |
|  | 01 | **CFPP - COLA Prep - Part 03 - Chapter 02 - Section 7 - Support Documents** |  | 2022-12-19 | 2023-01-27 |  |  |  |  |  |  |  |  |  |  |  |  |  |  |  |  |  |  |  |  |  |  |  |  |  |  |  |  |  |  |  |  |  |  |
| CP-P3-02-07-SD-0000 |  | Provide Estimates of State and Local GHG Emissions | 30d | 2022-12-19 A | 2023-01-27 | PKM-0120 FF |  | 20d | 2022-12-05 | 2023-01-16 | 51d | 0d | 2023-01-27 | UDF_G3 | Yes | Yes | RIZZO | supt |  |  | as of 30dec22 updated | as of 30dec22 updated | 03 | RIZZO | FNTP | P3 |  |  |  |  |  |  |  | As of 29nov22 start slip from 25nov22 |  | As of 22Nov | 2 | 7 |  |
| CP-P3-02-07-SD-0005 |  | Provide Existing Studies Relative to Climate Change / Air Quality at INL Site | 30d | 2022-12-19 A | 2023-01-27 | PKM-0120 FF |  | 20d | 2022-12-05 | 2023-01-16 | 51d | 0d | 2023-01-27 | UDF_G3 | Yes | Yes | RIZZO | supt |  |  | as of 30dec22 updated | as of 30dec22 updated | 03 | RIZZO | FNTP | P3 |  |  |  |  |  |  |  | As of 29nov22 start slip from 25nov22 |  | As of 22Nov | 2 | 7 |  |
| CP-P3-02-07-SD-0010 |  | Provide Info on Local Climate / Meteorology / Air Quality | 30d | 2022-12-19 A | 2023-01-27 | PKM-0120 FF |  | 20d | 2022-12-05 | 2023-01-16 | 51d | 0d | 2023-01-27 | UDF_G1 | Yes | Yes | RIZZO | supt |  |  | as of 30dec22 updated | as of 30dec22 updated | 03 | RIZZO | FNTP | P3 |  |  |  |  |  |  |  | As of 29nov22 start slip from 25nov22 |  | As of 22Nov | 2 | 7 | COLA |
|  | 02 | **CFPP - COLA Prep - Part 03 - Chapter 02 - Section 7 - Section Writing** |  | 2023-01-23 | 2023-03-10 |  |  |  |  |  |  |  |  |  |  |  |  |  |  |  |  |  |  |  |  |  |  |  |  |  |  |  |  |  |  |  |  |  |  |
| CP-P3-02-07-SW-0000 |  | Prepare Draft Rev A -Check Updated Supporting Documents -ER Section 2.7 | 15d | 2023-01-23 | 2023-02-10 | CP-P3-02-07-SD-0000 FF+10d, CP-P3-02-07-SD-0005 FF+10d, CP-P3-02-07-SD-0010 FF+10d |  |  |  |  | 51d | 0d |  | UDF_G1 | Yes | Yes | RIZZO | deliv |  | RZO-REVA |  |  | 03 | RIZZO | FNTP | P3 | 1 |  |  |  |  |  |  | As of 29nov22 start slip from 2jan23 |  |  | 2 | 7 | COLA |
| CP-P3-02-07-SW-0005 |  | Review Draft Rev A - ER Section 2.7 (TO4 Team Review) | 10d | 2023-02-13 | 2023-02-24 | CP-P3-02-07-SW-0000 |  |  |  |  | 51d | 0d |  | UDF_G1 | Yes | Yes | RIZZO | deliv |  |  |  |  | 03 | TO4 | FNTP | P3 | 2 |  |  |  |  |  |  | As of 29nov22 start slip from 23jan23 |  |  |  |  | COLA |
| CP-P3-02-07-SW-0010 |  | Resolve Rev A Comments - ER Section 2.7 | 5d | 2023-02-27 | 2023-03-03 | CP-P3-02-07-SW-0005 |  |  |  |  | 166d | 0d |  | UDF_G1 | Yes | Yes | RIZZO | deliv |  |  |  |  | 03 | RIZZO | FNTP | P3 | 3 |  |  |  |  |  |  | As of 29nov22 start slip from 6feb23 |  |  | 2 | 7 |  |
| CP-P3-02-07-SW-0015 |  | Issue Rev 0 - ER Section 2.7 | 5d | 2023-03-06 | 2023-03-10 | CP-P3-02-07-SW-0010 |  |  |  |  | 166d | 96d |  | UDF_G1 | Yes | Yes | RIZZO | deliv |  |  |  |  | 03 | RIZZO | FNTP | P3 | 5 |  | N/A | RZO-REV0 | No SDA |  |  | As of 29nov22 start slip from 13feb23 |  |  | 2 | 7 |  |

| ID | WBS | Activity | Duration | Start | Finish | Predecessors | Complete | Remaining | Planned start | Planned finish | Total float | Free float | Expected finish | UDF Indicator 01 | zText_02 | zText_RFI | zText_Level 3 Schedule | Deliverable Owner | Rebaseline details | doc type | CFPP, LLC WBS Structure | Author | Period of Performance | Part | Monthly Variance | 11B NOV EOM Notes | 9A SEP EOM Notes | 12B DEC EOM Notes | PREPDRFTREVA | activity step | 10A OCT MIDMONTH Notes | SDA ACT | REV0 - SDA | CFPP - Contractor's Remarks | SDA needed | Chapter | Section | Other | Comments | VERIFIED MONTHLY UPDATE | 11A NOV MIDMONTH Notes | 10C OCT Monthly Report Notes | Remarks |
| --- | --- | --- | --- | --- | --- | --- | --- | --- | --- | --- | --- | --- | --- | --- | --- | --- | --- | --- | --- | --- | --- | --- | --- | --- | --- | --- | --- | --- | --- | --- | --- | --- | --- | --- | --- | --- | --- | --- | --- | --- | --- | --- | --- |
|  | 08 | **CFPP - COLA Prep - Part 03 - Chapter 02 - Section 8 Nonradiological Health** |  | 2022-05-02 | 2023-01-20 |  |  |  |  |  |  |  |  |  |  |  |  |  |  |  |  |  |  |  |  |  |  |  |  |  |  |  |  |  |  |  |  |  |  |  |  |  |  |
|  | 01 | **CFPP - COLA Prep - Part 03 - Chapter 02 - Section 8 - Support Documents** |  | 2022-05-02 | 2022-11-28 |  |  |  |  |  |  |  |  |  |  |  |  |  |  |  |  |  |  |  |  |  |  |  |  |  |  |  |  |  |  |  |  |  |  |  |  |  |  |
| CP-P3-02-08-SD-0005 |  | Provide Existing Noise Studies at INL Site | 15d | 2022-05-02 A | 2022-05-25 A |  | 100% |  | 2022-05-31 | 2022-06-20 |  |  |  | UDF_G3 | Yes | RFI 202 | Yes | Kevin | FL4 | supt | 03 | FL4 | FNTP | P3 |  |  |  |  |  |  |  |  |  |  |  |  |  |  |  |  |  |  |  |
| CP-P3-02-08-SD-0025 |  | Conduct Existing Sources of Electromagnetic Fields Research | 15d | 2022-05-02 A | 2022-09-27 A | IFM-CFP-TO4-0020 FF | 100% |  | 2022-06-30 | 2022-07-21 |  |  |  | UDF_G3 | Yes |  | Yes | Kevin | FL4 | supt | 03 | FL4 | FNTP | P3 | Oct | As of 29nov22 complete |  |  |  |  |  |  |  |  |  |  |  |  |  |  |  |  |  |
| CP-P3-02-08-SD-0010 |  | Conduct Research to Identify 10 Years of Incidents of Etiologic Agents | 15d | 2022-07-11 A | 2022-09-01 A |  | 100% |  | 2022-09-06 | 2022-09-26 |  |  |  | UDF_G3 | Yes |  | Yes | Kevin | FL4 | supt | 03 | FL4 | FNTP | P3 |  |  | Sep update |  |  |  |  |  |  |  |  |  |  |  |  |  |  |  |  |
| CP-P3-02-08-SD-0030 |  | Conduct Existing Road Transportation Networks Research | 15d | 2022-10-14 A | 2022-11-28 A | CP-P2-02-02-SD-0005, CP-P2-02-02-SD-0030 | 100% |  | 2022-11-14 | 2022-12-05 |  |  |  | UDF_G3 | Yes |  | Yes | Kevin | FL4 | supt | 03 | FL4 | FNTP | P3 | Oct | As of 29nov22 finish slip from 31oct22 |  | as of 30dec22 updated |  |  |  |  |  |  |  |  |  |  |  |  |  |  |  |
|  | 02 | **CFPP - COLA Prep - Part 03 - Chapter 02 - Section 8 - Section Writing** |  | 2022-05-22 | 2023-01-20 |  |  |  |  |  |  |  |  |  |  |  |  |  |  |  |  |  |  |  |  |  |  |  |  |  |  |  |  |  |  |  |  |  |  |  |  |  |  |
| CP-P3-02-08-SW-0000 |  | Prepare Draft Rev A -Check Updated Supporting Documents -ER Section 2.8 | 15d | 2022-05-22 A | 2022-11-28 A | CP-P3-02-08-SD-0010 FF, CP-P3-02-08-SD-0005 FF, CP-P3-02-08-SD-0025 FF, CP-P3-02-08-SD-0030 FF, CP-P3-02-01-SD-0020 SS | 100% |  | 2022-09-02 | 2022-09-23 |  |  |  | UDF_G3 | Yes |  | Yes | Kevin | FL4 | deliv | 03 | FL4 | FNTP | P3 | Oct | As of 29nov22 finish 28nov22 |  | as of 30dec22 updated | FL4-REVA | 1 |  |  |  |  |  |  |  |  |  |  |  |  |  |
| CP-P3-02-08-SW-0005 |  | Review Draft Rev A - ER Section 2.8 (TO4 Team Review) | 10d | 2022-11-29 A | 2022-12-19 A | CP-P3-02-08-SW-0000 | 100% |  | 2022-11-29 | 2022-12-12 |  |  |  | UDF_G1 | Yes |  | Yes |  | FL4 | deliv | 03 | TO4 | FNTP | P3 |  | As of 29nov22 added 4 days certrec upload started |  | as of 30dec22 updated |  | 2 |  |  |  |  |  |  |  |  |  |  |  |  |  |
| CP-P3-02-08-SW-0010 |  | Resolve Rev A Comments - ER Section 2.8 | 5d | 2022-12-19 A | 2023-01-13 | CP-P3-02-08-SW-0005 |  | 10d | 2022-12-19 | 2022-12-23 | 201d | 0d | 2023-01-13 | UDF_G1 | Yes |  | Yes | Kevin | FL4 | deliv | 03 | FL4 | FNTP | P3 |  |  |  | as of 30dec22 updated |  | 3 |  |  |  |  |  |  |  |  |  |  |  |  |  |
| CP-P3-02-08-SW-0015 |  | Issue Rev 0 - ER Section 2.8 | 5d | 2023-01-16 | 2023-01-20 | CP-P3-02-08-SW-0010 |  |  |  |  | 201d | 131d |  | UDF_G1 | Yes |  | Yes | Kevin | FL4 | deliv | 03 | FL4 | FNTP | P3 |  |  |  | As of 30dec22 delayed |  | 5 | oct update Draft Rev A finish date moved out | N/A | FL4-REV0 | delayed due to Certrec SDA | No SDA |  |  |  |  |  |  |  |  |
|  | 09 | **CFPP - COLA Prep - Part 03 - Chapter 02 - Section 9 Radiological Environment & Monitoring** |  | 2022-01-31 | 2023-02-27 |  |  |  |  |  |  |  |  |  |  |  |  |  |  |  |  |  |  |  |  |  |  |  |  |  |  |  |  |  |  |  |  |  |  |  |  |  |  |
|  | 01 | **CFPP - COLA Prep - Part 03 - Chapter 02 - Section 9 - Support Documents** |  | 2022-01-31 | 2022-11-22 |  |  |  |  |  |  |  |  |  |  |  |  |  |  |  |  |  |  |  |  |  |  |  |  |  |  |  |  |  |  |  |  |  |  |  |  |  |  |
| CP-P3-02-09-SD-0000 |  | Provide Available Radiological Environment Reports | 30d | 2022-01-31 A | 2022-02-09 A | IFM-TO5-TO4-0000 | 100% |  | 2022-01-31 | 2022-03-11 |  |  |  | UDF_G3 | Yes | RFI 302 | Yes |  | S&L | supt | 03 | S&L | FNTP | P3 |  |  |  |  |  |  |  |  |  |  |  | 2 | 9.0 |  |  |  |  |  |  |
| CP-P3-02-09-SD-0015 |  | Provide Radiological Environment Summary Surrounding CFPP Site | 30d | 2022-02-11 A | 2022-02-28 A | CP-P3-02-09-SD-0005 SS, CP-P3-02-09-SD-0000 | 100% |  | 2022-03-15 | 2022-04-25 |  |  |  | UDF_G3 | Yes |  |  |  | S&L | supt | 03 | S&L | FNTP | P3 |  |  |  |  |  |  |  |  |  |  |  | 2 | 9.0 |  |  |  |  |  |  |
| CP-P3-02-09-SD-0005 |  | Obtain Information on Existing Radiological Monitoring Programs at INL Site - Prepare | 30d | 2022-03-01 A | 2022-05-23 A | IFM-TO5-TO4-0000 | 100% |  | 2022-01-31 | 2022-03-11 |  |  |  | UDF_G3 | Yes | RFI 102 | Yes |  | S&L | supt | 03 | S&L | FNTP | P3 |  |  |  |  |  |  |  |  |  |  |  | 2 | 9.0 |  |  |  |  |  |  |
| CP-P3-02-09-SD-0006 |  | Obtain Information on Existing Radiological Monitoring Programs at INL Site - TO4 External Review / Comments Received | 10d | 2022-05-24 A | 2022-07-07 A | CP-P3-02-09-SD-0005 | 100% |  | 2022-05-31 | 2022-06-13 |  |  |  |  |  |  |  |  |  | supt |  | S&L |  |  |  |  |  |  |  |  |  |  |  |  |  |  |  | cal | 1 |  |  |  |  |
| CP-P3-02-09-SD-0020 |  | GIS Figures of Existing Radiological Monitoring & Sampling Locations - Prepare | 22d | 2022-06-30 A | 2022-11-04 A | B-000-0065 FF+8d | 100% |  | 2022-06-14 | 2022-07-14 |  |  |  | UDF_G3 | Yes |  | Yes |  | S&L | supt | 03 | S&L | FNTP | P3 | Oct | As of 29nov22 complete | Sep update finish delayed 15oct22 per K.K. |  |  |  |  |  |  |  |  | 2 | 9.0 |  | 1 | X | As of 15nov 22 forecast 22nov22 | In S&L report as delayed (confirmed) |  |
| CP-P3-02-09-SD-0007 |  | Obtain Information on Existing Radiological Monitoring Programs at INL Site - Comment Resolution / Issue Final | 10d | 2022-07-11 A | 2022-08-31 A | CP-P3-02-09-SD-0006 | 100% |  | 2022-07-08 | 2022-07-21 |  |  |  |  |  |  |  |  |  | supt |  | S&L |  | P3 |  |  | Sep update |  |  |  |  |  |  |  |  | 2 | 9.0 | cal |  |  |  |  | predecessor not complete |
| CP-P3-02-09-SD-0021 |  | GIS Figures of Existing Radiological Monitoring & Sampling Locations - TO4 External Review / Comments Received | 5d | 2022-11-07 A | 2022-11-22 A | CP-P3-02-09-SD-0020 | 100% |  | 2022-11-10 | 2022-11-16 |  |  |  |  |  |  |  |  |  | supt |  | S&L |  |  |  | As of 29nov22 complete |  |  |  |  |  |  |  |  |  |  |  | cal |  |  | As of 15nov 22 pred slip out(May not require 10d) |  |  |
| CP-P3-02-09-SD-0022 |  | GIS Figures of Existing Radiological Monitoring & Sampling Locations - Comment Resolution / Issue Final | 10d | 2022-11-22 A | 2022-11-22 A | CP-P3-02-09-SD-0021 | 100% |  | 2022-11-25 | 2022-12-09 |  |  |  |  |  |  |  |  |  | supt |  | S&L |  |  |  | As of 29nov22 complete |  |  |  |  |  |  |  |  |  |  |  | cal |  |  |  |  |  |
|  | 02 | **CFPP - COLA Prep - Part 03 - Chapter 02 - Section 9 - Section Writing** |  | 2022-04-18 | 2023-02-27 |  |  |  |  |  |  |  |  |  |  |  |  |  |  |  |  |  |  |  |  |  |  |  |  |  |  |  |  |  |  |  |  |  |  |  |  |  |  |
| CP-P3-02-09-SW-0000 |  | Prepare Draft Rev A -Check Updated Supporting Documents -ER Section 2.9 | 15d | 2022-04-18 A | 2023-01-16 | CP-P3-02-09-SD-0015 SS, CP-P3-02-09-SD-0020 FF, CP-P3-02-09-SD-0007 FF, CP-P3-02-09-SD-0022 FF |  | 11d | 2022-12-20 | 2023-01-10 | 96d | 0d | 2023-01-16 | UDF_G3 | Yes |  | Yes | Kevin | FL4 | deliv | 03 | FL4 | FNTP | P3 |  |  |  |  | FL4-REVA | 1 |  |  |  |  |  |  |  |  |  |  |  |  |  |
| CP-P3-02-09-SW-0005 |  | Review Draft Rev A - ER Section 2.9 (TO4 Team Review) | 10d | 2023-01-17 | 2023-01-30 | CP-P3-02-09-SW-0000 |  |  |  |  | 96d | 0d |  | UDF_G1 | Yes |  | Yes |  | FL4 | deliv | 03 | TO4 | FNTP | P3 |  |  |  |  |  | 2 |  |  |  |  |  |  |  |  |  |  |  |  |  |
| CP-P3-02-09-SW-0010 |  | Resolve Rev A Comments - ER Section 2.9 | 10d | 2023-01-31 | 2023-02-13 | CP-P3-02-09-SW-0005 |  |  |  |  | 175d | 0d |  | UDF_G1 | Yes |  | Yes | Kevin | FL4 | deliv | 03 | FL4 | FNTP | P3 |  |  |  |  |  | 3 |  |  |  |  |  |  |  |  |  |  |  |  |  |
| CP-P3-02-09-SW-0015 |  | Issue Rev 0 - ER Section 2.9 | 10d | 2023-02-14 | 2023-02-27 | CP-P3-02-09-SW-0010 |  |  |  |  | 175d | 105d |  | UDF_G1 | Yes |  | Yes | Kevin | FL4 | deliv | 03 | FL4 | FNTP | P3 |  |  |  |  |  | 5 |  | N/A | FL4-REV0 |  | No SDA |  |  |  |  |  |  |  |  |

Notes:
- CP-P3-02-08-SD-0025: 10B OCT EOM Notes: oct update finish slip from 4oct22
- CP-P3-02-08-SD-0030: 10B OCT EOM Notes: oct update start moved in from 14nov22 finish moved in from 28nov22 check predecessor
- CP-P3-02-08-SW-0000: 10B OCT EOM Notes: oct update finish slip from 28nov22
- CP-P3-02-08-SW-0005: 10B OCT EOM Notes: oct update start slip out
- CP-P3-02-09-SD-0020: 10B OCT EOM Notes: oct update finish slip from 17oct22 (S&L awaiting Fluor input)
- CP-P3-02-09-SD-0021: 10B OCT EOM Notes: oct update pred slip out

| ID | WBS | Activity | Duration | Start | Finish | Predecessors | Complete | Planned start | Planned finish | UDF Indicator 01 | zText_02 | Comments | VERIFIED MONTHLY UPDATE | Rebaseline details | 9A SEP EOM Notes | doc type | PREPDRFTREVA | CFPP, LLC WBS Structure | Author | Period of Performance | Part | activity step | Monthly Variance | 11B NOV EOM Notes | zText_RFI | zText_Level 3 Schedule | Chapter | Section | Other | SDA cleanup notes | SDA ACT | REV0 - SDA | SDA needed |
| --- | --- | --- | --- | --- | --- | --- | --- | --- | --- | --- | --- | --- | --- | --- | --- | --- | --- | --- | --- | --- | --- | --- | --- | --- | --- | --- | --- | --- | --- | --- | --- | --- | --- |
|  | 03 | **CFPP - COLA Prep - Part 03 - Chapter 03 Site Layout & Project Description** |  | 2022-01-31 | 2023-10-16 |  |  |  |  |  |  |  |  |  |  |  |  |  |  |  |  |  |  |  |  |  |  |  |  |  |  |  |  |
|  | 00 | **CFPP - COLA Prep - Part 03 - Chapter 03 - Section 0 Introdcution** |  | 2022-04-01 | 2022-11-17 |  |  |  |  |  |  |  |  |  |  |  |  |  |  |  |  |  |  |  |  |  |  |  |  |  |  |  |  |
|  | 01 | **CFPP - COLA Prep - Part 03 - Chapter 03 - Section 0 Support Documents** |  |  |  |  |  |  |  |  |  |  |  |  |  |  |  |  |  |  |  |  |  |  |  |  |  |  |  |  |  |  |  |
|  | 02 | **CFPP - COLA Prep - Part 03 - Chapter 03 - Section 0 Section Writing** |  | 2022-04-01 | 2022-11-17 |  |  |  |  |  |  |  |  |  |  |  |  |  |  |  |  |  |  |  |  |  |  |  |  |  |  |  |  |
| CP-P3-03-00-SW-0000 |  | Prepare Draft Rev A -Check Updated Supporting Documents -ER Section 3.0 | 15d | 2022-04-01 A | 2022-07-20 A | CP-P3-03-01-SD-0015 | 100% | 2022-06-07 | 2022-06-27 | UDF_G3 | Yes | 1 | X | FL4 | Sep update New Activity | deliv | FL4-REVA | 03 | FL4 | FNTP | P3 | 1 |  |  |  |  |  |  |  |  |  |  |  |
| CP-P3-03-00-SW-0005 |  | Review Draft Rev A - ER Section 3.0 (TO4 Team Review) | 15d | 2022-09-15 A | 2022-09-30 A | CP-P3-03-00-SW-0000 | 100% | 2022-09-15 | 2022-10-05 | UDF_G3 | Yes | 1 | X | FL4 | Sep update New Activity | deliv |  | 03 | FL4 | FNTP | P3 | 2 |  |  |  |  |  |  |  |  |  |  |  |
| CP-P3-03-00-SW-0010 |  | Resolve Rev A Comments - ER Section 3.0 | 15d | 2022-10-03 A | 2022-10-07 A | CP-P3-03-00-SW-0005 | 100% | 2022-10-03 | 2022-10-21 | UDF_G3 | Yes | 1 | X | FL4 | Sep update New Activity | deliv | FL4-REVA | 03 | FL4 | FNTP | P3 | 3 |  |  |  |  |  |  |  |  |  |  |  |
| CP-P3-03-00-SW-0015 |  | Issue Rev 0 - ER Section 3.0 | 15d | 2022-10-18 A | 2022-11-17 A | CP-P3-03-00-SW-0010 | 100% | 2022-10-10 | 2022-10-28 | UDF_G3 | Yes | 1 | X | FL4 | Sep update New Activity | deliv | FL4-REVA | 03 | FL4 | FNTP | P3 | 5 | Oct | As of 29nov22 finish slip from 31oct22 complete |  |  |  |  |  |  |  |  |  |
|  | 01 | **CFPP - COLA Prep - Part 03 - Chapter 03 - Section 1 External Appearance & Plant Layout** |  | 2022-01-31 | 2022-11-17 |  |  |  |  |  |  |  |  |  |  |  |  |  |  |  |  |  |  |  |  |  |  |  |  |  |  |  |  |
|  | 01 | **CFPP - COLA Prep - Part 03 - Chapter 03 - Section 1 - Support Documents** |  | 2022-01-31 | 2022-08-16 |  |  |  |  |  |  |  |  |  |  |  |  |  |  |  |  |  |  |  |  |  |  |  |  |  |  |  |  |
| CP-P3-03-01-SD-0015 |  | Provide Ground-Level Photo of CFPP Site - Prepare | 30d | 2022-01-31 A | 2022-03-14 A | IFM-TO5-TO4-0000 | 100% | 2022-01-31 | 2022-03-11 | UDF_G3 | Yes |  |  | FL4 |  | supt |  | 03 | S&L | FNTP | P3 |  |  |  | RFI 102 | Yes | 3 | 1 |  |  |  |  |  |
| CP-P3-03-01-SD-0010 |  | Architectural Rendering of NuScale SMR at CFPP site - Prepare | 30d | 2022-03-14 A | 2022-06-01 A | CP-P2-02-01-SD-0025 | 100% | 2022-03-07 | 2022-04-15 | UDF_G3 | Yes |  |  | S&L |  | supt |  | 03 | S&L | FNTP | P3 |  |  |  |  |  | 3 | 1 |  |  |  |  |  |
| CP-P3-03-01-SD-0020 |  | Provide Figures showing CFPP Plant Features on Site Photos - Prepare | 30d | 2022-03-14 A | 2022-06-01 A | CP-P3-03-01-SD-0015 SS, CP-P3-02-00-SD-0010 SS | 100% | 2022-03-14 | 2022-04-22 | UDF_G3 | Yes |  |  | S&L |  | supt |  | 03 | S&L | FNTP | P3 |  |  |  |  |  | 3 | 1 |  |  |  |  |  |
| CP-P3-03-01-SD-0000 |  | Prepare Topographic Maps of CFPP Site/Vicinity | 30d | 2022-03-18 A | 2022-06-30 A | CP-P2-02-01-SD-0025 | 100% | 2022-04-25 | 2022-06-06 | UDF_G3 | Yes |  |  | S&L |  | supt |  | 03 | S&L | FNTP | P3 |  |  |  |  |  | 3 | 1 |  |  |  |  |  |
| CP-P3-03-01-SD-0016 |  | Provide Ground-Level Photo of CFPP Site - TO4 External Review / Comments Received | 10d | 2022-05-02 A | 2022-05-13 A | CP-P3-03-01-SD-0015 | 100% |  |  |  |  |  |  |  |  | supt |  |  | S&L |  |  |  |  |  |  |  |  |  | cal | S&L reporting complete |  |  |  |
| CP-P3-03-01-SD-0017 |  | Provide Ground-Level Photo of CFPP Site - Comment Resolution / Issue Final | 10d | 2022-05-16 A | 2022-05-27 A | CP-P3-03-01-SD-0016 | 100% |  |  |  |  |  |  |  |  | supt |  |  | S&L |  | P3 |  |  |  |  |  | 3 | 1 | cal |  |  |  |  |
| CP-P3-03-01-SD-0011 |  | Architectural Rendering of NuScale SMR at CFPP site - TO4 External Review / Comments Received | 5d | 2022-06-02 A | 2022-06-15 A | CP-P3-03-01-SD-0010 | 100% | 2022-07-05 | 2022-07-11 |  |  |  |  |  |  | supt |  |  | S&L |  |  |  |  |  |  |  |  |  | cal |  |  |  |  |
| CP-P3-03-01-SD-0021 |  | Provide Figures showing CFPP Plant Features on Site Photos - TO4 External Review / Comments Received | 10d | 2022-06-02 A | 2022-06-15 A | CP-P3-03-01-SD-0020 | 100% |  |  |  |  |  |  |  |  | supt |  |  | S&L |  |  |  |  |  |  |  |  |  | cal |  |  |  |  |
| CP-P3-03-01-SD-0012 |  | Architectural Rendering of NuScale SMR at CFPP site - Comment Resolution / Issue Final | 5d | 2022-06-16 A | 2022-06-30 A | CP-P3-03-01-SD-0011 | 100% | 2022-07-19 | 2022-07-25 |  |  |  |  |  |  | supt |  |  | S&L |  |  |  |  |  |  |  |  |  | cal |  |  |  |  |
| CP-P3-03-01-SD-0022 |  | Provide Figures showing CFPP Plant Features on Site Photos - Comment Resolution / Issue Final | 10d | 2022-06-16 A | 2022-06-30 A | CP-P3-03-01-SD-0021 | 100% | 2022-06-16 | 2022-06-29 |  |  |  |  |  |  | supt |  |  | S&L |  | P3 |  |  |  |  |  | 3 | 1 | cal |  |  |  |  |
| CP-P3-03-01-SD-0005 |  | Prepare Site Utilization Plan/Drawing (as required) | 27d | 2022-06-29 A | 2022-08-01 A | CP-P2-02-01-SD-0025, CP-P3-03-01-SD-0022 | 100% | 2022-06-30 | 2022-08-08 | UDF_G3 | Yes |  |  | S&L |  | supt |  | 03 | S&L | FNTP | P3 |  |  |  |  |  | 3 | 1 |  | waiting for RFI 11 |  |  |  |
| CP-P3-03-01-SD-0006 |  | Site Utilization Plan/Drawing - TO4 External Review / Comments Received | 5d | 2022-08-02 A | 2022-08-02 A | CP-P3-03-01-SD-0005 | 100% | 2022-08-01 | 2022-08-05 |  |  |  |  |  |  | supt |  |  | S&L |  |  |  |  |  |  |  |  |  | cal |  |  |  |  |
| CP-P3-03-01-SD-0007 |  | Site Utilization Plan/Drawing - Comment Resolution / Issue Final | 5d | 2022-08-16 A | 2022-08-16 A | CP-P3-03-01-SD-0006 | 100% | 2022-08-16 | 2022-08-22 |  |  |  |  |  |  | supt |  |  | S&L |  |  |  |  |  |  |  |  |  | cal |  |  |  |  |
|  | 02 | **CFPP - COLA Prep - Part 03 - Chapter 03 - Section 1 - Section Writing** |  | 2022-04-01 | 2022-11-17 |  |  |  |  |  |  |  |  |  |  |  |  |  |  |  |  |  |  |  |  |  |  |  |  |  |  |  |  |
| CP-P3-03-01-SW-0000 |  | Prepare Draft Rev A -Check Updated Supporting Documents -ER Section 3.1 | 15d | 2022-04-01 A | 2022-07-20 A | CP-P3-03-01-SD-0015, CP-P3-03-01-SD-0017 FF, CP-P3-03-01-SD-0000 FF, CP-P3-03-01-SD-0010 FF, CP-P3-03-01-SD-0020 FF, CP-P3-03-01-SD-0012 FF | 100% | 2022-06-07 | 2022-06-27 | UDF_G3 | Yes | 1 |  | FL4 |  | deliv | FL4-REVA | 03 | FL4 | FNTP | P3 | 1 |  |  |  |  |  |  |  |  |  |  |  |
| CP-P3-03-01-SW-0005 |  | Review Draft Rev A - ER Section 3.1 (TO4 Team Review) | 10d | 2022-08-01 A | 2022-08-15 A | CP-P3-03-01-SW-0000 FS+5d | 100% | 2022-08-01 | 2022-08-12 | UDF_G1 | Yes |  |  | FL4 |  | deliv |  | 03 | TO4 | FNTP | P3 | 2 |  |  |  | Yes |  |  |  |  |  |  |  |
| CP-P3-03-01-SW-0010 |  | Resolve Rev A Comments - ER Section 3.1 | 5d | 2022-10-18 A | 2022-10-21 A | CP-P3-03-01-SW-0005 | 100% | 2022-10-03 | 2022-10-07 | UDF_G1 | Yes |  | X | FL4 | Sep update remove actual start/finish | deliv |  | 03 | FL4 | FNTP | P3 | 3 |  |  |  | Yes |  |  |  |  |  |  |  |
| CP-P3-03-01-SW-0015 |  | Issue Rev 0 - ER Section 3.1 | 5d | 2022-10-21 A | 2022-11-17 A | CP-P3-03-01-SW-0010 | 100% | 2022-10-10 | 2022-10-14 | UDF_G1 | Yes |  | X | FL4 | Sep update remove actual start/finish | deliv |  | 03 | FL4 | FNTP | P3 | 5 | Oct | As of 29nov22 finish slip from 31oct22 complete |  | Yes |  |  |  |  | N/A | FL4-REV0 | No SDA |

Notes:
- CP-P3-03-00-SW-0010: 10B OCT EOM Notes: oct update
- CP-P3-03-00-SW-0015: 10B OCT EOM Notes: oct update Nuscale has to issue REV 0 finish slip from 14oct22
- CP-P3-03-01-SD-0005: Remarks: received SL-RFI-010 3/21/22; SL-RFI-011 Need Construction plan for temp facilities
- CP-P3-03-01-SW-0010: 10B OCT EOM Notes: oct update complete
- CP-P3-03-01-SW-0015: 10B OCT EOM Notes: oct update Nuscale has to issue REV 0

| ID | WBS | Activity | Duration | Start | Finish | Predecessors | Complete | Remaining | Planned start | Planned finish | Total float | Free float | Constraint | Expected finish | UDF Indicator 01 | zText_02 | Comments | Remarks | zText_RFI | zText_Level 3 Schedule | Rebaseline details | doc type | CFPP, LLC WBS Structure | Author | Period of Performance | Part | Other | 9A SEP EOM Notes | nuscale comp | 10B OCT EOM Notes | ETAP DETAILS | 10C OCT Monthly Report Notes | Chapter | Section | PREPDRFTREVA | activity step | SDA ACT | REV0 - SDA | SDA needed | DOE MILESTONE | Monthly Variance | 10A OCT MIDMONTH Notes | 11B NOV EOM Notes |
| --- | --- | --- | --- | --- | --- | --- | --- | --- | --- | --- | --- | --- | --- | --- | --- | --- | --- | --- | --- | --- | --- | --- | --- | --- | --- | --- | --- | --- | --- | --- | --- | --- | --- | --- | --- | --- | --- | --- | --- | --- | --- | --- | --- |
|  | 02 | **CFPP - COLA Prep - Part 03 - Chapter 03 - Section 2 Proposed Plant Structures, Systems, & Components** |  | 2022-06-16 | 2023-10-16 |  |  |  |  |  |  |  |  |  |  |  |  |  |  |  |  |  |  |  |  |  |  |  |  |  |  |  |  |  |  |  |  |  |  |  |  |  |  |
|  | 01 | **CFPP - COLA Prep - Part 03 - Chapter 03 - Section 2 - Support Documents** |  | 2022-06-16 | 2023-09-18 |  |  |  |  |  |  |  |  |  |  |  |  |  |  |  |  |  |  |  |  |  |  |  |  |  |  |  |  |  |  |  |  |  |  |  |  |  |  |
| CP-P3-03-02-SD-0000 |  | Simplified Flow Diagram of the NuScale Reactor Power Conversion System - Prepare | 30d | 2022-06-16 A | 2022-07-29 A |  | 100% |  | 2023-05-08 | 2023-06-19 |  |  |  |  | UDF_G3 | Yes | 1 | Removed OOS Pred | RFI 202 | Yes | FL4 | supt | 03 | FL4 | FNTP | P3 |  |  |  |  |  |  |  |  |  |  |  |  |  |  |  |  |  |
| CP-P3-03-02-SD-0001 |  | Simplified Flow Diagram of the NuScale Reactor Power Conversion System - TO4 External Review / Comments Received | 5d | 2022-08-29 A | 2022-08-31 A | CP-P3-03-02-SD-0000 | 100% |  | 2022-08-29 | 2022-09-02 |  |  |  |  |  |  |  |  |  |  |  | supt |  | S&L |  |  | cal | Sep update |  |  |  |  |  |  |  |  |  |  |  |  |  |  |  |
| CP-P3-03-02-SD-0002 |  | Simplified Flow Diagram of the NuScale Reactor Power Conversion System - Comment Resolution / Issue Final | 5d | 2022-08-31 A | 2022-09-01 A | CP-P3-03-02-SD-0001 | 100% |  | 2022-09-13 | 2022-09-19 |  |  |  |  |  |  |  |  |  |  |  | supt |  | S&L |  |  | cal | Sep update |  |  |  |  |  |  |  |  |  |  |  |  |  |  |  |
| CP-P3-03-02-SD-0005 |  | Provide NuScale Nuclear Energy Generating System Info - Prepare | 30d | 2023-05-25 | 2023-07-07 | IFM-TO5-TO4-0035, IFM-TO5-TO4-0050, IFM-TO5-TO4-0060, IFM-TO5-TO4-0070, IFM-TO5-TO4-0115, IFM-TO5-TO4-0130, IFM-TO5-TO4-0145, IFM-TO5-TO4-0160, IFM-TO5-TO4-0170, IFM-TO5-TO4-0190, IFM-TO5-TO4-0285, IFM-TO5-TO4-0290, IFM-TO5-TO4-0295, IFM-TO5-TO4-0195, IFM-TO5-TO4-0185, IFM-TO5-TO4-0165, IFM-TO5-TO4-0175, IFM-TO5-TO4-0150, IFM-TO5-TO4-0135, IFM-TO5-TO4-0120, IFM-TO5-TO4-0065, IFM-TO5-TO4-0055, IFM-TO5-TO4-0040, CP-P2-08-02-SW-0005, CP-P2-04-01-SW-0005, CP-P2-08-03-SW-0000, IFM-TO5-TO4-0045 |  |  |  |  | 13d | 0d |  |  | UDF_G3 | Yes |  | combine with Progress Item 149 | RFI 102 | Yes | S&L | supt | 03 | S&L | FNTP | P3 |  |  | etap | oct update pred slip out | X | In S&L report as delayed (confirmed) tied to section 8.2 | 3 | 2.0 |  |  |  |  |  |  |  |  |  |
| CP-P3-03-02-SD-0006 |  | Provide NuScale Nuclear Energy Generating System Info - TO4 External Review / Comments Received | 10d | 2023-07-10 | 2023-07-21 | CP-P3-03-02-SD-0005 |  |  |  |  | 43d | 0d |  |  |  |  |  |  |  |  |  | supt |  | S&L |  |  | cal |  | etap |  | X |  |  |  |  |  |  |  |  |  |  |  |  |
| CP-P3-03-02-SD-0010 |  | Provide Proposed CFPP Plant Description - Prepare | 30d | 2023-07-10 | 2023-08-18 | CP-P3-03-02-SD-0000, CP-P3-03-02-SD-0005, CP-P2-08-02-SW-0005, CP-P2-04-01-SW-0005 |  |  |  |  | 13d | 0d |  |  | UDF_G3 | Yes |  |  |  | Yes | S&L | supt | 03 | S&L | FNTP | P3 |  |  | etap |  | X |  | 3 | 2.0 |  |  |  |  |  |  |  |  |  |
| CP-P3-03-02-SD-0007 |  | Provide NuScale Nuclear Energy Generating System Info - Comment Resolution / Issue Final | 10d | 2023-07-24 | 2023-08-04 | CP-P3-03-02-SD-0006 |  |  |  |  | 43d | 30d |  |  |  |  |  |  |  |  |  | supt |  | S&L |  | P3 | cal |  | etap |  | X |  | 3 | 2.0 |  |  |  |  |  |  |  |  |  |
| CP-P3-03-02-SD-0011 |  | Provide Proposed CFPP Plant Description - TO4 External Review / Comments Received | 10d | 2023-08-21 | 2023-09-01 | CP-P3-03-02-SD-0010 |  |  |  |  | 13d | 0d |  |  |  |  |  |  |  |  |  | supt |  | S&L |  |  | cal |  | etap |  | X |  |  |  |  |  |  |  |  |  |  |  |  |
| CP-P3-03-02-SD-0012 |  | Provide Proposed CFPP Plant Description - Comment Resolution / Issue Final | 10d | 2023-09-05 | 2023-09-18 | CP-P3-03-02-SD-0011 |  |  |  |  | 13d | 0d |  |  |  |  |  |  |  |  |  | supt |  | S&L |  | P3 | cal |  | etap |  | X |  | 3 | 2.0 |  |  |  |  |  |  |  |  |  |
|  | 02 | **CFPP - COLA Prep - Part 03 - Chapter 03 - Section 2 - Section Writing** |  | 2023-08-28 | 2023-10-16 |  |  |  |  |  |  |  |  |  |  |  |  |  |  |  |  |  |  |  |  |  |  |  |  |  |  |  |  |  |  |  |  |  |  |  |  |  |  |
| CP-P3-03-02-SW-0000 |  | Prepare Draft Rev A -Check Updated Supporting Documents -ER Section 3.2 | 15d | 2023-08-28 | 2023-09-18 | CP-P2-10-04-SW-0005, CP-P2-09-02-SW-0005, CP-P3-03-02-SD-0000, CP-P3-03-02-SD-0005, CP-P3-03-02-SD-0010, CP-P2-01-01-SW-0005, CP-P3-03-02-SD-0007 FF, CP-P3-03-02-SD-0012 FF, CP-P3-03-02-SD-0002 FF |  |  |  |  | 13d | 0d |  |  | UDF_G1 | Yes |  |  |  | Yes | FL4 | deliv | 03 | FL4 | FNTP | P3 |  |  | etap |  | X |  |  |  | FL4-REVA | 1 |  |  |  |  |  |  |  |
| CP-P3-03-02-SW-0005 |  | Review Draft Rev A - ER Section 3.2 (TO4 Team Review) | 10d | 2023-09-19 | 2023-10-02 | CP-P3-03-02-SW-0000 |  |  |  |  | 13d | 0d |  |  | UDF_G1 | Yes |  |  |  | Yes | FL4 | deliv | 03 | TO4 | FNTP | P3 |  |  | etap |  | X |  |  |  |  | 2 |  |  |  |  |  |  |  |
| CP-P3-03-02-SW-0010 |  | Resolve Rev A Comments - ER Section 3.2 | 5d | 2023-10-03 | 2023-10-09 | CP-P3-03-02-SW-0005 |  |  |  |  | 13d | 0d |  |  | UDF_G1 | Yes |  |  |  | Yes | FL4 | deliv | 03 | FL4 | FNTP | P3 |  |  | etap |  | X |  |  |  |  | 3 |  |  |  |  |  |  |  |
| CP-P3-03-02-SW-0015 |  | Issue Rev 0 - ER Section 3.2 | 5d | 2023-10-10 | 2023-10-16 | CP-P3-03-02-SW-0010 |  |  |  |  | 13d | 0d |  |  | UDF_G1 | Yes |  |  |  | Yes | FL4 | deliv | 03 | FL4 | FNTP | P3 |  |  | etap |  | X |  |  |  |  | 5 | N/A | FL4-REV0 | No SDA |  |  |  |  |
|  | 03 | **CFPP - COLA Prep - Part 03 - Chapter 03 - Section 3 Building Activities** |  | 2022-10-03 | 2023-05-08 |  |  |  |  |  |  |  |  |  |  |  |  |  |  |  |  |  |  |  |  |  |  |  |  |  |  |  |  |  |  |  |  |  |  |  |  |  |  |
|  | 02 | **CFPP - COLA Prep - Part 03 - Chapter 03 - Section 3 - Prepare Section** |  | 2023-03-21 | 2023-05-08 |  |  |  |  |  |  |  |  |  |  |  |  |  |  |  |  |  |  |  |  |  |  |  |  |  |  |  |  |  |  |  |  |  |  |  |  |  |  |
| CP-P3-03-03-SW-0000 |  | Prepare Draft Rev A -Check Updated Supporting Documents -ER Section 3.3 | 15d | 2023-03-21 | 2023-04-10 | CP-P3-03-03-SD-0000, CP-P3-03-03-SD-0005, CP-P3-03-03-SD-0010, IFM-TO3-TO4-0010 |  |  |  |  | 10d | 0d |  |  | UDF_G1 | Yes |  |  |  | Yes | FL4 | deliv | 03 | FL4 | FNTP | P3 |  |  |  |  |  |  |  |  | FL4-REVA | 1 |  |  |  | 13 |  |  |  |
| CP-P3-03-03-SW-0005 |  | Review Draft Rev A - ER Section 3.3 (TO4 Team Review) | 10d | 2023-04-11 | 2023-04-24 | CP-P3-03-03-SW-0000 |  |  |  |  | 10d | 0d |  |  | UDF_G1 | Yes |  |  |  | Yes | FL4 | deliv | 03 | TO4 | FNTP | P3 |  |  |  |  |  |  |  |  |  | 2 |  |  |  |  |  |  |  |
| CP-P3-03-03-SW-0010 |  | Resolve Rev A Comments - ER Section 3.3 | 5d | 2023-04-25 | 2023-05-01 | CP-P3-03-03-SW-0005 |  |  |  |  | 125d | 0d |  |  | UDF_G1 | Yes |  |  |  | Yes | FL4 | deliv | 03 | FL4 | FNTP | P3 |  |  |  |  |  |  |  |  |  | 3 |  |  |  |  |  |  |  |
| CP-P3-03-03-SW-0015 |  | Issue Rev 0 - ER Section 3.3 | 5d | 2023-05-02 | 2023-05-08 | CP-P3-03-03-SW-0010 |  |  |  |  | 125d | 112d |  |  | UDF_G1 | Yes |  |  |  | Yes | FL4 | deliv | 03 | FL4 | FNTP | P3 |  |  |  |  |  |  |  |  |  | 5 | N/A | FL4-REV0 | No SDA |  |  |  |  |
|  | 01 | **CFPP - COLA Prep - Part 03 - Chapter 03 - Section 3 - Support Documents** |  | 2022-10-03 | 2023-03-20 |  |  |  |  |  |  |  |  |  |  |  |  |  |  |  |  |  |  |  |  |  |  |  |  |  |  |  |  |  |  |  |  |  |  |  |  |  |  |
| CP-P3-03-03-SD-0005 |  | Prepare Preconstruction / LWA / Construction Activities | 30d | 2022-10-03 A | 2022-11-11 A | IFM-TO3-TO4-0015, IFM-CFP-TO4-0075 | 100% |  | 2022-10-31 | 2022-12-12 |  |  |  |  | UDF_G1 | Yes |  |  |  | Yes | FL4 | supt | 03 | FL4 | FNTP | P3 |  |  |  | oct update ns, awaiting input need new start date |  |  |  |  |  |  |  |  |  |  | Oct | oct update needed | As of 29nov22 complete |
| CP-P3-03-03-SD-0010 |  | Prepare Figures Showing Onsite & Offsite Areas Disturbed During Preconstruction / LWA / Construction Activities | 30d | 2022-10-31 A | 2023-03-20 | CP-P2-02-01-SD-0025, IFM-TO3-TO4-0015, CP-P3-03-03-SD-0000 FF+5d |  | 34d | 2022-10-31 | 2022-12-12 | 10d | 0d |  | 2023-02-10 | UDF_G3 | Yes |  |  |  | Yes | FL4 | supt | 03 | FL4 | FNTP | P3 |  |  |  | oct update ns, awaiting input need new start date |  |  |  |  |  |  |  |  |  |  | Oct | oct update needed | As of 29nov22 finish slip from 12dec22 |
| CP-P3-03-03-SD-0000 |  | Provide Plant Excavations / Water Sources & Water Use Info | 30d | 2023-01-31 | 2023-03-13 | IFM-TO5-TO4-0005, CP-P2-02-05-SD-0090, CP-P2-02-04-SD-0110 |  |  |  |  | 10d | 0d | start on or after 2023-01-31 |  | UDF_G1 | Yes |  |  | RFI 202 | Yes | FL4 | supt | 03 | FL4 | FNTP | P3 |  |  |  |  |  |  |  |  |  |  |  |  |  |  |  |  |  |

Notes:
- CP-P3-03-02-SD-0005: 12B DEC EOM Notes: as of 30dec22 updated pred slip
- CP-P3-03-02-SD-0010: 12B DEC EOM Notes: as of 30dec22 updated pred slip
- CP-P3-03-02-SD-0011: 12B DEC EOM Notes: as of 30dec22 updated pred slip
- CP-P3-03-02-SD-0012: 12B DEC EOM Notes: as of 30dec22 updated pred slip
- CP-P3-03-03-SD-0010: 12B DEC EOM Notes: As of 30dec22 delayed
- CP-P3-03-03-SD-0000: 12B DEC EOM Notes: As of 30dec22 delayed The predecessor for this activity needs to be the CFPP Water Supply / CFPP - Contractor's Remarks: The predecessor for this activity needs to be the CFPP Water Supply

| ID | WBS | Activity | Duration | Start | Finish | Predecessors | Remaining | Planned start | Planned finish | Total float | Free float | Expected finish | UDF Indicator 01 | zText_02 | zText_RFI | zText_Level 3 Schedule | Deliverable Owner | VERIFIED MONTHLY UPDATE | Rebaseline details | Monthly Variance | doc type | cfpp two week acts | 10A OCT MIDMONTH Notes | CFPP, LLC WBS Structure | Author | Period of Performance | Part | Other | PREPDRFTREVA | activity step | SDA ACT | REV0 - SDA | SDA needed | 11B NOV EOM Notes | DOE MILESTONE |
| --- | --- | --- | --- | --- | --- | --- | --- | --- | --- | --- | --- | --- | --- | --- | --- | --- | --- | --- | --- | --- | --- | --- | --- | --- | --- | --- | --- | --- | --- | --- | --- | --- | --- | --- | --- |
|  | 04 | **CFPP - COLA Prep - Part 03 - Chapter 03 - Section 4 Operational Activities** |  | 2022-04-26 | 2023-04-21 |  |  |  |  |  |  |  |  |  |  |  |  |  |  |  |  |  |  |  |  |  |  |  |  |  |  |  |  |  |  |
|  | 01 | **CFPP - COLA Prep - Part 03 - Chapter 03 - Section 4 - Support Documents** |  | 2023-01-04 | 2023-03-24 |  |  |  |  |  |  |  |  |  |  |  |  |  |  |  |  |  |  |  |  |  |  |  |  |  |  |  |  |  |  |
| CP-P3-03-04-SD-0000 |  | Provide Plant Water Use / Cooling System / Effluent Control Systems Info | 30d | 2023-01-04 | 2023-01-16 | PKM-0125, IFM-TO5-TO4-0070, IFM-TO5-TO4-0245, IFM-TO5-TO4-0225, IFM-TO5-TO4-0275, IFM-TO5-TO4-0210 |  | 2023-01-04 | 2023-02-14 | 41d | 0d |  | UDF_G3 | Yes | RFI 202 | Yes | Kevin | X | FL4 | Oct | supt | x | oct update needed | 03 | S&L | FNTP | P3 |  |  |  |  |  |  |  |  |
| CP-P3-03-04-SD-0005 |  | Provide Radioactive Waste Management Systems Info | 30d | 2023-01-04 | 2023-02-14 | PKM-0125, IFM-TO5-TO4-0210 |  |  |  | 50d | 0d |  | UDF_G3 | Yes | RFI 102 | Yes | Kevin | X | FL4 | Oct | supt |  | oct update needed | 03 | S&L | FNTP | P3 |  |  |  |  |  |  |  |  |
| CP-P3-03-04-SD-0001 |  | Provide Plant Water Use / Cooling System / Effluent Control Systems Info - TO4 External Review / Comments Received | 5d | 2023-01-17 | 2023-01-27 | CP-P3-03-04-SD-0000 |  | 2023-01-17 | 2023-01-23 | 71d | 0d |  |  |  |  |  |  | X |  |  | supt |  |  |  | TO4 |  |  | cal |  |  |  |  |  |  |  |
| CP-P3-03-04-SD-0010 |  | Prepare Operational Activities Description | 30d | 2023-01-17 | 2023-02-27 | PKM-0125, CP-P3-03-04-SD-0000 |  |  |  | 41d | 0d |  | UDF_G1 | Yes |  | Yes | Kevin | X | FL4 |  | supt |  | oct update needed | 03 | S&L | FNTP | P3 |  |  |  |  |  |  |  |  |
| CP-P3-03-04-SD-0002 |  | Provide Plant Water Use / Cooling System / Effluent Control Systems Info - Comment Resolution / Issue Final | 10d | 2023-01-30 | 2023-02-10 | CP-P3-03-04-SD-0001 |  |  |  | 71d | 30d |  |  |  |  |  |  | X |  |  | supt |  |  |  | S&L |  |  | cal |  |  |  |  |  |  |  |
| CP-P3-03-04-SD-0006 |  | Provide Radioactive Waste Management Systems Info - TO4 External Review / Comments Received | 5d | 2023-02-15 | 2023-02-27 | CP-P3-03-04-SD-0005 |  | 2023-02-15 | 2023-02-21 | 50d | 0d |  |  |  |  |  |  |  |  |  | supt |  |  |  | S&L |  |  | cal |  |  |  |  |  |  |  |
| CP-P3-03-04-SD-0007 |  | Provide Radioactive Waste Management Systems Info - Comment Resolution / Issue Final | 10d | 2023-02-28 | 2023-03-13 | CP-P3-03-04-SD-0006 |  |  |  | 50d | 9d |  |  |  |  |  |  |  |  |  | supt |  |  |  | S&L |  |  | cal |  |  |  |  |  |  |  |
| CP-P3-03-04-SD-0011 |  | Prepare Operational Activities Description - TO4 External Review / Comments Received | 5d | 2023-02-28 | 2023-03-10 | CP-P3-03-04-SD-0010 |  | 2023-02-28 | 2023-03-06 | 41d | 0d |  |  |  |  |  |  |  |  |  | supt |  |  |  | S&L |  |  | cal |  |  |  |  |  |  |  |
| CP-P3-03-04-SD-0012 |  | Prepare Operational Activities Description - Comment Resolution / Issue Final | 10d | 2023-03-13 | 2023-03-24 | CP-P3-03-04-SD-0011 |  |  |  | 41d | 0d |  |  |  |  |  |  |  |  |  | supt |  |  |  | S&L |  |  | cal |  |  |  |  |  |  |  |
|  | 02 | **CFPP - COLA Prep - Part 03 - Chapter 03 - Section 4 - Prepare Section** |  | 2022-04-26 | 2023-04-21 |  |  |  |  |  |  |  |  |  |  |  |  |  |  |  |  |  |  |  |  |  |  |  |  |  |  |  |  |  |  |
| CP-P3-03-04-SW-0000 |  | Prepare Draft Rev A -Check Updated Supporting Documents -ER Section 3.4 | 15d | 2022-04-26 A | 2023-03-24 | CP-P3-03-04-SD-0000 FF, CP-P3-03-04-SD-0005 FF, CP-P3-03-04-SD-0010 FF, CP-P3-03-04-SD-0012 FF, CP-P3-03-04-SD-0007 FF, CP-P3-03-04-SD-0002 FF | 58d | 2022-11-29 | 2022-12-19 | 41d | 0d | 2022-12-22 | UDF_G1 | Yes |  | Yes | Kevin |  | FL4 | Oct | deliv |  |  | 03 | FL4 | FNTP | P3 |  | FL4-REVA | 1 |  |  |  |  |  |
| CP-P3-03-04-SW-0005 |  | Review Draft Rev A - ER Section 3.4 (TO4 Team Review) | 10d | 2023-03-27 | 2023-04-07 | CP-P3-03-04-SW-0000 |  |  |  | 41d | 0d |  | UDF_G1 | Yes |  | Yes |  |  | FL4 |  | deliv |  |  | 03 | TO4 | FNTP | P3 |  |  | 2 |  |  |  |  |  |
| CP-P3-03-04-SW-0010 |  | Resolve Rev A Comments - ER Section 3.4 | 5d | 2023-04-10 | 2023-04-14 | CP-P3-03-04-SW-0005 |  |  |  | 136d | 0d |  | UDF_G1 | Yes |  | Yes | Kevin |  | FL4 |  | deliv |  |  | 03 | FL4 | FNTP | P3 |  |  | 3 |  |  |  |  |  |
| CP-P3-03-04-SW-0015 |  | Issue Rev 0 - ER Section 3.4 | 5d | 2023-04-17 | 2023-04-21 | CP-P3-03-04-SW-0010 |  |  |  | 136d | 123d |  | UDF_G1 | Yes |  | Yes | Kevin |  | FL4 |  | deliv |  |  | 03 | FL4 | FNTP | P3 |  |  | 5 | N/A | FL4-REV0 | No SDA |  |  |
|  | 05 | **CFPP - COLA Prep - Part 03 - Chapter 03 - Section 5 Radioactive Waste Management System** |  |  |  |  |  |  |  |  |  |  |  |  |  |  |  |  |  |  |  |  |  |  |  |  |  |  |  |  |  |  |  |  |  |
|  | 01 | **CFPP - COLA Prep - Part 03 - Chapter 03 - Section 5 - Support Documents** |  |  |  |  |  |  |  |  |  |  |  |  |  |  |  |  |  |  |  |  |  |  |  |  |  |  |  |  |  |  |  |  |  |
|  | 02 | **CFPP - COLA Prep - Part 03 - Chapter 03 - Section 5 - Section Writing** |  |  |  |  |  |  |  |  |  |  |  |  |  |  |  |  |  |  |  |  |  |  |  |  |  |  |  |  |  |  |  |  |  |
|  | 06 | **CFPP - COLA Prep - Part 03 - Chapter 03 - Section 6 Non-Radioactive Waste System** |  |  |  |  |  |  |  |  |  |  |  |  |  |  |  |  |  |  |  |  |  |  |  |  |  |  |  |  |  |  |  |  |  |
|  | 01 | **CFPP - COLA Prep - Part 03 - Chapter 03 - Section 6 - Support Documents** |  |  |  |  |  |  |  |  |  |  |  |  |  |  |  |  |  |  |  |  |  |  |  |  |  |  |  |  |  |  |  |  |  |
|  | 02 | **CFPP - COLA Prep - Part 03 - Chapter 03 - Section 6 - Section Writing** |  |  |  |  |  |  |  |  |  |  |  |  |  |  |  |  |  |  |  |  |  |  |  |  |  |  |  |  |  |  |  |  |  |
|  | 07 | **CFPP - COLA Prep - Part 03 - Chapter 03 - Section 7 Power Transmission System** |  |  |  |  |  |  |  |  |  |  |  |  |  |  |  |  |  |  |  |  |  |  |  |  |  |  |  |  |  |  |  |  |  |
|  | 01 | **CFPP - COLA Prep - Part 03 - Chapter 03 - Section 7 - Support Documents** |  |  |  |  |  |  |  |  |  |  |  |  |  |  |  |  |  |  |  |  |  |  |  |  |  |  |  |  |  |  |  |  |  |
|  | 02 | **CFPP - COLA Prep - Part 03 - Chapter 03 - Section 7 - Section Writing** |  |  |  |  |  |  |  |  |  |  |  |  |  |  |  |  |  |  |  |  |  |  |  |  |  |  |  |  |  |  |  |  |  |
|  | 08 | **CFPP - COLA Prep - Part 03 - Chapter 03 - Section 8 Transportation of Radioactive Materials** |  |  |  |  |  |  |  |  |  |  |  |  |  |  |  |  |  |  |  |  |  |  |  |  |  |  |  |  |  |  |  |  |  |
|  | 01 | **CFPP - COLA Prep - Part 03 - Chapter 03 - Section 8 - Support Documents** |  |  |  |  |  |  |  |  |  |  |  |  |  |  |  |  |  |  |  |  |  |  |  |  |  |  |  |  |  |  |  |  |  |
|  | 02 | **CFPP - COLA Prep - Part 03 - Chapter 03 - Section 8 - Section Writing** |  |  |  |  |  |  |  |  |  |  |  |  |  |  |  |  |  |  |  |  |  |  |  |  |  |  |  |  |  |  |  |  |  |
|  | 09 | **CFPP - COLA Prep - Part 03 - Chapter 03 - Section 9 Construction Activities** |  |  |  |  |  |  |  |  |  |  |  |  |  |  |  |  |  |  |  |  |  |  |  |  |  |  |  |  |  |  |  |  |  |
|  | 01 | **CFPP - COLA Prep - Part 03 - Chapter 03 - Section 9 - Support Documents** |  |  |  |  |  |  |  |  |  |  |  |  |  |  |  |  |  |  |  |  |  |  |  |  |  |  |  |  |  |  |  |  |  |
|  | 02 | **CFPP - COLA Prep - Part 03 - Chapter 03 - Section 9 - Section Writing** |  |  |  |  |  |  |  |  |  |  |  |  |  |  |  |  |  |  |  |  |  |  |  |  |  |  |  |  |  |  |  |  |  |
|  | 10 | **CFPP - COLA Prep - Part 03 - Chapter 03 - Section 10 Workforce Characterization** |  |  |  |  |  |  |  |  |  |  |  |  |  |  |  |  |  |  |  |  |  |  |  |  |  |  |  |  |  |  |  |  |  |
|  | 01 | **CFPP - COLA Prep - Part 03 - Chapter 03 - Section 10 - Support Documents** |  |  |  |  |  |  |  |  |  |  |  |  |  |  |  |  |  |  |  |  |  |  |  |  |  |  |  |  |  |  |  |  |  |
|  | 02 | **CFPP - COLA Prep - Part 03 - Chapter 03 - Section 10 - Section Writing** |  |  |  |  |  |  |  |  |  |  |  |  |  |  |  |  |  |  |  |  |  |  |  |  |  |  |  |  |  |  |  |  |  |
|  | 04 | **CFPP - COLA Prep - Part 03 - Chapter 04 Environmental Impacts from Construction** |  | 2022-04-15 | 2023-10-25 |  |  |  |  |  |  |  |  |  |  |  |  |  |  |  |  |  |  |  |  |  |  |  |  |  |  |  |  |  |  |
|  | 01 | **CFPP - COLA Prep - Part 03 - Chapter 04 - Section 1 Land Use** |  | 2022-10-14 | 2023-05-26 |  |  |  |  |  |  |  |  |  |  |  |  |  |  |  |  |  |  |  |  |  |  |  |  |  |  |  |  |  |  |
|  | 01 | **CFPP - COLA Prep - Part 03 - Chapter 04 - Section 1 - Support Documents** |  | 2022-11-14 | 2023-05-22 |  |  |  |  |  |  |  |  |  |  |  |  |  |  |  |  |  |  |  |  |  |  |  |  |  |  |  |  |  |  |
| CP-P3-04-01-SD-0000 |  | Provide Land Use Assessment Info | 30d | 2022-11-14 A | 2023-01-24 | CP-P3-03-03-SD-0005 | 17d | 2022-12-13 | 2023-01-24 | 104d | 0d | 2023-01-24 | UDF_G1 | Yes | RFI 102 | Yes |  |  | FL4 |  | supt |  |  | 03 | FL4 | FNTP | P3 |  |  |  |  |  |  | As of 29nov22 pred finish early |  |
| CP-P3-04-01-SD-0005 |  | Conduct Land-Use Impact Construction Assessment | 30d | 2023-04-11 | 2023-05-22 | CP-P3-04-01-SD-0000, CP-P3-03-03-SW-0005 SS, CP-P2-01-01-SW-0005, CP-P3-02-01-SD-0020 |  |  |  | 50d | 0d |  | UDF_G1 | Yes |  | Yes |  |  | FL4 |  | supt |  |  | 03 | FL4 | FNTP | P3 |  |  |  |  |  |  |  | 16 |

Notes:
- CP-P3-03-04-SD-0000: 9A SEP EOM Notes: Sep update 3oct22 start / 13oct22 finish remove current actual start / 10B OCT EOM Notes: oct update ns, awaiting input need new start date added pred PKM-0125 per KK, look at SPD validation step / 10C OCT Monthly Report Notes: In S&L report as delayed (Fluor - added pred PKM-0125 driving out further)
- CP-P3-03-04-SD-0005: 9A SEP EOM Notes: Sep update added constraint / 10B OCT EOM Notes: oct update ns, awaiting input need new start date added pred PKM-0125, look at SPD validation step
- CP-P3-03-04-SD-0001: 9A SEP EOM Notes: Sep update / 10B OCT EOM Notes: oct update pred slip out / 10C OCT Monthly Report Notes: In S&L report as delayed (Fluor - added pred PKM-0125 driving out further)
- CP-P3-03-04-SD-0010: 9A SEP EOM Notes: Sep update / 10B OCT EOM Notes: oct update ns, awaiting input need new start date added pred PKM-0125, look at SPD validation step
- CP-P3-03-04-SD-0002: 9A SEP EOM Notes: Sep update / 10B OCT EOM Notes: oct update pred slip / 10C OCT Monthly Report Notes: In S&L report as delayed (Fluor - added pred PKM-0125 driving out further)
- CP-P3-03-04-SW-0000: 10B OCT EOM Notes: oct update pred slip out
- CP-P3-04-01-SD-0005: 10B OCT EOM Notes: oct update This moved but predecessor didn't P3-0303-sw-0005 change from FS

| ID | WBS | Activity | Duration | Start | Finish | Predecessors | Remaining | Planned start | Planned finish | Total float | Free float | Expected finish | UDF Indicator 01 | zText_02 | zText_Level 3 Schedule | Rebaseline details | Monthly Variance | doc type | PREPDRFTREVA | 12A DEC MIDMONTH Notes | CFPP, LLC WBS Structure | Author | Period of Performance | Part | activity step | SDA ACT | REV0 - SDA | SDA needed | Chapter | Section | DOE MILESTONE |
| --- | --- | --- | --- | --- | --- | --- | --- | --- | --- | --- | --- | --- | --- | --- | --- | --- | --- | --- | --- | --- | --- | --- | --- | --- | --- | --- | --- | --- | --- | --- | --- |
|  | 02 | **CFPP - COLA Prep - Part 03 - Chapter 04 - Section 1 - Section Writing** |  | 2022-10-14 | 2023-05-26 |  |  |  |  |  |  |  |  |  |  |  |  |  |  |  |  |  |  |  |  |  |  |  |  |  |  |
| CP-P3-04-01-SW-0000 |  | Prepare Draft Rev A -Check Updated Supporting Documents -ER Section 4.1 | 15d | 2022-10-14 A | 2023-04-28 |  | 85d | 2023-05-03 | 2023-05-23 | 51d | 0d | 2023-04-28 | UDF_G1 | Yes | Yes | FL4 | Oct | deliv | FL4-REVA | As of 12dec22 remove pred p3-04-01-sd-0005 causing OOS issue | 03 | FL4 | FNTP | P3 | 1 |  |  |  |  |  |  |
| CP-P3-04-01-SW-0005 |  | Review Draft Rev A - ER Section 4.1 (TO4 Team Review) | 10d | 2023-05-01 | 2023-05-12 | CP-P3-04-01-SW-0000 |  |  |  | 81d | 0d |  | UDF_G1 | Yes | Yes | FL4 |  | deliv |  |  | 03 | TO4 | FNTP | P3 | 2 |  |  |  |  |  |  |
| CP-P3-04-01-SW-0010 |  | Resolve Rev A Comments - ER Section 4.1 | 5d | 2023-05-15 | 2023-05-19 | CP-P3-04-01-SW-0005 |  |  |  | 111d | 0d |  | UDF_G1 | Yes | Yes | FL4 |  | deliv |  |  | 03 | FL4 | FNTP | P3 | 3 |  |  |  |  |  |  |
| CP-P3-04-01-SW-0015 |  | Issue Rev 0 - ER Section 4.1 | 5d | 2023-05-22 | 2023-05-26 | CP-P3-04-01-SW-0010 |  |  |  | 111d | 105d |  | UDF_G1 | Yes | Yes | FL4 |  | deliv |  |  | 03 | FL4 | FNTP | P3 | 5 | N/A | FL4-REV0 | No SDA |  |  |  |
|  | 02 | **CFPP - COLA Prep - Part 03 - Chapter 04 - Section 2 Water Resources** |  | 2023-04-10 | 2023-08-22 |  |  |  |  |  |  |  |  |  |  |  |  |  |  |  |  |  |  |  |  |  |  |  |  |  |  |
|  | 01 | **CFPP - COLA Prep - Part 03 - Chapter 04 - Section 2 - Support Documents** |  | 2023-04-10 | 2023-07-03 |  |  |  |  |  |  |  |  |  |  |  |  |  |  |  |  |  |  |  |  |  |  |  |  |  |  |
| CP-P3-04-02-SD-0000 |  | Provide Construction Hydrological Monitoring Program Info | 30d | 2023-04-10 | 2023-05-19 | CP-P3-02-02-SW-0005 |  |  |  | 6d | 0d |  | UDF_G3 | Yes | Yes | RIZZO |  | supt |  |  | 03 | RIZZO | FNTP | P3 |  |  |  |  | 4 | 2.0 |  |
| CP-P3-04-02-SD-0005 |  | Conduct Water-Related Impact Construction Assessment | 30d | 2023-05-22 | 2023-07-03 | CP-P3-04-02-SD-0000, CP-P3-03-03-SW-0005, CP-P3-02-02-SW-0005, IFM-TO5-TO4-0200 |  |  |  | 6d | 0d |  | UDF_G1 | Yes | Yes | RIZZO |  | supt |  |  | 03 | RIZZO | FNTP | P3 |  |  |  |  | 4 | 2.0 |  |
|  | 02 | **CFPP - COLA Prep - Part 03 - Chapter 04 - Section 2 - Section Writing** |  | 2023-07-05 | 2023-08-22 |  |  |  |  |  |  |  |  |  |  |  |  |  |  |  |  |  |  |  |  |  |  |  |  |  |  |
| CP-P3-04-02-SW-0000 |  | Prepare Draft Rev A -Check Updated Supporting Documents -ER Section 4.2 | 15d | 2023-07-05 | 2023-07-25 | CP-P3-04-02-SD-0005 |  |  |  | 6d | 0d |  | UDF_G1 | Yes | Yes | RIZZO |  | deliv | RZO-REVA |  | 03 | RIZZO | FNTP | P3 | 1 |  |  |  | 4 | 2.0 |  |
| CP-P3-04-02-SW-0005 |  | Review Draft Rev A - ER Section 4.2 (TO4 Team Review) | 10d | 2023-07-26 | 2023-08-08 | CP-P3-04-02-SW-0000 |  |  |  | 6d | 0d |  | UDF_G1 | Yes | Yes | RIZZO |  | deliv |  |  | 03 | TO4 | FNTP | P3 | 2 |  |  |  |  |  |  |
| CP-P3-04-02-SW-0010 |  | Resolve Rev A Comments - ER Section 4.2 | 5d | 2023-08-09 | 2023-08-15 | CP-P3-04-02-SW-0005 |  |  |  | 51d | 0d |  | UDF_G1 | Yes | Yes | RIZZO |  | deliv |  |  | 03 | RIZZO | FNTP | P3 | 3 |  |  |  | 4 | 2.0 |  |
| CP-P3-04-02-SW-0015 |  | Issue Rev 0 - ER Section 4.2 | 5d | 2023-08-16 | 2023-08-22 | CP-P3-04-02-SW-0010 |  |  |  | 51d | 45d |  | UDF_G1 | Yes | Yes | RIZZO |  | deliv |  |  | 03 | RIZZO | FNTP | P3 | 5 | N/A | RZO-REV0 | No SDA | 4 | 2.0 |  |
|  | 03 | **CFPP - COLA Prep - Part 03 - Chapter 04 - Section 3 Ecological Resources** |  | 2022-04-26 | 2023-08-09 |  |  |  |  |  |  |  |  |  |  |  |  |  |  |  |  |  |  |  |  |  |  |  |  |  |  |
|  | 01 | **CFPP - COLA Prep - Part 03 - Chapter 04 - Section 3 - Support Documents** |  | 2023-05-31 | 2023-07-12 |  |  |  |  |  |  |  |  |  |  |  |  |  |  |  |  |  |  |  |  |  |  |  |  |  |  |
| CP-P3-04-03-SD-0000 |  | Conduct Ecological Impact Construction Assessment | 30d | 2023-05-31 | 2023-07-12 | CP-P3-03-03-SW-0005, CP-P3-02-03-SW-0005 FF, CP-P3-02-03-SD-0015, CP-P3-02-03-SD-0020, CP-P3-02-03-SD-0025 |  |  |  | 15d | 0d |  | UDF_G1 | Yes | Yes | FL4 |  | supt |  |  | 03 | FL4 | FNTP | P3 |  |  |  |  |  |  | x |
|  | 02 | **CFPP - COLA Prep - Part 03 - Chapter 04 - Section 3 - Section Writing** |  | 2022-04-26 | 2023-08-09 |  |  |  |  |  |  |  |  |  |  |  |  |  |  |  |  |  |  |  |  |  |  |  |  |  |  |
| CP-P3-04-03-SW-0000 |  | Prepare Draft Rev A -Check Updated Supporting Documents -ER Section 4.3 | 15d | 2022-04-26 A | 2023-07-12 | CP-P3-04-03-SD-0000 FF, CP-P3-03-01-SD-0005 FF, CP-P3-02-03-SD-0015 FF, CP-P3-02-03-SD-0020 FF, CP-P3-02-03-SD-0025 FF | 136d | 2023-06-20 | 2023-07-11 | 15d | 0d | 2023-07-12 | UDF_G1 | Yes | Yes | FL4 |  | deliv | FL4-REVA |  | 03 | FL4 | FNTP | P3 | 1 |  |  |  |  |  |  |
| CP-P3-04-03-SW-0005 |  | Review Draft Rev A - ER Section 4.3 (TO4 Team Review) | 10d | 2023-07-13 | 2023-07-26 | CP-P3-04-03-SW-0000 |  |  |  | 15d | 0d |  | UDF_G1 | Yes | Yes | FL4 |  | deliv |  |  | 03 | TO4 | FNTP | P3 | 2 |  |  |  |  |  |  |
| CP-P3-04-03-SW-0010 |  | Resolve Rev A Comments - ER Section 4.3 | 5d | 2023-07-27 | 2023-08-02 | CP-P3-04-03-SW-0005 |  |  |  | 60d | 0d |  | UDF_G1 | Yes | Yes | FL4 |  | deliv |  |  | 03 | FL4 | FNTP | P3 | 3 |  |  |  |  |  |  |
| CP-P3-04-03-SW-0015 |  | Issue Rev 0 - ER Section 4.3 | 5d | 2023-08-03 | 2023-08-09 | CP-P3-04-03-SW-0010 |  |  |  | 60d | 54d |  | UDF_G1 | Yes | Yes | FL4 |  | deliv |  |  | 03 | FL4 | FNTP | P3 | 5 | N/A | FL4-REV0 | No SDA |  |  |  |
|  | 04 | **CFPP - COLA Prep - Part 03 - Chapter 04 - Section 4 Socioeconomics** |  | 2023-03-14 | 2023-07-26 |  |  |  |  |  |  |  |  |  |  |  |  |  |  |  |  |  |  |  |  |  |  |  |  |  |  |
|  | 01 | **CFPP - COLA Prep - Part 03 - Chapter 04 - Section 4 - Support Documents** |  | 2023-03-14 | 2023-06-06 |  |  |  |  |  |  |  |  |  |  |  |  |  |  |  |  |  |  |  |  |  |  |  |  |  |  |
| CP-P3-04-04-SD-0000 |  | Provide Construction Workforce Characterization | 30d | 2023-03-14 | 2023-04-24 | CP-P3-03-03-SD-0000, IFM-TO3-TO4-0020 |  |  |  | 40d | 0d |  | UDF_G1 | Yes | Yes | FL4 |  | supt |  |  | 03 | FL4 | FNTP | P3 |  |  |  |  |  |  |  |
| CP-P3-04-04-SD-0005 |  | Conduct Socioeconomic Impact Construction Assessment | 30d | 2023-04-25 | 2023-06-06 | CP-P3-04-04-SD-0000, CP-P3-03-03-SW-0005, CP-P3-02-04-SW-0005 |  |  |  | 40d | 0d |  | UDF_G1 | Yes | Yes | FL4 |  | supt |  |  | 03 | FL4 | FNTP | P3 |  |  |  |  |  |  |  |

Notes:
- CP-P3-04-01-SW-0000: 10B OCT EOM Notes: oct update start moved in from 3may23 finish move in from 23may23 change pred to FF?
- CP-P3-04-02-SW-0015: P3 Activity Log Info: ? / 10/ 1 0/19 - Added "for Owners / Acceptance" to activity name. / Changed Rev. B to Rev. 0
- CP-P3-04-03-SW-0000: 10B OCT EOM Notes: oct update

| ID | WBS | Activity | Duration | Start | Finish | Predecessors | Remaining | Planned start | Planned finish | Total float | Free float | Expected finish | UDF Indicator 01 | zText_02 | zText_Level 3 Schedule | Rebaseline details | doc type | PREPDRFTREVA | CFPP, LLC WBS Structure | Author | Period of Performance | Part | activity step | SDA ACT | REV0 - SDA | SDA needed | Monthly Variance | 10A OCT MIDMONTH Notes | JLG - Generic Field | SDA cleanup notes | Chapter | Section | DOE MILESTONE |
| --- | --- | --- | --- | --- | --- | --- | --- | --- | --- | --- | --- | --- | --- | --- | --- | --- | --- | --- | --- | --- | --- | --- | --- | --- | --- | --- | --- | --- | --- | --- | --- | --- | --- |
|  | 02 | **CFPP - COLA Prep - Part 03 - Chapter 04 - Section 4 - Section Writing** |  | 2023-06-07 | 2023-07-26 |  |  |  |  |  |  |  |  |  |  |  |  |  |  |  |  |  |  |  |  |  |  |  |  |  |  |  |  |
| CP-P3-04-04-SW-0000 |  | Prepare Draft Rev A -Check Updated Supporting Documents -ER Section 4.4 | 15d | 2023-06-07 | 2023-06-27 | CP-P3-04-04-SD-0005 |  |  |  | 40d | 0d |  | UDF_G1 | Yes | Yes | FL4 | deliv | FL4-REVA | 03 | FL4 | FNTP | P3 | 1 |  |  |  |  |  |  |  |  |  |  |
| CP-P3-04-04-SW-0005 |  | Review Draft Rev A - ER Section 4.4 (TO4 Team Review) | 10d | 2023-06-28 | 2023-07-12 | CP-P3-04-04-SW-0000 |  |  |  | 40d | 0d |  | UDF_G1 | Yes | Yes | FL4 | deliv |  | 03 | TO4 | FNTP | P3 | 2 |  |  |  |  |  |  |  |  |  |  |
| CP-P3-04-04-SW-0010 |  | Resolve Rev A Comments - ER Section 4.4 | 5d | 2023-07-13 | 2023-07-19 | CP-P3-04-04-SW-0005 |  |  |  | 70d | 0d |  | UDF_G1 | Yes | Yes | FL4 | deliv |  | 03 | FL4 | FNTP | P3 | 3 |  |  |  |  |  |  |  |  |  |  |
| CP-P3-04-04-SW-0015 |  | Issue Rev 0 - ER Section 4.4 | 5d | 2023-07-20 | 2023-07-26 | CP-P3-04-04-SW-0010 |  |  |  | 70d | 64d |  | UDF_G1 | Yes | Yes | FL4 | deliv |  | 03 | FL4 | FNTP | P3 | 5 | N/A | FL4-REV0 | No SDA |  |  |  |  |  |  |  |
|  | 05 | **CFPP - COLA Prep - Part 03 - Chapter 04 - Section 5 Environmental Justice** |  | 2023-04-25 | 2023-07-26 |  |  |  |  |  |  |  |  |  |  |  |  |  |  |  |  |  |  |  |  |  |  |  |  |  |  |  |  |
|  | 01 | **CFPP - COLA Prep - Part 03 - Chapter 04 - Section 5 - Support Documents** |  | 2023-04-25 | 2023-06-06 |  |  |  |  |  |  |  |  |  |  |  |  |  |  |  |  |  |  |  |  |  |  |  |  |  |  |  |  |
| CP-P3-04-05-SD-0000 |  | Conduct Environmental Justice Impact Construction Assessment | 30d | 2023-04-25 | 2023-06-06 | CP-P3-03-03-SW-0005, CP-P3-02-05-SW-0005 |  |  |  | 40d | 0d |  | UDF_G1 | Yes | Yes | FL4 | supt |  | 03 | FL4 | FNTP | P3 |  |  |  |  |  |  |  |  |  |  |  |
|  | 02 | **CFPP - COLA Prep - Part 03 - Chapter 04 - Section 5 - Section Writing** |  | 2023-06-07 | 2023-07-26 |  |  |  |  |  |  |  |  |  |  |  |  |  |  |  |  |  |  |  |  |  |  |  |  |  |  |  |  |
| CP-P3-04-05-SW-0000 |  | Prepare Draft Rev A -Check Updated Supporting Documents -ER Section 4.5 | 15d | 2023-06-07 | 2023-06-27 | CP-P3-04-05-SD-0000 |  |  |  | 40d | 0d |  | UDF_G1 | Yes | Yes | FL4 | deliv | FL4-REVA | 03 | FL4 | FNTP | P3 | 1 |  |  |  |  |  |  |  |  |  |  |
| CP-P3-04-05-SW-0005 |  | Review Draft Rev A - ER Section 4.05 (TO4 Team Review) | 10d | 2023-06-28 | 2023-07-12 | CP-P3-04-05-SW-0000 |  |  |  | 40d | 0d |  | UDF_G1 | Yes | Yes | FL4 | deliv |  | 03 | TO4 | FNTP | P3 | 2 |  |  |  |  |  |  |  |  |  |  |
| CP-P3-04-05-SW-0010 |  | Resolve Rev A Comments - ER Section 04.05 | 5d | 2023-07-13 | 2023-07-19 | CP-P3-04-05-SW-0005 |  |  |  | 70d | 0d |  | UDF_G1 | Yes | Yes | FL4 | deliv |  | 03 | FL4 | FNTP | P3 | 3 |  |  |  |  |  |  |  |  |  |  |
| CP-P3-04-05-SW-0015 |  | Issue Rev 0 - ER Section 04.05 | 5d | 2023-07-20 | 2023-07-26 | CP-P3-04-05-SW-0010 |  |  |  | 70d | 64d |  | UDF_G1 | Yes | Yes | FL4 | deliv |  | 03 | FL4 | FNTP | P3 | 5 | N/A | FL4-REV0 | No SDA |  |  |  |  |  |  |  |
|  | 06 | **CFPP - COLA Prep - Part 03 - Chapter 04 - Section 6 Historic & Cultural Resources** |  | 2022-04-15 | 2023-07-31 |  |  |  |  |  |  |  |  |  |  |  |  |  |  |  |  |  |  |  |  |  |  |  |  |  |  |  |  |
|  | 01 | **CFPP - COLA Prep - Part 03 - Chapter 04 - Section 6 - Support Document** |  | 2022-04-15 | 2023-06-30 |  |  |  |  |  |  |  |  |  |  |  |  |  |  |  |  |  |  |  |  |  |  |  |  |  |  |  |  |
| CP-P3-04-06-SD-0000 |  | Conduct Historic / Cultural Resources Impact Construction Assessment | 30d | 2022-04-15 A | 2023-06-30 | CP-P3-03-03-SW-0005 FF, CP-P3-02-06-SW-0005 FF, CP-P3-02-06-SD-0005 FF, CP-P3-02-06-SD-0010 FF, CP-P3-02-06-SD-0015 FF, CP-P3-02-06-SD-0020 FF | 96d | 2023-03-06 | 2023-04-14 | 37d | 0d | 2023-05-31 | UDF_G1 | Yes | Yes | FL4 | supt |  | 03 | FL4 | FNTP | P3 |  |  |  |  | Oct |  |  |  |  |  |  |
|  | 02 | **CFPP - COLA Prep - Part 03 - Chapter 04 - Section 6 - Prepare Section** |  | 2022-04-15 | 2023-07-31 |  |  |  |  |  |  |  |  |  |  |  |  |  |  |  |  |  |  |  |  |  |  |  |  |  |  |  |  |
| CP-P3-04-06-SW-0000 |  | Prepare Draft Rev A -Check Updated Supporting Documents -ER Section 4.6 | 15d | 2022-04-15 A | 2023-06-30 | CP-P3-04-06-SD-0000 FF | 122d | 2023-03-23 | 2023-04-12 | 37d | 0d | 2023-05-31 | UDF_G1 | Yes | Yes | FL4 | deliv | FL4-REVA | 03 | FL4 | FNTP | P3 | 1 |  |  |  |  |  |  |  |  |  |  |
| CP-P3-04-06-SW-0005 |  | Review Draft Rev A - ER Section 4.6 (TO4 Team Review) | 10d | 2023-07-03 | 2023-07-17 | CP-P3-04-06-SW-0000 |  |  |  | 37d | 0d |  | UDF_G1 | Yes | Yes | FL4 | deliv |  | 03 | TO4 | FNTP | P3 | 2 |  |  |  |  |  |  |  |  |  |  |
| CP-P3-04-06-SW-0010 |  | Resolve Rev A Comments - ER Section 4.6 | 5d | 2023-07-18 | 2023-07-24 | CP-P3-04-06-SW-0005 |  |  |  | 67d | 0d |  | UDF_G1 | Yes | Yes | FL4 | deliv |  | 03 | FL4 | FNTP | P3 | 3 |  |  |  |  |  |  |  |  |  |  |
| CP-P3-04-06-SW-0015 |  | Issue Rev 0 - ER Section 4.6 | 5d | 2023-07-25 | 2023-07-31 | CP-P3-04-06-SW-0010 |  |  |  | 67d | 61d |  | UDF_G1 | Yes | Yes | FL4 | deliv |  | 03 | FL4 | FNTP | P3 | 5 | N/A | FL4-REV0 | No SDA |  | oct update Draft Rev A finish date moved out |  |  |  |  |  |
|  | 07 | **CFPP - COLA Prep - Part 03 - Chapter 04 - Section 7 Air Resources** |  | 2023-04-25 | 2023-09-07 |  |  |  |  |  |  |  |  |  |  |  |  |  |  |  |  |  |  |  |  |  |  |  |  |  |  |  |  |
|  | 01 | **CFPP - COLA Prep - Part 03 - Chapter 04 - Section 7 - Support Documents** |  | 2023-04-25 | 2023-07-19 |  |  |  |  |  |  |  |  |  |  |  |  |  |  |  |  |  |  |  |  |  |  |  |  |  |  |  |  |
| CP-P3-04-07-SD-0000 |  | Conduct Construction Emissions Study | 30d | 2023-04-25 | 2023-06-06 | CP-P3-02-07-SW-0005, CP-P3-03-03-SW-0005 |  |  |  | 10d | 0d |  | UDF_G1 | Yes | Yes | RIZZO | supt |  | 03 | RIZZO | FNTP | P3 |  |  |  |  |  |  | COLA | ifm-to5-to4-0305 as pred - act does not exist | 4 | 2.0 |  |
| CP-P3-04-07-SD-0005 |  | Conduct Meteorological / Air Resources Impact Construction Assessment | 30d | 2023-06-07 | 2023-07-19 | CP-P3-04-07-SD-0000 |  |  |  | 10d | 0d |  | UDF_G1 | Yes | Yes | RIZZO | supt |  | 03 | RIZZO | FNTP | P3 |  |  |  |  |  |  | COLA |  | 4 | 2.0 | 17x |

Notes:
- CP-P3-04-06-SD-0000: 12B DEC EOM Notes: as of 30dec22 updated Due to construction area changes, additional field surveys required / CFPP - Contractor's Remarks: Due to construction area changes, additional field surveys required
- CP-P3-04-06-SW-0000: 12B DEC EOM Notes: as of 30dec22 updated

| ID | WBS | Activity | Duration | Start | Finish | Predecessors | Planned start | Planned finish | Total float | Free float | UDF Indicator 01 | JLG - Generic Field | zText_02 | zText_Level 3 Schedule | Rebaseline details | doc type | PREPDRFTREVA | CFPP, LLC WBS Structure | Author | Period of Performance | Part | Chapter | Section | activity step | SDA ACT | REV0 - SDA | SDA needed | Monthly Variance | 10B OCT EOM Notes | 12B DEC EOM Notes | Other |
| --- | --- | --- | --- | --- | --- | --- | --- | --- | --- | --- | --- | --- | --- | --- | --- | --- | --- | --- | --- | --- | --- | --- | --- | --- | --- | --- | --- | --- | --- | --- | --- |
|  | 02 | **CFPP - COLA Prep - Part 03 - Chapter 04 - Section 7 - Section Writing** |  | 2023-07-20 | 2023-09-07 |  |  |  |  |  |  |  |  |  |  |  |  |  |  |  |  |  |  |  |  |  |  |  |  |  |  |
| CP-P3-04-07-SW-0000 |  | Prepare Draft Rev A -Check Updated Supporting Documents -ER Section 4.7 | 15d | 2023-07-20 | 2023-08-09 | CP-P3-03-04-SD-0000, CP-P3-04-07-SD-0005 |  |  | 10d | 0d | UDF_G1 | COLA | Yes | Yes | RIZZO | deliv | RZO-REVA | 03 | RIZZO | FNTP | P3 | 4 | 2.0 | 1 |  |  |  |  |  |  |  |
| CP-P3-04-07-SW-0005 |  | Review Draft Rev A - ER Section 4.7 (TO4 Team Review) | 10d | 2023-08-10 | 2023-08-23 | CP-P3-04-07-SW-0000 |  |  | 10d | 0d | UDF_G1 |  | Yes | Yes | RIZZO | deliv |  | 03 | TO4 | FNTP | P3 |  |  | 2 |  |  |  |  |  |  |  |
| CP-P3-04-07-SW-0010 |  | Resolve Rev A Comments - ER Section 4.7 | 5d | 2023-08-24 | 2023-08-30 | CP-P3-04-07-SW-0005 |  |  | 40d | 0d | UDF_G1 |  | Yes | Yes | RIZZO | deliv |  | 03 | RIZZO | FNTP | P3 | 4 | 2.0 | 3 |  |  |  |  |  |  |  |
| CP-P3-04-07-SW-0015 |  | Issue Rev 0 - ER Section 4.7 | 5d | 2023-08-31 | 2023-09-07 | CP-P3-04-07-SW-0010 |  |  | 40d | 34d | UDF_G1 |  | Yes | Yes | RIZZO | deliv |  | 03 | RIZZO | FNTP | P3 | 4 | 2.0 | 5 | N/A | RZO-REV0 | No SDA |  |  |  |  |
|  | 08 | **CFPP - COLA Prep - Part 03 - Chapter 04 - Section 8 Nonradiological Health** |  | 2023-04-25 | 2023-07-12 |  |  |  |  |  |  |  |  |  |  |  |  |  |  |  |  |  |  |  |  |  |  |  |  |  |  |
|  | 01 | **CFPP - COLA Prep - Part 03 - Chapter 04 - Section 8 - Support Document** |  | 2023-04-25 | 2023-05-22 |  |  |  |  |  |  |  |  |  |  |  |  |  |  |  |  |  |  |  |  |  |  |  |  |  |  |
| CP-P3-04-08-SD-0000 |  | Conduct Non-Radiological Health Impact Construction Assessment | 20d | 2023-04-25 | 2023-05-22 | CP-P3-03-03-SW-0005, CP-P3-02-08-SW-0000 SS, IFM-TO5-TO4-0275, IFM-TO5-TO4-0230, IFM-TO5-TO4-0240, IFM-TO5-TO4-0245 |  |  | 35d | 0d | UDF_G1 |  | Yes | Yes | FL4 | supt |  | 03 | FL4 | FNTP | P3 |  |  |  |  |  |  |  |  |  |  |
|  | 02 | **CFPP - COLA Prep - Part 03 - Chapter 04 - Section 8 - Prepare Section** |  | 2023-05-23 | 2023-07-12 |  |  |  |  |  |  |  |  |  |  |  |  |  |  |  |  |  |  |  |  |  |  |  |  |  |  |
| CP-P3-04-08-SW-0000 |  | Prepare Draft Rev A -Check Updated Supporting Documents -ER Section 4.8 | 15d | 2023-05-23 | 2023-06-13 | CP-P3-04-08-SD-0000 |  |  | 35d | 0d | UDF_G1 |  | Yes | Yes | FL4 | deliv | FL4-REVA | 03 | FL4 | FNTP | P3 |  |  | 1 |  |  |  |  |  |  |  |
| CP-P3-04-08-SW-0005 |  | Review Draft Rev A - ER Section 4.8 (TO4 Team Review) | 10d | 2023-06-14 | 2023-06-27 | CP-P3-04-08-SW-0000 |  |  | 35d | 0d | UDF_G1 |  | Yes | Yes | FL4 | deliv |  | 03 | TO4 | FNTP | P3 |  |  | 2 |  |  |  |  |  |  |  |
| CP-P3-04-08-SW-0010 |  | Resolve Rev A Comments - ER Section 4.8 | 5d | 2023-06-28 | 2023-07-05 | CP-P3-04-08-SW-0005 |  |  | 80d | 0d | UDF_G1 |  | Yes | Yes | FL4 | deliv |  | 03 | FL4 | FNTP | P3 |  |  | 3 |  |  |  |  |  |  |  |
| CP-P3-04-08-SW-0015 |  | Issue Rev 0 - ER Section 4.8 | 5d | 2023-07-06 | 2023-07-12 | CP-P3-04-08-SW-0010 |  |  | 80d | 74d | UDF_G1 |  | Yes | Yes | FL4 | deliv |  | 03 | FL4 | FNTP | P3 |  |  | 5 | N/A | FL4-REV0 | No SDA |  |  |  |  |
|  | 09 | **CFPP - COLA Prep - Part 03 - Chapter 04 - Section 9 Radiological Health** |  | 2023-04-11 | 2023-07-18 |  |  |  |  |  |  |  |  |  |  |  |  |  |  |  |  |  |  |  |  |  |  |  |  |  |  |
|  | 01 | **CFPP - COLA Prep - Part 03 - Chapter 04 - Section 9 - Support Documents** |  | 2023-04-11 | 2023-06-19 |  |  |  |  |  |  |  |  |  |  |  |  |  |  |  |  |  |  |  |  |  |  |  |  |  |  |
| CP-P3-04-09-SD-0000 |  | Conduct Radiological Health Impact Construction Assessment | 30d | 2023-04-11 | 2023-05-22 | CP-P2-12-04-SW-0005, CP-P3-03-03-SW-0005 SS, CP-P3-02-09-SW-0005, IFM-TO5-TO4-0235 |  |  | 46d | 0d | UDF_G1 |  | Yes | Yes | FL4 | supt |  | 03 | S&L | FNTP | P3 |  |  |  |  |  |  | Oct | oct update changed pred to SS start moved in from 22mar23 | as of 30dec22 updated author |  |
| CP-P3-04-09-SD-0001 |  | Conduct Radiological Health Impact Construction Assessment - TO4 External Review / Comments Received | 5d | 2023-05-23 | 2023-06-05 | CP-P3-04-09-SD-0000 | 2023-05-23 | 2023-05-30 | 46d | 0d |  |  |  |  |  | supt |  |  | TO4 |  |  |  |  |  |  |  |  |  |  | as of 30dec22 updated author | cal |
| CP-P3-04-09-SD-0002 |  | Conduct Radiological Health Impact Construction Assessment - Comment Resolution / Issue Final | 10d | 2023-06-06 | 2023-06-19 | CP-P3-04-09-SD-0001 |  |  | 46d | 0d |  |  |  |  |  | supt |  |  | S&L |  |  |  |  |  |  |  |  |  |  | as of 30dec22 updated author | cal |
|  | 02 | **CFPP - COLA Prep - Part 03 - Chapter 04 - Section 9 - Prepare Section** |  | 2023-05-30 | 2023-07-18 |  |  |  |  |  |  |  |  |  |  |  |  |  |  |  |  |  |  |  |  |  |  |  |  |  |  |
| CP-P3-04-09-SW-0000 |  | Prepare Draft Rev A -Check Updated Supporting Documents -ER Section 4.9 | 15d | 2023-05-30 | 2023-06-19 | CP-P3-04-09-SD-0000, CP-P3-04-09-SD-0002 FF |  |  | 46d | 0d | UDF_G1 |  | Yes | Yes | FL4 | deliv | FL4-REVA | 03 | FL4 | FNTP | P3 |  |  | 1 |  |  |  |  |  |  |  |
| CP-P3-04-09-SW-0005 |  | Review Draft Rev A - ER Section 4.9 (TO4 Team Review) | 10d | 2023-06-20 | 2023-07-03 | CP-P3-04-09-SW-0000 |  |  | 46d | 0d | UDF_G1 |  | Yes | Yes | FL4 | deliv |  | 03 | TO4 | FNTP | P3 |  |  | 2 |  |  |  |  |  |  |  |
| CP-P3-04-09-SW-0010 |  | Resolve Rev A Comments - ER Section 4.9 | 5d | 2023-07-05 | 2023-07-11 | CP-P3-04-09-SW-0005 |  |  | 76d | 0d | UDF_G1 |  | Yes | Yes | FL4 | deliv |  | 03 | FL4 | FNTP | P3 |  |  | 3 |  |  |  |  |  |  |  |
| CP-P3-04-09-SW-0015 |  | Issue Rev 0 - ER Section 4.9 | 5d | 2023-07-12 | 2023-07-18 | CP-P3-04-09-SW-0010 |  |  | 76d | 70d | UDF_G1 |  | Yes | Yes | FL4 | deliv |  | 03 | FL4 | FNTP | P3 |  |  | 5 | N/A | FL4-REV0 | No SDA |  |  |  |  |
|  | 10 | **CFPP - COLA Prep - Part 03 - Chapter 04 - Section 10 Nonradioactive Waste Management** |  | 2023-04-25 | 2023-07-26 |  |  |  |  |  |  |  |  |  |  |  |  |  |  |  |  |  |  |  |  |  |  |  |  |  |  |
|  | 01 | **CFPP - COLA Prep - Part 03 - Chapter 04 - Section 10 - Support Documents** |  | 2023-04-25 | 2023-06-06 |  |  |  |  |  |  |  |  |  |  |  |  |  |  |  |  |  |  |  |  |  |  |  |  |  |  |
| CP-P3-04-10-SD-0000 |  | Conduct Construction Assessment of Nonradioactive Waste Management | 30d | 2023-04-25 | 2023-06-06 | CP-P3-03-03-SW-0005 |  |  | 40d | 0d | UDF_G1 |  | Yes | Yes | FL4 | supt |  | 03 | FL4 | FNTP | P3 |  |  |  |  |  |  |  |  |  |  |

Notes:
- CP-P3-04-09-SD-0002: CFPP - Contractor's Remarks: as of 30dec22 updated Forecast dates on Predecessor not incorporated

| ID | WBS | Activity | Duration | Start | Finish | Predecessors | Planned start | Planned finish | Total float | Free float | Constraint | Expected finish | UDF Indicator 01 | zText_02 | zText_Level 3 Schedule | Rebaseline details | doc type | PREPDRFTREVA | CFPP, LLC WBS Structure | Author | Period of Performance | Part | activity step | SDA ACT | REV0 - SDA | SDA needed | Other | 12B DEC EOM Notes | CFPP - Contractor's Remarks | Forecast Finish | Forecast Start | zText_RFI |
| --- | --- | --- | --- | --- | --- | --- | --- | --- | --- | --- | --- | --- | --- | --- | --- | --- | --- | --- | --- | --- | --- | --- | --- | --- | --- | --- | --- | --- | --- | --- | --- | --- |
|  | 02 | **CFPP - COLA Prep - Part 03 - Chapter 04 - Section 10 - Section Writing** |  | 2023-06-07 | 2023-07-26 |  |  |  |  |  |  |  |  |  |  |  |  |  |  |  |  |  |  |  |  |  |  |  |  |  |  |  |
| CP-P3-04-10-SW-0000 |  | Prepare Draft Rev A -Check Updated Supporting Documents -ER Section 4.10 | 15d | 2023-06-07 | 2023-06-27 | CP-P3-04-10-SD-0000 |  |  | 40d | 0d |  |  | UDF_G1 | Yes | Yes | FL4 | deliv | FL4-REVA | 03 | FL4 | FNTP | P3 | 1 |  |  |  |  |  |  |  |  |  |
| CP-P3-04-10-SW-0005 |  | Review Draft Rev A - ER Section 4.10 (TO4 Team Review) | 10d | 2023-06-28 | 2023-07-12 | CP-P3-04-10-SW-0000 |  |  | 40d | 0d |  |  | UDF_G1 | Yes | Yes | FL4 | deliv |  | 03 | TO4 | FNTP | P3 | 2 |  |  |  |  |  |  |  |  |  |
| CP-P3-04-10-SW-0015 |  | Resolve Rev A Comments - ER Section 4.10 | 5d | 2023-07-13 | 2023-07-19 | CP-P3-04-10-SW-0005 |  |  | 70d | 0d |  |  | UDF_G1 | Yes | Yes | FL4 | deliv |  | 03 | FL4 | FNTP | P3 | 3 |  |  |  |  |  |  |  |  |  |
| CP-P3-04-10-SW-0020 |  | Issue Rev 0 - ER Section 4.10 | 5d | 2023-07-20 | 2023-07-26 | CP-P3-04-10-SW-0015 |  |  | 70d | 64d |  |  | UDF_G1 | Yes | Yes | FL4 | deliv |  | 03 | FL4 | FNTP | P3 | 5 | N/A | FL4-REV0 | No SDA |  |  |  |  |  |  |
|  | 11 | **CFPP - COLA Prep - Pt 3 - Chap 04 -Sect 11 Measures & Cntrls to Limit Adverse Impacts of Constr Acts** |  | 2023-04-03 | 2023-10-25 |  |  |  |  |  |  |  |  |  |  |  |  |  |  |  |  |  |  |  |  |  |  |  |  |  |  |  |
|  | 01 | **CFPP - COLA Prep - Part 03 - Chapter 04 - Section 11- Support Document** |  | 2023-04-03 | 2023-09-06 |  |  |  |  |  |  |  |  |  |  |  |  |  |  |  |  |  |  |  |  |  |  |  |  |  |  |  |
| CP-P3-04-11-SD-0010 |  | E3-04.11-GEN-102 Provide description of environmental measures/controls to limit adverse impacts construction - Provide | 30d | 2023-04-03 | 2023-05-12 |  | 2023-04-03 | 2023-05-15 | 82d | 0d | start on or after 2023-04-03 |  |  |  |  |  | supt |  |  | S&L |  |  |  |  |  |  | cal | as of 30dec22 updated Start On or After 03-Apr-23 08:00 AM | as of 30dec22 updated Start On or After 03-Apr-23 08:00 AM | 2023-05-12 | 2023-04-03 |  |
| CP-P3-04-11-SD-0005 |  | E3-04.11-RFI-102 Provide info on environmental measures/controls to limit adverse impacts construction (support) | 30d | 2023-04-25 | 2023-05-12 | CP-P3-03-03-SW-0005 | 2023-04-25 | 2023-06-06 | 82d | 0d | start on or after 2023-04-03 | 2023-05-12 | UDF_G1 | Yes | Yes | FL4 | supt |  | 03 | S&L | FNTP | P3 |  |  |  |  |  | as of 30dec22 updated pred slip Start On or After 03-Apr-23 | as of 30dec22 updated Start On or After 03-Apr-23 08:00 AM | 2023-05-12 | 2023-04-03 |  |
| CP-P3-04-11-SD-0006 |  | E3-04.11-RFI-102 Desc of Environ Measures & Cntrls to limit Constr Impacts - TO4 External Review / Comments Received | 5d | 2023-05-15 | 2023-05-25 | CP-P3-04-11-SD-0005 | 2023-05-15 | 2023-05-19 | 82d | 0d |  |  |  |  |  |  | supt |  |  | S&L |  |  |  |  |  |  | cal |  |  |  |  |  |
| CP-P3-04-11-SD-0011 |  | E3-04.11-GEN-102 Desc of Environ Measures & Cntrls to limit Constr Impacts - TO4 External Review / Comments Received | 5d | 2023-05-15 | 2023-05-25 | CP-P3-04-11-SD-0010 | 2023-05-15 | 2023-05-19 | 82d | 0d |  |  |  |  |  |  | supt |  |  | TO4 |  |  |  |  |  |  | cal |  |  |  |  |  |
| CP-P3-04-11-SD-0007 |  | E3-04.11-RFI-102 Desc of Environ Measures & Cntrls to limit Constr Impacts - Comment Resolution / Issue Final | 10d | 2023-05-26 | 2023-06-09 | CP-P3-04-11-SD-0006 |  |  | 82d | 76d |  |  |  |  |  |  | supt |  |  | S&L |  |  |  |  |  |  | cal |  |  |  |  |  |
| CP-P3-04-11-SD-0012 |  | E3-04.11-GEN-102 Desc of Environ Measures & Cntrls to limit Constr Impacts - Comment Resolution / Issue Final | 10d | 2023-05-26 | 2023-06-09 | CP-P3-04-11-SD-0011 |  |  | 82d | 76d |  |  |  |  |  |  | supt |  |  | S&L |  |  |  |  |  |  | cal |  |  |  |  |  |
| CP-P3-04-11-SD-0000 |  | Provide Environmental Measures Description / Controls to Limit Adverse Construction Impact | 20d | 2023-08-09 | 2023-09-06 | CP-P3-04-08-SW-0005, CP-P3-04-03-SW-0005, CP-P3-04-02-SW-0005, CP-P3-03-03-SW-0005 |  |  | 6d | 0d |  |  | UDF_G1 | Yes | Yes | FL4 | supt |  | 03 | FL4 | FNTP | P3 |  |  |  |  |  |  |  |  |  |  |
|  | 02 | **CFPP - COLA Prep - Part 03 - Chapter 04 - Section 11- Section Writing** |  | 2023-09-07 | 2023-10-25 |  |  |  |  |  |  |  |  |  |  |  |  |  |  |  |  |  |  |  |  |  |  |  |  |  |  |  |
| CP-P3-04-11-SW-0000 |  | Prepare Draft Rev A -Check Updated Supporting Documents -ER Section 4.11 | 15d | 2023-09-07 | 2023-09-27 | CP-P3-04-11-SD-0000, CP-P3-03-03-SW-0005, CP-P3-04-11-SD-0011 FF, CP-P3-04-11-SD-0005, CP-P3-04-11-SD-0007 FF, CP-P3-04-11-SD-0012 FF |  |  | 6d | 0d |  |  | UDF_G1 | Yes | Yes | FL4 | deliv | FL4-REVA | 03 | FL4 | FNTP | P3 | 1 |  |  |  |  |  |  |  |  |  |
| CP-P3-04-11-SW-0005 |  | Review Draft Rev A - ER Section 4.11 (TO4 Team Review) | 10d | 2023-09-28 | 2023-10-11 | CP-P3-04-11-SW-0000 |  |  | 6d | 0d |  |  | UDF_G1 | Yes | Yes | FL4 | deliv |  | 03 | TO4 | FNTP | P3 | 2 |  |  |  |  |  |  |  |  |  |
| CP-P3-04-11-SW-0010 |  | Resolve Rev A Comments - ER Section 4.11 | 5d | 2023-10-12 | 2023-10-18 | CP-P3-04-11-SW-0005 |  |  | 6d | 0d |  |  | UDF_G1 | Yes | Yes | FL4 | deliv |  | 03 | FL4 | FNTP | P3 | 3 |  |  |  |  |  |  |  |  |  |
| CP-P3-04-11-SW-0015 |  | Issue Rev 0 - ER Section 4.11 | 5d | 2023-10-19 | 2023-10-25 | CP-P3-04-11-SW-0010 |  |  | 6d | 0d |  |  | UDF_G1 | Yes | Yes | FL4 | deliv |  | 03 | FL4 | FNTP | P3 | 5 | N/A | FL4-REV0 | No SDA |  |  |  |  |  |  |
|  | 05 | **CFPP - COLA Prep - Part 03 - Chapter 05 Enviro Impacts from Operation of the Proposed Plant** |  | 2022-03-01 | 2023-10-09 |  |  |  |  |  |  |  |  |  |  |  |  |  |  |  |  |  |  |  |  |  |  |  |  |  |  |  |
|  | 01 | **CFPP - COLA Prep - Part 03 - Chapter 05 - Section 1 Land Use** |  | 2023-02-28 | 2023-07-12 |  |  |  |  |  |  |  |  |  |  |  |  |  |  |  |  |  |  |  |  |  |  |  |  |  |  |  |
|  | 1 | **CFPP - COLA Prep - Part 03 - Chapter 05 - Section 1 - Support Documents** |  | 2023-02-28 | 2023-05-22 |  |  |  |  |  |  |  |  |  |  |  |  |  |  |  |  |  |  |  |  |  |  |  |  |  |  |  |
| CP-P3-05-01-SD-0000 |  | Provide info for Land Use Impact Operations Assessment | 30d | 2023-02-28 | 2023-04-10 | CP-P3-03-04-SD-0010 |  |  | 50d | 0d |  |  | UDF_G1 | Yes | Yes | FL4 | supt |  | 03 | FL4 | FNTP | P3 |  |  |  |  |  |  |  |  |  | RFI 102 |
| CP-P3-05-01-SD-0005 |  | Conduct Land-Use Impact Operations Assessment | 30d | 2023-04-11 | 2023-05-22 | CP-P3-05-01-SD-0000, CP-P3-03-04-SW-0005, CP-P3-02-01-SW-0005 |  |  | 50d | 0d |  |  | UDF_G1 | Yes | Yes | FL4 | supt |  | 03 | FL4 | FNTP | P3 |  |  |  |  |  |  |  |  |  |  |

| ID | WBS | Activity | Duration | Start | Finish | Predecessors | Planned start | Planned finish | Total float | Free float | UDF Indicator 01 | zText_02 | zText_Level 3 Schedule | Rebaseline details | doc type | PREPDRFTREVA | CFPP, LLC WBS Structure | Author | Period of Performance | Part | activity step | SDA ACT | REV0 - SDA | SDA needed | zText_RFI | Chapter | Section | COLA Critical Path Sched | Critcal Path | 10A OCT MIDMONTH Notes |
| --- | --- | --- | --- | --- | --- | --- | --- | --- | --- | --- | --- | --- | --- | --- | --- | --- | --- | --- | --- | --- | --- | --- | --- | --- | --- | --- | --- | --- | --- | --- |
|  | 2 | **CFPP - COLA Prep - Part 03 - Chapter 05 - Section 1 - Section Writing** |  | 2023-05-23 | 2023-07-12 |  |  |  |  |  |  |  |  |  |  |  |  |  |  |  |  |  |  |  |  |  |  |  |  |  |
| CP-P3-05-01-SW-0000 |  | Prepare Draft Rev A -Check Updated Supporting Documents -ER Section 5.1 | 15d | 2023-05-23 | 2023-06-13 | CP-P3-05-01-SD-0005, CP-P3-04-01-SD-0005 |  |  | 50d | 0d | UDF_G1 | Yes | Yes | FL4 | deliv | FL4-REVA | 03 | FL4 | FNTP | P3 | 1 |  |  |  |  |  |  |  |  |  |
| CP-P3-05-01-SW-0005 |  | Review Draft Rev A - ER Section 5.1 (TO4 Team Review) | 10d | 2023-06-14 | 2023-06-27 | CP-P3-05-01-SW-0000 |  |  | 50d | 0d | UDF_G1 | Yes | Yes | FL4 | deliv |  | 03 | TO4 | FNTP | P3 | 2 |  |  |  |  |  |  |  |  |  |
| CP-P3-05-01-SW-0010 |  | Resolve Rev A Comments - ER Section 5.1 | 5d | 2023-06-28 | 2023-07-05 | CP-P3-05-01-SW-0005 |  |  | 80d | 0d | UDF_G1 | Yes | Yes | FL4 | deliv |  | 03 | FL4 | FNTP | P3 | 3 |  |  |  |  |  |  |  |  |  |
| CP-P3-05-01-SW-0015 |  | Issue Rev 0 - ER Section 5.1 | 5d | 2023-07-06 | 2023-07-12 | CP-P3-05-01-SW-0010 |  |  | 80d | 62d | UDF_G1 | Yes | Yes | FL4 | deliv |  | 03 | FL4 | FNTP | P3 | 5 | N/A | FL4-REV0 | No SDA |  |  |  |  |  |  |
|  | 02 | **CFPP - COLA Prep - Part 03 - Chapter 05 - Section 2 Water Resources** |  | 2023-04-06 | 2023-08-18 |  |  |  |  |  |  |  |  |  |  |  |  |  |  |  |  |  |  |  |  |  |  |  |  |  |
|  | 01 | **CFPP - COLA Prep - Part 03 - Chapter 05 - Section 2 - Support Documents** |  | 2023-04-06 | 2023-06-29 |  |  |  |  |  |  |  |  |  |  |  |  |  |  |  |  |  |  |  |  |  |  |  |  |  |
| CP-P3-05-02-SD-0000 |  | Provide Operational Hydrological Monitoring Program Description | 30d | 2023-04-06 | 2023-05-17 | PKM-0130 |  |  | 23d | 0d | UDF_G3 | Yes | Yes | RIZZO | supt |  | 03 | RIZZO | FNTP | P3 |  |  |  |  | RFI 102 | 5 | 2.0 |  |  |  |
| CP-P3-05-02-SD-0005 |  | Conduct Water-Related Impact Operations Assessment | 30d | 2023-05-18 | 2023-06-29 | CP-P3-05-02-SD-0000, CP-P3-02-02-SW-0005, CP-P3-03-04-SW-0005, CP-P2-02-04-SW-0270, CP-P2-09-02-SW-0005, IFM-TO5-TO4-0200 |  |  | 23d | 0d | UDF_G1 | Yes | Yes | RIZZO | supt |  | 03 | RIZZO | FNTP | P3 |  |  |  |  |  | 5 | 2.0 |  |  |  |
|  | 02 | **CFPP - COLA Prep - Part 03 - Chapter 05 - Section 2 - Section Writing** |  | 2023-06-30 | 2023-08-18 |  |  |  |  |  |  |  |  |  |  |  |  |  |  |  |  |  |  |  |  |  |  |  |  |  |
| CP-P3-05-02-SW-0000 |  | Prepare Draft Rev A -Check Updated Supporting Documents -ER Section 5.2 | 15d | 2023-06-30 | 2023-07-21 | CP-P3-05-02-SD-0005, CP-P2-02-04-SD-0230 |  |  | 23d | 0d | UDF_G1 | Yes | Yes | RIZZO | deliv | RZO-REVA | 03 | RIZZO | FNTP | P3 | 1 |  |  |  |  | 5 | 2.0 |  |  |  |
| CP-P3-05-02-SW-0005 |  | Review Draft Rev A - ER Section 5.2 (TO4 Team Review) | 10d | 2023-07-24 | 2023-08-04 | CP-P3-05-02-SW-0000 |  |  | 23d | 0d | UDF_G1 | Yes | Yes | RIZZO | deliv |  | 03 | TO4 | FNTP | P3 | 2 |  |  |  |  |  |  |  |  |  |
| CP-P3-05-02-SW-0010 |  | Resolve Rev A Comments - ER Section 5.2 | 5d | 2023-08-07 | 2023-08-11 | CP-P3-05-02-SW-0005 |  |  | 53d | 0d | UDF_G1 | Yes | Yes | RIZZO | deliv |  | 03 | RIZZO | FNTP | P3 | 3 |  |  |  |  | 5 | 2.0 |  |  |  |
| CP-P3-05-02-SW-0015 |  | Issue Rev 0 - ER Section 5.2 | 5d | 2023-08-14 | 2023-08-18 | CP-P3-05-02-SW-0010 |  |  | 53d | 35d | UDF_G1 | Yes | Yes | RIZZO | deliv |  | 03 | RIZZO | FNTP | P3 | 5 | N/A | RZO-REV0 | No SDA |  | 5 | 2.0 |  |  |  |
|  | 03 | **CFPP - COLA Prep - Part 03 - Chapter 05 - Section 3 Ecological Resources** |  | 2023-07-13 | 2023-09-21 |  |  |  |  |  |  |  |  |  |  |  |  |  |  |  |  |  |  |  |  |  |  |  |  |  |
|  | 01 | **CFPP - COLA Prep - Part 03 - Chapter 05 - Section 3 - Support Documents** |  | 2023-07-13 | 2023-08-02 |  |  |  |  |  |  |  |  |  |  |  |  |  |  |  |  |  |  |  |  |  |  |  |  |  |
| CP-P3-05-03-SD-0000 |  | Conduct Ecological Impact Operations Assessment | 30d | 2023-07-13 | 2023-08-02 | CP-P3-02-03-SW-0005, CP-P3-03-04-SW-0005, CP-P3-02-03-SD-0025 | 2023-07-13 | 2023-08-23 | 0d |  | UDF_G1 | Yes | Yes | FL4 | supt |  | 03 | FL4 | FNTP | P3 |  |  |  |  |  |  |  | 1 | 1 |  |
|  | 02 | **CFPP - COLA Prep - Part 03 - Chapter 05 - Section 3 - Section Writing** |  | 2023-08-03 | 2023-09-21 |  |  |  |  |  |  |  |  |  |  |  |  |  |  |  |  |  |  |  |  |  |  |  |  |  |
| CP-P3-05-03-SW-0000 |  | Prepare Draft Rev A -Check Updated Supporting Documents -ER Section 5.3 | 15d | 2023-08-03 | 2023-08-23 | CP-P3-03-04-SD-0000, CP-P3-05-03-SD-0000 |  |  | 0d |  | UDF_G1 | Yes | Yes | FL4 | deliv | FL4-REVA | 03 | FL4 | FNTP | P3 | 1 |  |  |  |  |  |  | 1 | 1 |  |
| CP-P3-05-03-SW-0005 |  | Review Draft Rev A - ER Section 5.3 (TO4 Team Review) | 10d | 2023-08-24 | 2023-09-07 | CP-P3-05-03-SW-0000 |  |  | 0d |  | UDF_G1 | Yes | Yes | FL4 | deliv |  | 03 | TO4 | FNTP | P3 | 2 |  |  |  |  |  |  | 1 | 1 |  |
| CP-P3-05-03-SW-0010 |  | Resolve Rev A Comments - ER Section 5.3 | 5d | 2023-09-08 | 2023-09-14 | CP-P3-05-03-SW-0005 |  |  | 30d | 0d | UDF_G1 | Yes | Yes | FL4 | deliv |  | 03 | FL4 | FNTP | P3 | 3 |  |  |  |  |  |  |  |  |  |
| CP-P3-05-03-SW-0015 |  | Issue Rev 0 - ER Section 5.3 | 5d | 2023-09-15 | 2023-09-21 | CP-P3-05-03-SW-0010 |  |  | 30d | 12d | UDF_G1 | Yes | Yes | FL4 | deliv |  | 03 | FL4 | FNTP | P3 | 5 | N/A | FL4-REV0 | No SDA |  |  |  |  |  | oct update Draft Rev A ER 2.3 finish date moved out |
|  | 04 | **CFPP - COLA Prep - Part 03 - Chapter 05 - Section 4 Socioeconomics** |  | 2023-04-10 | 2023-07-11 |  |  |  |  |  |  |  |  |  |  |  |  |  |  |  |  |  |  |  |  |  |  |  |  |  |
|  | 01 | **CFPP - COLA Prep - Part 03 - Chapter 05 - Section 4 - Support Documents** |  | 2023-04-10 | 2023-05-19 |  |  |  |  |  |  |  |  |  |  |  |  |  |  |  |  |  |  |  |  |  |  |  |  |  |
| CP-P3-05-04-SD-0000 |  | Conduct Socioeconomic Impact Operations Assessment | 30d | 2023-04-10 | 2023-05-19 | CP-P3-02-04-SW-0005, CP-P3-03-04-SW-0005 |  |  | 51d | 0d | UDF_G1 | Yes | Yes | FL4 | supt |  | 03 | FL4 | FNTP | P3 |  |  |  |  |  |  |  |  |  |  |

| ID | WBS | Activity | Duration | Start | Finish | Predecessors | Remaining | Planned start | Planned finish | Total float | Free float | Expected finish | UDF Indicator 01 | zText_02 | zText_Level 3 Schedule | Rebaseline details | doc type | PREPDRFTREVA | CFPP, LLC WBS Structure | Author | Period of Performance | Part | activity step | SDA ACT | REV0 - SDA | SDA needed | Comments | 10A OCT MIDMONTH Notes | zText_RFI | Chapter | Section |
| --- | --- | --- | --- | --- | --- | --- | --- | --- | --- | --- | --- | --- | --- | --- | --- | --- | --- | --- | --- | --- | --- | --- | --- | --- | --- | --- | --- | --- | --- | --- | --- |
|  | 02 | **CFPP - COLA Prep - Part 03 - Chapter 05 - Section 4 - Section Writing** |  | 2023-05-22 | 2023-07-11 |  |  |  |  |  |  |  |  |  |  |  |  |  |  |  |  |  |  |  |  |  |  |  |  |  |  |
| CP-P3-05-04-SW-0000 |  | Prepare Draft Rev A -Check Updated Supporting Documents -ER Section 5.4 | 15d | 2023-05-22 | 2023-06-12 | CP-P3-05-04-SD-0000 |  |  |  | 51d | 0d |  | UDF_G1 | Yes | Yes | FL4 | deliv | FL4-REVA | 03 | FL4 | FNTP | P3 | 1 |  |  |  |  |  |  |  |  |
| CP-P3-05-04-SW-0005 |  | Review Draft Rev A - ER Section 5.4 (TO4 Team Review) | 10d | 2023-06-13 | 2023-06-26 | CP-P3-05-04-SW-0000 |  |  |  | 51d | 0d |  | UDF_G1 | Yes | Yes | FL4 | deliv |  | 03 | TO4 | FNTP | P3 | 2 |  |  |  |  |  |  |  |  |
| CP-P3-05-04-SW-0010 |  | Resolve Rev A Comments - ER Section 5.4 | 5d | 2023-06-27 | 2023-07-03 | CP-P3-05-04-SW-0005 |  |  |  | 81d | 0d |  | UDF_G1 | Yes | Yes | FL4 | deliv |  | 03 | FL4 | FNTP | P3 | 3 |  |  |  |  |  |  |  |  |
| CP-P3-05-04-SW-0015 |  | Issue Rev 0 - ER Section 5.4 | 5d | 2023-07-05 | 2023-07-11 | CP-P3-05-04-SW-0010 |  |  |  | 81d | 63d |  | UDF_G1 | Yes | Yes | FL4 | deliv |  | 03 | FL4 | FNTP | P3 | 5 | N/A | FL4-REV0 | No SDA |  |  |  |  |  |
|  | 05 | **CFPP - COLA Prep - Part 03 - Chapter 05 - Section 5 Environmental Justice** |  | 2023-04-10 | 2023-07-11 |  |  |  |  |  |  |  |  |  |  |  |  |  |  |  |  |  |  |  |  |  |  |  |  |  |  |
|  | 01 | **CFPP - COLA Prep - Part 03 - Chapter 05 - Section 5 - Support Documents** |  | 2023-04-10 | 2023-05-19 |  |  |  |  |  |  |  |  |  |  |  |  |  |  |  |  |  |  |  |  |  |  |  |  |  |  |
| CP-P3-05-05-SD-0000 |  | Conduct Environmental Justice Impact Operations Assessment | 30d | 2023-04-10 | 2023-05-19 | CP-P3-02-05-SW-0005, CP-P3-03-04-SW-0005 |  |  |  | 51d | 0d |  | UDF_G1 | Yes | Yes | FL4 | supt |  | 03 | FL4 | FNTP | P3 |  |  |  |  |  |  |  |  |  |
|  | 02 | **CFPP - COLA Prep - Part 03 - Chapter 05 - Section 5 - Section Writing** |  | 2023-05-22 | 2023-07-11 |  |  |  |  |  |  |  |  |  |  |  |  |  |  |  |  |  |  |  |  |  |  |  |  |  |  |
| CP-P3-05-05-SW-0000 |  | Prepare Draft Rev A -Check Updated Supporting Documents -ER Section 5.5 | 15d | 2023-05-22 | 2023-06-12 | CP-P3-05-05-SD-0000 |  |  |  | 51d | 0d |  | UDF_G1 | Yes | Yes | FL4 | deliv | FL4-REVA | 03 | FL4 | FNTP | P3 | 1 |  |  |  |  |  |  |  |  |
| CP-P3-05-05-SW-0005 |  | Review Draft Rev A - ER Section 5.5 (TO4 Team Review) | 10d | 2023-06-13 | 2023-06-26 | CP-P3-05-05-SW-0000 |  |  |  | 51d | 0d |  | UDF_G1 | Yes | Yes | FL4 | deliv |  | 03 | TO4 | FNTP | P3 | 2 |  |  |  |  |  |  |  |  |
| CP-P3-05-05-SW-0010 |  | Resolve Rev A Comments - ER Section 5.5 | 5d | 2023-06-27 | 2023-07-03 | CP-P3-05-05-SW-0005 |  |  |  | 81d | 0d |  | UDF_G1 | Yes | Yes | FL4 | deliv |  | 03 | FL4 | FNTP | P3 | 3 |  |  |  |  |  |  |  |  |
| CP-P3-05-05-SW-0015 |  | Issue Rev 0 - ER Section 5.5 | 5d | 2023-07-05 | 2023-07-11 | CP-P3-05-05-SW-0010 |  |  |  | 81d | 63d |  | UDF_G1 | Yes | Yes | FL4 | deliv |  | 03 | FL4 | FNTP | P3 | 5 | N/A | FL4-REV0 | No SDA |  |  |  |  |  |
|  | 06 | **CFPP - COLA Prep - Part 03 - Chapter 05 - Section 6 Historic & Cultural Resources** |  | 2022-03-01 | 2023-06-28 |  |  |  |  |  |  |  |  |  |  |  |  |  |  |  |  |  |  |  |  |  |  |  |  |  |  |
|  | 01 | **CFPP - COLA Prep - Part 03 - Chapter 05 - Section 6 - Support Documents** |  | 2022-06-21 | 2023-05-31 |  |  |  |  |  |  |  |  |  |  |  |  |  |  |  |  |  |  |  |  |  |  |  |  |  |  |
| CP-P3-05-06-SD-0000 |  | Conduct Historic / Cultural Resources Impact Operations Assessment | 30d | 2022-06-21 A | 2023-05-31 | CP-P3-02-06-SD-0015 FF | 107d | 2022-11-01 | 2022-12-14 | 59d | 0d | 2023-05-31 | UDF_G1 | Yes | Yes | FL4 | supt |  | 03 | FL4 | FNTP | P3 |  |  |  |  | 1 |  |  |  |  |
|  | 02 | **CFPP - COLA Prep - Part 03 - Chapter 05 - Section 6 - Section Writing** |  | 2022-03-01 | 2023-06-28 |  |  |  |  |  |  |  |  |  |  |  |  |  |  |  |  |  |  |  |  |  |  |  |  |  |  |
| CP-P3-05-06-SW-0000 |  | Prepare Draft Rev A -Check Updated Supporting Documents -ER Section 5.6 | 15d | 2022-03-01 A | 2023-05-31 | CP-P3-05-06-SD-0000 FF | 107d | 2022-09-14 | 2022-10-04 | 59d | 0d | 2023-05-31 | UDF_G1 | Yes | Yes | FL4 | deliv | FL4-REVA | 03 | FL4 | FNTP | P3 | 1 |  |  |  |  |  |  |  |  |
| CP-P3-05-06-SW-0005 |  | Review Draft Rev A - ER Section 5.6 (TO4 Team Review) | 10d | 2023-06-01 | 2023-06-14 | CP-P3-05-06-SW-0000 |  |  |  | 59d | 0d |  | UDF_G1 | Yes | Yes | FL4 | deliv |  | 03 | TO4 | FNTP | P3 | 2 |  |  |  |  |  |  |  |  |
| CP-P3-05-06-SW-0010 |  | Resolve Rev A Comments - ER Section 5.6 | 5d | 2023-06-15 | 2023-06-21 | CP-P3-05-06-SW-0005 |  |  |  | 89d | 0d |  | UDF_G1 | Yes | Yes | FL4 | deliv |  | 03 | FL4 | FNTP | P3 | 3 |  |  |  |  |  |  |  |  |
| CP-P3-05-06-SW-0015 |  | Issue Rev 0 - ER Section 5.6 | 5d | 2023-06-22 | 2023-06-28 | CP-P3-05-06-SW-0010 |  |  |  | 89d | 71d |  | UDF_G1 | Yes | Yes | FL4 | deliv |  | 03 | FL4 | FNTP | P3 | 5 | N/A | FL4-REV0 | No SDA |  | oct update Draft Rev A finish date moved out |  |  |  |
|  | 07 | **CFPP - COLA Prep - Part 03 - Chapter 05 - Section 7 Air Resourcess** |  | 2023-02-28 | 2023-08-16 |  |  |  |  |  |  |  |  |  |  |  |  |  |  |  |  |  |  |  |  |  |  |  |  |  |  |
|  | 01 | **CFPP - COLA Prep - Part 03 - Chapter 05 - Section 7 - Support Documents** |  | 2023-02-28 | 2023-06-27 |  |  |  |  |  |  |  |  |  |  |  |  |  |  |  |  |  |  |  |  |  |  |  |  |  |  |
| CP-P3-05-07-SD-0000 |  | Receive Equipment Emission Estimates Info | 30d | 2023-02-28 | 2023-04-10 | IFM-TO5-TO4-0225, IFM-TO5-TO4-0230, IFM-TO5-TO4-0235, CP-P2-05-01-SD-0000 |  |  |  | 50d | 25d |  | UDF_G3 | Yes | Yes | RIZZO | supt |  | 03 | RIZZO | FNTP | P3 |  |  |  |  |  | oct update | RFI 102 | 5 | 2.0 |
| CP-P3-05-07-SD-0005 |  | Conduct Meteorological / Air Resources Impact Operations Assessment | 30d | 2023-05-16 | 2023-06-27 | CP-P3-05-07-SD-0000, CP-P3-03-04-SW-0005, CP-P3-02-07-SW-0005, CP-P2-02-03-SW-0110 |  |  |  | 25d | 0d |  | UDF_G1 | Yes | Yes | RIZZO | supt |  | 03 | RIZZO | FNTP | P3 |  |  |  |  |  | oct update |  | 5 | 2.0 |

Notes:
- CP-P3-05-06-SD-0000: Schedule Notes: remove CP-P3-02-06-SD-0005 FF, CP-P3-02-06-SD-0020 FF, CP-P3-02-06-SD-0010 / FF TO FIX OOS GAP / 12B DEC EOM Notes: as of 30dec22 updated Due to construction area changes, additional field surveys required / CFPP - Contractor's Remarks: Due to construction area changes, additional field surveys required
- CP-P3-05-06-SW-0000: 12B DEC EOM Notes: as of 30dec22 updated

| ID | WBS | Activity | Duration | Start | Finish | Predecessors | Remaining | Planned start | Planned finish | Total float | Free float | Constraint | Expected finish | UDF Indicator 01 | zText_02 | zText_Level 3 Schedule | Rebaseline details | doc type | 10A OCT MIDMONTH Notes | PREPDRFTREVA | CFPP, LLC WBS Structure | Author | Period of Performance | Part | Chapter | Section | activity step | SDA ACT | REV0 - SDA | SDA needed | Deliverable Owner | Monthly Variance | 10B OCT EOM Notes | z_Text-4 | Forecast Finish | Forecast Start | Nuscale ACT Number | nuscale comp | 11B NOV EOM Notes |
| --- | --- | --- | --- | --- | --- | --- | --- | --- | --- | --- | --- | --- | --- | --- | --- | --- | --- | --- | --- | --- | --- | --- | --- | --- | --- | --- | --- | --- | --- | --- | --- | --- | --- | --- | --- | --- | --- | --- | --- |
|  | 02 | **CFPP - COLA Prep - Part 03 - Chapter 05 - Section 7 - Section Writing** |  | 2023-06-28 | 2023-08-16 |  |  |  |  |  |  |  |  |  |  |  |  |  |  |  |  |  |  |  |  |  |  |  |  |  |  |  |  |  |  |  |  |  |  |
| CP-P3-05-07-SW-0000 |  | Prepare Draft Rev A -Check Updated Supporting Documents -ER Section 5.7 | 15d | 2023-06-28 | 2023-07-19 | CP-P3-03-04-SD-0000, CP-P3-05-07-SD-0005 |  |  |  | 25d | 0d |  |  | UDF_G1 | Yes | Yes | RIZZO | deliv | oct update | RZO-REVA | 03 | RIZZO | FNTP | P3 | 5 | 2.0 | 1 |  |  |  |  |  |  |  |  |  |  |  |  |
| CP-P3-05-07-SW-0005 |  | Review Draft Rev A - ER Section 5.7 (TO4 Team Review) | 10d | 2023-07-20 | 2023-08-02 | CP-P3-05-07-SW-0000 |  |  |  | 25d | 0d |  |  | UDF_G1 | Yes | Yes | RIZZO | deliv | oct update |  | 03 | TO4 | FNTP | P3 |  |  | 2 |  |  |  |  |  |  |  |  |  |  |  |  |
| CP-P3-05-07-SW-0010 |  | Resolve Rev A Comments - ER Section 5.7 | 5d | 2023-08-03 | 2023-08-09 | CP-P3-05-07-SW-0005 |  |  |  | 55d | 0d |  |  | UDF_G1 | Yes | Yes | RIZZO | deliv | oct update |  | 03 | RIZZO | FNTP | P3 | 5 | 2.0 | 3 |  |  |  |  |  |  |  |  |  |  |  |  |
| CP-P3-05-07-SW-0015 |  | Issue Rev 0 - ER Section 5.7 | 5d | 2023-08-10 | 2023-08-16 | CP-P3-05-07-SW-0010 |  |  |  | 55d | 37d |  |  | UDF_G1 | Yes | Yes | RIZZO | deliv | oct update pushed out by 2.3.5 TO4 review |  | 03 | RIZZO | FNTP | P3 | 5 | 2.0 | 5 | N/A | RZO-REV0 | No SDA |  |  |  |  |  |  |  |  |  |
|  | 08 | **CFPP - COLA Prep - Part 03 - Chapter 05 - Section 8 Nonradiological Health** |  | 2022-05-02 | 2023-05-26 |  |  |  |  |  |  |  |  |  |  |  |  |  |  |  |  |  |  |  |  |  |  |  |  |  |  |  |  |  |  |  |  |  |  |
|  | 01 | **CFPP - COLA Prep - Part 03 - Chapter 05 - Section 8 - Support Documents** |  | 2022-05-02 | 2023-04-07 |  |  |  |  |  |  |  |  |  |  |  |  |  |  |  |  |  |  |  |  |  |  |  |  |  |  |  |  |  |  |  |  |  |  |
| CP-P3-05-08-SD-0000 |  | Conduct Non-Radiological Health Impact Operations Assessment | 30d | 2022-05-02 A | 2023-04-07 | CP-P3-03-04-SW-0005 FF, CP-P3-02-08-SW-0005 FF, IFM-TO5-TO4-0240 | 23d | 2022-11-23 | 2023-01-05 | 81d | 0d |  | 2023-02-02 | UDF_G1 | Yes | Yes | FL4 | supt |  |  | 03 | FL4 | FNTP |  |  |  |  |  |  |  | Kevin | Oct | oct update pred slip out |  |  |  |  |  |  |
|  | 02 | **CFPP - COLA Prep - Part 03 - Chapter 05 - Section 8 - Section Writing** |  | 2023-04-10 | 2023-05-26 |  |  |  |  |  |  |  |  |  |  |  |  |  |  |  |  |  |  |  |  |  |  |  |  |  |  |  |  |  |  |  |  |  |  |
| CP-P3-05-08-SW-0000 |  | Prepare Draft Rev A -Check Updated Supporting Documents -ER Section 5.8 | 15d | 2023-04-10 | 2023-04-28 | CP-P3-05-08-SD-0000 |  |  |  | 81d | 0d | start on or after 2023-02-13 |  | UDF_G1 | Yes | Yes | FL4 | deliv |  | FL4-REVA | 03 | FL4 | FNTP | P3 |  |  | 1 |  |  |  | Kevin |  |  |  |  |  |  |  |  |
| CP-P3-05-08-SW-0010 |  | Review Draft Rev A - ER Section 5.08 (TO4 Team Review) | 10d | 2023-05-01 | 2023-05-12 | CP-P3-05-08-SW-0000 |  |  |  | 81d | 0d |  |  | UDF_G1 | Yes | Yes | FL4 | deliv |  |  | 03 | TO4 | FNTP |  |  |  | 2 |  |  |  |  |  |  |  |  |  |  |  |  |
| CP-P3-05-08-SW-0015 |  | Resolve Rev A Comments - ER Section 05.08 | 5d | 2023-05-15 | 2023-05-19 | CP-P3-05-08-SW-0010 |  |  |  | 111d | 0d |  |  | UDF_G1 | Yes | Yes | FL4 | deliv |  |  | 03 | FL4 | FNTP |  |  |  | 3 |  |  |  | Kevin |  |  |  |  |  |  |  |  |
| CP-P3-05-08-SW-0020 |  | Issue Rev 0 - ER Section 05.08 | 5d | 2023-05-22 | 2023-05-26 | CP-P3-05-08-SW-0015 |  |  |  | 111d | 93d |  |  | UDF_G1 | Yes | Yes | FL4 | deliv |  |  | 03 | FL4 | FNTP |  |  |  | 5 | N/A | FL4-REV0 | No SDA | Kevin |  |  |  |  |  |  |  |  |
|  | 09 | **CFPP - COLA Prep - Pt 03 - Chap 05 - Sec 9 Radiological Health Normal Operation & Rad Waste Mgmt** |  | 2023-07-12 | 2023-10-04 |  |  |  |  |  |  |  |  |  |  |  |  |  |  |  |  |  |  |  |  |  |  |  |  |  |  |  |  |  |  |  |  |  |  |
|  | 01 | **CFPP - COLA Prep - Part 03 - Chapter 05 - Section 09 - Support Document** |  |  |  |  |  |  |  |  |  |  |  |  |  |  |  |  |  |  |  |  |  |  |  |  |  |  |  |  |  |  |  |  |  |  |  |  |  |
|  | 02 | **CFPP - COLA Prep - Part 03 - Chapter 05 - Section 09 - Section Writing** |  | 2023-07-12 | 2023-10-04 |  |  |  |  |  |  |  |  |  |  |  |  |  |  |  |  |  |  |  |  |  |  |  |  |  |  |  |  |  |  |  |  |  |  |
| CP-P3-05-09-SW-0000 |  | Prepare Draft Rev A -Check Updated Supporting Documents -ER Section 5.9 | 40d | 2023-07-12 | 2023-08-23 | CP-P2-11-05-SW-0005 SS, CP-P2-12-05-SD-0000, CP-P3-03-04-SD-0005, CP-P2-11-02-SD-0010, CP-P1-01-01-SD-0005, CP-P2-12-04-SW-0015, CP-P2-13-03-SD-0065 |  | 2023-07-12 | 2023-09-06 | 0d |  | start on or after 2023-07-12 |  |  | Yes | Yes | NUSCALE | deliv |  | NS-REVA | 03 | NuScale | FNTP | P3 | 5 | 9.0 | 1 |  |  |  |  |  |  | CP-2 | 2023-08-23 | 2023-07-12 |  |  |  |
| CP-P3-05-09-SW-0005 |  | Review Draft Rev A - ER Section 5.9 (TO4 Team Review) | 10d | 2023-08-24 | 2023-09-07 | CP-P3-05-09-SW-0000 |  |  |  | 0d |  |  |  | UDF_G1 | Yes | Yes | NUSCALE | deliv |  |  | 03 | TO4 | FNTP | P3 |  |  | 2 |  |  |  |  |  |  | CP-2 |  |  |  |  |  |
| CP-P3-05-09-SW-0010 |  | Resolve Rev A Comments - ER Section 5.9 | 5d | 2023-09-08 | 2023-09-14 | CP-P3-05-09-SW-0005 |  |  |  | 21d | 0d |  |  |  | Yes | Yes | NUSCALE | deliv |  |  | 03 | NuScale | FNTP | P3 | 5 | 9.0 | 3 |  |  |  |  |  |  |  |  |  |  |  |  |
| CP-P3-05-09-SW-0015 |  | Issue Rev 0 - ER Section 5.9 | 5d | 2023-09-15 | 2023-10-04 | CP-P3-05-09-SW-0010 |  | 2023-09-15 | 2023-09-21 | 21d | 3d |  |  |  | Yes | Yes | NUSCALE | deliv |  |  | 03 | NuScale | FNTP | P3 | 5 | 9.0 | 5 | N/A | NS-REV0 | No SDA |  |  |  |  |  |  | 56COL.P2.CH | nuscalex | As of 29nov22 finish slip from 20sep23 |
|  | 10 | **CFPP - COLA Prep - Part 03 - Chapter 05 - Section 10 Nonradioactive Waste Management** |  | 2023-04-10 | 2023-07-11 |  |  |  |  |  |  |  |  |  |  |  |  |  |  |  |  |  |  |  |  |  |  |  |  |  |  |  |  |  |  |  |  |  |  |
|  | 01 | **CFPP - COLA Prep - Part 03 - Chapter 05 - Section 10 - Support Documents** |  | 2023-04-10 | 2023-05-19 |  |  |  |  |  |  |  |  |  |  |  |  |  |  |  |  |  |  |  |  |  |  |  |  |  |  |  |  |  |  |  |  |  |  |
| CP-P3-05-10-SD-0000 |  | Conduct Operation Assessment of Nonradioactive Waste Management | 30d | 2023-04-10 | 2023-05-19 | CP-P3-03-04-SW-0005, CP-P2-11-04-SW-0005 |  |  |  | 41d | 0d |  |  | UDF_G1 | Yes | Yes | FL4 | supt |  |  | 03 | FL4 | FNTP | P3 |  |  |  |  |  |  |  |  |  |  |  |  |  |  |  |
|  | 02 | **CFPP - COLA Prep - Part 03 - Chapter 05 - Section 10 - Section Writing** |  | 2023-05-22 | 2023-07-11 |  |  |  |  |  |  |  |  |  |  |  |  |  |  |  |  |  |  |  |  |  |  |  |  |  |  |  |  |  |  |  |  |  |  |
| CP-P3-05-10-SW-0000 |  | Prepare Draft Rev A -Check Updated Supporting Documents -ER Section 5.10 | 15d | 2023-05-22 | 2023-06-12 | CP-P3-05-10-SD-0000 |  |  |  | 51d | 0d |  |  | UDF_G1 | Yes | Yes | FL4 | deliv |  | FL4-REVA | 03 | FL4 | FNTP | P3 |  |  | 1 |  |  |  |  |  |  |  |  |  |  |  |  |
| CP-P3-05-10-SW-0005 |  | Review Draft Rev A - ER Section 5.10 (TO4 Team Review) | 10d | 2023-06-13 | 2023-06-26 | CP-P3-05-10-SW-0000 |  |  |  | 51d | 0d |  |  | UDF_G1 | Yes | Yes | FL4 | deliv |  |  | 03 | TO4 | FNTP | P3 |  |  | 2 |  |  |  |  |  |  |  |  |  |  |  |  |
| CP-P3-05-10-SW-0010 |  | Resolve Rev A Comments - ER Section 5.10 | 5d | 2023-06-27 | 2023-07-03 | CP-P3-05-10-SW-0005 |  |  |  | 81d | 0d |  |  | UDF_G1 | Yes | Yes | FL4 | deliv |  |  | 03 | FL4 | FNTP | P3 |  |  | 3 |  |  |  |  |  |  |  |  |  |  |  |  |
| CP-P3-05-10-SW-0015 |  | Issue Rev 0 - ER Section 5.10 | 5d | 2023-07-05 | 2023-07-11 | CP-P3-05-10-SW-0010 |  |  |  | 81d | 63d |  |  | UDF_G1 | Yes | Yes | FL4 | deliv |  |  | 03 | FL4 | FNTP | P3 |  |  | 5 | N/A | FL4-REV0 | No SDA |  |  |  |  |  |  |  |  |  |

Notes:
- CP-P3-05-08-SD-0000: 12B DEC EOM Notes: as of 30dec22 updated
- CP-P3-05-08-SW-0000: 12B DEC EOM Notes: As of 30dec22 delayed
- CP-P3-05-09-SW-0000: Schedule Notes: Need to supply Operation Radiological monoting by / October 2022 to support baseline schedule. / 12A DEC MIDMONTH Notes: As of 12dec22 Nuscale update ignores predecessor finish (revise pred sd-0010 to ss) / 12B DEC EOM Notes: as of 30dec22 updated start pushed out by P2-09-01-sw-0005 1st mitigation (removed pred) start pushed out by p2-11-03-sd-0010 2nd mitigation (removed pred)

| ID | WBS | Activity | Duration | Start | Finish | Predecessors | Planned start | Planned finish | Total float | Free float | Constraint | zText_02 | zText_Level 3 Schedule | Rebaseline details | doc type | nuscale comp | PREPDRFTREVA | Forecast Finish | Forecast Start | CFPP, LLC WBS Structure | Author | Period of Performance | Part | Chapter | Section | activity step | UDF Indicator 01 | Nuscale ACT Number | SDA ACT | REV0 - SDA | SDA needed | Deliverable Owner | zText_RFI | Other | UDF Text 02 |
| --- | --- | --- | --- | --- | --- | --- | --- | --- | --- | --- | --- | --- | --- | --- | --- | --- | --- | --- | --- | --- | --- | --- | --- | --- | --- | --- | --- | --- | --- | --- | --- | --- | --- | --- | --- |
|  | 11 | **CFPP - COLA Prep - Part 03 - Chapter 05 - Section 11 Enviro Impacts of Postulated Accidents** |  | 2023-05-01 | 2023-10-09 |  |  |  |  |  |  |  |  |  |  |  |  |  |  |  |  |  |  |  |  |  |  |  |  |  |  |  |  |  |  |
|  | 01 | **CFPP - COLA Prep - Part 03 - Chapter 05 - Section 11 - Support Documents** |  |  |  |  |  |  |  |  |  |  |  |  |  |  |  |  |  |  |  |  |  |  |  |  |  |  |  |  |  |  |  |  |  |
|  | 02 | **CFPP - COLA Prep - Part 03 - Chapter 05 - Section 11 - Section Writing** |  | 2023-05-01 | 2023-10-09 |  |  |  |  |  |  |  |  |  |  |  |  |  |  |  |  |  |  |  |  |  |  |  |  |  |  |  |  |  |  |
| CP-P3-05-11-SW-0000 |  | Prepare Draft Rev A -Check Updated Supporting Documents -ER Section 5.11 | 100d | 2023-05-01 | 2023-08-18 | CP-P2-11-01-SW-0000 FF, CP-P2-11-03-SD-0020 FF, CP-P2-19-01-SD-0180 FF | 2023-05-01 | 2023-09-20 | 13d | 0d | start on or after 2023-05-01 | Yes | Yes | NUSCALE | deliv | nuscalex5.11 | NS-REVA | 2023-08-31 | 2023-05-01 | 03 | NuScale | FNTP | P3 | 5 | 11 | 1 |  |  |  |  |  |  |  |  |  |
| CP-P3-05-11-SW-0005 |  | Review Draft Rev A - ER Section 5.11 (TO4 Team Review) | 10d | 2023-08-21 | 2023-09-01 | CP-P3-05-11-SW-0000 |  |  | 18d | 0d |  | Yes | Yes | NUSCALE | deliv | nuscalex5.11 |  |  |  | 03 | TO4 | FNTP | P3 |  |  | 2 | UDF_G1 |  |  |  |  |  |  |  |  |
| CP-P3-05-11-SW-0010 |  | Resolve Rev A Comments - ER Section 5.11 | 5d | 2023-09-05 | 2023-09-11 | CP-P3-05-11-SW-0005 |  |  | 18d | 0d |  | Yes | Yes | NUSCALE | deliv | nuscalex5.11 |  |  |  | 03 | NuScale | FNTP | P3 | 5 | 11 | 3 |  |  |  |  |  |  |  |  |  |
| CP-P3-05-11-SW-0015 |  | Issue Rev 0 - ER Section 5.11 | 5d | 2023-09-12 | 2023-10-09 | CP-P3-05-11-SW-0010 | 2023-09-12 | 2023-09-18 | 18d | 0d |  | Yes | Yes | NUSCALE | deliv | nuscalex5.11 |  |  |  | 03 | NuScale | FNTP | P3 | 5 | 11 | 5 |  | 56COL.P2.CH | N/A | NS-REV0 | No SDA |  |  |  |  |
|  | 12 | **CFPP - COLA Prep - Pt 03 - Chap 05 - Sec 12 Measures & Controls to Limit Adverse Impacts During Ops** |  | 2023-05-22 | 2023-09-25 |  |  |  |  |  |  |  |  |  |  |  |  |  |  |  |  |  |  |  |  |  |  |  |  |  |  |  |  |  |  |
|  | 01 | **CFPP - COLA Prep - Part 03 - Chapter 05 - Section 12 - Supports Documents** |  | 2023-05-22 | 2023-07-03 |  |  |  |  |  |  |  |  |  |  |  |  |  |  |  |  |  |  |  |  |  |  |  |  |  |  |  |  |  |  |
| CP-P3-05-12-SD-0005 |  | Provide Environmental Measures Description / Controls to Limit Adverse Impacts During Operation | 30d | 2023-05-22 | 2023-07-03 | CP-P3-05-02-SD-0000, CP-P3-05-10-SD-0000 |  |  | 41d | 28d |  | Yes | Yes | FL4 | supt |  |  |  |  | 03 | FL4 | FNTP | P3 |  |  |  | UDF_G1 |  |  |  |  | Kevin |  |  |  |
|  | 02 | **CFPP - COLA Prep - Part 03 - Chapter 05 - Section 12 - Section Writing** |  | 2023-08-14 | 2023-09-25 |  |  |  |  |  |  |  |  |  |  |  |  |  |  |  |  |  |  |  |  |  |  |  |  |  |  |  |  |  |  |
| CP-P3-05-12-SW-0000 |  | Prepare Draft Rev A -Check Updated Supporting Documents -ER Section 5.12 | 10d | 2023-08-14 | 2023-08-25 | CP-P3-05-12-SD-0005, CP-P3-05-11-SW-0000 FF+5d |  |  | 13d | 0d |  | Yes | Yes | FL4 | deliv |  | FL4-REVA |  |  | 03 | FL4 | FNTP | P3 |  |  | 1 | UDF_G1 |  |  |  |  | Kevin |  |  |  |
| CP-P3-05-12-SW-0005 |  | Review Draft Rev A - ER Section 5.12 (TO4 Team Review) | 10d | 2023-08-28 | 2023-09-11 | CP-P3-05-12-SW-0000 |  |  | 13d | 0d |  | Yes | Yes | FL4 | deliv |  |  |  |  | 03 | TO4 | FNTP | P3 |  |  | 2 | UDF_G1 |  |  |  |  |  |  |  |  |
| CP-P3-05-12-SW-0010 |  | Resolve Rev A Comments - ER Section 5.12 | 5d | 2023-09-12 | 2023-09-18 | CP-P3-05-12-SW-0005 |  |  | 28d | 0d |  | Yes | Yes | FL4 | deliv |  |  |  |  | 03 | FL4 | FNTP | P3 |  |  | 3 | UDF_G1 |  |  |  |  | Kevin |  |  |  |
| CP-P3-05-12-SW-0015 |  | Issue Rev 0 - ER Section 5.12 | 5d | 2023-09-19 | 2023-09-25 | CP-P3-05-12-SW-0010 |  |  | 28d | 10d |  | Yes | Yes | FL4 | deliv |  |  |  |  | 03 | FL4 | FNTP | P3 |  |  | 5 | UDF_G1 |  | N/A | FL4-REV0 | No SDA | Kevin |  |  |  |
|  | 06 | **CFPP - COLA Prep - Part 03 - Chapter 06 Fuel Cycle, Transpo, & Decomm Impacts** |  | 2022-11-21 | 2023-10-24 |  |  |  |  |  |  |  |  |  |  |  |  |  |  |  |  |  |  |  |  |  |  |  |  |  |  |  |  |  |  |
|  | 01 | **CFPP - COLA Prep - Part 03 - Chapter 06 - Section 1 Fuel-Cycle Impacts & Waste Management** |  | 2023-03-24 | 2023-06-22 |  |  |  |  |  |  |  |  |  |  |  |  |  |  |  |  |  |  |  |  |  |  |  |  |  |  |  |  |  |  |
|  | 01 | **CFPP - COLA Prep - Part 03 - Chapter 06 - Section 1 - Support Documents** |  | 2023-03-24 | 2023-05-17 |  |  |  |  |  |  |  |  |  |  |  |  |  |  |  |  |  |  |  |  |  |  |  |  |  |  |  |  |  |  |
| CP-P3-06-01-SD-0000 |  | Provide Uranium Fuel Cycle Info / Solid Waste Management | 20d | 2023-03-24 | 2023-04-20 | PKM-0000, CP-P2-11-01-SW-0000, CP-P2-11-04-SW-0015 SS |  |  | 88d | 0d |  | Yes | Yes | FL4 | supt |  |  |  |  | 03 | FL4 | FNTP | P3 |  |  |  | UDF_G3 |  |  |  |  |  | RFI 102 |  |  |
| CP-P3-06-01-SD-0005 |  | Provide Environmental Impact Assessment of Uranium Fuel Cycle / Solid Waste Management | 20d | 2023-03-24 | 2023-04-20 | CP-P3-06-01-SD-0000 SS |  |  | 88d | 0d |  | Yes | Yes | FL4 | supt |  |  |  |  | 03 | FL4 | FNTP | P3 |  |  |  | UDF_G3 |  |  |  |  |  |  |  |  |
| CP-P3-06-01-SD-0006 |  | Provide Envir Impact Assessment of Uranium Fuel Cycle Info / Solid Waste Mgmt - TO4 External Review / Comments Received | 5d | 2023-04-21 | 2023-05-03 | CP-P3-06-01-SD-0005 | 2023-04-21 | 2023-04-27 | 88d | 0d |  |  |  |  | supt |  |  |  |  |  | S&L |  |  |  |  |  |  |  |  |  |  |  |  | cal |  |
| CP-P3-06-01-SD-0007 |  | Provide Envir Impact Assesment of Uranium Fuel Cycle Info / Solid Waste Mgmt - Comment Resolution / Issue Final | 10d | 2023-05-04 | 2023-05-17 | CP-P3-06-01-SD-0006 |  |  | 88d | 0d |  |  |  |  | supt |  |  |  |  |  | S&L |  |  |  |  |  |  |  |  |  |  |  |  | cal |  |
|  | 02 | **CFPP - COLA Prep - Part 03 - Chapter 06 - Section 1 - Section Writing** |  | 2023-04-27 | 2023-06-22 |  |  |  |  |  |  |  |  |  |  |  |  |  |  |  |  |  |  |  |  |  |  |  |  |  |  |  |  |  |  |
| CP-P3-06-01-SW-0000 |  | Prepare Draft Rev A -Check Updated Supporting Documents -ER Section 6.1 | 15d | 2023-04-27 | 2023-05-17 | CP-P3-06-01-SD-0005, CP-P3-06-01-SD-0007 FF |  |  | 88d | 0d |  | Yes | Yes | FL4 | deliv |  | FL4-REVA |  |  | 03 | FL4 | FNTP | P3 |  |  | 1 | UDF_G3 |  |  |  |  |  |  |  |  |
| CP-P3-06-01-SW-0005 |  | Review Draft Rev A - ER Section 6.1 (TO4 Team Review) | 10d | 2023-05-18 | 2023-06-01 | CP-P3-06-01-SW-0000 |  |  | 93d | 0d |  | Yes | Yes | FL4 | deliv |  |  |  |  | 03 | TO4 | FNTP | P3 |  |  | 2 | UDF_G1 |  |  |  |  |  |  |  |  |
| CP-P3-06-01-SW-0010 |  | Resolve Rev A Comments - ER Section 6.1 | 10d | 2023-06-02 | 2023-06-15 | CP-P3-06-01-SW-0005 |  |  | 93d | 0d |  | Yes | Yes | FL4 | deliv |  |  |  |  | 03 | FL4 | FNTP | P3 |  |  | 3 | UDF_G1 |  |  |  |  |  |  |  |  |
| CP-P3-06-01-SW-0015 |  | Issue Rev 0 - ER Section 6.1 | 5d | 2023-06-16 | 2023-06-22 | CP-P3-06-01-SW-0010 |  |  | 93d | 86d |  | Yes | Yes | FL4 | deliv |  |  |  |  | 03 | FL4 | FNTP | P3 |  |  | 5 | UDF_G1 |  | N/A | FL4-REV0 | No SDA |  |  |  | Duration was 10 days. |

Notes:
- CP-P3-05-11-SW-0000: 10A OCT MIDMONTH Notes: oct update tie COL Item 11.03-01 - Gaseous rad waste cost benefit analysis methodology and results as predecessor / 11B NOV EOM Notes: As of 29nov22 start slip from 11apr23 duration reduced from 100d / 12A DEC MIDMONTH Notes: As of 12dec22 Nuscale update ignores predecessor finish (revise pred sd-0020 to ss) remove pred p2-11-03-sw-0015 FF
- CP-P3-05-11-SW-0015: 11B NOV EOM Notes: As of 29nov22 pred start slip from 28sep23
- CP-P3-05-12-SD-0005: Schedule Notes: Need the Meterological / Air Resource Impact Operations / Assement from ER 5.7 / Need the Radiological Assement for ER / 5.9
- CP-P3-06-01-SD-0005: 10B OCT EOM Notes: oct update question pred didn't move but this date moving earlier change from FS
- CP-P3-06-01-SW-0015: 10A OCT MIDMONTH Notes: oct update Issue Rev 0 sect 11.04 finish date moved out

| ID | WBS | Activity | Duration | Start | Finish | Predecessors | Complete | Remaining | Planned start | Planned finish | Total float | Free float | Expected finish | zText_02 | zText_Level 3 Schedule | Rebaseline details | doc type | nuscale comp | PREPDRFTREVA | CFPP, LLC WBS Structure | Author | Period of Performance | Part | Chapter | Section | activity step | UDF Indicator 01 | Nuscale ACT Number | SDA ACT | REV0 - SDA | SDA needed | Deliverable Owner | VERIFIED MONTHLY UPDATE | 9A SEP EOM Notes | Monthly Variance | 11B NOV EOM Notes | 12B DEC EOM Notes | zText_RFI | Other | cfpp two week acts | 10B OCT EOM Notes | 11A NOV MIDMONTH Notes | COLA Critical Path Sched | Critcal Path | z_Text-4 | CFPP - Contractor's Remarks |
| --- | --- | --- | --- | --- | --- | --- | --- | --- | --- | --- | --- | --- | --- | --- | --- | --- | --- | --- | --- | --- | --- | --- | --- | --- | --- | --- | --- | --- | --- | --- | --- | --- | --- | --- | --- | --- | --- | --- | --- | --- | --- | --- | --- | --- | --- | --- |
|  | 02 | **CFPP - COLA Prep - Part 03 - Chapter 06 - Section 2 Transportation of Fuel & Wastes** |  | 2023-08-01 | 2023-10-24 |  |  |  |  |  |  |  |  |  |  |  |  |  |  |  |  |  |  |  |  |  |  |  |  |  |  |  |  |  |  |  |  |  |  |  |  |  |  |  |  |  |
|  | 01 | **CFPP - COLA Prep - Part 03 - Chapter 06 - Section 2 - Support Documents** |  |  |  |  |  |  |  |  |  |  |  |  |  |  |  |  |  |  |  |  |  |  |  |  |  |  |  |  |  |  |  |  |  |  |  |  |  |  |  |  |  |  |  |  |
|  | 02 | **CFPP - COLA Prep - Part 03 - Chapter 06 - Section 2 - Section Writing** |  | 2023-08-01 | 2023-10-24 |  |  |  |  |  |  |  |  |  |  |  |  |  |  |  |  |  |  |  |  |  |  |  |  |  |  |  |  |  |  |  |  |  |  |  |  |  |  |  |  |  |
| CP-P3-06-02-SW-0000 |  | Prepare Draft Rev A -Check Updated Supporting Documents -ER Section 6.2 | 40d | 2023-08-01 | 2023-09-26 | CP-P2-09-01-SD-0000, CP-P2-09-01-SD-0100 FF |  |  |  |  | 7d | 0d |  | Yes | Yes | NUSCALE | deliv | nuscalex6.2 | NS-REVA | 03 | NuScale | FNTP | P3 | 6 | 2.0 | 1 |  |  |  |  |  |  |  |  |  |  |  |  |  |  |  |  |  |  |  |  |
| CP-P3-06-02-SW-0005 |  | Review Draft Rev A - ER Section 6.2 (TO4 Team Review) | 10d | 2023-09-27 | 2023-10-10 | CP-P3-06-02-SW-0000 |  |  |  |  | 7d | 0d |  | Yes | Yes | NUSCALE | deliv | nuscalex6.2 |  | 03 | TO4 | FNTP | P3 |  |  | 2 | UDF_G1 |  |  |  |  |  |  |  |  |  |  |  |  |  |  |  |  |  |  |  |
| CP-P3-06-02-SW-0010 |  | Resolve Rev A Comments - ER Section 6.2 | 5d | 2023-10-11 | 2023-10-17 | CP-P3-06-02-SW-0005 |  |  |  |  | 7d | 0d |  | Yes | Yes | NUSCALE | deliv | nuscalex6.2 |  | 03 | NuScale | FNTP | P3 | 6 | 2.0 | 3 |  |  |  |  |  |  |  |  |  |  |  |  |  |  |  |  |  |  |  |  |
| CP-P3-06-02-SW-0015 |  | Issue Rev 0 - ER Section 6.2 | 5d | 2023-10-18 | 2023-10-24 | CP-P3-06-02-SW-0010 |  |  |  |  | 7d | 0d |  | Yes | Yes | NUSCALE | deliv | nuscalex6.2 |  | 03 | NuScale | FNTP | P3 | 6 | 2.0 | 5 |  | 56COL.P2.CH | N/A | NS-REV0 | No SDA |  |  |  |  |  |  |  |  |  |  |  |  |  |  |  |
|  | 03 | **CFPP - COLA Prep - Part 03 - Chapter 06 - Section 3 Decommissioning** |  | 2022-11-21 | 2023-06-01 |  |  |  |  |  |  |  |  |  |  |  |  |  |  |  |  |  |  |  |  |  |  |  |  |  |  |  |  |  |  |  |  |  |  |  |  |  |  |  |  |  |
|  | 01 | **CFPP - COLA Prep - Part 03 - Chapter 06 - Section 3 - Support Documents** |  | 2022-11-21 | 2023-04-12 |  |  |  |  |  |  |  |  |  |  |  |  |  |  |  |  |  |  |  |  |  |  |  |  |  |  |  |  |  |  |  |  |  |  |  |  |  |  |  |  |  |
| CP-P3-06-03-SD-0000 |  | Provide Decommissioning Funding Info | 30d | 2022-11-21 A | 2022-12-02 A | CP-P1-01-01-SD-0005 FF, IFM-CFP-TO4-0050 | 100% |  | 2022-11-21 | 2023-01-03 |  |  |  | Yes | Yes | FL4 | supt |  |  | 03 | FL4 | FNTP | P3 |  |  |  | UDF_G3 |  |  |  |  | Matt | X | Sep update slips start from 30sep due to pred slip CFPP | Oct | As of 29nov22 started | as of 30dec22 updated |  |  |  |  |  |  |  |  |  |
| CP-P3-06-03-SD-0005 |  | Provide Decommissioning NuScale Standard Plant Info | 30d | 2022-11-21 A | 2023-01-03 | CP-P1-01-01-SD-0005 FF |  | 2d |  |  | 139d | 0d | 2023-01-03 | Yes | Yes | FL4 | supt |  |  | 03 | FL4 | FNTP | P3 |  |  |  | UDF_G3 |  |  |  |  | Matt | X | Sep update slips start from 30sep due to pred slip CFPP |  | As of 29nov22 started |  |  |  |  |  |  |  |  |  |  |
| CP-P3-06-03-SD-0010 |  | Provide Decommissioning CFPP Plant Info | 30d | 2023-03-02 | 2023-04-12 | CP-P3-06-03-SD-0000, CP-P3-06-03-SD-0005, CP-P2-04-01-SW-0005 |  |  |  |  | 98d | 0d |  | Yes | Yes | FL4 | supt |  |  | 03 | FL4 | FNTP | P3 |  |  |  | UDF_G3 |  |  |  |  | Matt |  |  |  |  |  |  |  |  |  |  |  |  |  |  |
|  | 02 | **CFPP - COLA Prep - Part 03 - Chapter 06 - Section 3 - Section Writing** |  | 2023-04-13 | 2023-06-01 |  |  |  |  |  |  |  |  |  |  |  |  |  |  |  |  |  |  |  |  |  |  |  |  |  |  |  |  |  |  |  |  |  |  |  |  |  |  |  |  |  |
| CP-P3-06-03-SW-0000 |  | Prepare Draft Rev A -Check Updated Supporting Documents -ER Section 6.3 | 15d | 2023-04-13 | 2023-05-03 | CP-P3-06-03-SD-0010 |  |  |  |  | 98d | 0d |  | Yes | Yes | FL4 | deliv |  | FL4-REVA | 03 | FL4 | FNTP | P3 |  |  | 1 | UDF_G3 |  |  |  |  |  |  |  |  |  |  |  |  |  |  |  |  |  |  |  |
| CP-P3-06-03-SW-0005 |  | Review Draft Rev A - ER Section 6.3 (TO4 Team Review) | 10d | 2023-05-04 | 2023-05-17 | CP-P3-06-03-SW-0000 |  |  |  |  | 108d | 0d |  | Yes | Yes | FL4 | deliv |  |  | 03 | TO4 | FNTP | P3 |  |  | 2 | UDF_G1 |  |  |  |  |  |  |  |  |  |  |  |  |  |  |  |  |  |  |  |
| CP-P3-06-03-SW-0010 |  | Resolve Rev A Comments - ER Section 6.3 | 5d | 2023-05-18 | 2023-05-24 | CP-P3-06-03-SW-0005 |  |  |  |  | 108d | 0d |  | Yes | Yes | FL4 | deliv |  |  | 03 | FL4 | FNTP | P3 |  |  | 3 | UDF_G1 |  |  |  |  |  |  |  |  |  |  |  |  |  |  |  |  |  |  |  |
| CP-P3-06-03-SW-0015 |  | Issue Rev 0 - ER Section 6.3 | 5d | 2023-05-25 | 2023-06-01 | CP-P3-06-03-SW-0010 |  |  |  |  | 108d | 101d |  | Yes | Yes | FL4 | deliv |  |  | 03 | FL4 | FNTP | P3 |  |  | 5 | UDF_G1 |  | N/A | FL4-REV0 | No SDA |  |  |  |  |  |  |  |  |  |  |  |  |  |  |  |
|  | 07 | **CFPP - COLA Prep - Part 03 - Chapter 07 Cumulative Impacts** |  | 2022-06-23 | 2023-11-02 |  |  |  |  |  |  |  |  |  |  |  |  |  |  |  |  |  |  |  |  |  |  |  |  |  |  |  |  |  |  |  |  |  |  |  |  |  |  |  |  |  |
|  | 01 | **CFPP - COLA Prep - Part 03 - Chapter 07 - Section 1 Cumulative Impacts** |  | 2022-06-23 | 2023-11-02 |  |  |  |  |  |  |  |  |  |  |  |  |  |  |  |  |  |  |  |  |  |  |  |  |  |  |  |  |  |  |  |  |  |  |  |  |  |  |  |  |  |
|  | 01 | **CFPP - COLA Prep - Part 03 - Chapter 07 - Section 1 - Support Document** |  | 2022-06-23 | 2023-10-05 |  |  |  |  |  |  |  |  |  |  |  |  |  |  |  |  |  |  |  |  |  |  |  |  |  |  |  |  |  |  |  |  |  |  |  |  |  |  |  |  |  |
| CP-P3-07-01-SD-0000 |  | Provide Past, Present & Reasonably Foreseeable Future Projects near CFPP Site Info | 10d | 2022-06-23 A | 2022-08-12 A | PKM-0000, CP-P3-02-00-SD-0000 | 100% |  | 2022-08-01 | 2022-08-12 |  |  |  | Yes | Yes | FL4 | supt |  |  | 03 | S&L | FNTP | P3 | 7 | 1 |  | UDF_G3 |  |  |  |  |  |  |  |  |  |  | RFI 102 |  |  |  |  |  |  |  |  |
| CP-P3-07-01-SD-0001 |  | Provided Past, Present & Future Projects near CFPP Site Info - TO4 External Review / Comments Received | 5d | 2022-08-22 A | 2022-10-14 A | CP-P3-07-01-SD-0000 | 100% |  | 2022-08-22 | 2022-08-26 |  |  |  |  |  |  | supt |  |  |  | TO4 |  |  |  |  |  |  |  |  |  |  |  | X | Sep update 14oct finish |  |  |  |  | cal | x | oct update based opn S&Lupdate |  |  |  |  |  |
| CP-P3-07-01-SD-0002 |  | Provide Past, Present & Reasonably Foreseeable Future Projects near CFPP Site Info - Comment Resolution / Issue Final | 5d | 2022-10-19 A | 2022-11-02 A | CP-P3-07-01-SD-0001 | 100% |  | 2022-10-17 | 2022-10-21 |  |  |  |  |  |  | supt |  |  |  | S&L |  |  |  |  |  |  |  |  |  |  |  | X | Sep update | Oct | As of 29nov22 complete |  |  | cal |  | oct update finish slip from 28oct22 | As of 15nov 22 complete 2nov |  |  |  |  |
| CP-P3-07-01-SD-0005 |  | S&L Provide Support for Conduct Cumulative Impacts Assessment | 10d | 2023-08-24 | 2023-09-07 | CP-P3-05-10-SW-0005 FF, CP-P3-05-09-SW-0005 FF, CP-P3-05-08-SW-0010 FF, CP-P3-05-07-SW-0005 FF, CP-P3-05-06-SW-0005 FF, CP-P3-05-05-SW-0005 FF, CP-P3-05-04-SW-0005 FF, CP-P3-05-03-SW-0005 FF, CP-P3-05-02-SW-0005 FF, CP-P3-05-01-SW-0005 FF, CP-P3-04-10-SW-0005 FF, CP-P3-04-09-SW-0005 FF, CP-P3-04-08-SW-0005 FF, CP-P3-04-07-SW-0005 FF, CP-P3-04-06-SW-0005 FF, CP-P3-04-05-SW-0005 FF, CP-P3-04-04-SW-0005 FF, CP-P3-04-03-SW-0005 FF, CP-P3-04-02-SW-0005 FF, CP-P3-04-01-SW-0005 FF |  |  |  |  | 0d |  |  | Yes | Yes | S&L | supt | nuscale7 |  | 03 | S&L | FNTP | P3 |  |  |  | UDF_G1 |  |  |  |  |  |  |  |  |  | as of 30dec22 updated S&L Support Only |  |  |  |  |  | 1 | 1 | CP-2 | as of 30dec22 updated S&L Support Only |
| CP-P3-07-01-SD-0006 |  | Conduct Cumulative Impacts Assessment - TO4 External Review / Comments Received | 5d | 2023-09-08 | 2023-09-21 | CP-P3-07-01-SD-0005 |  |  | 2023-09-08 | 2023-09-14 | 0d |  |  |  |  |  | supt |  |  |  | S&L |  |  |  |  |  |  |  |  |  |  |  |  |  |  |  |  |  | cal |  |  |  | 1 | 1 |  |  |
| CP-P3-07-01-SD-0007 |  | S&L Provide Support for Conduct Cumulative Impacts Assessment - Comment Resolution / Issue Final | 10d | 2023-09-22 | 2023-10-05 | CP-P3-07-01-SD-0006 |  |  |  |  | 0d |  |  |  |  |  | supt |  |  |  | S&L |  |  |  |  |  |  |  |  |  |  |  |  |  |  |  | as of 30dec22 updated S&L Support Only |  | cal |  |  |  | 1 | 1 |  | as of 30dec22 updated S&L Support Only |

Notes:
- CP-P3-06-02-SW-0015: 10A OCT MIDMONTH Notes: oct update pushed out by 9.1sd-0100 delivery
- CP-P3-06-03-SD-0000: 12A DEC MIDMONTH Notes: As of 12dec22 remove pred IFM-CFP-TO4-0080 causing OOS issues
- CP-P3-06-03-SD-0010: 10A OCT MIDMONTH Notes: oct update pushed out by Draft Rev A FSAR chpt 4 (TO4 review)
- CP-P3-06-03-SW-0015: 10A OCT MIDMONTH Notes: oct update pushed by Draft Rev A FSAR chpt 4 (TO4 review)

| ID | WBS | Activity | Duration | Start | Finish | Predecessors | Complete | Remaining | Planned start | Planned finish | Total float | Free float | Constraint | Expected finish | UDF Indicator 01 | zText_02 | COLA Critical Path Sched | Critcal Path | z_Text-4 | zText_Level 3 Schedule | Rebaseline details | doc type | PREPDRFTREVA | CFPP, LLC WBS Structure | Author | Period of Performance | Part | activity step | SDA ACT | REV0 - SDA | SDA needed | Deliverable Owner | VERIFIED MONTHLY UPDATE | 9A SEP EOM Notes | Monthly Variance | cfpp two week acts | 12B DEC EOM Notes | CFPP - Contractor's Remarks | zText_RFI | 10A OCT MIDMONTH Notes |
| --- | --- | --- | --- | --- | --- | --- | --- | --- | --- | --- | --- | --- | --- | --- | --- | --- | --- | --- | --- | --- | --- | --- | --- | --- | --- | --- | --- | --- | --- | --- | --- | --- | --- | --- | --- | --- | --- | --- | --- | --- |
|  | 02 | **CFPP - COLA Prep - Part 03 - Chapter 07 - Section 1 - Section Writing** |  | 2023-09-22 | 2023-11-02 |  |  |  |  |  |  |  |  |  |  |  |  |  |  |  |  |  |  |  |  |  |  |  |  |  |  |  |  |  |  |  |  |  |  |  |
| CP-P3-07-01-SW-0000 |  | Prepare Draft Rev A -Check Updated Supporting Documents -ER Chapter 07 | 10d | 2023-09-22 | 2023-10-05 | CP-P3-07-01-SD-0005, CP-P1-01-01-SW-0010, CP-P3-07-01-SD-0000 FS+30d, CP-P3-07-01-SD-0002 FF, CP-P3-07-01-SD-0007 FF |  |  |  |  | 0d |  |  |  | UDF_G1 | Yes | 1 | 1 | CP-2 | Yes | FL4 | deliv | FL4-REVA | 03 | FL4 | FNTP | P3 | 1 |  |  |  |  |  |  |  |  |  |  |  |  |
| CP-P3-07-01-SW-0005 |  | Review Draft Rev A - ER Chapter 07 (TO4 Team Review) | 10d | 2023-10-06 | 2023-10-19 | CP-P3-07-01-SW-0000 |  |  |  |  | 0d |  |  |  | UDF_G1 | Yes |  | 1 |  | Yes | FL4 | deliv |  | 03 | TO4 | FNTP | P3 | 2 |  |  |  |  |  |  |  |  |  |  |  |  |
| CP-P3-07-01-SW-0010 |  | Resolve Rev A Comments - ER Chapter 07 | 5d | 2023-10-20 | 2023-10-26 | CP-P3-07-01-SW-0005 |  |  |  |  | 0d |  |  |  | UDF_G1 | Yes |  | 1 |  | Yes | FL4 | deliv |  | 03 | FL4 | FNTP | P3 | 3 |  |  |  |  |  |  |  |  |  |  |  |  |
| CP-P3-07-01-SW-0015 |  | Issue Rev 0 - ER Chapter 07 | 5d | 2023-10-27 | 2023-11-02 | CP-P3-07-01-SW-0010 |  |  |  |  | 0d |  |  |  | UDF_G1 | Yes |  | 1 |  | Yes | FL4 | deliv |  | 03 | FL4 | FNTP | P3 | 5 | N/A | FL4-REV0 | No SDA |  |  |  |  |  |  |  |  |  |
|  | 08 | **CFPP - COLA Prep - Part 03 - Chapter 08 Need for Power** |  | 2022-09-02 | 2023-01-16 |  |  |  |  |  |  |  |  |  |  |  |  |  |  |  |  |  |  |  |  |  |  |  |  |  |  |  |  |  |  |  |  |  |  |  |
|  | 01 | **CFPP - COLA Prep - Part 03 - Chapter 08 - Section 1 Need for Power** |  | 2022-09-02 | 2023-01-16 |  |  |  |  |  |  |  |  |  |  |  |  |  |  |  |  |  |  |  |  |  |  |  |  |  |  |  |  |  |  |  |  |  |  |  |
|  | 01 | **CFPP - COLA Prep - Part 03 - Chapter 08 - Section 1 - Support Documents** |  |  |  |  |  |  |  |  |  |  |  |  |  |  |  |  |  |  |  |  |  |  |  |  |  |  |  |  |  |  |  |  |  |  |  |  |  |  |
|  | 02 | **CFPP - COLA Prep - Part 03 - Chapter 08 - Section 1 - Section Writing** |  | 2022-09-02 | 2023-01-16 |  |  |  |  |  |  |  |  |  |  |  |  |  |  |  |  |  |  |  |  |  |  |  |  |  |  |  |  |  |  |  |  |  |  |  |
| CP-P3-08-01-SW-0000 |  | Prepare Draft Rev A -Check Updated Supporting Documents -ER Chapter 08 | 10d | 2022-09-02 A | 2022-11-22 A |  | 100% |  | 2022-09-02 | 2022-09-16 |  |  |  |  | UDF_G3 | Yes |  |  |  | Yes | FL4 | deliv | FL4-REVA | 03 | FL4 | FNTP | P3 | 1 |  |  |  | Kevin | X | Sep update finish slip from 21sep | Oct | x |  |  |  |  |
| CP-P3-08-01-SW-0005 |  | Review Draft Rev A - ER Chapter 08 (TO4 Team Review) | 10d | 2022-11-23 A | 2022-12-15 A | CP-P3-08-01-SW-0000 | 100% |  | 2022-11-23 | 2022-12-07 |  |  |  |  | UDF_G1 | Yes |  |  |  | Yes | FL4 | deliv |  | 03 | TO4 | FNTP | P3 | 2 |  |  |  |  | X |  |  |  | as of 30dec22 updated |  |  |  |
| CP-P3-08-01-SW-0010 |  | Resolve Rev A Comments - ER Chapter 08 | 5d | 2022-12-16 A | 2023-01-09 | CP-P3-08-01-SW-0005 |  | 6d | 2022-12-12 | 2022-12-16 | 205d | 0d |  | 2023-01-09 | UDF_G1 | Yes |  |  |  | Yes | FL4 | deliv |  | 03 | FL4 | FNTP | P3 | 3 |  |  |  | Kevin |  |  |  |  | as of 30dec22 updated |  |  |  |
| CP-P3-08-01-SW-0015 |  | Issue Rev 0 - ER Chapter 08 | 5d | 2023-01-10 | 2023-01-16 | CP-P3-08-01-SW-0010 |  |  |  |  | 205d | 0d |  |  | UDF_G1 | Yes |  |  |  | Yes | FL4 | deliv |  | 03 | FL4 | FNTP | P3 | 5 | N/A | FL4-REV0 | No SDA | Kevin |  |  |  |  | As of 30dec22 pred delayed | as of 30dec22 updated pred delayed |  |  |
|  | 09 | **CFPP - COLA Prep - Part 03 - Chapter 09 Environmental Impacts of Alternatives** |  | 2022-04-29 | 2023-03-20 |  |  |  |  |  |  |  |  |  |  |  |  |  |  |  |  |  |  |  |  |  |  |  |  |  |  |  |  |  |  |  |  |  |  |  |
|  | 01 | **CFPP - COLA Prep - Part 03 - Chapter 09 - Section 1 No Action Alternative** |  | 2023-02-01 | 2023-03-20 |  |  |  |  |  |  |  |  |  |  |  |  |  |  |  |  |  |  |  |  |  |  |  |  |  |  |  |  |  |  |  |  |  |  |  |
|  | 01 | **CFPP - COLA Prep - Part 03 - Chapter 09 - Section 1 - Support Documents** |  | 2023-02-01 | 2023-02-06 |  |  |  |  |  |  |  |  |  |  |  |  |  |  |  |  |  |  |  |  |  |  |  |  |  |  |  |  |  |  |  |  |  |  |  |
| CP-P3-09-01-SD-0000 |  | Provide Discussion on No Action Alternative | 30d | 2023-02-01 | 2023-02-06 | IFM-CFP-TO4-0090, IFM-CFP-TO4-0085 |  |  | 2023-02-01 | 2023-03-14 | 150d | 0d | start on or after 2022-11-30 |  | UDF_G3 | Yes |  |  |  | Yes | FL4 | supt |  | 03 | FL4 | FNTP | P3 |  |  |  |  |  | X | Sep update start slip from 2sep | Oct |  |  |  |  |  |
|  | 02 | **CFPP - COLA Prep - Part 03 - Chapter 09 - Section 1 - Section Writing** |  | 2023-02-07 | 2023-03-20 |  |  |  |  |  |  |  |  |  |  |  |  |  |  |  |  |  |  |  |  |  |  |  |  |  |  |  |  |  |  |  |  |  |  |  |
| CP-P3-09-01-SW-0000 |  | Prepare Draft Rev A -Check Updated Supporting Documents -ER Section 9.1 | 10d | 2023-02-07 | 2023-02-20 | CP-P3-09-01-SD-0000 |  |  |  |  | 150d | 0d |  |  | UDF_G3 | Yes |  |  |  | Yes | FL4 | deliv | FL4-REVA | 03 | FL4 | FNTP | P3 | 1 |  |  |  |  |  |  |  |  |  |  |  |  |
| CP-P3-09-01-SW-0005 |  | Review Draft Rev A - ER Section 9.1 (TO4 Team Review) | 10d | 2023-02-21 | 2023-03-06 | CP-P3-09-01-SW-0000 |  |  |  |  | 160d | 0d |  |  | UDF_G1 | Yes |  |  |  | Yes | FL4 | deliv |  | 03 | TO4 | FNTP | P3 | 2 |  |  |  |  |  |  |  |  |  |  |  |  |
| CP-P3-09-01-SW-0010 |  | Resolve Rev A Comments - ER Section 9.1 | 5d | 2023-03-07 | 2023-03-13 | CP-P3-09-01-SW-0005 |  |  |  |  | 160d | 0d |  |  | UDF_G1 | Yes |  |  |  | Yes | FL4 | deliv |  | 03 | FL4 | FNTP | P3 | 3 |  |  |  |  |  |  |  |  |  |  |  |  |
| CP-P3-09-01-SW-0015 |  | Issue Rev 0 - ER Section 9.1 | 5d | 2023-03-14 | 2023-03-20 | CP-P3-09-01-SW-0010 |  |  |  |  | 160d | 0d |  |  | UDF_G1 | Yes |  |  |  | Yes | FL4 | deliv |  | 03 | FL4 | FNTP | P3 | 5 | N/A | FL4-REV0 | No SDA |  |  |  |  |  |  |  |  |  |
|  | 02 | **CFPP - COLA Prep - Part 03 - Chapter 09 - Section 2 Energy Alternatives** |  | 2022-04-29 | 2023-01-27 |  |  |  |  |  |  |  |  |  |  |  |  |  |  |  |  |  |  |  |  |  |  |  |  |  |  |  |  |  |  |  |  |  |  |  |
|  | 01 | **CFPP - COLA Prep - Part 03 - Chapter 09 - Section 2 - Support Documents** |  | 2022-09-02 | 2023-01-05 |  |  |  |  |  |  |  |  |  |  |  |  |  |  |  |  |  |  |  |  |  |  |  |  |  |  |  |  |  |  |  |  |  |  |  |
| CP-P3-09-02-SD-0000 |  | Provide Existing Studies on Energy Alternatives | 30d | 2022-09-02 A | 2022-12-30 A |  | 100% |  | 2022-09-02 | 2022-10-14 |  |  |  |  | UDF_G3 | Yes |  |  |  | Yes | FL4 | supt |  | 03 | FL4 | FNTP | P3 |  |  |  |  | Kevin | X | Sep update finish slip from 30sep | Oct |  | as of 30dec22 updated |  | RFI 102 | oct update finish slip from 5oct22 |
| CP-P3-09-02-SD-0005 |  | Prepare Energy Alternatives Analysis / Evaluation | 30d | 2022-09-02 A | 2023-01-05 | CP-P3-09-02-SD-0000 SS |  | 4d | 2022-09-02 | 2022-10-14 | 128d | 2d |  |  | UDF_G3 | Yes |  |  |  | Yes | FL4 | supt |  | 03 | FL4 | FNTP | P3 |  |  |  |  | Kevin | X | Sep update finish slip from 30sep | Oct |  | As of 30dec22 pred delayed | as of 30dec22 updated pred delayed |  | oct update finish slip from 14oct22 |

Notes:
- CP-P3-08-01-SW-0000: 10B OCT EOM Notes: oct update finish slip from 21oct22 excel sheet has finish 21nov23 / 11B NOV EOM Notes: As of 29nov22 complete
- CP-P3-08-01-SW-0005: 10B OCT EOM Notes: oct update start slip out / 11B NOV EOM Notes: As of 29nov22 start slip from 22nov22
- CP-P3-09-01-SD-0000: 11B NOV EOM Notes: As of 29nov22 pred start slip out from 21nov22 (CFPP pred moving out from forecast 30nov22)
- CP-P3-09-01-SW-0005: 10B OCT EOM Notes: oct update start slip out
- CP-P3-09-02-SD-0000: 10B OCT EOM Notes: oct update finish slip from 5oct22 / 11B NOV EOM Notes: As of 29nov22 finish slip from 4nov22
- CP-P3-09-02-SD-0005: 10B OCT EOM Notes: oct update finish slip from 14oct22 / 11B NOV EOM Notes: As of 29nov22 finish slip from 4nov22

| ID | WBS | Activity | Duration | Start | Finish | Predecessors | Complete | Remaining | Planned start | Planned finish | Total float | Free float | Constraint | Expected finish | UDF Indicator 01 | zText_02 | zText_Level 3 Schedule | Deliverable Owner | Rebaseline details | doc type | 10A OCT MIDMONTH Notes | PREPDRFTREVA | 12B DEC EOM Notes | CFPP, LLC WBS Structure | Author | Period of Performance | Part | activity step | CFPP - Contractor's Remarks | SDA ACT | REV0 - SDA | SDA needed | VERIFIED MONTHLY UPDATE | 9A SEP EOM Notes | Monthly Variance | 10B OCT EOM Notes | 11B NOV EOM Notes | zText_RFI | SDA cleanup notes |
| --- | --- | --- | --- | --- | --- | --- | --- | --- | --- | --- | --- | --- | --- | --- | --- | --- | --- | --- | --- | --- | --- | --- | --- | --- | --- | --- | --- | --- | --- | --- | --- | --- | --- | --- | --- | --- | --- | --- | --- |
|  | 02 | **CFPP - COLA Prep - Part 03 - Chapter 09 - Section 2 - Section Writing** |  | 2022-04-29 | 2023-01-27 |  |  |  |  |  |  |  |  |  |  |  |  |  |  |  |  |  |  |  |  |  |  |  |  |  |  |  |  |  |  |  |  |  |  |
| CP-P3-09-02-SW-0000 |  | Prepare Draft Rev A -Check Updated Supporting Documents -ER Section 9.2 | 10d | 2022-04-29 A | 2023-01-09 | CP-P3-09-02-SD-0005 FF |  | 6d | 2022-10-06 | 2022-10-19 | 126d | 0d |  | 2023-01-09 | UDF_G3 | Yes | Yes | Kevin | FL4 | deliv | oct update moved forward | FL4-REVA | As of 30dec22 delayed | 03 | FL4 | FNTP | P3 | 1 |  |  |  |  |  |  |  |  |  |  |  |
| CP-P3-09-02-SW-0005 |  | Review Draft Rev A - ER Section 9.2 (TO4 Team Review) | 10d | 2022-12-02 A | 2023-01-13 | CP-P3-09-02-SW-0000 |  | 4d | 2022-12-02 | 2022-12-15 | 126d | 0d |  | 2023-01-13 | UDF_G1 | Yes | Yes |  | FL4 | deliv |  |  | as of 30dec22 updated | 03 | TO4 | FNTP | P3 | 2 |  |  |  |  |  |  |  |  |  |  |  |
| CP-P3-09-02-SW-0010 |  | Resolve Rev A Comments - ER Section 9.2 | 5d | 2023-01-16 | 2023-01-20 | CP-P3-09-02-SW-0005 |  |  |  |  | 196d | 0d |  |  | UDF_G1 | Yes | Yes | Kevin | FL4 | deliv |  |  | As of 30dec22 pred delayed | 03 | FL4 | FNTP | P3 | 3 | as of 30dec22 updated pred delayed |  |  |  |  |  |  |  |  |  |  |
| CP-P3-09-02-SW-0015 |  | Issue Rev 0 - ER Section 9.2 | 5d | 2023-01-23 | 2023-01-27 | CP-P3-09-02-SW-0010 |  |  |  |  | 196d | 36d |  |  | UDF_G1 | Yes | Yes | Kevin | FL4 | deliv |  |  | As of 30dec22 pred delayed | 03 | FL4 | FNTP | P3 | 5 | as of 30dec22 updated pred delayed | N/A | FL4-REV0 | No SDA |  |  |  |  |  |  |  |
|  | 03 | **CFPP - COLA Prep - Part 03 - Chapter 09 - Section 3 Site Selection Process** |  | 2022-06-01 | 2023-02-06 |  |  |  |  |  |  |  |  |  |  |  |  |  |  |  |  |  |  |  |  |  |  |  |  |  |  |  |  |  |  |  |  |  |  |
|  | 01 | **CFPP - COLA Prep - Part 03 - Chapter 09 - Section 3 - Support Documents** |  | 2022-06-01 | 2022-07-01 |  |  |  |  |  |  |  |  |  |  |  |  |  |  |  |  |  |  |  |  |  |  |  |  |  |  |  |  |  |  |  |  |  |  |
| CP-P3-09-03-SD-0000 |  | Provide Site Selection Study | 60d | 2022-06-01 A | 2022-07-01 A | IFM-CFP-TO4-0055 | 100% |  | 2022-06-01 | 2022-08-24 |  |  |  |  | UDF_G3 | Yes | Yes |  | FL4 | supt |  |  |  | 03 | FL4 | FNTP | P3 |  |  |  |  |  |  |  |  |  |  |  |  |
|  | 02 | **CFPP - COLA Prep - Part 03 - Chapter 09 - Section 3 - Section Writing** |  | 2022-08-11 | 2023-02-06 |  |  |  |  |  |  |  |  |  |  |  |  |  |  |  |  |  |  |  |  |  |  |  |  |  |  |  |  |  |  |  |  |  |  |
| CP-P3-09-03-SW-0000 |  | Prepare Draft Rev A -Check Updated Supporting Documents -ER Section 9.3 | 10d | 2022-08-11 A | 2023-01-09 | CP-P3-09-03-SD-0000 |  | 6d | 2022-08-11 | 2022-08-24 | 120d | 0d |  | 2023-01-09 | UDF_G3 | Yes | Yes |  | FL4 | deliv |  | FL4-REVA | As of 30dec22 delayed | 03 | FL4 | FNTP | P3 | 1 |  |  |  |  | X | Sep update finish slip from 30sep | Oct | oct update finish from 10oct22 | As of 29nov22 finish slip from 1dec22 |  |  |
| CP-P3-09-03-SW-0005 |  | Review Draft Rev A - ER Section 9.3 (TO4 Team Review) | 10d | 2023-01-10 | 2023-01-23 | CP-P3-09-03-SW-0000 |  |  |  |  | 120d | 0d |  |  | UDF_G1 | Yes | Yes |  | FL4 | deliv |  |  |  | 03 | TO4 | FNTP | P3 | 2 |  |  |  |  |  |  |  | oct update start slip out |  |  |  |
| CP-P3-09-03-SW-0010 |  | Resolve Rev A Comments - ER Section 9.3 | 5d | 2023-01-24 | 2023-01-30 | CP-P3-09-03-SW-0005 |  |  |  |  | 190d | 0d |  |  | UDF_G1 | Yes | Yes |  | FL4 | deliv |  |  |  | 03 | FL4 | FNTP | P3 | 3 |  |  |  |  | X | Sep update start slip from 17oct |  |  |  |  |  |
| CP-P3-09-03-SW-0015 |  | Issue Rev 0 - ER Section 9.3 | 5d | 2023-01-31 | 2023-02-06 | CP-P3-09-03-SW-0010 |  |  |  |  | 190d | 30d |  |  | UDF_G1 | Yes | Yes |  | FL4 | deliv |  |  |  | 03 | FL4 | FNTP | P3 | 5 |  | N/A | FL4-REV0 | No SDA |  |  |  |  |  |  |  |
|  | 04 | **CFPP - COLA Prep - Part 03 - Chapter 09 - Section 4 System Alternatives** |  | 2022-04-29 | 2023-03-16 |  |  |  |  |  |  |  |  |  |  |  |  |  |  |  |  |  |  |  |  |  |  |  |  |  |  |  |  |  |  |  |  |  |  |
|  | 01 | **CFPP - COLA Prep - Part 03 - Chapter 09 - Section 4 - Support Documents** |  | 2022-10-04 | 2023-02-08 |  |  |  |  |  |  |  |  |  |  |  |  |  |  |  |  |  |  |  |  |  |  |  |  |  |  |  |  |  |  |  |  |  |  |
| CP-P3-09-04-SD-0000 |  | Provide Support Systems Alternatives Analysis Info | 30d | 2022-10-04 A | 2022-10-31 A | CP-P3-09-02-SD-0000 SS | 100% |  | 2022-10-04 | 2022-11-14 |  |  |  |  | UDF_G3 | Yes | Yes |  | FL4 | supt |  |  |  | 03 | FL4 | FNTP | P3 |  |  |  |  |  | X | Sep update start slip from 2 sep |  | oct update finish moved in from 14nov22 | As of 29nov22 complete | RFI 102 |  |
| CP-P3-09-04-SD-0005 |  | Prepare Systems Alternatives Analysis | 60d | 2022-11-02 A | 2023-02-08 | CP-P3-09-04-SD-0000 |  | 28d | 2022-11-01 | 2023-01-25 | 158d | 0d |  | 2023-02-08 | UDF_G3 | Yes | Yes |  | FL4 | supt |  |  | As of 30dec22 delayed resource issue | 03 | FL4 | FNTP | P3 |  |  |  |  |  |  |  | Oct |  | As of 29nov22 started |  |  |
|  | 02 | **CFPP - COLA Prep - Part 03 - Chapter 09 - Section 4 - Section Writing** |  | 2022-04-29 | 2023-03-16 |  |  |  |  |  |  |  |  |  |  |  |  |  |  |  |  |  |  |  |  |  |  |  |  |  |  |  |  |  |  |  |  |  |  |
| CP-P3-09-04-SW-0000 |  | Prepare Draft Rev A -Check Updated Supporting Documents -ER Section 9.4 | 15d | 2022-04-29 A | 2023-02-16 | CP-P3-03-04-SD-0000 FF, CP-P3-09-04-SD-0005 FF, CP-P3-09-02-SD-0005 FF |  | 34d | 2022-11-17 | 2022-12-08 | 152d | 0d |  | 2023-02-16 | UDF_G3 | Yes | Yes |  | FL4 | deliv |  | FL4-REVA |  | 03 | FL4 | FNTP | P3 | 1 |  |  |  |  |  |  |  |  |  |  |  |
| CP-P3-09-04-SW-0005 |  | Review Draft Rev A - ER Section 9.4 (TO4 Team Review) | 10d | 2023-02-17 | 2023-03-02 | CP-P3-09-04-SW-0000 |  |  |  |  | 162d | 0d |  |  | UDF_G1 | Yes | Yes |  | FL4 | deliv |  |  |  | 03 | TO4 | FNTP | P3 | 2 |  |  |  |  |  |  |  |  |  |  |  |
| CP-P3-09-04-SW-0010 |  | Resolve Rev A Comments - ER Section 9.4 | 5d | 2023-03-03 | 2023-03-09 | CP-P3-09-04-SW-0005 |  |  |  |  | 162d | 0d |  |  | UDF_G1 | Yes | Yes |  | FL4 | deliv |  |  |  | 03 | FL4 | FNTP | P3 | 3 |  |  |  |  |  |  |  |  |  |  |  |
| CP-P3-09-04-SW-0015 |  | Issue Rev 0 - ER Section 9.4 | 5d | 2023-03-10 | 2023-03-16 | CP-P3-09-04-SW-0010 |  |  |  |  | 162d | 2d |  |  | UDF_G1 | Yes | Yes |  | FL4 | deliv |  |  |  | 03 | FL4 | FNTP | P3 | 5 |  | N/A | FL4-REV0 | No SDA |  |  |  |  |  |  |  |
|  | 10 | **CFPP - COLA Prep - Part 03 - Chapter 10 Conclusions** |  | 2023-02-01 | 2023-11-02 |  |  |  |  |  |  |  |  |  |  |  |  |  |  |  |  |  |  |  |  |  |  |  |  |  |  |  |  |  |  |  |  |  |  |
|  | 01 | **CFPP - COLA Prep - Part 03 - Chapter 10 - Section 1 Conclusions** |  | 2023-02-01 | 2023-11-02 |  |  |  |  |  |  |  |  |  |  |  |  |  |  |  |  |  |  |  |  |  |  |  |  |  |  |  |  |  |  |  |  |  |  |
|  | 01 | **CFPP - COLA Prep - Part 03 - Chapter 10 - Section 1 - Support Documents** |  | 2023-02-01 | 2023-07-11 |  |  |  |  |  |  |  |  |  |  |  |  |  |  |  |  |  |  |  |  |  |  |  |  |  |  |  |  |  |  |  |  |  |  |
| CP-P3-10-01-SD-0000 |  | Provide Oversight, Construction & Operations Cost Details for Development of the Cost-Benefit Analysis | 30d | 2023-02-01 | 2023-03-17 | PKM-0035, IFM-TO3-TO4-0025 |  |  | 2023-02-01 | 2023-03-14 | 111d | 60d | start on or after 2023-02-01 |  | UDF_G3 | Yes | Yes |  | FL4 | supt |  |  |  | 03 | FL4 | FNTP | P3 |  |  |  |  |  |  |  | Oct | oct update finish slip out from 11nov22 ns, awaiting input | As of 29nov22 start slip from 31oct22 | RFI 202 |  |
| CP-P3-10-01-SD-0015 |  | Provide Financing Cost Details for Cost-Benefit Analysis | 20d | 2023-02-01 | 2023-02-28 | IFM-TO3-TO4-0025 |  |  |  |  | 124d | 73d | start on or after 2023-02-01 |  | UDF_G3 | Yes | Yes |  | FL4 | supt |  |  |  | 03 | FL4 | FNTP | P3 |  |  |  |  |  |  |  | Oct | oct update ns, awaiting input NEED UPDATE 03oct start | As of 29nov22 start slip from 31oct22 | RFI 402 |  |
| CP-P3-10-01-SD-0005 |  | Provide Estimated Amount of Materials Consumed During Construction | 20d | 2023-03-15 | 2023-04-11 | CP-P2-01-01-SW-0005 |  |  |  |  | 94d | 43d |  |  | UDF_G3 | Yes | Yes |  | FL4 | supt |  |  |  | 03 | FL4 | FNTP | P3 |  |  |  |  |  | X |  |  |  |  | RFI 102 | checked pushed out by pred |
| CP-P3-10-01-SD-0010 |  | Provide Support Assessment of Environmental Consequences of Constructing / Operating CFPP Plant Info | 30d | 2023-05-01 | 2023-06-12 | CP-P3-04-01-SW-0000, CP-P3-09-02-SW-0005, CP-P3-09-03-SW-0005 |  |  |  |  | 51d | 0d |  |  | UDF_G3 | Yes | Yes |  | FL4 | supt |  |  |  | 03 | FL4 | FNTP | P3 |  |  |  |  |  |  |  |  |  |  | RFI 302 |  |
| CP-P3-10-01-SD-0020 |  | Provide Environmental Consequences of Constructing / Operating CFPP Plant Info | 20d | 2023-06-13 | 2023-07-11 | CP-P3-10-01-SD-0015, CP-P3-10-01-SD-0010, CP-P3-10-01-SD-0000, CP-P3-10-01-SD-0005 |  |  |  |  | 51d |  |  |  | UDF_G3 | Yes | Yes |  | FL4 | supt |  |  |  | 03 | FL4 | FNTP | P3 |  |  |  |  |  |  |  |  |  |  |  |  |

| ID | WBS | Activity | Duration | Start | Finish | Predecessors | Total float | Free float | UDF Indicator 01 | zText_02 | COLA Critical Path Sched | Critcal Path | z_Text-4 | zText_Level 3 Schedule | Rebaseline details | doc type | ETAP DETAILS | PREPDRFTREVA | CFPP, LLC WBS Structure | Author | Period of Performance | Part | activity step | SDA ACT | REV0 - SDA | SDA needed | Deliverable Owner |
| --- | --- | --- | --- | --- | --- | --- | --- | --- | --- | --- | --- | --- | --- | --- | --- | --- | --- | --- | --- | --- | --- | --- | --- | --- | --- | --- | --- |
|  | 02 | **CFPP - COLA Prep - Part 03 - Chapter 10 - Section 1 - Section Writing** |  | 2023-09-22 | 2023-11-02 |  |  |  |  |  |  |  |  |  |  |  |  |  |  |  |  |  |  |  |  |  |  |
| CP-P3-10-01-SW-0000 |  | Prepare Draft Rev A -Check Updated Supporting Documents -ER Chapter 10 | 10d | 2023-09-22 | 2023-10-05 | CP-P3-10-01-SD-0020, CP-P3-09-04-SW-0000, CP-P3-09-03-SW-0000, CP-P3-09-02-SW-0000, CP-P3-09-01-SW-0000, CP-P3-08-01-SW-0000, CP-P3-07-01-SW-0000 SS, CP-P3-06-03-SW-0000, CP-P3-06-02-SW-0000 SS, CP-P3-06-01-SW-0000, CP-P3-05-12-SW-0000, CP-P3-05-11-SW-0000, CP-P3-05-10-SW-0000, CP-P3-05-09-SW-0000, CP-P3-05-08-SW-0000, CP-P3-05-07-SW-0000, CP-P3-05-06-SW-0000, CP-P3-05-05-SW-0000, CP-P3-05-04-SW-0000, CP-P3-05-03-SW-0000, CP-P3-05-01-SW-0000, CP-P3-05-02-SW-0000, CP-P3-04-10-SW-0000, CP-P3-04-09-SW-0000, CP-P3-04-08-SW-0000, CP-P3-04-07-SW-0000, CP-P3-04-06-SW-0000, CP-P3-04-05-SW-0000, CP-P3-04-04-SW-0000, CP-P3-04-03-SW-0000, CP-P3-04-02-SW-0000, CP-P3-04-01-SW-0000, CP-P3-03-04-SW-0000, CP-P3-03-03-SW-0000, CP-P3-03-02-SW-0000 SS, CP-P3-03-01-SW-0000, CP-P3-02-09-SW-0000, CP-P3-02-08-SW-0000, CP-P3-02-07-SW-0000, CP-P3-02-06-SW-0000, CP-P3-02-05-SW-0000, CP-P3-02-04-SW-0000, CP-P3-02-03-SW-0000, CP-P3-02-02-SW-0000, CP-P3-02-01-SW-0000, CP-P3-02-00-SW-0000, CP-P3-01-01-SW-0000 | 0d |  | UDF_G3 | Yes | 1 | 1 | CP-2 | Yes | FL4 | deliv | X | FL4-REVA | 03 | FL4 | FNTP | P3 | 1 |  |  |  |  |
| CP-P3-10-01-SW-0005 |  | Review Draft Rev A - ER Chapter 10 (TO4 Team Review) | 10d | 2023-10-06 | 2023-10-19 | CP-P3-10-01-SW-0000 | 0d |  | UDF_G1 | Yes |  | 1 |  | Yes | FL4 | deliv |  |  | 03 | TO4 | FNTP | P3 | 2 |  |  |  |  |
| CP-P3-10-01-SW-0010 |  | Resolve Rev A Comments - ER Chapter 10 | 5d | 2023-10-20 | 2023-10-26 | CP-P3-10-01-SW-0005 | 0d |  | UDF_G1 | Yes |  | 1 |  | Yes | FL4 | deliv |  |  | 03 | FL4 | FNTP | P3 | 3 |  |  |  |  |
| CP-P3-10-01-SW-0015 |  | Issue Rev 0 - ER Chapter 10 | 5d | 2023-10-27 | 2023-11-02 | CP-P3-10-01-SW-0010 | 0d |  | UDF_G1 | Yes |  | 1 |  | Yes | FL4 | deliv |  |  | 03 | FL4 | FNTP | P3 | 5 | N/A | FL4-REV0 | No SDA |  |
|  | 11 | **CFPP - COLA Prep - Part 03 - Chapter 11 References** |  | 2023-09-22 | 2023-11-02 |  |  |  |  |  |  |  |  |  |  |  |  |  |  |  |  |  |  |  |  |  |  |
|  | 01 | **CFPP - COLA Prep - Part 03 - Chapter 11 - Section 1 References** |  | 2023-09-22 | 2023-11-02 |  |  |  |  |  |  |  |  |  |  |  |  |  |  |  |  |  |  |  |  |  |  |
|  | 01 | **CFPP - COLA Prep - Part 03 - Chapter 11 - Section 1 - Support Documents** |  |  |  |  |  |  |  |  |  |  |  |  |  |  |  |  |  |  |  |  |  |  |  |  |  |
|  | 02 | **CFPP - COLA Prep - Part 03 - Chapter 11 - Section 1 - Section Writing** |  | 2023-09-22 | 2023-11-02 |  |  |  |  |  |  |  |  |  |  |  |  |  |  |  |  |  |  |  |  |  |  |
| CP-P3-11-01-SW-0000 |  | Prepare Draft Rev A -Check Updated Supporting Documents -ER Chapter 11 | 10d | 2023-09-22 | 2023-10-05 | CP-P3-09-02-SD-0005, CP-P3-10-01-SW-0000 SS | 0d |  | UDF_G1 | Yes | 1 | 1 | CP-2 | Yes | FL4 | deliv | X | FL4-REVA | 03 | FL4 | FNTP | P3 | 1 |  |  |  |  |
| CP-P3-11-01-SW-0005 |  | Review Draft Rev A - ER Chapter 11 (TO4 Team Review) | 10d | 2023-10-06 | 2023-10-19 | CP-P3-11-01-SW-0000 | 0d |  | UDF_G1 | Yes | 1 | 1 | CP-2 | Yes | FL4 | deliv | X |  | 03 | TO4 | FNTP | P3 | 2 |  |  |  |  |
| CP-P3-11-01-SW-0010 |  | Resolve Rev A Comments - ER Chapter 11 | 5d | 2023-10-20 | 2023-10-26 | CP-P3-11-01-SW-0005 | 0d |  | UDF_G1 | Yes | 1 | 1 | CP-2 | Yes | FL4 | deliv | X |  | 03 | FL4 | FNTP | P3 | 3 |  |  |  |  |
| CP-P3-11-01-SW-0015 |  | Issue Rev 0 - ER Chapter 11 | 5d | 2023-10-27 | 2023-11-02 | CP-P3-11-01-SW-0010 | 0d |  | UDF_G1 | Yes | 1 | 1 | CP-2 | Yes | FL4 | deliv | X |  | 03 | FL4 | FNTP | P3 | 5 | N/A | FL4-REV0 | No SDA |  |
|  | A | **CFPP - COLA Prep - Part 03 - ER Appendix A Consultations** |  | 2023-07-27 | 2023-09-07 |  |  |  |  |  |  |  |  |  |  |  |  |  |  |  |  |  |  |  |  |  |  |
|  | 01 | **CFPP - COLA Prep - Part 03 - Section 1 - ER Appendix A Consultations** |  | 2023-07-27 | 2023-09-07 |  |  |  |  |  |  |  |  |  |  |  |  |  |  |  |  |  |  |  |  |  |  |
|  | 01 | **CFPP - COLA Prep - Part 03 - Section 1 - ER Appendix A - Support Documents** |  |  |  |  |  |  |  |  |  |  |  |  |  |  |  |  |  |  |  |  |  |  |  |  |  |
|  | 02 | **CFPP - COLA Prep - Part 03 - Section 1 - ER Appendix A - Section Writing** |  | 2023-07-27 | 2023-09-07 |  |  |  |  |  |  |  |  |  |  |  |  |  |  |  |  |  |  |  |  |  |  |
| CP-P3-APA-SW-0000 |  | Prepare Draft Rev A -Check Updated Supporting Documents -ER Appendix A | 10d | 2023-07-27 | 2023-08-09 | CP-P3-04-03-SW-0005 | 40d | 0d | UDF_G3 | Yes |  |  |  | Yes | FL4 | deliv |  | FL4-REVA | 03 | FL4 | FNTP | P3 | 1 |  |  |  |  |
| CP-P3-APA-SW-0005 |  | Review Draft Rev A - ER Appendix A (TO4 Team Review) | 10d | 2023-08-10 | 2023-08-23 | CP-P3-APA-SW-0000 | 40d | 0d | UDF_G1 | Yes |  |  |  | Yes | FL4 | deliv |  |  | 03 | TO4 | FNTP | P3 | 2 |  |  |  |  |
| CP-P3-APA-SW-0010 |  | Resolve Rev A Comments - ER Appendix A | 5d | 2023-08-24 | 2023-08-30 | CP-P3-APA-SW-0005 | 40d | 0d | UDF_G1 | Yes |  |  |  | Yes | FL4 | deliv |  |  | 03 | FL4 | FNTP | P3 | 3 |  |  |  |  |
| CP-P3-APA-SW-0015 |  | Issue Rev 0 - ER Appendix A | 5d | 2023-08-31 | 2023-09-07 | CP-P3-APA-SW-0010 | 40d | 0d | UDF_G1 | Yes |  |  |  | Yes | FL4 | deliv |  |  | 03 | FL4 | FNTP | P3 | 5 | N/A | FL4-REV0 | No SDA |  |
|  | B | **CFPP - COLA Prep - Part 03 - ER Appendix B Environmental Protection Plan** |  | 2023-08-14 | 2023-10-16 |  |  |  |  |  |  |  |  |  |  |  |  |  |  |  |  |  |  |  |  |  |  |
|  | 01 | **CFPP - COLA Prep - Part 03 - Section 1 - ER Appendix B Environmental Protection Plan** |  | 2023-08-14 | 2023-10-16 |  |  |  |  |  |  |  |  |  |  |  |  |  |  |  |  |  |  |  |  |  |  |
|  | 01 | **CFPP - COLA Prep - Part 03 - Section 1 - ER Appendix B - Support Documents** |  | 2023-08-14 | 2023-09-18 |  |  |  |  |  |  |  |  |  |  |  |  |  |  |  |  |  |  |  |  |  |  |
| CP-P3-APB-SD-0000 |  | Provide Support Preparation of Environmental Protection Plan Info | 20d | 2023-08-14 | 2023-09-11 | CP-P2-02-03-SW-0065 FF, CP-P2-11-05-SW-0005, CP-P2-12-01-SW-0005, CP-P3-04-02-SW-0005 FF, CP-P3-04-09-SW-0005 FF, CP-P3-05-12-SW-0005 FF | 13d | 0d | UDF_G3 | Yes |  |  | CP-3 | Yes | FL4 | supt |  |  | 03 | FL4 | FNTP | P3 |  |  |  |  | Kevin |
| CP-P3-APB-SD-0005 |  | Prepare Environmental Protection Plan | 5d | 2023-09-12 | 2023-09-18 | CP-P3-APB-SD-0000 | 13d | 0d | UDF_G3 | Yes |  |  | CP-3 | Yes | FL4 | supt |  |  | 03 | FL4 | FNTP | P3 |  |  |  |  | Kevin |

Notes:
- CP-P3-11-01-SW-0000: UDF Text 02: Can be pulled back in Time if Prepare draft to other drafts rather than Reviews.

| ID | WBS | Activity | Type | Duration | Start | Finish | Predecessors | Complete | Remaining | Planned start | Planned finish | Total float | Free float | Constraint | Expected finish | UDF Indicator 01 | zText_02 | z_Text-4 | zText_Level 3 Schedule | Deliverable Owner | Rebaseline details | doc type | PREPDRFTREVA | CFPP, LLC WBS Structure | Author | Period of Performance | Part | activity step | SDA ACT | REV0 - SDA | SDA needed | zText_RFI | zText_CFPP Look Ahead Notes | 11A NOV MIDMONTH Notes | 11B NOV EOM Notes | 12B DEC EOM Notes | CFPP - Contractor's Remarks | Chapter | Section | 9A SEP EOM Notes | Monthly Variance | 10B OCT EOM Notes | Forecast Finish | Forecast Start | Nuscale ACT Number | nuscale comp | Other | VERIFIED MONTHLY UPDATE | 10A OCT MIDMONTH Notes |
| --- | --- | --- | --- | --- | --- | --- | --- | --- | --- | --- | --- | --- | --- | --- | --- | --- | --- | --- | --- | --- | --- | --- | --- | --- | --- | --- | --- | --- | --- | --- | --- | --- | --- | --- | --- | --- | --- | --- | --- | --- | --- | --- | --- | --- | --- | --- | --- | --- | --- |
|  | 02 | **CFPP - COLA Prep - Part 03 - Section 1 - ER Appendix B - Section Writing** |  |  | 2023-09-12 | 2023-10-16 |  |  |  |  |  |  |  |  |  |  |  |  |  |  |  |  |  |  |  |  |  |  |  |  |  |  |  |  |  |  |  |  |  |  |  |  |  |  |  |  |  |  |  |
| CP-P3-APB-SW-0000 |  | Prepare Draft Rev A -Check Updated Supporting Documents -ER Appendix B |  | 5d | 2023-09-12 | 2023-09-18 | CP-P3-APB-SD-0005 FF |  |  |  |  | 13d | 0d |  |  | UDF_G3 | Yes | CP-3 | Yes | Kevin | FL4 | deliv | FL4-REVA | 03 | FL4 | FNTP | P3 | 1 |  |  |  |  |  |  |  |  |  |  |  |  |  |  |  |  |  |  |  |  |  |
| CP-P3-APB-SW-0005 |  | Review Draft Rev A - ER Appendix B (TO4 Team Review) |  | 10d | 2023-09-19 | 2023-10-02 | CP-P3-APB-SW-0000 |  |  |  |  | 13d | 0d |  |  | UDF_G1 | Yes | CP-3 | Yes |  | FL4 | deliv |  | 03 | TO4 | FNTP | P3 | 2 |  |  |  |  |  |  |  |  |  |  |  |  |  |  |  |  |  |  |  |  |  |
| CP-P3-APB-SW-0010 |  | Resolve Rev A Comments - ER Appendix B |  | 5d | 2023-10-03 | 2023-10-09 | CP-P3-APB-SW-0005 |  |  |  |  | 13d | 0d |  |  | UDF_G1 | Yes | CP-3 | Yes | Kevin | FL4 | deliv |  | 03 | FL4 | FNTP | P3 | 3 |  |  |  |  |  |  |  |  |  |  |  |  |  |  |  |  |  |  |  |  |  |
| CP-P3-APB-SW-0015 |  | Issue Rev 0 - ER Appendix B |  | 5d | 2023-10-10 | 2023-10-16 | CP-P3-APB-SW-0010 |  |  |  |  | 13d | 0d |  |  | UDF_G1 | Yes | CP-3 | Yes | Kevin | FL4 | deliv |  | 03 | FL4 | FNTP | P3 | 5 | N/A | FL4-REV0 | No SDA |  |  |  |  |  |  |  |  |  |  |  |  |  |  |  |  |  |  |
|  | 04 | **CFPP - COLA Prep - Part 04 Technical Specifications** |  |  | 2022-08-25 | 2023-08-15 |  |  |  |  |  |  |  |  |  |  |  |  |  |  |  |  |  |  |  |  |  |  |  |  |  |  |  |  |  |  |  |  |  |  |  |  |  |  |  |  |  |  |  |
|  | 01 | **CFPP - COLA Prep - Part 04 - Chapter 01 Technical Specifications** |  |  | 2022-08-25 | 2023-08-15 |  |  |  |  |  |  |  |  |  |  |  |  |  |  |  |  |  |  |  |  |  |  |  |  |  |  |  |  |  |  |  |  |  |  |  |  |  |  |  |  |  |  |  |
|  | 01 | **CFPP - COLA Prep - Part 04 - Chapter 01 - Section 1 Technical Specifications** |  |  | 2022-08-25 | 2023-08-15 |  |  |  |  |  |  |  |  |  |  |  |  |  |  |  |  |  |  |  |  |  |  |  |  |  |  |  |  |  |  |  |  |  |  |  |  |  |  |  |  |  |  |  |
|  | 01 | **CFPP - COLA Prep - Part 04 - Chapter 01 - Section 1 - Support Documents** |  |  | 2022-08-25 | 2023-01-02 |  |  |  |  |  |  |  |  |  |  |  |  |  |  |  |  |  |  |  |  |  |  |  |  |  |  |  |  |  |  |  |  |  |  |  |  |  |  |  |  |  |  |  |
| CP-P4-01-01-SD-0000 |  | Develop Owner Controlled Technical Requirement Manual |  | 60d | 2022-08-25 A | 2022-12-20 A | IFM-CFP-TO4-0055 FS+60d | 100% |  | 2022-08-25 | 2022-11-17 |  |  |  |  |  | Yes |  | Yes |  | NUSCALE | supt |  | 03 | NuScale | FNTP | P4 |  |  |  |  | RFI 102 | Y | As of 15nov22 16nov22 finish | As of 29nov22 finish slip from 17nov22 | as of 30dec22 updated | as of 30dec22 updated | 1 | 1 |  |  |  |  |  |  |  |  |  |  |
| CP-P4-01-01-SD-0005 |  | Integrate SDA Tech Specs |  | 60d | 2022-09-16 A | 2023-01-02 |  |  | 0d | 2022-09-16 | 2022-12-09 | 116d | 0d |  | 2022-04-21 |  | Yes |  | Yes |  | NUSCALE | supt |  | 03 | NuScale | FNTP | P4 |  |  |  |  | RFI 202 |  |  |  | as of 30dec22 updated | as of 30dec22 updated | 1 | 1 | Sep update | Oct | oct update finish slip from 09dec22 | 2022-04-21 |  |  |  |  |  |  |
|  | 02 | **CFPP - COLA Prep - Part 04 - Chapter 01 - Section 1 - Section Writing** |  |  | 2023-04-24 | 2023-08-15 |  |  |  |  |  |  |  |  |  |  |  |  |  |  |  |  |  |  |  |  |  |  |  |  |  |  |  |  |  |  |  |  |  |  |  |  |  |  |  |  |  |  |  |
| CP-P4-01-01-SW-0000 |  | Prepare Draft Rev A -Check Updated Supporting Documents -Part 04 Technical Specifications |  | 140d | 2023-04-24 | 2023-07-18 | CP-P4-01-01-SD-0000, CP-P4-01-01-SD-0005 |  |  | 2023-04-24 | 2023-11-08 | 36d | 0d | start on or after 2023-04-24 |  |  | Yes |  | Yes |  | NUSCALE | deliv | NS-REVA | 03 | NuScale | FNTP | P4 | 1 |  |  |  |  |  |  |  | as of 30dec22 forecast start 22apr23 is saturday | as of 30dec22 updated updated duration to 60 days | 1 | 1 |  |  | oct update pred slip out | 2023-07-18 | 2023-04-22 |  |  |  |  |  |
| CP-P4-01-01-SW-0005 |  | Review Draft Rev A - Part 04 Technical Specifications (TO4 Team Review) |  | 10d | 2023-07-19 | 2023-08-01 | CP-P4-01-01-SW-0000 |  |  |  |  | 46d | 0d |  |  | UDF_G3 | Yes |  | Yes |  | NUSCALE | deliv |  | 03 | TO4 | FNTP | P4 | 2 |  |  |  |  |  |  |  |  |  |  |  |  |  |  |  |  |  |  |  |  |  |
| CP-P4-01-01-SW-0010 |  | Resolve Rev A Comments - Part 04 Technical Specifications |  | 5d | 2023-08-02 | 2023-08-08 | CP-P4-01-01-SW-0005 |  |  |  |  | 46d | 0d |  |  |  | Yes |  | Yes |  | NUSCALE | deliv |  | 03 | NuScale | FNTP | P4 | 3 |  |  |  |  |  |  |  |  |  | 1 | 1 |  |  |  |  |  |  |  |  |  |  |
| CP-P4-01-01-SW-0015 |  | Issue Rev 0 - Part 04 Technical Specifications |  | 5d | 2023-08-09 | 2023-08-15 | CP-P4-01-01-SW-0010 |  |  |  |  | 46d | 0d |  |  |  | Yes |  | Yes |  | NUSCALE | deliv |  | 03 | NuScale | FNTP | P4 | 5 | N/A | NS-REV0 | No SDA |  |  |  |  |  |  | 1 | 1 |  |  |  |  |  | 56COL.P2.CH | nuscale |  |  |  |
|  | 05 | **CFPP - COLA Prep - Part 05 Emergency Plan** |  |  | 2021-10-12 | 2023-10-19 |  |  |  |  |  |  |  |  |  |  |  |  |  |  |  |  |  |  |  |  |  |  |  |  |  |  |  |  |  |  |  |  |  |  |  |  |  |  |  |  |  |  |  |
|  | 0 | **CFPP - COLA Prep - Part 05 Emergency Plan Key Milestones** |  |  | 2022-09-20 | 2023-10-19 |  |  |  |  |  |  |  |  |  |  |  |  |  |  |  |  |  |  |  |  |  |  |  |  |  |  |  |  |  |  |  |  |  |  |  |  |  |  |  |  |  |  |  |
| CP-P5-01-01-MS-0150 |  | Decision to Proceed with 50.160 - (CFPP/UAMPS/NuScale/Xcel) | milestone | 0d | 2022-09-20 A | 2022-09-20 A | PKM-0065 | 100% |  | 2022-11-30 | 2022-11-30 |  |  |  |  |  |  |  |  |  |  |  |  |  | CMCG |  |  |  |  |  |  |  |  |  |  |  |  |  |  | Sep update (close/complete as of 30Sep) |  | oct update |  |  |  |  | cal | X |  |
| CP-P5-01-01-MS-0200 |  | Intro meeting with state agencies (CMCG) | milestone | 0d | 2022-11-09 A | 2022-11-09 A | PKM-0065, CP-P5-01-01-MS-0150 FF | 100% |  | 2023-02-24 | 2023-02-24 |  |  |  |  |  |  |  |  |  |  |  |  |  | CMCG |  |  |  |  |  |  |  |  |  | As of 29nov22 Complete |  |  |  |  | Sep update finish slip from 10oct start 11/9 | Oct |  |  |  |  |  | cal | X | oct update slip from 31oct22 |
| CP-P5-01-01-MS-0250 |  | Intro meeting with local agencies (CMCG) | milestone | 0d | 2022-11-09 A | 2022-11-09 A | PKM-0065, CP-P5-01-01-MS-0200 FF | 100% |  | 2023-02-24 | 2023-02-24 |  |  |  |  |  |  |  |  |  |  |  |  |  | CMCG |  |  |  |  |  |  |  |  |  | As of 29nov22 Complete |  |  |  |  | Sep update finish slip from 10oct start 11/9 | Oct |  |  |  |  |  | cal | X | oct update slip from 31oct22 |
| CP-P5-01-01-MS-0300 |  | Certification letters - Initial Discussions (CMCG) | milestone | 0d | 2023-02-28 | 2023-02-28 | PKM-0065, CP-P5-01-01-MS-0250 FF |  |  |  |  | 274d | 144d | finish on or after 2023-02-28 |  |  |  |  |  |  |  |  |  |  | CMCG |  |  |  |  |  |  |  |  |  |  |  |  |  |  |  |  |  |  |  |  |  | cal |  |  |
| CP-P5-00-00-MS-0400 |  | Part5: Open Items Complete (Upload to Certrec - Team Review) | milestone | 0d | 2023-03-27 | 2023-03-27 | CP-P5-01-01-MS-0175 |  |  |  |  | 41d | 0d | finish on or after 2023-03-27 |  | UDF_G1 | Yes |  | Yes |  | CMCG | supt |  | 03 | CMCG | FNTP | P5 |  |  |  |  |  | Y |  |  |  |  |  |  | Sep update New milestone added (expand to activity?) |  |  |  |  |  |  |  | X |  |
| CP-P5-01-01-MS-0100 |  | EPZ confirmed (NuScale) | milestone | 0d | 2023-09-21 | 2023-09-21 | CP-P2-13-03-SD-0100 FF, CP-P5-01-01-MS-0300 FF |  |  |  |  | 130d | 0d |  |  |  |  |  |  |  |  |  |  |  | CMCG |  |  |  |  |  |  |  |  |  |  |  |  |  |  |  |  |  |  |  |  |  | cal |  |  |
| CP-P5-01-01-MS-0350 |  | Certification letters from state/local agencies and agreement letters from support organizations (CMCG) | milestone | 0d | 2023-10-19 | 2023-10-19 | PKM-0065, CP-P5-01-01-MS-0100 FF+20d |  |  |  |  | 130d |  | finish on or after 2023-10-06 |  |  |  |  |  |  |  |  |  |  | CMCG |  |  |  |  |  |  |  |  |  |  |  |  |  |  |  |  |  |  |  |  |  | cal |  |  |

| ID | WBS | Activity | Duration | Start | Finish | Predecessors | Complete | Remaining | Planned start | Planned finish | Total float | Free float | Expected finish | Other | VERIFIED MONTHLY UPDATE | 9A SEP EOM Notes | 10B OCT EOM Notes | 11B NOV EOM Notes | 12B DEC EOM Notes | Author | UDF Indicator 01 | zText_02 | zText_Level 3 Schedule | Rebaseline details | doc type | CFPP, LLC WBS Structure | Period of Performance | Part |
| --- | --- | --- | --- | --- | --- | --- | --- | --- | --- | --- | --- | --- | --- | --- | --- | --- | --- | --- | --- | --- | --- | --- | --- | --- | --- | --- | --- | --- |
|  | 01 | **CFPP - COLA Prep - Part 05 Emergency Plan Key Activities** |  | 2022-09-26 | 2023-02-24 |  |  |  |  |  |  |  |  |  |  |  |  |  |  |  |  |  |  |  |  |  |  |  |
| CP-P5-01-01-MS-0175 |  | NRC Approval of 50.160 (Decision to proceed with 50.160) | 5d | 2022-09-26 A | 2023-02-24 | CP-P5-01-01-MS-0150 |  | 40d | 2022-09-26 | 2022-09-30 | 62d | 0d | 2023-02-24 | cal | X | Sep update (close/complete as of 30Sep) | oct update new activity | As of 29nov need revised successor | as of 30dec22 updated | CMCG |  |  |  |  |  |  |  |  |
|  | 01 | **CFPP - COLA Prep - Part 05 - Emergency Plan** |  |  |  |  |  |  |  |  |  |  |  |  |  |  |  |  |  |  |  |  |  |  |  |  |  |  |
|  | 01 | **CFPP - COLA Prep - Part 05 - Support Documents** |  |  |  |  |  |  |  |  |  |  |  |  |  |  |  |  |  |  |  |  |  |  |  |  |  |  |
|  | 1 | **EPLAN I** |  |  |  |  |  |  |  |  |  |  |  |  |  |  |  |  |  |  |  |  |  |  |  |  |  |  |
|  | 10 | **EPLAN III** |  |  |  |  |  |  |  |  |  |  |  |  |  |  |  |  |  |  |  |  |  |  |  |  |  |  |
|  | 11 | **EPLAN IIJ** |  |  |  |  |  |  |  |  |  |  |  |  |  |  |  |  |  |  |  |  |  |  |  |  |  |  |
|  | 12 | **EPLAN IIK** |  |  |  |  |  |  |  |  |  |  |  |  |  |  |  |  |  |  |  |  |  |  |  |  |  |  |
|  | 13 | **EPLAN IIL** |  |  |  |  |  |  |  |  |  |  |  |  |  |  |  |  |  |  |  |  |  |  |  |  |  |  |
|  | 14 | **EPLAN IIM** |  |  |  |  |  |  |  |  |  |  |  |  |  |  |  |  |  |  |  |  |  |  |  |  |  |  |
|  | 15 | **EPLAN IIN** |  |  |  |  |  |  |  |  |  |  |  |  |  |  |  |  |  |  |  |  |  |  |  |  |  |  |
|  | 16 | **EPLAN IIO** |  |  |  |  |  |  |  |  |  |  |  |  |  |  |  |  |  |  |  |  |  |  |  |  |  |  |
|  | 17 | **EPLAN IIP** |  |  |  |  |  |  |  |  |  |  |  |  |  |  |  |  |  |  |  |  |  |  |  |  |  |  |
|  | 19 | **EPLAN 3** |  |  |  |  |  |  |  |  |  |  |  |  |  |  |  |  |  |  |  |  |  |  |  |  |  |  |
|  | 2 | **EPLAN IIA** |  |  |  |  |  |  |  |  |  |  |  |  |  |  |  |  |  |  |  |  |  |  |  |  |  |  |
|  | 3 | **EPLAN IIB** |  |  |  |  |  |  |  |  |  |  |  |  |  |  |  |  |  |  |  |  |  |  |  |  |  |  |
|  | 4 | **EPLAN IIC** |  |  |  |  |  |  |  |  |  |  |  |  |  |  |  |  |  |  |  |  |  |  |  |  |  |  |
|  | 5 | **EPLAN IID** |  |  |  |  |  |  |  |  |  |  |  |  |  |  |  |  |  |  |  |  |  |  |  |  |  |  |
|  | 6 | **EPLAN IIE** |  |  |  |  |  |  |  |  |  |  |  |  |  |  |  |  |  |  |  |  |  |  |  |  |  |  |
|  | 7 | **EPLAN IIF** |  |  |  |  |  |  |  |  |  |  |  |  |  |  |  |  |  |  |  |  |  |  |  |  |  |  |
|  | 8 | **EPLAN IIG** |  |  |  |  |  |  |  |  |  |  |  |  |  |  |  |  |  |  |  |  |  |  |  |  |  |  |
|  | 9 | **EPLAN IIH** |  |  |  |  |  |  |  |  |  |  |  |  |  |  |  |  |  |  |  |  |  |  |  |  |  |  |
|  | 18 | **EPLAN OFFSITE** |  |  |  |  |  |  |  |  |  |  |  |  |  |  |  |  |  |  |  |  |  |  |  |  |  |  |
|  | 02 | **CFPP - COLA Prep - Part 05 - Section Writing** |  |  |  |  |  |  |  |  |  |  |  |  |  |  |  |  |  |  |  |  |  |  |  |  |  |  |
|  | 02 | **CFPP - COLA Prep - Part 05 - Emergency Plan** |  | 2021-10-12 | 2023-05-22 |  |  |  |  |  |  |  |  |  |  |  |  |  |  |  |  |  |  |  |  |  |  |  |
|  | 01 | **CFPP - COLA Prep - Part 05 - Emergency Plan** |  | 2021-10-12 | 2023-05-22 |  |  |  |  |  |  |  |  |  |  |  |  |  |  |  |  |  |  |  |  |  |  |  |
|  | 01 | **CFPP - COLA Prep - Part 05 - Support Documents** |  | 2021-10-12 | 2023-05-22 |  |  |  |  |  |  |  |  |  |  |  |  |  |  |  |  |  |  |  |  |  |  |  |
| CP-P5-01-01-SD-0000 |  | EPlan: Task 1 - Task Work Plan (PWP) | 14d | 2021-10-12 A | 2021-10-29 A | PKM-0050 FS+4d | 100% |  |  |  |  |  |  |  |  |  |  |  |  | CMCG | UDF_G1 | Yes | Yes | CMCG | supt | 03 | FNTP | P5 |
| CP-P5-01-01-SD-0005 |  | EPlan: Information Gathering & Document Review | 27d | 2021-11-01 A | 2022-06-02 A | CP-P5-01-01-SD-0000 | 100% |  | 2021-11-01 | 2021-12-10 |  |  |  |  |  |  |  |  |  | CMCG | UDF_G1 | Yes | Yes | CMCG | supt | 03 | FNTP | P5 |

| ID | WBS | Activity | Duration | Start | Finish | Predecessors | Complete | Planned start | Planned finish | Total float | Free float | UDF Indicator 01 | zText_02 | zText_CFPP Look Ahead Notes | zText_Level 3 Schedule | VERIFIED MONTHLY UPDATE | Rebaseline details | NEED UPDATE | doc type | cfpp two week acts | 10B OCT EOM Notes | 10A OCT MIDMONTH Notes | CFPP, LLC WBS Structure | Author | Period of Performance | Part | 11A NOV MIDMONTH Notes | 11B NOV EOM Notes | activity step |
| --- | --- | --- | --- | --- | --- | --- | --- | --- | --- | --- | --- | --- | --- | --- | --- | --- | --- | --- | --- | --- | --- | --- | --- | --- | --- | --- | --- | --- | --- |
|  | 1 | **EPLAN I** |  | 2022-08-17 | 2023-05-22 |  |  |  |  |  |  |  |  |  |  |  |  |  |  |  |  |  |  |  |  |  |  |  |  |
| CP-P5-01-01-SD-0015 |  | EPlan: I - Introduction (Initial/Revised Draft Developed for Fluor Review) | 22d | 2022-08-17 A | 2022-10-07 A | CP-P5-01-01-SD-0000, CP-P5-01-01-SD-0005 FF, CP-P5-01-01-SD-0640 SS | 100% | 2022-08-17 | 2022-09-16 |  |  | UDF_G1 | Yes | Y | Yes | X | CMCG | OCT | supt | x | oct update | oct update Complete | 03 | CMCG | FNTP | P5 |  |  |  |
| CP-P5-01-01-SD-0016 |  | EPlan: I - Introduction (Fluor Initial/Revised Draft Review Completed) | 19d | 2022-10-10 A | 2022-10-20 A | CP-P5-01-01-SD-0000, CP-P5-01-01-SD-0015 | 100% | 2022-10-10 | 2022-11-03 |  |  | UDF_G1 | Yes |  | Yes |  | CMCG | OCT | supt | x | oct update | oct update Complete | 03 | CMCG | FNTP | P5 |  |  |  |
| CP-P5-01-01-SD-0017 |  | EPlan: I - Introduction (CMCG Addresses Fluor Comments) | 20d | 2022-10-21 A | 2022-11-10 A | CP-P5-01-01-SD-0000, CP-P5-01-01-SD-0016 | 100% | 2022-10-21 | 2022-11-17 |  |  | UDF_G1 | Yes |  | Yes | X | CMCG | OCT | supt |  | oct update | oct update | 03 | CMCG | FNTP | P5 | As of 15nov22 On Track | As of 29nov22 Complete |  |
| CP-P5-01-01-SD-0018 |  | EPlan: I - Introduction (Certrec Technical Review Complete) TO4 Team Review | 20d | 2023-03-28 | 2023-04-24 | CP-P5-01-01-SD-0000, CP-P5-01-01-SD-0017, CP-P5-00-00-MS-0400 |  |  |  | 41d | 0d | UDF_G1 | Yes |  | Yes |  | CMCG |  | supt |  |  |  | 03 | TO4 | FNTP | P5 |  |  | 2 |
| CP-P5-01-01-SD-0019 |  | EPlan: I - Introduction (CMCG Dispositions Technical Review Comments) | 20d | 2023-04-25 | 2023-05-22 | CP-P5-01-01-SD-0000, CP-P5-01-01-SD-0018 |  |  |  | 41d | 0d | UDF_G1 | Yes |  | Yes |  | CMCG |  | supt |  |  |  | 03 | CMCG | FNTP | P5 |  |  |  |
|  | 10 | **EPLAN III** |  | 2022-07-06 | 2023-05-22 |  |  |  |  |  |  |  |  |  |  |  |  |  |  |  |  |  |  |  |  |  |  |  |  |
| CP-P5-01-01-SD-0620 |  | EPlan: III - Accident Assessment (Initial/Revised Draft Developed for Fluor Review) | 22d | 2022-07-06 A | 2022-08-08 A | CP-P5-01-01-SD-0610 SS | 100% | 2022-07-06 | 2022-08-04 |  |  |  |  |  |  |  |  |  | supt |  |  |  |  | CMCG |  |  |  |  |  |
| CP-P5-01-01-SD-0105 |  | EPlan: III - Accident Assessment (Fluor Initial/Revised Draft Review Completed) | 19d | 2022-08-09 A | 2022-09-16 A | CP-P5-01-01-SD-0620 | 100% | 2022-08-09 | 2022-09-02 |  |  | UDF_G1 | Yes |  | Yes |  | CMCG |  | supt |  |  |  | 03 | CMCG | FNTP | P5 |  |  |  |
| CP-P5-01-01-SD-0120 |  | EPlan: III - Accident Assessment (CMCG Addresses Fluor Comments) | 20d | 2022-09-19 A | 2022-10-14 A | CP-P5-01-01-SD-0105 | 100% | 2022-09-06 | 2022-10-03 |  |  | UDF_G1 | Yes |  | Yes | X | CMCG | OCT | supt |  | oct update |  | 03 | CMCG | FNTP | P5 |  |  |  |
| CP-P5-01-01-SD-0360 |  | EPlan: III - Accident Assessment (Certrec Technical Review Complete) TO4 Team Review | 20d | 2023-03-28 | 2023-04-24 | CP-P5-01-01-SD-0120, CP-P5-00-00-MS-0400 |  |  |  | 41d | 0d |  |  |  |  |  |  |  | supt |  |  |  |  | TO4 |  |  |  |  | 2 |
| CP-P5-01-01-SD-0370 |  | EPlan: III - Accident Assessment (CMCG Dispositions Technical Review Comments) | 20d | 2023-04-25 | 2023-05-22 | CP-P5-01-01-SD-0360 |  |  |  | 41d | 0d |  |  |  |  |  |  |  | supt |  |  |  |  | CMCG |  |  |  |  |  |
|  | 11 | **EPLAN IIJ** |  | 2022-07-27 | 2023-05-22 |  |  |  |  |  |  |  |  |  |  |  |  |  |  |  |  |  |  |  |  |  |  |  |  |
| CP-P5-01-01-SD-0630 |  | EPlan: IIJ - Protective Actions (Initial/Revised Draft Developed for Fluor Review) | 22d | 2022-07-27 A | 2022-08-26 A | CP-P5-01-01-SD-0620 SS | 100% | 2022-07-27 | 2022-08-25 |  |  |  |  |  |  |  |  |  | supt |  |  |  |  | CMCG |  |  |  |  |  |
| CP-P5-01-01-SD-0115 |  | EPlan: IIJ - Protective Actions (Fluor Initial/Revised Draft Review Completed) | 19d | 2022-08-26 A | 2022-09-16 A | CP-P5-01-01-SD-0630 | 100% | 2022-08-26 | 2022-09-22 |  |  | UDF_G1 | Yes |  | Yes |  | CMCG |  | supt |  |  |  | 03 | CMCG | FNTP | P5 |  |  |  |
| CP-P5-01-01-SD-0130 |  | EPlan: IIJ - Protective Actions (CMCG Addresses Fluor Comments) | 20d | 2022-09-19 A | 2022-10-14 A | CP-P5-01-01-SD-0115 | 100% | 2022-09-23 | 2022-10-20 |  |  | UDF_G1 | Yes |  | Yes | X | CMCG | OCT | supt |  | oct update |  | 03 | CMCG | FNTP | P5 |  |  |  |
| CP-P5-01-01-SD-0380 |  | EPlan: IIJ - Protective Actions (Certrec Technical Review Complete) TO4 Team Review | 20d | 2023-03-28 | 2023-04-24 | CP-P5-01-01-SD-0130, CP-P5-00-00-MS-0400 |  |  |  | 41d | 0d |  |  |  |  |  |  |  | supt |  |  |  |  | TO4 |  |  |  |  | 2 |
| CP-P5-01-01-SD-0390 |  | EPlan: IIJ - Protective Actions (CMCG Dispositions Technical Review Comments) | 20d | 2023-04-25 | 2023-05-22 | CP-P5-01-01-SD-0380 |  |  |  | 41d | 0d |  |  |  |  |  |  |  | supt |  |  |  |  | CMCG |  |  |  |  |  |
|  | 12 | **EPLAN IIK** |  | 2022-08-10 | 2023-05-22 |  |  |  |  |  |  |  |  |  |  |  |  |  |  |  |  |  |  |  |  |  |  |  |  |
| CP-P5-01-01-SD-0640 |  | EPlan: IIK - Radiological Exposure Control (Initial/Revised Draft Developed for Fluor Review) | 22d | 2022-08-10 A | 2022-09-09 A | CP-P5-01-01-SD-0630 SS | 100% |  |  |  |  |  |  | Y |  |  |  |  | supt |  |  |  |  | CMCG |  |  |  |  |  |
| CP-P5-01-01-SD-0125 |  | EPlan: IIK - Radiological Exposure Control (Fluor Initial/Revised Draft Review Completed) | 19d | 2022-09-12 A | 2022-09-16 A | CP-P5-01-01-SD-0640 | 100% | 2022-09-12 | 2022-10-06 |  |  | UDF_G1 | Yes |  | Yes |  | CMCG |  | supt |  |  |  | 03 | CMCG | FNTP | P5 |  |  |  |
| CP-P5-01-01-SD-0140 |  | EPlan: IIK - Radiological Exposure Control (CMCG Addresses Fluor Comments) | 20d | 2022-09-19 A | 2022-10-14 A | CP-P5-01-01-SD-0125 | 100% |  |  |  |  | UDF_G1 | Yes |  | Yes | X | CMCG | OCT | supt |  | oct update |  | 03 | CMCG | FNTP | P5 |  |  |  |
| CP-P5-01-01-SD-0400 |  | EPlan: IIK - Radiological Exposure Control (Certrec Technical Review Complete) TO4 Team Review | 20d | 2023-03-28 | 2023-04-24 | CP-P5-01-01-SD-0140, CP-P5-00-00-MS-0400 |  |  |  | 41d | 0d |  |  |  |  |  |  |  | supt |  |  |  |  | TO4 |  |  |  |  | 2 |
| CP-P5-01-01-SD-0410 |  | EPlan: IIK - Radiological Exposure Control (CMCG Dispositions Technical Review Comments) | 20d | 2023-04-25 | 2023-05-22 | CP-P5-01-01-SD-0400 |  |  |  | 41d | 0d |  |  |  |  |  |  |  | supt |  |  |  |  | CMCG |  |  |  |  |  |

Notes:
- CP-P5-01-01-SD-0015: 9A SEP EOM Notes: Sep Update finish slip from 16sep complete 7oct
- CP-P5-01-01-SD-0017: 9A SEP EOM Notes: Sep update revised title removed "& Uploads Draft to Certrec for Technical Review"
- CP-P5-01-01-SD-0120: 9A SEP EOM Notes: Sep update revised title removed "& Uploads Draft to Certrec for Technical Review" complete
- CP-P5-01-01-SD-0130: 9A SEP EOM Notes: Sep update revised title removed "& Uploads Draft to Certrec for Technical Review" complete
- CP-P5-01-01-SD-0125: 9A SEP EOM Notes: Sep update
- CP-P5-01-01-SD-0140: 9A SEP EOM Notes: Sep update revised title removed "& Uploads Draft to Certrec for Technical Review" complete

| ID | WBS | Activity | Duration | Start | Finish | Predecessors | Complete | Planned start | Planned finish | Total float | Free float | NEED UPDATE | doc type | cfpp two week acts | 10B OCT EOM Notes | Author | UDF Indicator 01 | zText_02 | zText_Level 3 Schedule | Rebaseline details | 11A NOV MIDMONTH Notes | 11B NOV EOM Notes | CFPP, LLC WBS Structure | Period of Performance | Part | VERIFIED MONTHLY UPDATE | activity step | Monthly Variance | 12B DEC EOM Notes | CFPP - Contractor's Remarks |
| --- | --- | --- | --- | --- | --- | --- | --- | --- | --- | --- | --- | --- | --- | --- | --- | --- | --- | --- | --- | --- | --- | --- | --- | --- | --- | --- | --- | --- | --- | --- |
|  | 13 | **EPLAN IIL** |  | 2022-09-07 | 2023-05-22 |  |  |  |  |  |  |  |  |  |  |  |  |  |  |  |  |  |  |  |  |  |  |  |  |  |
| CP-P5-01-01-SD-0650 |  | EPlan: IIL - Medical & Public Health Support (Initial/Revised Draft Developed for Fluor Review) | 22d | 2022-09-07 A | 2022-10-06 A | CP-P5-01-01-SD-0560 SS | 100% |  |  |  |  | OCT | supt | x | oct update | CMCG |  |  |  |  |  |  |  |  |  |  |  |  |  |  |
| CP-P5-01-01-SD-0135 |  | EPlan: IIL - Medical & Public Health Support (Fluor Initial/Revised Draft Review Completed) | 19d | 2022-10-07 A | 2022-10-10 A | CP-P5-01-01-SD-0650 | 100% | 2022-10-07 | 2022-11-02 |  |  | OCT | supt |  | oct update | CMCG | UDF_G1 | Yes | Yes | CMCG | As of 15nov22 On Track | As of 29nov22 Complete | 03 | FNTP | P5 |  |  |  |  |  |
| CP-P5-01-01-SD-0150 |  | EPlan: IIL - Medical & Public Health Support (CMCG Addresses Fluor Comments) | 20d | 2022-10-13 A | 2022-11-25 A | CP-P5-01-01-SD-0135 | 100% | 2022-11-03 | 2022-12-01 |  |  |  | supt |  |  | CMCG | UDF_G1 | Yes | Yes | CMCG | As of 15nov22 On Track | As of 29nov22 Complete | 03 | FNTP | P5 | X |  |  |  |  |
| CP-P5-01-01-SD-0420 |  | EPlan: IIL - Medical & Public Health Support (Certrec Technical Review Complete) TO4 Team Review | 20d | 2023-03-28 | 2023-04-24 | CP-P5-01-01-SD-0150, CP-P5-00-00-MS-0400 |  |  |  | 41d | 0d |  | supt |  |  | TO4 |  |  |  |  |  |  |  |  |  |  | 2 |  |  |  |
| CP-P5-01-01-SD-0430 |  | EPlan: IIL - Medical & Public Health Support (CMCG Dispositions Technical Review Comments) | 34d | 2023-04-25 | 2023-05-22 | CP-P5-01-01-SD-0420 |  | 2023-04-25 | 2023-06-12 | 41d | 0d |  | supt |  |  | CMCG |  |  |  |  |  |  |  |  |  |  |  |  |  |  |
|  | 14 | **EPLAN IIM** |  | 2022-09-21 | 2023-05-22 |  |  |  |  |  |  |  |  |  |  |  |  |  |  |  |  |  |  |  |  |  |  |  |  |  |
| CP-P5-01-01-SD-0660 |  | EPlan: IIM - Recovery & Re-Entry (Initial/Revised Draft Developed for Fluor Review) | 22d | 2022-09-21 A | 2022-10-28 A | CP-P5-01-01-SD-0580 SS | 100% | 2022-09-21 | 2022-10-20 |  |  | OCT | supt |  | oct update | CMCG |  |  |  |  |  |  |  |  |  |  |  |  |  |  |
| CP-P5-01-01-SD-0145 |  | EPlan: IIM - Recovery & Re-Entry (Fluor Initial/Revised Draft Review Completed) | 19d | 2022-10-28 A | 2022-10-31 A | CP-P5-01-01-SD-0660 | 100% | 2022-10-31 | 2022-11-25 |  |  | OCT | supt |  | oct update start slipped from 21oct | CMCG | UDF_G1 | Yes | Yes | CMCG | As of 15nov22 On Track | As of 29nov22 Complete | 03 | FNTP | P5 |  |  | Oct |  |  |
| CP-P5-01-01-SD-0160 |  | EPlan: IIM - Recovery & Re-Entry (CMCG Addresses Fluor Comments) | 20d | 2022-11-21 A | 2022-11-22 A | CP-P5-01-01-SD-0145 | 100% | 2022-11-28 | 2022-12-23 |  |  |  | supt |  | oct update pred slip | CMCG | UDF_G1 | Yes | Yes | CMCG |  | As of 29nov22 Complete | 03 | FNTP | P5 | X |  |  |  |  |
| CP-P5-01-01-SD-0440 |  | EPlan: IIM - Recovery & Re-Entry (Certrec Technical Review Complete) TO4 Team Review | 20d | 2023-03-28 | 2023-04-24 | CP-P5-01-01-SD-0160, CP-P5-00-00-MS-0400 |  |  |  | 41d | 0d |  | supt |  |  | TO4 |  |  |  |  |  |  |  |  |  |  | 2 |  |  |  |
| CP-P5-01-01-SD-0450 |  | EPlan: IIM - Recovery & Re-Entry (CMCG Dispositions Technical Review Comments) | 20d | 2023-04-25 | 2023-05-22 | CP-P5-01-01-SD-0440 |  |  |  | 41d | 0d |  | supt |  |  | CMCG |  |  |  |  |  |  |  |  |  |  |  |  |  |  |
|  | 15 | **EPLAN IIN** |  | 2022-10-31 | 2023-05-22 |  |  |  |  |  |  |  |  |  |  |  |  |  |  |  |  |  |  |  |  |  |  |  |  |  |
| CP-P5-01-01-SD-0670 |  | EPlan: IIN - Exercises & Drills (Initial/Revised Draft Developed for Fluor Review) | 22d | 2022-10-31 A | 2022-11-17 A | CP-P5-01-01-SD-0590 SS | 100% | 2022-10-31 | 2022-11-30 |  |  | OCT | supt |  | oct update start slipped from 19oct | CMCG |  |  |  |  | As of 15nov22 On Track | As of 29nov22 Complete |  |  |  |  |  |  |  |  |
| CP-P5-01-01-SD-0155 |  | EPlan: IIN - Exercises & Drills (Fluor Initial/Revised Draft Review Completed) | 19d | 2022-11-21 A | 2022-11-22 A | CP-P5-01-01-SD-0670 | 100% | 2022-11-18 | 2022-12-15 |  |  |  | supt |  |  | CMCG | UDF_G1 | Yes | Yes | CMCG |  | As of 29nov22 Complete | 03 | FNTP | P5 |  |  |  |  |  |
| CP-P5-01-01-SD-0170 |  | EPlan: IIN - Exercises & Drillsp (CMCG Addresses Fluor Comments) | 20d | 2022-11-23 A | 2022-12-29 A | CP-P5-01-01-SD-0155 | 100% | 2022-12-16 | 2023-01-13 |  |  |  | supt |  |  | CMCG | UDF_G1 | Yes | Yes | CMCG |  | As of 29nov22 Tracking | 03 | FNTP | P5 | X |  |  | as of 30dec22 updated | as of 30dec22 updated |
| CP-P5-01-01-SD-0460 |  | EPlan: IIN - Exercises & Drills (Certrec Technical Review Complete) TO4 Team Review | 20d | 2023-03-28 | 2023-04-24 | CP-P5-01-01-SD-0170, CP-P5-00-00-MS-0400 |  |  |  | 41d | 0d |  | supt |  |  | TO4 |  |  |  |  |  |  |  |  |  |  | 2 |  |  |  |
| CP-P5-01-01-SD-0470 |  | EPlan: IIN - Exercises & Drills (CMCG Dispositions Technical Review Comments) | 20d | 2023-04-25 | 2023-05-22 | CP-P5-01-01-SD-0460 |  |  |  | 41d | 0d |  | supt |  |  | CMCG |  |  |  |  |  |  |  |  |  |  |  |  |  |  |
|  | 16 | **EPLAN IIO** |  | 2022-11-02 | 2023-05-22 |  |  |  |  |  |  |  |  |  |  |  |  |  |  |  |  |  |  |  |  |  |  |  |  |  |
| CP-P5-01-01-SD-0680 |  | EPlan: IIO - Radiological Emergency Response Training (Initial/Revised Draft Developed for Fluor Review) | 22d | 2022-11-02 A | 2022-12-02 A | CP-P5-01-01-SD-0670 SS | 100% |  |  |  |  |  | supt |  |  | CMCG |  |  |  |  | As of 15nov22 On Track | As of 29nov22 Tracking |  |  |  |  |  |  | as of 30dec22 updated |  |
| CP-P5-01-01-SD-0165 |  | EPlan: IIO - Radiological Emergency Response Training (Fluor Initial/Revised Draft Review Completed) | 19d | 2022-12-05 A | 2022-12-09 A | CP-P5-01-01-SD-0680 | 100% | 2022-12-05 | 2022-12-30 |  |  |  | supt |  |  | CMCG | UDF_G1 | Yes | Yes | CMCG |  |  | 03 | FNTP | P5 |  |  |  | as of 30dec22 updated | as of 30dec22 updated |
| CP-P5-01-01-SD-0180 |  | EPlan: IIO - Radiological Emergency Response Training (CMCG Addresses Fluor Comments) | 20d | 2022-12-12 A | 2022-12-29 A | CP-P5-01-01-SD-0165 | 100% | 2022-12-12 | 2023-01-09 |  |  |  | supt |  |  | CMCG | UDF_G1 | Yes | Yes | CMCG |  |  | 03 | FNTP | P5 | X |  |  | as of 30dec22 updated | as of 30dec22 updated |
| CP-P5-01-01-SD-0480 |  | EPlan: IIO - Radiological Emergency Response Training (Certrec Technical Review Complete) TO4 Team Review | 20d | 2023-03-28 | 2023-04-24 | CP-P5-01-01-SD-0180, CP-P5-00-00-MS-0400 |  |  |  | 41d | 0d |  | supt |  |  | TO4 |  |  |  |  |  |  |  |  |  |  | 2 |  |  |  |
| CP-P5-01-01-SD-0490 |  | EPlan: IIO - Radiological Emergency Response Training (CMCG Dispositions Technical Review Comments) | 20d | 2023-04-25 | 2023-05-22 | CP-P5-01-01-SD-0480 |  |  |  | 41d | 0d |  | supt |  |  | CMCG |  |  |  |  |  |  |  |  |  |  |  |  |  |  |

Notes:
- CP-P5-01-01-SD-0650: 9A SEP EOM Notes: Sep update complete
- CP-P5-01-01-SD-0135: 9A SEP EOM Notes: Sep update complete
- CP-P5-01-01-SD-0150: 9A SEP EOM Notes: Sep update revised title removed "& Uploads Draft to Certrec for Technical Review"
- CP-P5-01-01-SD-0660: 9A SEP EOM Notes: Sep update finish 28oct
- CP-P5-01-01-SD-0160: 9A SEP EOM Notes: Sep update revised title removed "& Uploads Draft to Certrec for Technical Review"
- CP-P5-01-01-SD-0170: 9A SEP EOM Notes: Sep update revised title removed "& Uploads Draft to Certrec for Technical Review"
- CP-P5-01-01-SD-0165: 12A DEC MIDMONTH Notes: As of 14dec22 revision from CMCG not included in the November update
- CP-P5-01-01-SD-0180: 9A SEP EOM Notes: Sep update revised title removed "& Uploads Draft to Certrec for Technical Review" / 12A DEC MIDMONTH Notes: As of 14dec22 revision from CMCG not included in the November update

| ID | WBS | Activity | Duration | Start | Finish | Predecessors | Complete | Remaining | Planned start | Planned finish | Total float | Free float | Constraint | Expected finish | doc type | Author | UDF Indicator 01 | zText_02 | zText_Level 3 Schedule | Rebaseline details | Forecast Finish | Forecast Start | CFPP, LLC WBS Structure | Period of Performance | Part | VERIFIED MONTHLY UPDATE | activity step | NEED UPDATE | cfpp two week acts | 10B OCT EOM Notes | 10A OCT MIDMONTH Notes | 11A NOV MIDMONTH Notes | 11B NOV EOM Notes |
| --- | --- | --- | --- | --- | --- | --- | --- | --- | --- | --- | --- | --- | --- | --- | --- | --- | --- | --- | --- | --- | --- | --- | --- | --- | --- | --- | --- | --- | --- | --- | --- | --- | --- |
|  | 17 | **EPLAN IIP** |  | 2022-11-30 | 2023-05-22 |  |  |  |  |  |  |  |  |  |  |  |  |  |  |  |  |  |  |  |  |  |  |  |  |  |  |  |  |
| CP-P5-01-01-SD-0690 |  | EPlan: IIP - Responsibility for the Planning Effort (Initial/Revised Draft Developed for Fluor Review) | 22d | 2022-11-30 A | 2023-01-06 | CP-P5-01-01-SD-0680 SS |  | 5d | 2022-11-30 | 2022-12-30 | 59d | 0d |  | 2023-01-06 | supt | CMCG |  |  |  |  |  |  |  |  |  |  |  |  |  |  |  |  |  |
| CP-P5-01-01-SD-0175 |  | EPlan: IIP - Responsibility for the Planning Effort (Fluor Initial/Revised Draft Review Completed) | 19d | 2023-01-09 | 2023-02-01 | CP-P5-01-01-SD-0690 |  |  | 2023-01-09 | 2023-02-02 | 59d | 0d | start on or after 2023-01-09 | 2023-02-01 | supt | CMCG | UDF_G1 | Yes | Yes | CMCG | 2023-02-01 | 2023-01-09 | 03 | FNTP | P5 |  |  |  |  |  |  |  |  |
| CP-P5-01-01-SD-0190 |  | EPlan: IIP - Responsibility for the Planning Effort (CMCG Addresses Fluor Comments) | 20d | 2023-02-02 | 2023-03-01 | CP-P5-01-01-SD-0175 |  |  |  |  | 59d | 0d |  | 2023-03-01 | supt | CMCG | UDF_G1 | Yes | Yes | CMCG | 2023-03-01 |  | 03 | FNTP | P5 | X |  |  |  |  |  |  |  |
| CP-P5-01-01-SD-0500 |  | EPlan: IIP - Responsibility for the Planning Effort (Certrec Technical Review Complete) TO4 Team Review | 20d | 2023-03-28 | 2023-04-24 | CP-P5-01-01-SD-0190, CP-P5-00-00-MS-0400 |  |  |  |  | 41d | 0d |  |  | supt | TO4 |  |  |  |  |  |  |  |  |  |  | 2 |  |  |  |  |  |  |
| CP-P5-01-01-SD-0510 |  | EPlan: IIP - Responsibility for the Planning Effort (CMCG Dispositions Technical Review Comments) | 20d | 2023-04-25 | 2023-05-22 | CP-P5-01-01-SD-0500, CP-P5-01-01-SD-0780 FF |  |  |  |  | 41d | 0d |  |  | supt | CMCG |  |  |  |  |  |  |  |  |  |  |  |  |  |  |  |  |  |
|  | 19 | **EPLAN 3** |  | 2023-03-28 | 2023-05-22 |  |  |  |  |  |  |  |  |  |  |  |  |  |  |  |  |  |  |  |  |  |  |  |  |  |  |  |  |
| CP-P5-01-01-SD-0780 |  | EPlan: III - References and Appendices | 40d | 2023-03-28 | 2023-05-22 | CP-P5-01-01-SD-0190, CP-P5-00-00-MS-0400 |  |  |  |  | 41d | 0d |  |  | supt | CMCG |  |  |  |  |  |  |  |  |  |  |  |  |  |  |  |  |  |
|  | 2 | **EPLAN IIA** |  | 2022-08-24 | 2023-05-22 |  |  |  |  |  |  |  |  |  |  |  |  |  |  |  |  |  |  |  |  |  |  |  |  |  |  |  |  |
| CP-P5-01-01-SD-0540 |  | EPlan: IIA - Assignment of Responsibility (Initial/Revised Draft Developed for Fluor Review) | 22d | 2022-08-24 A | 2022-10-07 A | CP-P5-01-01-SD-0015 SS | 100% |  | 2022-08-24 | 2022-09-23 |  |  |  |  | supt | CMCG |  |  |  |  |  |  |  |  |  | X |  | OCT | x | oct update | oct update Complete |  |  |
| CP-P5-01-01-SD-0020 |  | EPlan: IIA - Assignment of Responsibility (Fluor Initial/Revised Draft Review Completed) | 19d | 2022-10-10 A | 2022-10-20 A | CP-P5-01-01-SD-0540 | 100% |  | 2022-10-10 | 2022-11-03 |  |  |  |  | supt | CMCG | UDF_G1 | Yes | Yes | CMCG |  |  | 03 | FNTP | P5 |  |  | OCT | x | oct update | oct update Complete |  |  |
| CP-P5-01-01-SD-0040 |  | EPlan: IIA - Assignment of Responsibility (CMCG Addresses Fluor Comments) | 20d | 2022-10-21 A | 2022-11-17 A | CP-P5-01-01-SD-0020 | 100% |  |  |  |  |  |  |  | supt | CMCG | UDF_G1 | Yes |  | CMCG |  |  | 03 | FNTP | P5 | X |  | OCT |  | oct update | oct update | As of 15nov22 On Track | As of 29nov22 Complete |
| CP-P5-01-01-SD-0200 |  | EPlan: IIA - Assignment of Responsibility (Certrec Technical Review Complete) TO4 Team Review | 20d | 2023-03-28 | 2023-04-24 | CP-P5-01-01-SD-0040, CP-P5-00-00-MS-0400 |  |  |  |  | 41d | 0d |  |  | supt | TO4 |  |  |  |  |  |  |  |  |  |  | 2 |  |  |  |  |  |  |
| CP-P5-01-01-SD-0210 |  | EPlan: IIA - Assignment of Responsibility (CMCG Dispositions Technical Review Comments) | 20d | 2023-04-25 | 2023-05-22 | CP-P5-01-01-SD-0200 |  |  |  |  | 41d | 0d |  |  | supt | CMCG |  |  |  |  |  |  |  |  |  |  |  |  |  |  |  |  |  |
|  | 3 | **EPLAN IIB** |  | 2022-08-31 | 2023-05-22 |  |  |  |  |  |  |  |  |  |  |  |  |  |  |  |  |  |  |  |  |  |  |  |  |  |  |  |  |
| CP-P5-01-01-SD-0550 |  | EPlan: IIB - On-Site Emergency Organization (Initial/Revised Draft Developed for Fluor Review) | 22d | 2022-08-31 A | 2022-10-07 A | CP-P5-01-01-SD-0540 SS | 100% |  | 2022-08-31 | 2022-09-30 |  |  |  |  | supt | CMCG |  |  |  |  |  |  |  |  |  |  |  | OCT | x | oct update | oct update Complete |  |  |
| CP-P5-01-01-SD-0035 |  | EPlan: IIB - On-Site Emergency Organization (Fluor Initial/Revised Draft Review Completed) | 19d | 2022-10-10 A | 2022-10-27 A | CP-P5-01-01-SD-0550 | 100% |  | 2022-10-10 | 2022-11-03 |  |  |  |  | supt | CMCG | UDF_G1 | Yes | Yes | CMCG |  |  | 03 | FNTP | P5 |  |  | OCT | x | oct update | oct update Complete |  |  |
| CP-P5-01-01-SD-0045 |  | EPlan: IIB - On-Site Emergency Organization (CMCG Addresses Fluor Comments) | 20d | 2022-10-28 A | 2022-11-25 A | CP-P5-01-01-SD-0035 | 100% |  |  |  |  |  |  |  | supt | CMCG | UDF_G1 | Yes |  | CMCG |  |  | 03 | FNTP | P5 | X |  | OCT |  | oct update | oct update | As of 15nov22 On Track | As of 29nov22 Complete |
| CP-P5-01-01-SD-0220 |  | EPlan: IIB - On-Site Emergency Organization (Certrec Technical Review Complete) TO4 Team Review | 20d | 2023-03-28 | 2023-04-24 | CP-P5-01-01-SD-0045, CP-P5-00-00-MS-0400 |  |  |  |  | 41d | 0d |  |  | supt | TO4 |  |  |  |  |  |  |  |  |  |  | 2 |  |  |  |  |  |  |
| CP-P5-01-01-SD-0230 |  | EPlan: IIB - On-Site Emergency Organization (CMCG Dispositions Technical Review Comments) | 20d | 2023-04-25 | 2023-05-22 | CP-P5-01-01-SD-0220 |  |  |  |  | 41d | 0d |  |  | supt | CMCG |  |  |  |  |  |  |  |  |  |  |  |  |  |  |  |  |  |
|  | 4 | **EPLAN IIC** |  | 2022-09-07 | 2023-05-22 |  |  |  |  |  |  |  |  |  |  |  |  |  |  |  |  |  |  |  |  |  |  |  |  |  |  |  |  |
| CP-P5-01-01-SD-0560 |  | EPlan: IIC - Emergency Response Support & Resources (Initial/Revised Draft Developed for Fluor Review) | 22d | 2022-09-07 A | 2022-10-07 A | CP-P5-01-01-SD-0550 SS | 100% |  | 2022-09-07 | 2022-10-06 |  |  |  |  | supt | CMCG |  |  |  |  |  |  |  |  |  |  |  | OCT | x | oct update | oct update Complete |  |  |
| CP-P5-01-01-SD-0050 |  | EPlan: IIC - Emergency Response Support & Resources (Fluor Initial/Revised Draft Review Completed) | 19d | 2022-10-10 A | 2022-11-03 A | CP-P5-01-01-SD-0560 | 100% |  |  |  |  |  |  |  | supt | CMCG | UDF_G1 | Yes | sub 4-1 | CMCG |  |  | 03 | FNTP | P5 |  |  | OCT |  | oct update | oct update Complete | As of 15nov22 On Track | As of 29nov22 Complete |
| CP-P5-01-01-SD-0070 |  | EPlan: IIC - Emergency Response Support & Resources (CMCG Addresses Fluor Comments) | 20d | 2022-11-04 A | 2022-11-25 A | CP-P5-01-01-SD-0050 | 100% |  | 2022-11-04 | 2022-12-02 |  |  |  |  | supt | CMCG | UDF_G1 | Yes |  | CMCG |  |  | 03 | FNTP | P5 | X |  |  |  |  |  | As of 15nov22 On Track | As of 29nov22 Complete |
| CP-P5-01-01-SD-0240 |  | EPlan: IIC - Emergency Response Support & Resources (Certrec Technical Review Complete) TO4 Team Review | 20d | 2023-03-28 | 2023-04-24 | CP-P5-01-01-SD-0070, CP-P5-00-00-MS-0400 |  |  |  |  | 41d | 0d |  |  | supt | TO4 |  |  |  |  |  |  |  |  |  |  | 2 |  |  |  |  |  |  |
| CP-P5-01-01-SD-0250 |  | EPlan: IIC - Emergency Response Support & Resources (CMCG Dispositions Technical Review Comments) | 20d | 2023-04-25 | 2023-05-22 | CP-P5-01-01-SD-0240 |  |  |  |  | 41d | 0d |  |  | supt | CMCG |  |  |  |  |  |  |  |  |  |  |  |  |  |  |  |  |  |

Notes:
- CP-P5-01-01-SD-0690: 12B DEC EOM Notes: as of 30dec22 updated
- CP-P5-01-01-SD-0175: 12B DEC EOM Notes: as of 30dec22 updated CMCG completed and submitted for Fluor review 1/6/23 / CFPP - Contractor's Remarks: as of 30dec22 updated CMCG completed and submitted for Fluor review 1/6/23
- CP-P5-01-01-SD-0190: 9A SEP EOM Notes: Sep update revised title removed "& Uploads Draft to Certrec for Technical Review" / 12B DEC EOM Notes: as of 30dec22 updated / CFPP - Contractor's Remarks: as of 30dec22 updated
- CP-P5-01-01-SD-0540: 9A SEP EOM Notes: Sep Update finish slip from 22sep complete 7oct
- CP-P5-01-01-SD-0040: 9A SEP EOM Notes: Sep update revised title removed "& Uploads Draft to Certrec for Technical Review"
- CP-P5-01-01-SD-0045: 9A SEP EOM Notes: Sep update revised title removed "& Uploads Draft to Certrec for Technical Review"
- CP-P5-01-01-SD-0560: 9A SEP EOM Notes: Sep update complete
- CP-P5-01-01-SD-0070: 9A SEP EOM Notes: Sep update revised title removed "& Uploads Draft to Certrec for Technical Review"

| ID | WBS | Activity | Duration | Start | Finish | Predecessors | Complete | Planned start | Planned finish | Total float | Free float | NEED UPDATE | doc type | 10B OCT EOM Notes | Author | UDF Indicator 01 | zText_02 | Rebaseline details | 11A NOV MIDMONTH Notes | 11B NOV EOM Notes | CFPP, LLC WBS Structure | Period of Performance | Part | VERIFIED MONTHLY UPDATE | activity step | cfpp two week acts | zText_CFPP Look Ahead Notes | zText_Level 3 Schedule |
| --- | --- | --- | --- | --- | --- | --- | --- | --- | --- | --- | --- | --- | --- | --- | --- | --- | --- | --- | --- | --- | --- | --- | --- | --- | --- | --- | --- | --- |
|  | 5 | **EPLAN IID** |  | 2022-09-14 | 2023-05-22 |  |  |  |  |  |  |  |  |  |  |  |  |  |  |  |  |  |  |  |  |  |  |  |
| CP-P5-01-01-SD-0570 |  | EPlan: IID - Emergency Classification System (Initial/Revised Draft Developed for Fluor Review) | 22d | 2022-09-14 A | 2022-10-13 A | CP-P5-01-01-SD-0650 SS | 100% |  |  |  |  | OCT | supt | oct update | CMCG |  |  |  |  |  |  |  |  |  |  |  |  |  |
| CP-P5-01-01-SD-0055 |  | EPlan: IID - Emergency Classification System (Fluor Initial/Revised Draft Review Completed) | 19d | 2022-10-14 A | 2022-11-09 A | CP-P5-01-01-SD-0570 | 100% |  |  |  |  | OCT | supt | oct update | CMCG | UDF_G1 | Yes | CMCG | As of 15nov22 On Track | As of 29nov22 Complete | 03 | FNTP | P5 |  |  |  |  |  |
| CP-P5-01-01-SD-0065 |  | EPlan: IID - Emergency Classification System (CMCG Addresses Fluor Comments) | 20d | 2022-11-10 A | 2022-11-25 A | CP-P5-01-01-SD-0055 | 100% | 2022-11-10 | 2022-12-08 |  |  |  | supt |  | CMCG | UDF_G1 | Yes | CMCG | As of 15nov22 On Track | As of 29nov22 Complete | 03 | FNTP | P5 | X |  |  |  |  |
| CP-P5-01-01-SD-0260 |  | EPlan: IID - Emergency Classification System (Certrec Technical Review Complete) TO4 Team Review | 20d | 2023-03-28 | 2023-04-24 | CP-P5-01-01-SD-0065, CP-P5-00-00-MS-0400 |  |  |  | 41d | 0d |  | supt |  | TO4 |  |  |  |  |  |  |  |  |  | 2 |  |  |  |
| CP-P5-01-01-SD-0270 |  | EPlan: IID - Emergency Classification System (CMCG Dispositions Technical Review Comments) | 20d | 2023-04-25 | 2023-05-22 | CP-P5-01-01-SD-0260 |  |  |  | 41d | 0d |  | supt |  | CMCG |  |  |  |  |  |  |  |  |  |  |  |  |  |
|  | 6 | **EPLAN IIE** |  | 2022-09-21 | 2023-05-22 |  |  |  |  |  |  |  |  |  |  |  |  |  |  |  |  |  |  |  |  |  |  |  |
| CP-P5-01-01-SD-0580 |  | EPlan: IIE - Notification Methods & Procedures (Initial/Revised Draft Developed for Fluor Review) | 22d | 2022-09-21 A | 2022-10-20 A | CP-P5-01-01-SD-0570 SS | 100% |  |  |  |  | OCT | supt | oct update | CMCG |  |  |  |  |  |  |  |  |  |  | x |  |  |
| CP-P5-01-01-SD-0060 |  | EPlan: IIE - Notification Methods & Procedures (Fluor Initial/Revised Draft Review Completed) | 19d | 2022-10-21 A | 2022-11-16 A | CP-P5-01-01-SD-0580 | 100% |  |  |  |  | OCT | supt | oct update | CMCG | UDF_G1 | Yes | CMCG | As of 15nov22 On Track | As of 29nov22 Complete | 03 | FNTP | P5 |  |  |  |  |  |
| CP-P5-01-01-SD-0075 |  | EPlan: IIE - Notification Methods & Procedures (CMCG Addresses Fluor Comments) | 20d | 2022-11-17 A | 2022-11-25 A | CP-P5-01-01-SD-0060 | 100% | 2022-11-17 | 2022-12-15 |  |  |  | supt |  | CMCG | UDF_G1 | Yes | CMCG |  | As of 29nov22 Complete | 03 | FNTP | P5 | X |  |  |  |  |
| CP-P5-01-01-SD-0280 |  | EPlan: IIE - Notification Methods & Procedures (Certrec Technical Review Complete) TO4 Team Review | 20d | 2023-03-28 | 2023-04-24 | CP-P5-01-01-SD-0075, CP-P5-00-00-MS-0400 |  |  |  | 41d | 0d |  | supt |  | TO4 |  |  |  |  |  |  |  |  |  | 2 |  |  |  |
| CP-P5-01-01-SD-0290 |  | EPlan: IIE - Notification Methods & Procedures (CMCG Dispositions Technical Review Comments) | 20d | 2023-04-25 | 2023-05-22 | CP-P5-01-01-SD-0280 |  |  |  | 41d | 0d |  | supt |  | CMCG |  |  |  |  |  |  |  |  |  |  |  |  |  |
|  | 7 | **EPLAN IIF** |  | 2022-09-28 | 2023-05-22 |  |  |  |  |  |  |  |  |  |  |  |  |  |  |  |  |  |  |  |  |  |  |  |
| CP-P5-01-01-SD-0590 |  | EPlan: IIF - Emergency Communications (Initial/Revised Draft Developed for Fluor Review) | 22d | 2022-09-28 A | 2022-10-27 A | CP-P5-01-01-SD-0660 SS | 100% |  |  |  |  | OCT | supt | oct update | CMCG |  |  |  |  |  |  |  |  |  |  | x |  |  |
| CP-P5-01-01-SD-0080 |  | EPlan: IIF - Emergency Communications (Fluor Initial/Revised Draft Review Completed) | 19d | 2022-10-28 A | 2022-11-23 A | CP-P5-01-01-SD-0590 | 100% |  |  |  |  | OCT | supt | oct update | CMCG | UDF_G1 | Yes | CMCG | As of 15nov22 On Track | As of 29nov22 Complete | 03 | FNTP | P5 |  |  |  | Y |  |
| CP-P5-01-01-SD-0090 |  | EPlan: IIF - Emergency Communications (CMCG Addresses Fluor Comments) | 20d | 2022-11-25 A | 2022-11-25 A | CP-P5-01-01-SD-0080 | 100% | 2022-11-25 | 2022-12-23 |  |  |  | supt | oct update pred slip | CMCG | UDF_G1 | Yes | CMCG |  | As of 29nov22 Complete | 03 | FNTP | P5 | X |  |  |  | Yes |
| CP-P5-01-01-SD-0300 |  | EPlan: IIF - Emergency Communications (Certrec Technical Review Complete) TO4 Team Review | 20d | 2023-03-28 | 2023-04-24 | CP-P5-01-01-SD-0090, CP-P5-00-00-MS-0400 |  |  |  | 41d | 0d |  | supt |  | TO4 |  |  |  |  |  |  |  |  |  | 2 |  |  |  |
| CP-P5-01-01-SD-0310 |  | EPlan: IIF - Emergency Communications (CMCG Dispositions Technical Review Comments) | 20d | 2023-04-25 | 2023-05-22 | CP-P5-01-01-SD-0300 |  |  |  | 41d | 0d |  | supt |  | CMCG |  |  |  |  |  |  |  |  |  |  |  |  |  |
|  | 8 | **EPLAN IIG** |  | 2022-05-18 | 2023-05-22 |  |  |  |  |  |  |  |  |  |  |  |  |  |  |  |  |  |  |  |  |  |  |  |
| CP-P5-01-01-SD-0600 |  | EPlan: IIG - Public Education & Information (Initial/Revised Draft Developed for Fluor Review) | 22d | 2022-05-18 A | 2022-06-29 A | CP-P5-01-01-SD-0700 SS | 100% | 2022-05-18 | 2022-06-17 |  |  |  | supt |  | CMCG |  |  |  |  |  |  |  |  |  |  |  |  |  |
| CP-P5-01-01-SD-0085 |  | EPlan: IIG - Public Education & Information (Fluor Initial/Revised Draft Review Completed) | 19d | 2022-06-30 A | 2022-07-07 A | CP-P5-01-01-SD-0600 | 100% | 2022-06-30 | 2022-07-27 |  |  |  | supt |  | CMCG | UDF_G1 | Yes | CMCG |  |  | 03 | FNTP | P5 |  |  |  |  | Yes |
| CP-P5-01-01-SD-0095 |  | EPlan: IIG - Public Education & Information (CMCG Addresses Fluor Comments) | 20d | 2022-07-11 A | 2022-08-24 A | CP-P5-01-01-SD-0085 | 100% | 2022-07-28 | 2022-08-24 |  |  |  | supt |  | CMCG | UDF_G1 | Yes | CMCG |  |  | 03 | FNTP | P5 | X |  |  |  | Yes |
| CP-P5-01-01-SD-0320 |  | EPlan: IIG - Public Education & Information (Certrec Technical Review Complete) TO4 Team Review | 20d | 2023-03-28 | 2023-04-24 | CP-P5-01-01-SD-0095, CP-P5-00-00-MS-0400 |  |  |  | 41d | 0d |  | supt |  | TO4 |  |  |  |  |  |  |  |  |  | 2 |  |  |  |
| CP-P5-01-01-SD-0330 |  | EPlan: IIG - Public Education & Information (CMCG Dispositions Technical Review Comments) | 20d | 2023-04-25 | 2023-05-22 | CP-P5-01-01-SD-0320 |  |  |  | 41d | 0d |  | supt |  | CMCG |  |  |  |  |  |  |  |  |  |  |  |  |  |

Notes:
- CP-P5-01-01-SD-0570: 9A SEP EOM Notes: Sep update complete
- CP-P5-01-01-SD-0065: 9A SEP EOM Notes: Sep update revised title removed "& Uploads Draft to Certrec for Technical Review"
- CP-P5-01-01-SD-0580: 9A SEP EOM Notes: Sep update complete
- CP-P5-01-01-SD-0075: 9A SEP EOM Notes: Sep update revised title removed "& Uploads Draft to Certrec for Technical Review"
- CP-P5-01-01-SD-0590: 9A SEP EOM Notes: Sep update complete
- CP-P5-01-01-SD-0090: 9A SEP EOM Notes: Sep update revised title removed "& Uploads Draft to Certrec for Technical Review"
- CP-P5-01-01-SD-0095: 9A SEP EOM Notes: Sep update revised title removed "& Uploads Draft to Certrec for Technical Review"

| ID | WBS | Activity | Type | Duration | Start | Finish | Predecessors | Complete | Remaining | Planned start | Planned finish | Total float | Free float | Constraint | Expected finish | doc type | Author | UDF Indicator 01 | zText_02 | zText_Level 3 Schedule | Rebaseline details | CFPP, LLC WBS Structure | Period of Performance | Part | VERIFIED MONTHLY UPDATE | activity step | SDA cleanup notes | 10A OCT MIDMONTH Notes | SDA ACT | REV0 - SDA | SDA needed | UDF Text 01 | COLA Critical Path Sched | Reconcile Rev 0 Milestones | Chapter | Section | PSHA | Monthly Variance | Forecast Finish | NEED UPDATE | Forecast Start | PREPDRFTREVA | Nuscale ACT Number | nuscale comp |
| --- | --- | --- | --- | --- | --- | --- | --- | --- | --- | --- | --- | --- | --- | --- | --- | --- | --- | --- | --- | --- | --- | --- | --- | --- | --- | --- | --- | --- | --- | --- | --- | --- | --- | --- | --- | --- | --- | --- | --- | --- | --- | --- | --- | --- |
|  | 9 | **EPLAN IIH** |  |  | 2022-06-15 | 2023-05-22 |  |  |  |  |  |  |  |  |  |  |  |  |  |  |  |  |  |  |  |  |  |  |  |  |  |  |  |  |  |  |  |  |  |  |  |  |  |  |
| CP-P5-01-01-SD-0610 |  | EPlan: IIH - Emergency Facilities & Equipment (Initial/Revised Draft Developed for Fluor Review) |  | 22d | 2022-06-15 A | 2022-07-15 A | CP-P5-01-01-SD-0600 SS | 100% |  |  |  |  |  |  |  | supt | CMCG |  |  |  |  |  |  |  |  |  |  |  |  |  |  |  |  |  |  |  |  |  |  |  |  |  |  |  |
| CP-P5-01-01-SD-0100 |  | EPlan: IIH - Emergency Facilities & Equipment (Fluor Initial/Revised Draft Review Completed) |  | 19d | 2022-07-18 A | 2022-07-20 A | CP-P5-01-01-SD-0610 | 100% |  | 2022-07-18 | 2022-08-11 |  |  |  |  | supt | CMCG | UDF_G1 | Yes | Yes | CMCG | 03 | FNTP | P5 |  |  |  |  |  |  |  |  |  |  |  |  |  |  |  |  |  |  |  |  |
| CP-P5-01-01-SD-0110 |  | EPlan: IIH - Emergency Facilities & Equipment (CMCG Addresses Fluor Comments) |  | 20d | 2022-07-21 A | 2022-09-09 A | CP-P5-01-01-SD-0100 | 100% |  | 2022-08-12 | 2022-09-09 |  |  |  |  | supt | CMCG | UDF_G1 | Yes | Yes | CMCG | 03 | FNTP | P5 | X |  |  |  |  |  |  |  |  |  |  |  |  |  |  |  |  |  |  |  |
| CP-P5-01-01-SD-0340 |  | EPlan: IIH - Emergency Facilities & Equipment (Certrec Technical Review Complete) TO4 Team Review |  | 20d | 2023-03-28 | 2023-04-24 | CP-P5-01-01-SD-0110, CP-P5-00-00-MS-0400 |  |  |  |  | 41d | 0d |  |  | supt | TO4 |  |  |  |  |  |  |  |  | 2 |  |  |  |  |  |  |  |  |  |  |  |  |  |  |  |  |  |  |
| CP-P5-01-01-SD-0350 |  | EPlan: IIH - Emergency Facilities & Equipment (CMCG Dispositions Technical Review Comments) |  | 20d | 2023-04-25 | 2023-05-22 | CP-P5-01-01-SD-0340 |  |  |  |  | 41d | 0d |  |  | supt | CMCG |  |  |  |  |  |  |  |  |  |  |  |  |  |  |  |  |  |  |  |  |  |  |  |  |  |  |  |
|  | 18 | **EPLAN OFFSITE** |  |  | 2021-10-29 | 2022-06-13 |  |  |  |  |  |  |  |  |  |  |  |  |  |  |  |  |  |  |  |  |  |  |  |  |  |  |  |  |  |  |  |  |  |  |  |  |  |  |
| CP-P5-01-01-SD-0700 |  | EPlan: Offsite EP Communications Plan (Initial/Revised Draft Developed for Fluor Review) /CFPP/NuScale/XENS |  | 22d | 2021-10-29 A | 2022-01-14 A |  | 100% |  | 2022-10-31 | 2022-11-30 |  |  |  |  | supt | CMCG |  |  |  |  |  |  |  |  |  |  |  |  |  |  |  |  |  |  |  |  |  |  |  |  |  |  |  |
| CP-P5-01-01-SD-0010 |  | EPlan: Offsite EP Communications Plan (Fluor Initial/Revised Draft Review Completed) /CFPP/NuScale/XENS |  | 15d | 2022-05-02 A | 2022-05-20 A | CP-P5-01-01-SD-0005 SS, CP-P5-01-01-SD-0700 | 100% |  |  |  |  |  |  |  | supt | CMCG | UDF_G1 | Yes | Yes | CMCG | 03 | FNTP | P5 |  |  |  |  |  |  |  |  |  |  |  |  |  |  |  |  |  |  |  |  |
| CP-P5-01-01-SD-0025 |  | EPlan: Offsite EP Communications Plan (CMCG Addresses Fluor Comments) |  | 15d | 2022-05-23 A | 2022-06-13 A | CP-P5-01-01-SD-0010 | 100% |  |  |  |  |  |  |  | supt | CMCG | UDF_G1 | Yes | Yes | CMCG | 03 | FNTP | P5 | X |  |  |  |  |  |  |  |  |  |  |  |  |  |  |  |  |  |  |  |
|  | 02 | **CFPP - COLA Prep - Part 05 - Section Writing** |  |  | 2023-05-22 | 2023-05-22 |  |  |  |  |  |  |  |  |  |  |  |  |  |  |  |  |  |  |  |  |  |  |  |  |  |  |  |  |  |  |  |  |  |  |  |  |  |  |
| CP-P5-01-01-SW-0015 |  | Issue Rev 0 - Part 05 Emergency Plans | milestone | 0d | 2023-05-22 | 2023-05-22 | CP-P5-01-01-SD-0510, CP-P5-01-01-SD-0330, CP-P5-01-01-SD-0350, CP-P5-01-01-SD-0370, CP-P5-01-01-SD-0390, CP-P5-01-01-SD-0410, CP-P5-01-01-SD-0019, CP-P5-01-01-SD-0210, CP-P5-01-01-SD-0230, CP-P5-01-01-SD-0250, CP-P5-01-01-SD-0430, CP-P5-01-01-SD-0270, CP-P5-01-01-SD-0310, CP-P5-01-01-SD-0290, CP-P5-01-01-SD-0450, CP-P5-01-01-SD-0470, CP-P5-01-01-SD-0490, CP-P5-01-01-SD-0025, CP-P5-01-01-SD-0780 |  |  |  |  | 41d | 0d |  |  | deliv | CMCG | UDF_G1 | Yes | Yes | CMCG | 03 | FNTP | P5 |  | 5 | 8/15/23 | oct update Execution Plan change | N/A | CMCG-REV0 | No SDA |  |  |  |  |  |  |  |  |  |  |  |  |  |
|  | 06 | **CFPP - COLA Prep - Part 06 Security Plans** |  |  | 2022-10-19 | 2023-09-13 |  |  |  |  |  |  |  |  |  |  |  |  |  |  |  |  |  |  |  |  |  |  |  |  |  |  |  |  |  |  |  |  |  |  |  |  |  |  |
|  | 01 | **CFPP - COLA Prep - Part 06 - Chapter 01 Security Plans** |  |  | 2022-10-19 | 2023-09-13 |  |  |  |  |  |  |  |  |  |  |  |  |  |  |  |  |  |  |  |  |  |  |  |  |  |  |  |  |  |  |  |  |  |  |  |  |  |  |
|  | 01 | **CFPP - COLA Prep - Part 06 - Chapter 01 - Section 1 Security Plans** |  |  | 2022-10-19 | 2023-09-13 |  |  |  |  |  |  |  |  |  |  |  |  |  |  |  |  |  |  |  |  |  |  |  |  |  |  |  |  |  |  |  |  |  |  |  |  |  |  |
| CP-P6-01-01-SD-0025 |  | Procure Security Plan Consultant | milestone | 0d | 2022-10-19 A | 2022-10-19 A |  | 100% |  | 2022-11-01 | 2022-11-01 |  |  |  |  | supt | NuScale |  | Yes | Yes | NUSCALE | 03 | FNTP | P6 |  |  |  |  |  |  |  | KEC | 2 | 13.06 | 1 | 1 | NPSHA |  |  |  |  |  |  |  |
|  | 01 | **CFPP - COLA Prep - Part 06 - Chapter 01 - Section 1 - Support Documents** |  |  | 2022-12-12 | 2023-08-22 |  |  |  |  |  |  |  |  |  |  |  |  |  |  |  |  |  |  |  |  |  |  |  |  |  |  |  |  |  |  |  |  |  |  |  |  |  |  |
| CP-P6-01-01-SD-0010 |  | Prepare & Submit Site-Specific Input for Access Authorization Program (COL Item 13.06-5) |  | 120d | 2022-12-12 A | 2023-07-03 | CP-P6-01-01-SD-0015 SS, CP-P6-01-01-SD-0025 |  | 130d | 2022-12-14 | 2023-06-01 | 206d | 0d | start on or after 2022-12-12 | 2023-07-03 | supt | NuScale |  | Yes | Yes | NUSCALE | 03 | FNTP | P6 |  |  |  |  |  |  |  | KEC |  |  | 1 | 1 |  | Oct | 2023-07-03 |  |  |  |  |  |
| CP-P6-01-01-SD-0000 |  | Prepare & Establish a Safeguards Information Program, to Protect Against Unauthorized Disclosure |  | 30d | 2022-12-13 A | 2023-03-08 | PKM-0065, CP-P6-01-01-SD-0025 |  | 48d | 2022-12-12 | 2023-01-23 | 288d | 0d | start on or after 2022-12-12 | 2023-03-08 | supt | NuScale |  | Yes | Yes | NUSCALE | 03 | FNTP | P6 |  |  |  |  |  |  |  |  |  |  | 1 | 1 |  | Oct | 2023-03-08 |  |  |  |  |  |
| CP-P6-01-01-SD-0015 |  | Prepare & Submit Site Specific Input for Security Plans (includes a PSP, T&Q Plan, & SG Plan (COL Item 13.06-1) |  | 120d | 2022-12-14 A | 2023-08-22 | CP-P6-01-01-SD-0000 FF, CP-P2-19-01-SD-0055 FF |  | 165d | 2022-12-14 | 2023-06-01 | 171d | 0d | start on or after 2022-12-14 | 2023-08-22 | supt | NuScale |  | Yes | Yes | NUSCALE | 03 | FNTP | P6 |  |  |  |  |  |  |  | KEC |  |  | 1 | 1 |  | Oct | 2023-08-22 | OCT |  |  |  |  |
| CP-P6-01-01-SD-0005 |  | Prepare & Submit Site-Specific Input for Cyber Security Plan (COL Item 13.06-6) |  | 120d | 2023-03-20 | 2023-06-29 | CP-P6-01-01-SD-0025 |  |  | 2023-03-20 | 2023-09-06 | 14d | 7d | start on or after 2023-03-20 |  | supt | NuScale |  | Yes | Yes | NUSCALE | 03 | FNTP | P6 |  |  |  |  |  |  |  | KEC | 2 | 13.06 | 1 | 1 | NPSHA |  | 2023-06-29 |  | 2023-03-20 |  |  |  |
|  | 02 | **CFPP - COLA Prep - Part 06 - Chapter 01 - Section 1 - Section Writing** |  |  | 2023-07-12 | 2023-09-13 |  |  |  |  |  |  |  |  |  |  |  |  |  |  |  |  |  |  |  |  |  |  |  |  |  |  |  |  |  |  |  |  |  |  |  |  |  |  |
| CP-P6-01-01-SW-0000 |  | Prepare Draft Rev A -Check Updated Supporting Documents -Part 06 Security Plans |  | 70d | 2023-07-12 | 2023-08-15 | IFM-SPD-TO4-0040, CP-P6-01-01-SD-0005, CP-P6-01-01-SD-0025 |  |  | 2023-07-12 | 2023-10-18 | 7d | 0d | start on or after 2023-07-12 |  | deliv | NuScale |  | Yes | Yes | NUSCALE | 03 | FNTP | P6 |  | 1 |  |  |  |  |  | KEC | 2 | 13.06 | 1 | 1 | NPSHA |  | 2023-09-13 |  | 2023-07-12 | NS-REVA |  |  |
| CP-P6-01-01-SW-0005 |  | Review Draft Rev A - Part 6 Security Plans (TO4 Team Review) |  | 10d | 2023-08-16 | 2023-08-29 | CP-P6-01-01-SW-0000 |  |  |  |  | 26d | 0d |  |  | deliv | NuScale |  | Yes | Yes | NUSCALE | 03 | FNTP | P6 |  | 2 |  |  |  |  |  | KEC |  |  | 1 | 1 | NPSHA |  |  |  |  |  |  |  |
| CP-P6-01-01-SW-0010 |  | Resolve Rev A Comments - Part 6 Security Plans |  | 5d | 2023-08-30 | 2023-09-06 | CP-P6-01-01-SW-0005 |  |  |  |  | 26d | 0d |  |  | deliv | NuScale |  | Yes | Yes | NUSCALE | 03 | FNTP | P6 |  | 3 |  |  |  |  |  | KEC |  |  | 1 | 1 | NPSHA |  |  |  |  |  |  |  |
| CP-P6-01-01-SW-0015 |  | Issue Rev 0 - Part 06 Security Plans |  | 5d | 2023-09-07 | 2023-09-13 | CP-P6-01-01-SW-0010 |  |  |  |  | 26d | 0d |  |  | deliv | NuScale |  | Yes | Yes | NUSCALE | 03 | FNTP | P6 |  | 5 |  |  | N/A | NS-REV0 | No SDA | KEC |  |  | 1 | 1 | NPSHA |  |  |  |  |  | 56COL.P2.CH | nuscale |

Notes:
- CP-P5-01-01-SD-0110: 9A SEP EOM Notes: Sep update revised title removed "& Uploads Draft to Certrec for Technical Review"
- CP-P5-01-01-SD-0025: 9A SEP EOM Notes: Sep update revised title removed "& Uploads Draft to Certrec for Technical Review"
- CP-P6-01-01-SD-0025: UDF Text 02: Design specific items such as dwgs. for inputs. / 10B OCT EOM Notes: oct update successor moved in from 18nov22
- CP-P6-01-01-SD-0010: 10B OCT EOM Notes: oct update pred slip out / 11B NOV EOM Notes: As of 29nov22 start slip from 30nov22 / 12B DEC EOM Notes: as of 30dec22 updated / CFPP - Contractor's Remarks: as of 30dec22 updated
- CP-P6-01-01-SD-0000: 10B OCT EOM Notes: oct update start move in from 18nov22 finish move from 29dec22 / 11B NOV EOM Notes: As of 29nov22 start slip from 01nov22 / 12B DEC EOM Notes: as of 30dec22 updated / CFPP - Contractor's Remarks: as of 30dec22 updated
- CP-P6-01-01-SD-0015: UDF Text 02: (includes a Physical Security Plan, a Training & Qualification Plan, and a Safeguards Contingency Plan) / 10B OCT EOM Notes: oct update start slip from 13oct22 finish slip from 31mar to 1aug23 dur from 120 to 172 (verify this slip) / 11B NOV EOM Notes: As of 29nov22 start slip from 30nov22 (Nuscale duration increase from 120 to 157 driving float negative) removed duration increase for update / 12A DEC MIDMONTH Notes: As of 12dec22 revised duration back to 157 as per Nuscale update duration reduced by 4 days to eliminate neg float / 12B DEC EOM Notes: as of 30dec22 updated / CFPP - Contractor's Remarks: as of 30dec22 updated
- CP-P6-01-01-SD-0005: UDF Text 02: Design specific items such as dwgs. for inputs. / 11B NOV EOM Notes: As of 29nov22 start slip from 9jan23 / 12B DEC EOM Notes: as of 30dec22 updated / CFPP - Contractor's Remarks: as of 30dec22 updated
- CP-P6-01-01-SW-0000: 12B DEC EOM Notes: as of 30dec22 updated / CFPP - Contractor's Remarks: as of 30dec22 updated
- CP-P6-01-01-SW-0005: 12A DEC MIDMONTH Notes: As of 12dec22 Nuscal update ignores pred finish on 3jul23 / 12B DEC EOM Notes: as of 30dec22 updated please check with Fluor PM, security plan review sequence has changed. I do not have the most up to date information as final reviews are kept in the Fluor schedule / CFPP - Contractor's Remarks: as of 30dec22 updated please check with Fluor PM, security plan review sequence has changed. I do not have the most up to date information as final reviews are kept in the Fluor schedule
- CP-P6-01-01-SW-0015: 10B OCT EOM Notes: oct update Nuscale finish 13sep23

| ID | WBS | Activity | Duration | Start | Finish | Predecessors | Remaining | Planned start | Planned finish | Total float | Free float | Constraint | zText_02 | zText_CFPP Look Ahead Notes | zText_Level 3 Schedule | Deliverable Owner | VERIFIED MONTHLY UPDATE | Rebaseline details | 9A SEP EOM Notes | Monthly Variance | doc type | 11A NOV MIDMONTH Notes | CFPP, LLC WBS Structure | Author | Period of Performance | Part | Chapter | Section | SDA cleanup notes | zText_RFI | JLG - Generic Field | z_Text-4 | PREPDRFTREVA | 11B NOV EOM Notes | PSHA | activity step | UDF Indicator 01 | Nuscale ACT Number | nuscale comp | SDA ACT | REV0 - SDA | SDA needed | DOE MILESTONE | CFPP - Contractor's Remarks | Forecast Finish | Forecast Start | COLA Critical Path Sched | zText_33 |
| --- | --- | --- | --- | --- | --- | --- | --- | --- | --- | --- | --- | --- | --- | --- | --- | --- | --- | --- | --- | --- | --- | --- | --- | --- | --- | --- | --- | --- | --- | --- | --- | --- | --- | --- | --- | --- | --- | --- | --- | --- | --- | --- | --- | --- | --- | --- | --- | --- |
|  | 07 | **CFPP - COLA Prep - Part 07 Exemptions & Departures** |  | 2022-06-20 | 2023-05-10 |  |  |  |  |  |  |  |  |  |  |  |  |  |  |  |  |  |  |  |  |  |  |  |  |  |  |  |  |  |  |  |  |  |  |  |  |  |  |  |  |  |  |  |
|  | 01 | **CFPP - COLA Prep - Part 07 - Chapter 01 Exemptions & Departures** |  | 2022-06-20 | 2023-05-10 |  |  |  |  |  |  |  |  |  |  |  |  |  |  |  |  |  |  |  |  |  |  |  |  |  |  |  |  |  |  |  |  |  |  |  |  |  |  |  |  |  |  |  |
|  | 01 | **CFPP - COLA Prep - Part 07 - Chapter 01 - Section 1 - Exemptions & Departures** |  | 2022-06-20 | 2023-05-10 |  |  |  |  |  |  |  |  |  |  |  |  |  |  |  |  |  |  |  |  |  |  |  |  |  |  |  |  |  |  |  |  |  |  |  |  |  |  |  |  |  |  |  |
|  | 01 | **CFPP - COLA Prep - Part 07 - Chapter 01 - Section 1 - Support Documents** |  | 2022-06-20 | 2023-03-29 |  |  |  |  |  |  |  |  |  |  |  |  |  |  |  |  |  |  |  |  |  |  |  |  |  |  |  |  |  |  |  |  |  |  |  |  |  |  |  |  |  |  |  |
| CP-P7-01-01-SD-0010 |  | Develop Process for Preparation, Review & Approval of Exemptions/ Departures | 30d | 2022-06-20 A | 2023-01-04 | IFM-TO5-TO4-0000 | 3d | 2022-06-14 | 2022-07-26 | 98d | 0d |  | Yes | Y | Yes | Paul/Beth | X | NUSCALE | Sep update finish slip from 30sep | Oct | supt | As of 15nov22 30nov22 forecast finish | 03 | NuScale | FNTP | P7 | 1 | 1 |  |  |  |  |  |  |  |  |  |  |  |  |  |  |  |  |  |  |  |  |
| CP-P7-01-01-SD-0000 |  | Develop Exemption to Minimize Decommissioning Funding | 30d | 2023-01-02 | 2023-02-10 |  |  |  |  | 131d | 33d |  | Yes |  | Yes |  |  | NUSCALE |  |  | supt |  | 03 | NuScale | FNTP | P7 | 1 | 1 | delete or verify requirement for this activity |  |  |  |  |  |  |  |  |  |  |  |  |  |  |  |  |  |  |  |
| CP-P7-01-01-SD-0005 |  | Provide Input to Support Exemptions/ Departures (as needed) | 60d | 2023-01-05 | 2023-03-29 | CP-P7-01-01-SD-0010 |  |  |  | 98d | 0d |  | Yes |  | Yes |  |  | NUSCALE |  |  | supt |  | 03 | NuScale | FNTP | P7 | 1 | 1 |  | RFI 102 & 202 |  |  |  |  |  |  |  |  |  |  |  |  |  |  |  |  |  |  |
|  | 02 | **CFPP - COLA Prep - Part 07 - Chapter 01 - Section 1 - Section Writing** |  | 2023-03-30 | 2023-05-10 |  |  |  |  |  |  |  |  |  |  |  |  |  |  |  |  |  |  |  |  |  |  |  |  |  |  |  |  |  |  |  |  |  |  |  |  |  |  |  |  |  |  |  |
| CP-P7-01-01-SW-0015 |  | Prepare Draft Rev A -Check Updated Supporting Documents -Part 07 Exemptions & Departures | 10d | 2023-03-30 | 2023-04-12 | CP-P7-01-01-SD-0005, CP-P7-01-01-SD-0000, CP-P7-01-01-SD-0010 |  |  |  | 98d | 0d |  | Yes |  | Yes |  |  | NUSCALE |  |  | deliv |  | 03 | NuScale | FNTP | P7 | 1 | 1 |  |  | CP XXX SI | CP-5 | NS-REVA | As of 29nov22 pred start slip out | PSHA | 1 |  |  |  |  |  |  |  |  |  |  |  |  |
| CP-P7-01-01-SW-0005 |  | Review Draft Rev A - Part 07 Exemptions & Departures (TO4 Team Review) | 10d | 2023-04-13 | 2023-04-26 | CP-P7-01-01-SW-0015 |  |  |  | 113d | 0d |  | Yes |  | Yes |  |  | NUSCALE |  |  | deliv |  | 03 | TO4 | FNTP | P7 |  |  |  |  | CP XXX SI |  |  |  |  | 2 | UDF_G1 |  |  |  |  |  |  |  |  |  |  |  |
| CP-P7-01-01-SW-0010 |  | Resolve Rev A Comments - Part 07 Exemptions & Departures | 5d | 2023-04-27 | 2023-05-03 | CP-P7-01-01-SW-0005 |  |  |  | 113d | 0d |  | Yes |  | Yes |  |  | NUSCALE |  |  | deliv |  | 03 | NuScale | FNTP | P7 | 1 | 1 |  |  | CP XXX SI |  |  | As of 29nov22 pred start slip out |  | 3 |  |  |  |  |  |  |  |  |  |  |  |  |
| CP-P7-01-01-SW-0000 |  | Issue Rev 0 - Part 07 Exemptions & Departures | 5d | 2023-05-04 | 2023-05-10 | CP-P7-01-01-SW-0010 |  |  |  | 113d | 0d |  | Yes |  | Yes |  |  | NUSCALE |  |  | deliv |  | 03 | NuScale | FNTP | P7 | 1 | 1 |  |  | CP XXX SI |  |  | As of 29nov22 pred start slip out |  | 5 |  | 56COL.P2.CH | nuscale | N/A | NS-REV0 | No SDA | x |  |  |  |  |  |
|  | 08 | **CFPP - COLA Prep - Part 08 License Conditions; Inspects, Tests, Analyses & Accept Criteria (ITAAC)** |  | 2023-04-03 | 2023-10-10 |  |  |  |  |  |  |  |  |  |  |  |  |  |  |  |  |  |  |  |  |  |  |  |  |  |  |  |  |  |  |  |  |  |  |  |  |  |  |  |  |  |  |  |
|  | 01 | **CFPP - COLA Prep - Part 08 - Chapter 01 ITAACs** |  | 2023-04-03 | 2023-10-10 |  |  |  |  |  |  |  |  |  |  |  |  |  |  |  |  |  |  |  |  |  |  |  |  |  |  |  |  |  |  |  |  |  |  |  |  |  |  |  |  |  |  |  |
|  | 01 | **CFPP - COLA Prep - Part 08 - Chapter 01 - Section 1 ITAACs** |  | 2023-04-03 | 2023-10-10 |  |  |  |  |  |  |  |  |  |  |  |  |  |  |  |  |  |  |  |  |  |  |  |  |  |  |  |  |  |  |  |  |  |  |  |  |  |  |  |  |  |  |  |
|  | 01 | **CFPP - COLA Prep - Part 08 - Chapter 01 - Section 1 - Support Documents** |  | 2023-04-28 | 2023-08-22 |  |  |  |  |  |  |  |  |  |  |  |  |  |  |  |  |  |  |  |  |  |  |  |  |  |  |  |  |  |  |  |  |  |  |  |  |  |  |  |  |  |  |  |
| CP-P8-01-01-SD-0005 |  | Provide Site Specific ITAAC for Piping | 30d | 2023-04-28 | 2023-06-09 | IFM-SPD-TO4-0065 |  |  |  | 58d | 17d |  | Yes |  | Yes |  |  | FL4 |  |  | supt |  | 03 | FL4 | FNTP | P8 |  |  |  | RFI 502 |  |  |  |  |  |  | UDF_G1 |  |  |  |  |  |  |  |  |  |  |  |
| CP-P8-01-01-SD-0015 |  | Update ITAAC Reports with Site Specific Inputs | 30d | 2023-05-23 | 2023-07-05 | CP-P8-01-01-SD-0005 FF, CP-P8-01-01-SD-0025 FF, CP-P2-14-01-SW-0000 SS, CP-P2-14-02-SW-0000 SS, CP-P2-14-03-SW-0000 SS |  |  |  | 41d | 34d | start on or after 2023-02-23 | Yes |  | Yes |  |  | NUSCALE |  |  | supt |  | 03 | NuScale | FNTP | P8 | 1 | 1 |  |  |  |  |  |  |  |  |  |  |  |  |  |  |  | as of 30dec22 updated | 2023-07-18 | 2023-02-23 |  |  |
| CP-P8-01-01-SD-0025 |  | Provide Site-Specific Emergency Planning ITAAC | 30d | 2023-05-23 | 2023-07-05 | CP-P5-01-01-SW-0015 |  |  |  | 41d | 0d |  | Yes |  | Yes |  |  | FL4 |  |  | supt |  | 03 | FL4 | FNTP | P8 |  |  |  | RFI 202 |  |  |  |  |  |  | UDF_G1 |  |  |  |  |  |  |  |  |  |  |  |
| CP-P8-01-01-SD-0020 |  | Provide Site-Specific Physical Security ITAAC | 30d | 2023-07-12 | 2023-08-22 | CP-P6-01-01-SW-0000 SS |  |  |  | 7d | 0d | start on or after 2023-06-13 | Yes |  | Yes |  |  | NUSCALE |  |  | supt |  | 03 | NuScale | FNTP | P8 | 1 | 1 |  | RFI 102 |  |  |  |  |  |  |  |  |  |  |  |  |  | as of 30dec22 updated | 2023-07-25 | 2023-06-13 | 2 |  |
|  | 02 | **CFPP - COLA Prep - Part 08 - Chapter 01 - Section 1 - Section Writing** |  | 2023-04-03 | 2023-10-10 |  |  |  |  |  |  |  |  |  |  |  |  |  |  |  |  |  |  |  |  |  |  |  |  |  |  |  |  |  |  |  |  |  |  |  |  |  |  |  |  |  |  |  |
| CP-P8-01-01-SW-0000 |  | Prepare Draft Rev A -Check Updated Supporting Documents -Part 08 ITAACs | 100d | 2023-04-03 | 2023-08-22 | CP-P8-01-01-SD-0020 FF, CP-P8-01-01-SD-0015 FF, CP-P8-01-01-SD-0025 FF |  |  |  | 7d | 0d | start on or after 2023-03-20 | Yes |  | Yes |  |  | NUSCALE |  |  | deliv |  | 03 | NuScale | FNTP | P8 | 1 | 1 |  |  | CP XXX |  | NS-REVA |  |  | 1 |  |  |  |  |  |  |  | as of 30dec22 updated | 2023-08-27 | 2023-03-20 | 2 | Critical Path |
| CP-P8-01-01-SW-0005 |  | Review Draft Rev A - Part 8 ITAACs (TO4 Team Review) | 10d | 2023-08-23 | 2023-09-26 | CP-P8-01-01-SW-0000 |  | 2023-08-23 | 2023-09-06 | 7d | 0d |  | Yes |  | Yes |  |  | NUSCALE |  |  | deliv |  | 03 | TO4 | FNTP | P8 |  |  |  |  | CP XXX |  |  |  |  | 2 | UDF_G1 |  |  |  |  |  |  |  |  |  | 2 | Critical Path |
| CP-P8-01-01-SW-0010 |  | Resolve Rev A Comments - Part 8 ITAACs | 5d | 2023-09-27 | 2023-10-03 | CP-P8-01-01-SW-0005 |  |  |  | 7d | 0d |  | Yes |  | Yes |  |  | NUSCALE |  |  | deliv |  | 03 | NuScale | FNTP | P8 | 1 | 1 |  |  | CP XXX |  |  |  |  | 3 |  |  |  |  |  |  |  |  |  |  | 2 | Critical Path |
| CP-P8-01-01-SW-0015 |  | Issue Rev 0 - Part 8 ITAACs | 5d | 2023-10-04 | 2023-10-10 | CP-P8-01-01-SW-0010 |  |  |  | 7d | 0d |  | Yes |  | Yes |  |  | NUSCALE |  |  | deliv |  | 03 | NuScale | FNTP | P8 | 1 | 1 |  |  | CP XXX |  |  |  |  | 5 |  | 56COL.P2.CH | nuscale | N/A | NS-REV0 | No SDA |  |  |  |  | 2 | Critical Path |

Notes:
- CP-P7-01-01-SD-0010: 10B OCT EOM Notes: oct update finish slip from 31oct22 / 12B DEC EOM Notes: As of 30dec22 delayed need update
- CP-P7-01-01-SD-0000: UDF Text 02: Follows Pre application engagement? There is NO link to application engagement.
- CP-P7-01-01-SD-0005: UDF Text 02: Is E1-01.00-852 needed as a pred? It was a pred to the deleted GEN-102.
- CP-P7-01-01-SW-0015: UDF Text 02: Is E1-01.00-852 needed as a pred? It was a pred to the deleted GEN-102. / 12A DEC MIDMONTH Notes: As of 12dec22 finish driven by pred 03-07-sw-0020 FF (remove 3.7 pred) connect to ER finish
- CP-P7-01-01-SW-0005: UDF Text 02: Is E1-01.00-852 needed as a pred? It was a pred to the deleted GEN-102.
- CP-P7-01-01-SW-0010: UDF Text 02: Is E1-01.00-852 needed as a pred? It was a pred to the deleted GEN-102.
- CP-P7-01-01-SW-0000: 10B OCT EOM Notes: oct update finish slip from 08jun23(Nuscale verify forecast 8nov23 finish)
- CP-P8-01-01-SD-0015: 12B DEC EOM Notes: as of 30dec22 updated
- CP-P8-01-01-SD-0020: 12B DEC EOM Notes: as of 30dec22 updated start pushed out by p6-01-01-sd-0015 FS 1st mitigation (removed pred)
- CP-P8-01-01-SW-0000: 12B DEC EOM Notes: as of 30dec22 updated

| ID | WBS | Activity | Duration | Start | Finish | Predecessors | Remaining | Planned start | Planned finish | Total float | Free float | Constraint | Expected finish | UDF Text 02 | JLG - Generic Field | zText_02 | zText_Level 3 Schedule | Rebaseline details | doc type | PREPDRFTREVA | CFPP, LLC WBS Structure | Author | Period of Performance | Part | Chapter | Section | activity step | UDF Indicator 01 | 10A OCT MIDMONTH Notes | Nuscale ACT Number | nuscale comp | SDA ACT | REV0 - SDA | SDA needed | 9A SEP EOM Notes | NEED UPDATE | Monthly Variance | 12B DEC EOM Notes | CFPP - Contractor's Remarks | Forecast Finish | Critical Paths | DOE MILESTONE | 12A DEC MIDMONTH Notes | Forecast Start | COLA Critical Path Sched | SDA cleanup notes |
| --- | --- | --- | --- | --- | --- | --- | --- | --- | --- | --- | --- | --- | --- | --- | --- | --- | --- | --- | --- | --- | --- | --- | --- | --- | --- | --- | --- | --- | --- | --- | --- | --- | --- | --- | --- | --- | --- | --- | --- | --- | --- | --- | --- | --- | --- | --- |
|  | 09 | **CFPP - COLA Prep - Part 09 Withheld Information** |  | 2023-07-06 | 2023-08-16 |  |  |  |  |  |  |  |  |  |  |  |  |  |  |  |  |  |  |  |  |  |  |  |  |  |  |  |  |  |  |  |  |  |  |  |  |  |  |  |  |  |
|  | 01 | **CFPP - COLA Prep - Part 09 - Chapter 01 Withheld Information** |  | 2023-07-06 | 2023-08-16 |  |  |  |  |  |  |  |  |  |  |  |  |  |  |  |  |  |  |  |  |  |  |  |  |  |  |  |  |  |  |  |  |  |  |  |  |  |  |  |  |  |
|  | 01 | **CFPP - COLA Prep - Part 09 - Chapter 01 - Section 1 Withheld Information** |  | 2023-07-06 | 2023-08-16 |  |  |  |  |  |  |  |  |  |  |  |  |  |  |  |  |  |  |  |  |  |  |  |  |  |  |  |  |  |  |  |  |  |  |  |  |  |  |  |  |  |
|  | 01 | **CFPP - COLA Prep - Part 09 - Chapter 01 - Section 1 - Support Documents** |  |  |  |  |  |  |  |  |  |  |  |  |  |  |  |  |  |  |  |  |  |  |  |  |  |  |  |  |  |  |  |  |  |  |  |  |  |  |  |  |  |  |  |  |
|  | 02 | **CFPP - COLA Prep - Part 09 - Chapter 01 - Section 1 - Prepare Section** |  | 2023-07-06 | 2023-08-16 |  |  |  |  |  |  |  |  |  |  |  |  |  |  |  |  |  |  |  |  |  |  |  |  |  |  |  |  |  |  |  |  |  |  |  |  |  |  |  |  |  |
| CP-P9-01-01-SW-0000 |  | Prepare Draft Rev A -Check Updated Supporting Documents -Part 09 Withheld Information | 10d | 2023-07-06 | 2023-07-19 | CP-P2-03-07-SW-0020 FF, CP-P2-15-01-SD-0000 |  |  |  | 45d | 0d |  |  | Critical Path Item - FF | CP XXX | Yes | Yes | NUSCALE | supt | NS-REVA | 03 | NuScale | FNTP | P9 | 1 | 1 | 1 |  |  |  |  |  |  |  |  |  |  |  |  |  |  |  |  |  |  |  |
| CP-P9-01-01-SW-0005 |  | Review Draft Rev A - Part 9 Withheld Information (TO4 Team Review) | 10d | 2023-07-20 | 2023-08-02 | CP-P9-01-01-SW-0000 |  |  |  | 45d | 0d |  |  | Critical Path Item - FF | CP XXX | Yes | Yes | NUSCALE | supt |  | 03 | TO4 | FNTP | P9 |  |  | 2 | UDF_G1 | oct update |  |  |  |  |  |  |  |  |  |  |  |  |  |  |  |  |  |
| CP-P9-01-01-SW-0010 |  | Resolve Rev A Comments - Withheld Information | 5d | 2023-08-03 | 2023-08-09 | CP-P9-01-01-SW-0005 |  |  |  | 45d | 0d |  |  | Critical Path Item - FF | CP XXX | Yes | Yes | NUSCALE | supt |  | 03 | NuScale | FNTP | P9 | 1 | 1 | 3 |  |  |  |  |  |  |  |  |  |  |  |  |  |  |  |  |  |  |  |
| CP-P9-01-01-SW-0015 |  | Issue Rev 0 - Part 9 Withheld Information | 5d | 2023-08-10 | 2023-08-16 | CP-P9-01-01-SW-0010 |  |  |  | 45d | 0d |  |  |  | CP XXX | Yes | Yes | NUSCALE | supt |  | 03 | NuScale | FNTP | P9 | 1 | 1 | 5 |  |  | 56COL.P2.CH | nuscale | N/A | NS-REV0 | No SDA |  |  |  |  |  |  |  |  |  |  |  |  |
|  | 10 | **CFPP - COLA Prep - Part 10 Quality Assurance Program Description** |  | 2022-07-13 | 2023-08-24 |  |  |  |  |  |  |  |  |  |  |  |  |  |  |  |  |  |  |  |  |  |  |  |  |  |  |  |  |  |  |  |  |  |  |  |  |  |  |  |  |  |
|  | 01 | **CFPP - COLA Prep - Part 10 - Chapter 01 Quality Assurance Program Description** |  | 2022-07-13 | 2023-08-24 |  |  |  |  |  |  |  |  |  |  |  |  |  |  |  |  |  |  |  |  |  |  |  |  |  |  |  |  |  |  |  |  |  |  |  |  |  |  |  |  |  |
|  | 01 | **CFPP - COLA Prep - Part 10 - Chapter 01 - Section 1 - Quality Assurance Program Description** |  | 2022-07-13 | 2023-08-24 |  |  |  |  |  |  |  |  |  |  |  |  |  |  |  |  |  |  |  |  |  |  |  |  |  |  |  |  |  |  |  |  |  |  |  |  |  |  |  |  |  |
|  | 01 | **CFPP - COLA Prep - Part 10 - Chapter 01 - Section 1 - Support Documents** |  | 2022-07-13 | 2023-07-11 |  |  |  |  |  |  |  |  |  |  |  |  |  |  |  |  |  |  |  |  |  |  |  |  |  |  |  |  |  |  |  |  |  |  |  |  |  |  |  |  |  |
| CP-P10-01-01-SD-0000 |  | Prepare Nuclear Quality Assurance Plan (Quality Assurance Program Description) Report for CFPP | 20d | 2022-07-13 A | 2023-07-11 |  | 135d | 2022-07-13 | 2022-08-09 | 51d | 0d |  | 2023-07-11 |  |  | Yes | Yes | NUSCALE | supt |  | 03 | NuScale | FNTP | P10 | 1 | 1 |  |  |  |  | nuscalex17.05 |  |  |  | Sep update | OCT | Oct | as of 30dec22 updated | as of 30dec22 updated | 2023-07-11 | 4 | x |  |  |  |  |
|  | 02 | **CFPP - COLA Prep - Part 10 - Chapter 01 - Section 1 - Section Writing** |  | 2023-07-12 | 2023-08-24 |  |  |  |  |  |  |  |  |  |  |  |  |  |  |  |  |  |  |  |  |  |  |  |  |  |  |  |  |  |  |  |  |  |  |  |  |  |  |  |  |  |
| CP-P10-01-01-SW-0000 |  | Prepare Draft Rev A -Check Updated Supporting Documents -Part 10 QA Program Description | 70d | 2023-07-12 | 2023-07-12 | CP-P10-01-01-SD-0000 |  | 2023-07-12 | 2023-10-18 | 51d | 0d | start on or after 2023-07-12 | 2023-06-26 |  |  | Yes | Yes | NUSCALE | deliv | NS-REVA | 03 | NuScale | FNTP | P10 | 1 | 1 | 1 |  |  |  | nuscalex17.05 |  |  |  |  | OCT |  | as of 30dec22 updated | as of 30dec22 updated | 2023-07-25 | 4 |  | As of 12dec22 start slip from 4apr23 | 2023-07-12 |  |  |
| CP-P10-01-01-SW-0005 |  | Review Draft Rev A - Part 10 QA Program Description (TO4 Team Review) | 10d | 2023-07-12 | 2023-07-25 | CP-P10-01-01-SW-0000 |  |  |  | 51d | 12d |  |  |  |  | Yes | Yes | NUSCALE | deliv |  | 03 | TO4 | FNTP | P10 |  |  | 2 | UDF_G3 |  |  |  |  |  |  |  |  |  |  |  |  | 4 |  |  |  |  |  |
| CP-P10-01-01-SW-0010 |  | Resolve Rev A Comments - Part 10 QA Program Description | 5d | 2023-08-11 | 2023-08-17 | CP-P10-01-01-SW-0005 |  |  |  | 39d | 0d | start on or after 2023-08-11 |  |  |  | Yes | Yes | NUSCALE | deliv |  | 03 | NuScale | FNTP | P10 | 1 | 1 | 3 |  |  |  |  |  |  |  |  |  |  | as of 30dec22 updated | as of 30dec22 updated | 2023-08-16 | 4 |  | As of 12dec 22 Nuscale update ignores Team review duration | 2023-08-11 |  |  |
| CP-P10-01-01-SW-0015 |  | Issue Rev 0 - Part 10 QA Description | 5d | 2023-08-18 | 2023-08-24 | CP-P10-01-01-SW-0010 |  |  |  | 39d | 0d | start on or after 2023-08-17 |  |  |  | Yes | Yes | NUSCALE | deliv |  | 03 | NuScale | FNTP | P10 | 1 | 1 | 5 |  |  | 56COL.P2.CH | nuscale | N/A | NS-REV0 | No SDA | Sep update Nuscale has finish as 11july23 |  |  | as of 30dec22 updated | as of 30dec22 updated | 2023-08-17 | 4 |  |  | 2023-08-17 |  |  |
|  | 11 | **CFPP - COLA Prep - Part 11 Supplemental Info** |  | 2023-02-06 | 2023-07-25 |  |  |  |  |  |  |  |  |  |  |  |  |  |  |  |  |  |  |  |  |  |  |  |  |  |  |  |  |  |  |  |  |  |  |  |  |  |  |  |  |  |
|  | 01 | **CFPP - COLA Prep - Part 11 - Chapter 01 - Supplemental Info - LWA #2** |  | 2023-02-06 | 2023-07-25 |  |  |  |  |  |  |  |  |  |  |  |  |  |  |  |  |  |  |  |  |  |  |  |  |  |  |  |  |  |  |  |  |  |  |  |  |  |  |  |  |  |
|  | 01 | **CFPP - COLA Prep - Part 11 - Chapter 01 - Supplemental Info - LWA #2** |  | 2023-02-06 | 2023-07-25 |  |  |  |  |  |  |  |  |  |  |  |  |  |  |  |  |  |  |  |  |  |  |  |  |  |  |  |  |  |  |  |  |  |  |  |  |  |  |  |  |  |
| CP-P11-01-01-SW-0000 |  | Prepare Draft Rev A -Check Updated Supporting Documents -Part 11 Supplemental Info - LWA #2 | 305d | 2023-02-06 | 2023-06-26 | IFM-CFP-TO4-0077 FS+20d |  | 2023-02-06 | 2024-04-22 | 61d | 0d | start on or after 2023-02-06 |  | Critical Path Item - FF | CP XXX | Yes | Yes | FL4 | deliv | FL4-REVA | 03 | FL4 | FNTP | P11 |  |  | 1 | UDF_G1 |  |  |  |  |  |  | Sep update start slip from 25aug | OCT |  |  |  |  |  |  |  |  | 3 | new defined activity for LWA |
| CP-P11-01-01-SW-0005 |  | Review Draft Rev A - Part 11 Supplemental Data - LWA #2 (TO4 Team Review) | 10d | 2023-06-27 | 2023-07-11 | CP-P11-01-01-SW-0000 |  |  |  | 61d | 0d |  |  | Critical Path Item - FF | CP XXX | Yes | Yes | FL4 | deliv |  | 03 | TO4 | FNTP | P11 |  |  | 2 | UDF_G1 |  |  |  |  |  |  |  |  | Oct |  |  |  |  |  |  |  | 3 |  |
| CP-P11-01-01-SW-0010 |  | Resolve Rev A Comments- Part 11 Supplemental Data - LWA #2 | 5d | 2023-07-12 | 2023-07-18 | CP-P11-01-01-SW-0005 |  |  |  | 61d | 0d |  |  | Critical Path Item - FF | CP XXX | Yes | Yes | FL4 | deliv |  | 03 | FL4 | FNTP | P11 |  |  | 3 | UDF_G1 |  |  |  |  |  |  |  |  | Oct |  |  |  |  |  |  |  | 3 |  |
| CP-P11-01-01-SW-0015 |  | Issue Rev 0 - Part 11 Supplemental Data - LWA #2 (Transmit to CFPP) | 5d | 2023-07-19 | 2023-07-25 | CP-P11-01-01-SW-0010 |  |  |  | 61d | 0d |  |  |  | CP XXX | Yes | Yes | FL4 | deliv |  | 03 | FL4 | FNTP | P11 |  |  | 5 | UDF_G1 |  |  |  |  |  |  |  |  | Oct |  |  |  |  |  |  |  | 3 | 16 OCT Fin date |

Notes:
- CP-P9-01-01-SW-0000: 11B NOV EOM Notes: As of 29nov22 pred start slip out
- CP-P9-01-01-SW-0005: 11B NOV EOM Notes: As of 29nov22 pred start slip out
- CP-P9-01-01-SW-0010: 11B NOV EOM Notes: As of 29nov22 pred start slip out
- CP-P9-01-01-SW-0015: 11B NOV EOM Notes: As of 29nov22 pred start slip out
- CP-P10-01-01-SD-0000: 10B OCT EOM Notes: oct update finish slip from 24oct22
- CP-P10-01-01-SW-0000: 10B OCT EOM Notes: oct update finish slip
- CP-P10-01-01-SW-0010: 10B OCT EOM Notes: oct update finish slip
- CP-P10-01-01-SW-0015: 10B OCT EOM Notes: oct update finish slip
- CP-P11-01-01-SW-0000: 10B OCT EOM Notes: oct update show start (incorporate LWA schedule in November update) / 11B NOV EOM Notes: As of 29nov22 start slip from 11oct22 reduced duration from 150d

| ID | WBS | Activity | Type | Duration | Start | Finish | Predecessors | Complete | Remaining | Planned start | Planned finish | Total float | Free float | Constraint | Expected finish | Other | 9A SEP EOM Notes | Monthly Variance | 10B OCT EOM Notes | CFPP Eval | Author | 10A OCT MIDMONTH Notes | TWG | Comments | VERIFIED MONTHLY UPDATE | Forecast Finish | Forecast Start |
| --- | --- | --- | --- | --- | --- | --- | --- | --- | --- | --- | --- | --- | --- | --- | --- | --- | --- | --- | --- | --- | --- | --- | --- | --- | --- | --- | --- |
|  | 01 | **CFPP - COLA Prep - Part 11 - Chapter 01 - Support Documents** |  |  |  |  |  |  |  |  |  |  |  |  |  |  |  |  |  |  |  |  |  |  |  |  |  |
|  | 02 | **CFPP - COLA Prep - Part 11 - Chapter 01 - Section 1 - Section Writing** |  |  |  |  |  |  |  |  |  |  |  |  |  |  |  |  |  |  |  |  |  |  |  |  |  |
|  | 12 | **CFPP - COLA Prep - Topical Reports & Integration** |  |  | 2022-06-01 | 2023-11-02 |  |  |  |  |  |  |  |  |  |  |  |  |  |  |  |  |  |  |  |  |  |
|  | 01 | **CFPP - COLA Prep - Topical Reports & Risk Mitigation** |  |  | 2022-06-01 | 2023-11-02 |  |  |  |  |  |  |  |  |  |  |  |  |  |  |  |  |  |  |  |  |  |
| CP-P12-TP-GEN-0105 |  | Develop Topical Reports |  | 230d | 2022-09-01 A | 2023-10-20 |  |  | 207d | 2022-09-01 | 2023-07-26 | 9d | 0d |  | 2023-10-20 | cal | Sep update | Oct | oct update finish slip from 31jul23 (Nuscale True up) | GEN | NuScale |  |  |  |  |  |  |
| CP-P12-TP-GEN-0115 |  | Topical Review RAIs and ACRS Support |  | 190d | 2023-04-25 | 2023-11-02 | CP-P12-TP-EAL-0160 |  |  | 2023-04-25 | 2024-01-30 | 120d |  |  |  | cal |  |  |  |  | NuScale |  |  |  |  |  |  |
| CP-P12-TP-GEN-0110 |  | All Topical Reports Submitted | milestone | 0d | 2023-10-20 | 2023-10-20 | CP-P12-TP-VHA-0135, CP-P12-TP-VHA-0145, CP-P12-TP-GEN-0105 |  |  |  |  | 9d |  |  |  | cal |  |  |  |  | NuScale | oct update need better successor |  |  |  |  |  |
|  | 01 | **CFPP - COLA Prep - Topical Reports & Risk Mitigation - VHA White Paper** |  |  | 2022-06-01 | 2022-10-13 |  |  |  |  |  |  |  |  |  |  |  |  |  |  |  |  |  |  |  |  |  |
| CP-P12-TP-VHA-0100 |  | VHA: White Paper Comment Incorporation & Technical Finalization |  | 22d | 2022-06-01 A | 2022-06-30 A |  | 100% |  |  |  |  |  |  |  | cal |  |  |  |  | NuScale |  | 1 |  |  |  |  |
| CP-P12-TP-VHA-0105 |  | VHA: White Paper Technical Reviews |  | 10d | 2022-07-01 A | 2022-07-15 A | CP-P12-TP-VHA-0100 | 100% |  | 2022-07-18 | 2022-07-29 |  |  |  |  | cal |  |  |  |  | NuScale |  | 1 |  |  |  |  |
| CP-P12-TP-VHA-0110 |  | VHA: White Paper Flour/CFPP Review & Approval |  | 10d | 2022-07-01 A | 2022-07-15 A | CP-P12-TP-VHA-0100 | 100% |  | 2022-07-18 | 2022-07-29 |  |  |  |  | cal |  |  |  |  | TO4 |  | 1 | x |  |  |  |
| CP-P12-TP-VHA-0115 |  | VHA: White Paper Rizzo Review & Approval |  | 10d | 2022-07-01 A | 2022-07-15 A | CP-P12-TP-VHA-0100 | 100% |  | 2022-07-18 | 2022-07-29 |  |  |  |  | cal |  |  |  |  | RIZZO |  | 1 |  |  |  |  |
| CP-P12-TP-VHA-0120 |  | VHA: White Paper Executive Review & Approval |  | 5d | 2022-07-18 A | 2022-08-05 A | CP-P12-TP-VHA-0105, CP-P12-TP-VHA-0110 SS, CP-P12-TP-VHA-0115 | 100% |  | 2022-08-01 | 2022-08-05 |  |  |  |  | cal |  |  |  |  | NuScale |  | 1 |  |  |  |  |
| CP-P12-TP-VHA-0125 |  | VHA: White Paper Submittal Package - Including Redaction of Prop Information |  | 5d | 2022-07-25 A | 2022-08-08 A | CP-P12-TP-VHA-0120 SS | 100% |  | 2022-08-08 | 2022-08-12 |  |  |  |  | cal |  |  |  |  | NuScale |  | 1 |  |  |  |  |
| CP-P12-TP-VHA-0130 |  | VHA: White Paper Certec Processing and Submission |  | 5d | 2022-08-09 A | 2022-08-12 A | CP-P12-TP-VHA-0125 | 100% |  | 2022-08-04 | 2022-08-10 |  |  |  |  | cal |  |  |  |  | NuScale |  | 1 |  |  |  |  |
| CP-P12-TP-VHA-0140 |  | VHA: NRC Review Comments Received |  | 45d | 2022-08-12 A | 2022-10-13 A | CP-P12-TP-VHA-0135 | 100% |  | 2022-08-08 | 2022-10-10 |  |  |  |  | cal | Sep update finish slip from 31oct |  | oct update |  | NuScale |  | 1 |  | X |  |  |
| CP-P12-TP-VHA-0135 |  | VHA: White Paper Submission to NRC Complete | milestone | 0d | 2022-08-12 A | 2022-08-12 A | CP-P12-TP-VHA-0130 | 100% |  | 2022-08-05 | 2022-08-05 |  |  |  |  | cal |  |  |  |  | NuScale |  | 1 |  |  |  |  |
| CP-P12-TP-VHA-0145 |  | VHA: NuScale Incorporation of NRC Comments |  | 10d | 2022-10-13 A | 2022-10-13 A | CP-P12-TP-VHA-0140 | 100% |  | 2022-11-14 | 2022-11-28 |  |  |  |  | cal |  |  |  |  | NuScale |  | 1 |  |  |  |  |
|  | 02 | **CFPP - COLA Prep - Topical Reports & Risk Mitigation - Emergency Action Level Topical Report** |  |  | 2023-01-10 | 2023-04-24 |  |  |  |  |  |  |  |  |  |  |  |  |  |  |  |  |  |  |  |  |  |
|  | 01 | **EAL LTR: Planning and Decision Markers** |  |  |  |  |  |  |  |  |  |  |  |  |  |  |  |  |  |  |  |  |  |  |  |  |  |
|  | 02 | **EAL LTR Submission** |  |  | 2023-01-10 | 2023-04-24 |  |  |  |  |  |  |  |  |  |  |  |  |  |  |  |  |  |  |  |  |  |
| CP-P12-TP-EAL-0120 |  | EAL: Drafting Revision A of Topical Report (Blank Template) |  | 40d | 2023-01-10 | 2023-01-23 |  |  |  | 2023-01-10 | 2023-03-06 | 320d |  | start on or after 2023-01-10 |  | cal |  |  |  |  | NuScale |  |  |  |  | 2023-03-20 | 2023-01-10 |
| CP-P12-TP-EAL-0125 |  | EAL: Incorporate Comments into Revision A (Pre-Certrec Work) |  | 10d | 2023-02-21 | 2023-03-06 |  |  |  |  |  | 135d | 5d | start on or after 2023-02-21 |  | cal |  |  |  |  | NuScale |  |  |  |  | 2023-03-13 | 2023-02-21 |
| CP-P12-TP-EAL-0130 |  | EAL: Certrec Processing of LTR by Contractor |  | 5d | 2023-03-14 | 2023-03-20 | CP-P12-TP-EAL-0125 |  |  |  |  | 130d | 0d | start on or after 2023-03-14 |  | cal |  |  |  |  | NuScale |  |  |  |  | 2023-03-20 | 2023-03-14 |
| CP-P12-TP-EAL-0135 |  | EAL: Fluor Review & Approval of Draft Rev 0 LTR |  | 10d | 2023-03-21 | 2023-04-03 | CP-P12-TP-EAL-0130 |  |  |  |  | 130d | 10d |  |  | cal |  |  |  |  | TO4 |  |  |  |  |  |  |
| CP-P12-TP-EAL-0140 |  | EAL: CFPP Review & Approval of Draft Rev 0 LTR |  | 10d | 2023-03-21 | 2023-04-03 | CP-P12-TP-EAL-0130 |  |  |  |  | 130d | 10d |  |  | cal |  |  |  |  | CFPP |  |  |  |  |  |  |
| CP-P12-TP-EAL-0145 |  | EAL: NuScale Technical Review & Approval of Draft Rev 0 LTR |  | 10d | 2023-03-21 | 2023-04-03 | CP-P12-TP-EAL-0130 |  |  |  |  | 130d | 10d | start on or after 2023-03-21 |  | cal |  |  |  |  | NuScale |  |  |  |  | 2023-04-03 | 2023-03-21 |
| CP-P12-TP-EAL-0150 |  | EAL: NuScale Executive Review & Approval of Draft Rev 0 LTR |  | 5d | 2023-04-18 | 2023-04-24 | CP-P12-TP-EAL-0135, CP-P12-TP-EAL-0140, CP-P12-TP-EAL-0145 |  |  |  |  | 120d | 0d | start on or after 2023-04-18 |  | cal |  |  |  |  | NuScale |  |  |  |  | 2023-04-24 | 2023-04-18 |
| CP-P12-TP-EAL-0155 |  | EAL: Certrec Submittal Package to Include Prop Redaction |  | 5d | 2023-04-18 | 2023-04-24 | CP-P12-TP-EAL-0150 SS |  |  |  |  | 120d | 0d | start on or after 2023-04-18 |  | cal |  |  |  |  | NuScale |  |  |  |  | 2023-04-24 | 2023-04-18 |
| CP-P12-TP-EAL-0160 |  | EAL: Licensing Topical Report Submitted | milestone | 0d | 2023-04-24 | 2023-04-24 | CP-P12-TP-EAL-0155 |  |  |  |  | 120d | 0d |  |  | cal |  |  |  |  | NuScale |  |  |  |  | 2023-04-24 |  |

Notes:
- CP-P12-TP-GEN-0105: 12A DEC MIDMONTH Notes: As of 12dec22 Nuscale has a delete request for this activity (This is summary activity within integrated schedule that tracks all reports) / 12B DEC EOM Notes: as of 30dec22 updated not-deleted/This is Fluor summary activity to track all Nuscale Topical reports / CFPP - Contractor's Remarks: as of 30dec22 updated not-deleted/This is Fluor summary activity to track all Nuscale Topical reports
- CP-P12-TP-EAL-0120: 12A DEC MIDMONTH Notes: As of 12dec22 Nuscale start update (10jan23) ignores predecessor(EAL-0115) finish 15feb23 / 12B DEC EOM Notes: as of 30dec22 updated / CFPP - Contractor's Remarks: as of 30dec22 updated
- CP-P12-TP-EAL-0125: 12B DEC EOM Notes: as of 30dec22 updated / CFPP - Contractor's Remarks: as of 30dec22 updated
- CP-P12-TP-EAL-0130: 12B DEC EOM Notes: as of 30dec22 updated / CFPP - Contractor's Remarks: as of 30dec22 updated
- CP-P12-TP-EAL-0145: 12B DEC EOM Notes: as of 30dec22 updated / CFPP - Contractor's Remarks: as of 30dec22 updated
- CP-P12-TP-EAL-0150: 12B DEC EOM Notes: as of 30dec22 updated / CFPP - Contractor's Remarks: as of 30dec22 updated
- CP-P12-TP-EAL-0155: 12B DEC EOM Notes: as of 30dec22 updated / CFPP - Contractor's Remarks: as of 30dec22 updated
- CP-P12-TP-EAL-0160: 12B DEC EOM Notes: as of 30dec22 updated / CFPP - Contractor's Remarks: as of 30dec22 updated

| ID | WBS | Activity | Duration | Start | Finish | Predecessors | Total float | UDF Indicator 01 | zText_02 | zText_Level 3 Schedule | VERIFIED MONTHLY UPDATE | Rebaseline details | Monthly Variance | 12B DEC EOM Notes | CFPP, LLC WBS Structure | Author | Period of Performance | nuscale comp | 10A OCT MIDMONTH Notes | CFPP Eval | ETAP DETAILS | z_Text-4 | JLG - Generic Field | PSHA | zText_01 | TWG | Critical Paths | zText_33 | COLA Critical Path Sched | Critcal Path |
| --- | --- | --- | --- | --- | --- | --- | --- | --- | --- | --- | --- | --- | --- | --- | --- | --- | --- | --- | --- | --- | --- | --- | --- | --- | --- | --- | --- | --- | --- | --- |
|  | 03 | **CFPP - COLA Prep - Topical Reports & Risk Mitigation -** |  |  |  |  |  |  |  |  |  |  |  |  |  |  |  |  |  |  |  |  |  |  |  |  |  |  |  |  |
|  | 13 | **CFPP - COLA Prep - Final Reviews & Publications** |  | 2023-01-17 | 2024-04-30 |  |  |  |  |  |  |  |  |  |  |  |  |  |  |  |  |  |  |  |  |  |  |  |  |  |
|  | A | **CFPP - COLA Prep - Final Reviews & Publications - Final Chapter Reviews / Approvals** |  | 2023-01-17 | 2023-11-09 |  |  |  |  |  |  |  |  |  |  |  |  |  |  |  |  |  |  |  |  |  |  |  |  |  |
| CP-FCR-CC-0010 |  | Completeness Check - ER Chapter 08 | 5d | 2023-01-17 | 2023-01-23 | CP-P3-08-01-SW-0015 FF+5d | 205d | UDF_G3 | Yes | Yes | X | FL4 | Oct | As of 30dec22 delayed | 03 | FL4 | FNTP |  |  |  |  |  |  |  |  |  |  |  |  |  |
| CP-FCR-CC-0030 |  | Completeness Check - FSAR Chapter 10 | 5d | 2023-02-24 | 2023-03-02 | CP-P2-10-01-SW-0015 FF+5d, CP-P2-10-03-SW-0015 FF+5d, CP-P2-10-04-SW-0015 FF+5d, CP-P2-10-02-SW-0015 FF+5d | 177d | UDF_G3 | Yes | Yes |  | FL4 |  |  | 03 | FL4 | FNTP |  |  |  |  |  |  |  |  |  |  |  |  |  |
| CP-FCR-CC-0015 |  | Completeness Check - ER Chapter 01 | 5d | 2023-02-27 | 2023-03-03 | CP-P3-01-01-SW-0015 FF+5d | 176d | UDF_G3 | Yes | Yes |  | FL4 |  |  | 03 | FL4 | FNTP |  |  |  |  |  |  |  |  |  |  |  |  |  |
| CP-FCR-CC-0040 |  | Completeness Check - FSAR Chapter 04 | 5d | 2023-03-16 | 2023-03-22 | CP-P2-04-01-SW-0015 FF+5d | 163d | UDF_G3 | Yes | Yes |  | FL4 | Oct |  | 03 | FL4 | FNTP |  |  |  |  |  |  |  |  |  |  |  |  |  |
| CP-FCR-CC-0020 |  | Completeness Check - ER Chapter 09 | 5d | 2023-03-21 | 2023-03-27 | CP-P3-09-01-SW-0015 FF+5d, CP-P3-09-02-SW-0015 FF+5d, CP-P3-09-03-SW-0015 FF+5d, CP-P3-09-04-SW-0015 FF+5d | 160d | UDF_G3 | Yes | Yes |  | FL4 |  |  | 03 | FL4 | FNTP |  |  |  |  |  |  |  |  |  |  |  |  |  |
| CP-FCR-CC-0025 |  | Completeness Check - FSAR Chapter 18 | 5d | 2023-03-30 | 2023-04-05 | CP-P2-18-01-SW-0015 FF+5d | 153d | UDF_G3 | Yes | Yes |  | FL4 | Oct |  | 03 | FL4 | FNTP |  |  |  |  |  |  |  |  |  |  |  |  |  |
| CP-FCR-CC-0080 |  | Completeness Check - FSAR Chapter 14 | 5d | 2023-05-02 | 2023-05-08 | CP-P2-14-01-SW-0015 FF+5d, CP-P2-14-02-SW-0015 FF+5d, CP-P2-14-03-SW-0015 FF+5d | 130d | UDF_G1 | Yes | Yes |  | FL4 | Oct |  | 03 | FL4 | FNTP |  |  |  |  |  |  |  |  |  |  |  |  |  |
| CP-FCR-CC-0050 |  | Completeness Check - FSAR Chapter 12 | 5d | 2023-05-18 | 2023-05-24 | CP-P2-12-01-SW-0015 FF+5d, CP-P2-12-02-SW-0015 FF+5d, CP-P2-12-03-SW-0015 FF+5d, CP-P2-12-04-SW-0015 FF+5d, CP-P2-12-05-SW-0015 FF+5d | 118d | UDF_G1 | Yes | Yes |  | FL4 | Oct |  | 03 | FL4 | FNTP |  |  |  |  |  |  |  |  |  |  |  |  |  |
| CP-FCR-CC-0055 |  | Completeness Check - FSAR Chapter 5 | 5d | 2023-05-22 | 2023-05-26 | CP-P2-05-01-SW-0015 FF+5d | 116d | UDF_G3 | Yes | Yes |  | FL4 | Oct |  | 03 | FL4 | FNTP |  |  |  |  |  |  |  |  |  |  |  |  |  |
| CP-FCR-CC-0035 |  | Completeness Check - FSAR Chapter 08 | 5d | 2023-06-09 | 2023-06-15 | CP-P2-08-01-SW-0015 FF+5d, CP-P2-08-02-SW-0015 FF+5d, CP-P2-08-03-SW-0015 FF+5d, CP-P2-08-04-SW-0015 FF+5d | 103d | UDF_G1 | Yes | Yes |  | FL4 | Oct |  | 03 | FL4 | FNTP | etap |  |  |  |  |  |  |  |  |  |  |  |  |
| CP-FCR-CC-0060 |  | Completeness Check - FSAR Chapter 06 | 5d | 2023-06-23 | 2023-06-29 | CP-P2-06-01-SW-0015 FF+5d | 93d | UDF_G3 | Yes | Yes |  | FL4 | Oct |  | 03 | FL4 | FNTP |  |  |  |  |  |  |  |  |  |  |  |  |  |
| CP-FCR-CC-0075 |  | Completeness Check - ER Chapter 02 | 5d | 2023-07-27 | 2023-08-02 | CP-P3-02-00-SW-0015 FF+5d, CP-P3-02-01-SW-0015 FF+5d, CP-P3-02-02-SW-0015 FF+5d, CP-P3-02-03-SW-0015 FF+5d, CP-P3-02-04-SW-0015 FF+5d, CP-P3-02-05-SW-0015 FF+5d, CP-P3-02-06-SW-0015 FF+5d, CP-P3-02-07-SW-0015 FF+5d, CP-P3-02-08-SW-0015 FF+5d, CP-P3-02-09-SW-0015 FF+5d | 70d | UDF_G1 | Yes | Yes |  | FL4 |  |  | 03 | FL4 | FNTP |  |  |  |  |  |  |  |  |  |  |  |  |  |
| CP-FCR-CC-0115 |  | Completeness Check - FSAR Chapter 15 | 5d | 2023-08-10 | 2023-08-16 | CP-P2-15-01-SW-0015 FF+5d | 60d | UDF_G3 | Yes | Yes |  | FL4 |  |  | 03 | FL4 | FNTP | x/q | oct update |  |  |  |  |  |  |  |  |  |  |  |
| CP-FCR-CC-0045 |  | Completeness Check - FSAR Chapter 17 | 5d | 2023-08-16 | 2023-08-22 | CP-P2-17-01-SW-0015 FF+5d, CP-P2-17-04-SW-0015 FF+5d, CP-P2-17-05-SW-0015 FF+5d, CP-P2-17-06-SW-0015 FF+5d | 56d | UDF_G3 | Yes | Yes |  | FL4 | Oct |  | 03 | FL4 | FNTP |  |  |  |  |  |  |  |  |  |  |  |  |  |
| CP-FCR-CC-0095 |  | Completeness Check - ER Appendix A | 5d | 2023-09-08 | 2023-09-14 | CP-P3-APA-SW-0015 FF+5d | 40d | UDF_G3 | Yes | Yes |  | FL4 |  |  | 03 | FL4 | FNTP |  |  |  |  |  |  |  |  |  |  |  |  |  |
| CP-FCR-CC-0090 |  | Completeness Check - FSAR Chapter 16 | 5d | 2023-09-14 | 2023-09-20 | CP-P2-16-01-SW-0015 FF+5d | 36d | UDF_G3 | Yes | Yes |  | FL4 | Oct |  | 03 | FL4 | FNTP |  |  |  |  |  |  |  |  |  |  |  |  |  |
| CP-FCR-CC-0120 |  | Completeness Check - FSAR Chapter 07 | 5d | 2023-09-19 | 2023-09-25 | CP-P2-07-01-SW-0015 FF+5d | 33d | UDF_G3 | Yes | Yes |  | FL4 | Oct |  | 03 | FL4 | FNTP |  |  | CC |  |  |  |  |  |  |  |  |  |  |
| CP-FCR-CC-0100 |  | Completeness Check - FSAR Chapter 13 | 5d | 2023-09-29 | 2023-10-05 | CP-P2-13-01-SW-0015 FF+5d, CP-P2-13-02-SW-0015 FF+5d, CP-P2-13-03-SW-0015 FF+5d, CP-P2-13-04-SW-0015 FF+5d, CP-P2-13-05-SW-0015 FF+5d, CP-P2-13-06-SW-0015 FF+5d, CP-P2-13-07-SW-0015 FF+5d | 25d | UDF_G1 | Yes | Yes |  | FL4 |  |  | 03 | FL4 | FNTP |  |  |  |  |  |  |  |  |  |  |  |  |  |
| CP-FCR-CC-0065 |  | Completeness Check - FSAR Chapter 09 | 5d | 2023-10-06 | 2023-10-12 | CP-P2-09-01-SW-0015 FF+5d, CP-P2-09-02-SW-0015 FF+5d, CP-P2-09-03-SW-0015 FF+5d, CP-P2-09-04-SW-0015 FF+5d, CP-P2-09-05-SW-0015 FF+5d | 20d | UDF_G1 | Yes | Yes |  | FL4 |  |  | 03 | FL4 | FNTP |  |  |  |  |  |  |  |  |  |  |  |  |  |
| CP-FCR-CC-0130 |  | Completeness Check - ER Chapter 05 | 5d | 2023-10-10 | 2023-10-16 | CP-P3-05-01-SW-0015 FF+5d, CP-P3-05-02-SW-0015 FF+5d, CP-P3-05-03-SW-0015 FF+5d, CP-P3-05-04-SW-0015 FF+5d, CP-P3-05-05-SW-0015 FF+5d, CP-P3-05-06-SW-0015 FF+5d, CP-P3-05-07-SW-0015 FF+5d, CP-P3-05-08-SW-0020 FF+5d, CP-P3-05-09-SW-0015 FF+5d, CP-P3-05-10-SW-0015 FF+5d, CP-P3-05-11-SW-0015 FF+5d, CP-P3-05-12-SW-0015 FF+5d | 18d | UDF_G1 | Yes | Yes |  | FL4 |  |  | 03 | FL4 | FNTP |  |  |  |  |  |  |  |  |  |  |  |  |  |
| CP-FCR-CC-0085 |  | Completeness Check - ER Chapter 03 | 5d | 2023-10-17 | 2023-10-23 | CP-P3-03-00-SW-0015, CP-P3-03-01-SW-0015 FF+5d, CP-P3-03-02-SW-0015 FF+5d, CP-P3-03-03-SW-0015 FF+5d, CP-P3-03-04-SW-0015 FF+5d, CP-P2-02-05-SHC-0070 FF+5d | 13d | UDF_G1 | Yes | Yes |  | FL4 | Oct |  | 03 | FL4 | FNTP | etap |  |  | X |  |  |  |  |  |  |  |  |  |
| CP-FCR-CC-0145 |  | Completeness Check - ER Appendix B | 5d | 2023-10-17 | 2023-10-23 | CP-P3-APB-SW-0015 FF+5d | 13d | UDF_G3 | Yes | Yes |  | FL4 |  |  | 03 | FL4 | FNTP |  |  |  |  | CP-3 |  |  |  |  |  |  |  |  |
| CP-FCR-CC-0110 |  | Completeness Check - FSAR Chapter 01 | 5d | 2023-10-20 | 2023-10-26 | CP-P2-01-01-SW-0015 FF+5d, CP-P2-01-02-SW-0015 FF+5d, CP-P2-01-03-SW-0015 FF+5d, CP-P2-01-04-SW-0015 FF+5d, CP-P2-01-05-SW-0015 FF+5d, CP-P2-01-06-SW-0015 FF+5d, CP-P2-01-07-SW-0015 FF+5d, CP-P2-01-08-SW-0015 FF+5d, CP-P2-01-09-SW-0015 FF+5d, CP-P2-01-10-SW-0015 FF+5d | 10d | UDF_G1 | Yes | Yes |  | FL4 |  |  | 03 | FL4 | FNTP |  |  |  |  | CP-5 | Tmonth | PSHA |  |  |  |  |  |  |
| CP-FCR-CC-0140 |  | Completeness Check - FSAR Chapter 03 | 5d | 2023-10-23 | 2023-10-27 | CP-P2-03-01-SW-0015 FF+5d, CP-P2-03-02-SW-0015 FF+5d, CP-P2-03-03-SW-0015 FF+5d, CP-P2-03-04-SW-0015 FF+5d, CP-P2-03-05-SW-0015 FF+5d, CP-P2-03-06-SW-0020 FF+5d, CP-P2-03-07-SD-0040 FF+5d, CP-P2-03-07-SW-0015 FF+5d, CP-P2-03-08-SW-0015 FF+5d, CP-P2-03-09-SW-0015 FF+5d, CP-P2-03-10-SW-0015 FF+5d, CP-P2-03-11-SW-0015 FF+5d, CP-P2-03-12-SW-0015 FF+5d, CP-P2-03-13-SW-0015 FF+5d, CP-P2-03-APB-SW-0015 FF+5d, CP-P2-03-APC-SW-0015 FF+5d, CP-P2-03-APA-SW-0015 FF+5d, CP-P2-03-07-SD-0015 FF+5d, CP-P2-03-07-SD-0005 FF+5d | 9d | UDF_G1 | Yes | Yes |  | FL4 |  |  | 03 | FL4 | FNTP |  |  |  |  | CP-1 | Overview P1 |  | Yes | 1 | 3 |  |  |  |
| CP-FCR-CC-0070 |  | Completeness Check - ER Chapter 06 | 5d | 2023-10-25 | 2023-10-31 | CP-P3-06-01-SW-0015 FF+5d, CP-P3-06-02-SW-0015 FF+5d, CP-P3-06-03-SW-0015 FF+5d | 7d | UDF_G3 | Yes | Yes |  | FL4 |  |  | 03 | FL4 | FNTP |  |  |  |  |  |  |  |  |  |  |  |  |  |
| CP-FCR-CC-0125 |  | Completeness Check - ER Chapter 04 | 5d | 2023-10-26 | 2023-11-01 | CP-P3-04-01-SW-0015 FF+5d, CP-P3-04-02-SW-0015 FF+5d, CP-P3-04-03-SW-0015 FF+5d, CP-P3-04-04-SW-0015 FF+5d, CP-P3-04-05-SW-0015 FF+5d, CP-P3-04-06-SW-0015 FF+5d, CP-P3-04-07-SW-0015 FF+5d, CP-P3-04-08-SW-0015 FF+5d, CP-P3-04-09-SW-0015 FF+5d, CP-P3-04-10-SW-0020 FF+5d, CP-P3-04-11-SW-0015 FF+5d | 6d | UDF_G1 | Yes | Yes |  | FL4 |  |  | 03 | FL4 | FNTP |  |  |  |  |  |  |  |  |  |  |  |  |  |
| CP-FCR-CC-0165 |  | Completeness Check - FSAR Chapter 19 | 5d | 2023-10-27 | 2023-11-02 | CP-P2-19-01-SW-0015 FF+5d | 5d | UDF_G1 | Yes | Yes |  | FL4 |  |  | 03 | FL4 | FNTP |  |  |  |  |  | SI |  |  |  |  | Near Critical Path #1 - Probablistic Risk Analysis |  |  |
| CP-FCR-CC-0135 |  | Completeness Check - FSAR Chapter 02 | 5d | 2023-11-01 | 2023-11-07 | CP-P2-02-01-SW-0015 FF+5d, CP-P2-02-01-SW-0055 FF+5d, CP-P2-02-02-SW-0015 FF+5d, CP-P2-02-03-SW-0015 FF+5d, CP-P2-02-03-SW-0035 FF+5d, CP-P2-02-03-SW-0055 FF+5d, CP-P2-02-03-SW-0075 FF+5d, CP-P2-02-03-SW-0100 FF+5d, CP-P2-02-03-SW-0120 FF+5d, CP-P2-02-04-SW-0015 FF+5d, CP-P2-02-04-SW-0035 FF+5d, CP-P2-02-04-SW-0055 FF+5d, CP-P2-02-04-SW-0075 FF+5d, CP-P2-02-04-SW-0095 FF+5d, CP-P2-02-04-SW-0115 FF+5d, CP-P2-02-04-SW-0135 FF+5d, CP-P2-02-04-SW-0155 FF+5d, CP-P2-02-04-SW-0200 FF+5d, CP-P2-02-04-SW-0220 FF+5d, CP-P2-02-04-SW-0240 FF+5d, CP-P2-02-04-SW-0260 FF+5d, CP-P2-02-04-SW-0280 FF+5d, CP-P2-02-04-SW-0300 FF+5d, CP-P2-02-05-SW-0015 FF+5d, CP-P2-02-05-SW-0035 FF+5d, CP-P2-02-05-SW-0055 FF+5d, CP-P2-02-05-SW-0075 FF+5d, CP-P2-02-05-SW-0105 FF+5d, CP-P2-02-05-SW-0125 FF+5d, CP-P2-02-05-SW-0145 FF+5d, CP-P2-02-01-SW-0035 FF+5d, CP-P2-02-01-SW-0115 FF+5d, CP-P2-02-01-SW-0145 FF+5d | 2d | UDF_G1 | Yes | Yes |  | FL4 |  |  | 03 | FL4 | FNTP |  |  |  |  | CP-4 | Seismic SSHAC |  |  | 1 |  | Near Critical Path #2 - Meteorological Report | 1 | 3 |
| CP-FCR-CC-0105 |  | Completeness Check - FSAR Chapter 11 | 5d | 2023-11-03 | 2023-11-09 | CP-P2-11-01-SW-0015 FF+5d, CP-P2-11-02-SW-0015 FF+5d, CP-P2-11-03-SW-0015 FF+5d, CP-P2-11-04-SW-0015 FF+5d, CP-P2-11-05-SW-0015 FF+5d, CP-P2-11-06-SW-0015 FF+5d | 0d | UDF_G3 | Yes | Yes |  | FL4 |  |  | 03 | FL4 | FNTP | zld |  |  |  |  |  |  |  |  |  |  |  | 2 |
| CP-FCR-CC-0150 |  | Completeness Check - ER Chapter 11 | 5d | 2023-11-03 | 2023-11-09 | CP-P3-11-01-SW-0015 FF+5d | 0d | UDF_G1 | Yes | Yes |  | FL4 |  |  | 03 | FL4 | FNTP |  |  |  | X | CP-2 |  |  |  |  |  |  | 1 | 1 |
| CP-FCR-CC-0155 |  | Completeness Check - ER Chapter 10 | 5d | 2023-11-03 | 2023-11-09 | CP-P3-10-01-SW-0005 FF+5d, CP-P3-10-01-SW-0015 FF+5d | 0d | UDF_G3 | Yes | Yes |  | FL4 |  |  | 03 | FL4 | FNTP |  |  |  |  |  |  |  |  |  |  |  |  | 1 |
| CP-FCR-CC-0160 |  | Completeness Check - ER Chapter 07 | 5d | 2023-11-03 | 2023-11-09 | CP-P3-07-01-SW-0015 FF+5d | 0d | UDF_G1 | Yes | Yes |  | FL4 |  |  | 03 | FL4 | FNTP |  |  |  |  |  |  |  |  |  |  |  |  | 1 |

| ID | WBS | Activity | Duration | Start | Finish | Predecessors | Planned start | Planned finish | Total float | Free float | UDF Indicator 01 | JLG - Generic Field | zText_02 | zText_Level 3 Schedule | Rebaseline details | CFPP, LLC WBS Structure | Author | Period of Performance | COLA Critical Path Sched | DOE MILESTONE | 10A OCT MIDMONTH Notes | Critical Paths | PSHA | zText_33 | Critcal Path | z_Text-4 | nuscale comp | ETAP DETAILS | zText_01 | TWG |
| --- | --- | --- | --- | --- | --- | --- | --- | --- | --- | --- | --- | --- | --- | --- | --- | --- | --- | --- | --- | --- | --- | --- | --- | --- | --- | --- | --- | --- | --- | --- |
|  | B | **CFPP - COLA Prep - Final Reviews & Publications - Final Part Reviews / Approvals** |  | 2023-05-11 | 2023-11-27 |  |  |  |  |  |  |  |  |  |  |  |  |  |  |  |  |  |  |  |  |  |  |  |  |  |
| CP-FR-CC-0015 |  | Completeness Check - Part 07 (Exemptions & Departures) | 10d | 2023-05-11 | 2023-05-24 | CP-P7-01-01-SW-0000 |  |  | 113d | 0d | UDF_G1 | Nate SI | Yes | Yes | FL4 | 03 | FL4 | FNTP |  |  |  |  |  |  |  |  |  |  |  |  |
| CP-FR-CC-0010 |  | Completeness Check - Chapter & Part 05 (EP) | 10d | 2023-05-23 | 2023-06-27 | CP-P5-01-01-SW-0015 | 2023-05-23 | 2023-06-06 | 90d | 0d | UDF_G1 |  | Yes | Yes | FL4 | 03 | FL4 | FNTP |  |  |  |  |  |  |  |  |  |  |  |  |
| CP-FR-CC-0035 |  | Completeness Check - Part 11 (Supplemental Information) - LWA | 10d | 2023-07-26 | 2023-08-08 | CP-P11-01-01-SW-0015 |  |  | 61d | 0d | UDF_G1 | Nate | Yes | Yes | FL4 | 03 | FL4 | FNTP | 3 |  |  |  |  |  |  |  |  |  |  |  |
| CP-FR-CC-0025 |  | Completeness Check - Part 04 (Tech Specs) | 10d | 2023-08-16 | 2023-08-29 | CP-P4-01-01-SW-0015 |  |  | 46d | 0d | UDF_G3 |  | Yes | Yes | FL4 | 03 | FL4 | FNTP |  | 19 |  |  |  |  |  |  |  |  |  |  |
| CP-FR-CC-0000 |  | Completeness Check - Part 09 (Withheld Information) | 10d | 2023-08-17 | 2023-08-30 | CP-P9-01-01-SW-0015 |  |  | 45d | 0d | UDF_G1 | Nate | Yes | Yes | FL4 | 03 | FL4 | FNTP |  |  | oct update |  |  |  |  |  |  |  |  |  |
| CP-FR-CC-0005 |  | Completeness Check - Part 10 (QAPD) | 10d | 2023-08-25 | 2023-09-08 | CP-P10-01-01-SW-0015 |  |  | 39d | 0d | UDF_G3 |  | Yes | Yes | FL4 | 03 | FL4 | FNTP |  |  |  | 4 |  |  |  |  |  |  |  |  |
| CP-FR-CC-0040 |  | Completeness Check - Part 01 (General & Financial Information) | 10d | 2023-09-05 | 2023-09-18 | CP-P1-01-01-SW-0025 |  |  | 33d | 0d | UDF_G3 |  | Yes | Yes | FL4 | 03 | FL4 | FNTP |  |  |  |  |  |  |  |  |  |  |  |  |
| CP-FR-CC-0020 |  | Completeness Check - Part 06 (Security Plans) | 10d | 2023-09-14 | 2023-09-27 | CP-P6-01-01-SW-0015 |  |  | 26d | 0d | UDF_G1 |  | Yes | Yes | FL4 | 03 | FL4 | FNTP |  |  |  |  | NPSHA |  |  |  |  |  |  |  |
| CP-FR-CC-0030 |  | Completeness Check - Part 08 (ITAAC) | 10d | 2023-10-11 | 2023-10-24 | CP-P8-01-01-SW-0015 |  |  | 7d | 0d | UDF_G1 | Nate | Yes | Yes | FL4 | 03 | FL4 | FNTP | 2 |  |  |  |  | Critical Path |  |  |  |  |  |  |
| CP-FR-CC-0045 |  | Completeness Check - Part 03 (ER) | 10d | 2023-11-10 | 2023-11-27 | CP-FCR-CC-0145, CP-FCR-CC-0150, CP-FCR-CC-0095, CP-FCR-CC-0155, CP-FCR-CC-0020, CP-FCR-CC-0010, CP-FCR-CC-0160, CP-FCR-CC-0070, CP-FCR-CC-0130, CP-FCR-CC-0125, CP-FCR-CC-0085, CP-FCR-CC-0075, CP-FCR-CC-0015 |  |  | 0d |  | UDF_G1 |  | Yes | Yes | FL4 | 03 | FL4 | FNTP | 1 |  |  |  |  |  | 1 | CP-2 | etap | X |  |  |
| CP-FR-CC-0050 |  | Completeness Check - Part 02 (FSAR) | 10d | 2023-11-10 | 2023-11-27 | CP-FCR-CC-0100, CP-FCR-CC-0030, CP-FCR-CC-0055, CP-FCR-CC-0140, CP-FCR-CC-0135, CP-FCR-CC-0110, CP-FCR-CC-0080, CP-FCR-CC-0040, CP-FCR-CC-0025, CP-FCR-CC-0120, CP-FCR-CC-0045, CP-FCR-CC-0065, CP-FCR-CC-0090, CP-FCR-CC-0060, CP-FCR-CC-0050, CP-FCR-CC-0165, CP-FCR-CC-0035, CP-FCR-CC-0115, CP-FCR-CC-0105 |  |  | 0d |  | UDF_G1 | Tmonth Seismic SI | Yes | Yes | FL4 | 03 | FL4 | FNTP | 1 |  |  |  | PSHA | Near Critical Path #1 - Probablistic Risk Analysis | 2 | CP-1 | zld |  | Yes | 1 |
|  | C | **CFPP - COLA Prep - Final Reviews & Publications - Owner / Operator Part Reviews** |  | 2023-05-25 | 2023-12-18 |  |  |  |  |  |  |  |  |  |  |  |  |  |  |  |  |  |  |  |  |  |  |  |  |  |
| CP-FR-OR-0025 |  | Owner's / Operator's Review - Part 07 (Exemptions & Departures) | 30d | 2023-05-25 | 2023-07-07 | CP-FR-CC-0015 |  |  | 113d |  | UDF_G1 | Nate SI | Yes | Yes | CFPP | 03 | CFPP | FNTP |  |  |  |  |  |  |  |  |  |  |  |  |
| CP-FR-OR-0000 |  | Owner's / Operator's Review - Part 05 (EP) | 30d | 2023-06-28 | 2023-08-09 | PKM-0135 |  |  | 90d |  | UDF_G1 |  | Yes | Yes | CFPP | 03 | CFPP | FNTP |  |  |  |  |  |  |  |  |  |  |  |  |
| CP-FR-OR-0030 |  | Owner's / Operator's Review - Part 11 (Supplemental Information) | 30d | 2023-08-09 | 2023-09-20 | CP-FR-CC-0035 |  |  | 61d |  | UDF_G1 | Nate | Yes | Yes | CFPP | 03 | CFPP | FNTP | 3 |  |  |  |  |  |  |  |  |  |  |  |
| CP-FR-OR-0015 |  | Owner's / Operator's Review - Part 04 (Tech Specs) | 30d | 2023-08-30 | 2023-10-11 | CP-FR-CC-0025 |  |  | 46d |  | UDF_G3 |  | Yes | Yes | CFPP | 03 | CFPP | FNTP |  |  |  |  |  |  |  |  |  |  |  |  |
| CP-FR-OR-0020 |  | Owner's / Operator's Review - Part 09 (Withheld Information) | 30d | 2023-08-31 | 2023-10-12 | CP-FR-CC-0000 |  |  | 45d |  | UDF_G3 |  | Yes | Yes | CFPP | 03 | CFPP | FNTP |  |  | oct update |  |  |  |  |  |  |  |  |  |
| CP-FR-OR-0005 |  | Owner's / Operator's Review - Part 10 (QAPD) | 30d | 2023-09-11 | 2023-10-20 | PKM-0105 |  |  | 39d |  | UDF_G3 |  | Yes | Yes | CFPP | 03 | CFPP | FNTP |  |  |  | 4 |  |  |  |  |  |  |  |  |
| CP-FR-OR-0040 |  | Owner's / Operator's Review - Part 01 (General & Financial Information) | 30d | 2023-09-19 | 2023-10-30 | CP-FR-CC-0040 |  |  | 33d |  | UDF_G3 |  | Yes | Yes | CFPP | 03 | CFPP | FNTP |  |  |  |  |  |  |  |  |  |  |  |  |
| CP-FR-OR-0010 |  | Owner's / Operator's Review - Part 06 (Security Plans) | 30d | 2023-09-28 | 2023-11-08 | CP-FR-CC-0020 |  |  | 26d |  | UDF_G1 |  | Yes | Yes | CFPP | 03 | CFPP | FNTP |  |  |  |  | NPSHA |  |  |  |  |  |  |  |
| CP-FR-OR-0035 |  | Owner's / Operator's Review - Part 08 (ITAAC) | 30d | 2023-10-25 | 2023-12-07 | CP-FR-CC-0030 |  |  | 7d |  | UDF_G1 | Nate | Yes | Yes | CFPP | 03 | CFPP | FNTP | 2 |  |  |  |  | Critical Path |  |  |  |  |  |  |
| CP-FR-OR-0045 |  | Owner's / Operator's Review - Part 03 (ER) | 30d | 2023-11-03 | 2023-12-18 | CP-FR-CC-0045 FF+15d |  |  | 0d |  | UDF_G1 |  | Yes | Yes | CFPP | 03 | CFPP | FNTP | 1 |  |  |  |  |  | 1 | CP-2 |  |  |  |  |
| CP-FR-OR-0050 |  | Owner's / Operator's Review - Part 02 (FSAR) | 30d | 2023-11-03 | 2023-12-18 | CP-FR-CC-0050 FF+15d |  |  | 0d |  | UDF_G1 | Tmonth Seismic SI | Yes | Yes | CFPP | 03 | CFPP | FNTP | 1 |  |  |  | NPSHA | Near Critical Path #1 - Probablistic Risk Analysis | 2 | CP-1 |  |  | Yes | 1 |

| ID | WBS | Activity | Type | Duration | Start | Finish | Predecessors | Complete | Remaining | Planned start | Planned finish | Total float | Free float | Constraint | Expected finish | UDF Indicator 01 | zText_01 | zText_33 | JLG - Generic Field | zText_02 | COLA Critical Path Sched | Critcal Path | z_Text-4 | zText_Level 3 Schedule | Rebaseline details | TWG | Critical Paths | CFPP, LLC WBS Structure | Author | Period of Performance | DOE MILESTONE | PSHA | UDF Text 02 | Areva - Item Number | zText_03 | 11B NOV EOM Notes | Other | zText_CFPP Look Ahead Notes | Monthly Variance | DOE MILESTONE-1 | 12A DEC MIDMONTH Notes | CFPP - Contractor's Remarks | Forecast Finish | Forecast Start |
| --- | --- | --- | --- | --- | --- | --- | --- | --- | --- | --- | --- | --- | --- | --- | --- | --- | --- | --- | --- | --- | --- | --- | --- | --- | --- | --- | --- | --- | --- | --- | --- | --- | --- | --- | --- | --- | --- | --- | --- | --- | --- | --- | --- | --- |
|  | D | **CFPP - COLA Prep - Final Reviews & Publications - Page Turn, Publication, & Submittal** |  |  | 2023-11-03 | 2024-04-30 |  |  |  |  |  |  |  |  |  |  |  |  |  |  |  |  |  |  |  |  |  |  |  |  |  |  |  |  |  |  |  |  |  |  |  |  |  |  |
| CP-FR-PT-0000 |  | Page Turn Complete COLA |  | 30d | 2023-11-03 | 2023-12-18 | PKM-0155 FF+15d, PKM-0055 FF+15d, PKM-0160 FF+15d, PKM-0170 FF+15d, PKM-0175 FF+15d, PKM-0150 FF+15d, PKM-0135 FF+15d, PKM-0105 FF+15d, PKM-0145 FF+15d, PKM-0165 FF+15d, PKM-0140 FF+15d, CP-FR-OR-0000 FF, CP-FR-OR-0005 FF, CP-FR-OR-0010 FF, CP-FR-OR-0015 FF, CP-FR-OR-0020 FF, CP-FR-OR-0025 FF, CP-FR-OR-0030 FF, CP-FR-OR-0035 FF, CP-FR-OR-0040 FF, CP-FR-OR-0045 FF, CP-FR-OR-0050 FF, CP-P12-TP-GEN-0110 |  |  |  |  | 0d |  |  |  | UDF_G1 | Yes | Critical Path | Tmonth ZZ COLA SI | Yes | 1 | 1 | CP-1 | Yes | FL4 | 1 | 5 | 03 | FL4 | FNTP | x | PSHA |  |  |  |  |  |  |  |  |  |  |  |  |
| CP-FR-PT-0005 |  | Prep Final Electronic COLA |  | 10d | 2023-12-19 | 2024-01-09 | CP-FR-PT-0000 |  |  |  |  | 0d |  |  |  | UDF_G1 | Yes | Critical Path | Tmonth CP XXX ZZ COLA SI | Yes | 1 | 1 | CP-1 | Yes | FL4 | 1 |  | 03 | FL4 | FNTP |  | PSHA | Reduced duration |  |  |  |  |  |  |  |  |  |  |  |
| CP-FR-PT-0010 |  | Issue Final COLA to CFPP | milestone | 0d | 2024-01-09 | 2024-01-09 | CP-FR-PT-0005 |  |  |  |  | 0d |  |  |  | UDF_G1 | Yes | Critical Path | Tmonth CP XXX ZZ COLA SI | Yes | 1 | 1 | CP-1 | Yes | FL4 | 1 |  | 03 | FL4 | FNTP | x |  |  |  |  |  |  |  |  |  |  |  |  |  |
| CP-FR-PT-0015 |  | CFPP Submit COLA to NRC |  | 1d | 2024-01-10 | 2024-01-10 | CP-FR-PT-0010 |  |  |  |  | 0d |  |  |  | UDF_G1 | Yes | Not Included | Tmonth CP XXX ZZ COLA SI | Yes | 1 | 1 | CP-1 | Yes | FL4 | 1 |  | 03 | FL4 | FNTP |  | PSHA | Reduced duration | A143700 |  |  |  |  |  |  |  |  |  |  |
| CP-FR-PT-0020 |  | Fluor Owned Schedule Contingency |  | 79d | 2024-01-11 | 2024-04-30 | PKM-0180 |  |  |  |  | 0d |  |  |  | UDF_G1 | Yes | Not Included | Tmonth CP XXX ZZ COLA SI | Yes |  |  | CP-1 | No | FL4 |  |  | 03 | FL4 | FNTP |  |  | Reduced duration | A143700 | NO |  |  |  |  |  |  |  |  |  |
|  | TO4-LWA | **CFPP - LWA** |  |  | 2022-10-10 | 2023-10-13 |  |  |  |  |  |  |  |  |  |  |  |  |  |  |  |  |  |  |  |  |  |  |  |  |  |  |  |  |  |  |  |  |  |  |  |  |  |  |
|  | 1 | **CFPP - LWA** |  |  | 2022-10-10 | 2023-10-13 |  |  |  |  |  |  |  |  |  |  |  |  |  |  |  |  |  |  |  |  |  |  |  |  |  |  |  |  |  |  |  |  |  |  |  |  |  |  |
|  | 1 | **LWA Milestones** |  |  | 2022-10-10 | 2023-10-13 |  |  |  |  |  |  |  |  |  |  |  |  |  |  |  |  |  |  |  |  |  |  |  |  |  |  |  |  |  |  |  |  |  |  |  |  |  |  |
| CP-LWA-MIL-0100 |  | LWA #1 Start | milestone | 0d | 2022-10-10 A | 2022-10-10 A |  | 100% |  | 2022-11-01 | 2022-11-01 |  |  |  |  |  |  |  |  |  |  |  |  |  |  |  |  |  | FL4 |  |  |  |  |  |  | As of 29nov22 complete |  |  |  |  |  |  |  |  |
| CP-LWA-MIL-0110 |  | Receive Construction Engineering Details - LWA #1 | milestone | 0d | 2023-01-02 | 2023-01-02 |  |  |  |  |  | 4d | 0d | finish on or after 2023-01-02 |  |  |  |  |  |  |  |  |  |  |  |  |  |  | FL4 |  |  |  |  |  |  |  |  |  |  |  |  |  |  |  |
| CP-LWA-MIL-0130 |  | LWA #1 Submittal | milestone | 0d | 2023-10-13 | 2023-10-13 | CP-LWA-MIL-130 FF, CP-LWA-MIL-0120 FF |  |  |  |  | -53d | 0d | finish on or before 2023-07-31 |  |  |  |  |  |  |  |  |  |  |  |  |  |  | FL4 |  |  |  |  |  |  |  |  |  |  |  |  |  |  |  |
|  | 2 | **General LWA Licensing & Planning Support** |  |  | 2022-11-01 | 2023-10-13 |  |  |  |  |  |  |  |  |  |  |  |  |  |  |  |  |  |  |  |  |  |  |  |  |  |  |  |  |  |  |  |  |  |  |  |  |  |  |
| CP-LWA-APP-0140 |  | General LWA#1 Licensing & Planning Support |  | 5d | 2022-11-01 A | 2023-07-28 | CP-LWA-MIL-0100 SS |  | 148d | 2022-11-01 | 2022-11-07 | 188d | 0d |  | 2023-07-28 |  |  |  |  |  |  |  |  | Yes | FL5 |  |  | 03 | TO4 |  |  |  |  |  |  | As of 29nov22 started | cal | y | Sep | x |  |  |  |  |
| CP-LWA-APP-0150 |  | Prepare procedures for processing LWA in Certrec |  | 5d | 2022-11-22 A | 2023-01-17 | CP-LWA-APP-0160 SS, CP-LWA-MIL-0100 |  | 12d | 2022-11-22 | 2022-11-29 | 68d | 0d |  | 2023-01-17 |  |  |  |  |  |  |  |  | Yes | FL5 |  |  | 03 | NuScale |  |  |  |  |  |  | As of 29nov22 started | cal | y | Sep | x | AS of 12dec22 remove pred CP-LWA-APP-200 causing OOS issues | as of 30dec22 updated | 2023-01-17 |  |
| CP-LWA-APP-0160 |  | Prepare Regulatory Engagement Plan (REP) |  | 5d | 2022-11-22 A | 2023-01-17 | CP-LWA-MIL-0100 |  | 12d | 2022-11-22 | 2022-11-29 | 68d | 0d |  | 2023-01-17 |  |  |  |  |  |  |  |  | Yes | FL5 |  |  | 03 | NuScale |  |  |  |  |  |  | As of 29nov22 started | cal | y | Sep | x |  | as of 30dec22 updated | 2023-01-17 |  |
| CP-LWA-APP-200 |  | Pre Application engagement preparation |  | 5d | 2023-01-02 | 2023-02-10 | CP-LWA-MIL-0100 |  |  | 2023-01-02 | 2023-01-06 | 95d | 0d |  |  |  |  |  |  |  |  |  |  | Yes | FL5 |  |  | 03 | NuScale |  |  |  |  |  |  | As of 29nov22 still need update start 1nov22 | cal | y | Sep | x |  | as of 30dec22 updated | 2023-01-26 |  |
| CP-LWA-APP-210 |  | Pre Application Meeting with NRC |  | 5d | 2023-02-13 | 2023-02-24 | CP-LWA-APP-200 |  |  | 2023-02-13 | 2023-02-17 | 95d | 148d | start on or after 2023-01-03 |  |  |  |  |  |  |  |  |  | Yes | FL5 |  |  | 03 | NuScale |  |  |  |  |  |  |  | cal | y | Sep | x |  | as of 30dec22 updated | 2023-01-26 | 2023-01-03 |
| CP-LWA-APP-0200 |  | Rev 0 Review (Page Turn) |  | 5d | 2023-09-26 | 2023-10-09 | CP-LWA-APP-210, CP-LWA-EN5-0130, CP-LWA-EN4-0130, CP-LWA-EN3-0130 SS+5d, CP-LWA-EN2-0120, CP-LWA-EN1-0130, CP-LWA-APP-0130 |  |  | 2023-09-26 | 2023-10-02 | -53d | 0d |  |  |  |  |  |  |  |  |  |  |  |  |  |  |  | TO4 |  |  |  |  |  |  |  |  |  |  |  |  |  |  |  |
| CP-LWA-MIL-0120 |  | Integration, validation, quality checking, compiling, and transmitting final LWA #1 |  | 5d | 2023-10-10 | 2023-10-13 | CP-LWA-APP-0200 |  |  | 2023-10-10 | 2023-10-16 | -53d | 0d |  |  |  |  |  |  |  |  |  |  |  |  |  |  |  | NuScale |  |  |  |  |  |  |  |  |  |  |  |  |  |  |  |
| CP-LWA-MIL-130 |  | Transmit to CFPP for signature and transmittal to NRC |  | 5d | 2023-10-10 | 2023-10-11 | CP-LWA-APP-0200 |  |  | 2023-10-10 | 2023-10-16 | -51d | 2d |  |  |  |  |  |  |  |  |  |  |  |  |  |  |  | NuScale |  |  |  |  |  |  |  |  |  |  |  |  |  |  |  |
|  | 1 | **NuScale LWA #1 Review & Comment (R&C) Fluor drafts & Lead/Pre-app Eng.– Proposal Item 1** |  |  |  |  |  |  |  |  |  |  |  |  |  |  |  |  |  |  |  |  |  |  |  |  |  |  |  |  |  |  |  |  |  |  |  |  |  |  |  |  |  |  |
|  | 2 | **RIZZO LWA #1 Work Planning & Pre-app Eng. (Proposal Task 1)** |  |  |  |  |  |  |  |  |  |  |  |  |  |  |  |  |  |  |  |  |  |  |  |  |  |  |  |  |  |  |  |  |  |  |  |  |  |  |  |  |  |  |
|  | 3 | **RIZZO LWA #1 R&C of Application & Enclosures (Proposal Task 7)** |  |  |  |  |  |  |  |  |  |  |  |  |  |  |  |  |  |  |  |  |  |  |  |  |  |  |  |  |  |  |  |  |  |  |  |  |  |  |  |  |  |  |
|  | 3 | **Prepare LWA Application** |  |  | 2022-10-10 | 2023-04-25 |  |  |  |  |  |  |  |  |  |  |  |  |  |  |  |  |  |  |  |  |  |  |  |  |  |  |  |  |  |  |  |  |  |  |  |  |  |  |
|  | 1 | **Fluor Licensing to draft request/application** |  |  | 2022-10-10 | 2023-04-25 |  |  |  |  |  |  |  |  |  |  |  |  |  |  |  |  |  |  |  |  |  |  |  |  |  |  |  |  |  |  |  |  |  |  |  |  |  |  |
| CP-LWA-APP-0100 |  | Fluor Licensing to draft request/application Draft Rev A |  | 5d | 2022-10-10 A | 2023-03-21 |  |  | 57d | 2022-11-07 | 2022-11-11 | 53d | 0d |  | 2023-03-21 |  |  |  |  |  |  |  |  | Yes | FL5 |  |  | 03 | FL4 |  |  |  |  |  |  |  | cal | y | Sep | x |  |  |  |  |
| CP-LWA-APP-0110 |  | Fluor Licensing Lead review/Comment |  | 5d | 2023-03-22 | 2023-03-28 | CP-LWA-APP-0100 |  |  |  |  | 53d | 0d |  |  |  |  |  |  |  |  |  |  | Yes | FL5 |  |  | 03 | FL4 |  |  |  |  |  |  |  | cal | y | Sep | x |  |  |  |  |
| CP-LWA-APP-0120 |  | LWA Request/application Rev A Review (LWA Review) |  | 5d | 2023-03-29 | 2023-04-11 | CP-LWA-APP-0110 |  |  | 2023-03-29 | 2023-04-04 | 53d | 0d |  |  |  |  |  |  |  |  |  |  | Yes | FL5 |  |  | 03 | TO4 |  |  |  |  |  |  |  | cal | y | Sep | x |  |  |  |  |
| CP-LWA-APP-0130 |  | LWA Request/application Comment Resolution |  | 5d | 2023-04-12 | 2023-04-25 | CP-LWA-APP-0120 |  |  | 2023-04-12 | 2023-04-18 | 53d | 106d |  |  |  |  |  |  |  |  |  |  | Yes | FL5 |  |  | 03 | FL4 |  |  |  |  |  |  |  | cal | y | Sep | x |  |  |  |  |

Notes:
- CP-LWA-MIL-0110: LWA development: COLA activity
- CP-LWA-APP-0140: 9A SEP EOM Notes: Sep Update start slip from 29 Aug possible split 1(15Sep) & 2(30 Sep) and add 3rd(Remove LWA #2 from act name)
- CP-LWA-APP-0150: 9A SEP EOM Notes: Sep Update start slip from 29 Aug possible split 1(15Sep) & 2(30 Sep) and add 3rd(Remove LWA #2 from act name)
- CP-LWA-APP-0160: 9A SEP EOM Notes: Sep Update start slip from 29 Aug possible split 1(15Sep) & 2(30 Sep) and add 3rd(Remove LWA #2 from act name) / LWA development: Nuscale - how does this fit in plan (Tie to E5?)
- CP-LWA-APP-200: 9A SEP EOM Notes: Sep Update start slip from 29 Aug possible split 1(15Sep) & 2(30 Sep) and add 3rd(Remove LWA #2 from act name)
- CP-LWA-APP-210: 9A SEP EOM Notes: Sep Update start slip from 29 Aug possible split 1(15Sep) & 2(30 Sep) and add 3rd(Remove LWA #2 from act name)
- CP-LWA-APP-0200: LWA development: Nuscale has 15d duration (Consolidation review, Certrec, final approval)
- CP-LWA-MIL-0120: LWA development: Clarify details for this activity with Nuscale
- CP-LWA-APP-0100: 9A SEP EOM Notes: Sep Update start slip from 29 Aug possible split 1(15Sep) & 2(30 Sep) and add 3rd(Remove LWA #2 from act name)
- CP-LWA-APP-0110: 9A SEP EOM Notes: Sep Update start slip from 29 Aug possible split 1(15Sep) & 2(30 Sep) and add 3rd(Remove LWA #2 from act name)
- CP-LWA-APP-0120: 9A SEP EOM Notes: Sep Update start slip from 29 Aug possible split 1(15Sep) & 2(30 Sep) and add 3rd(Remove LWA #2 from act name)
- CP-LWA-APP-0130: 9A SEP EOM Notes: Sep Update start slip from 29 Aug possible split 1(15Sep) & 2(30 Sep) and add 3rd(Remove LWA #2 from act name)

| ID | WBS | Activity | Duration | Start | Finish | Predecessors | Remaining | Planned start | Planned finish | Total float | Free float | Constraint | Expected finish | Deliverable Owner | 12B DEC EOM Notes | Author | Other | zText_CFPP Look Ahead Notes | zText_Level 3 Schedule | Rebaseline details | Monthly Variance | CFPP, LLC WBS Structure | DOE MILESTONE-1 | LWA development | CFPP - Contractor's Remarks | Forecast Finish | Forecast Start |
| --- | --- | --- | --- | --- | --- | --- | --- | --- | --- | --- | --- | --- | --- | --- | --- | --- | --- | --- | --- | --- | --- | --- | --- | --- | --- | --- | --- |
|  | 2 | **Fluor Licensing Lead review/Comment** |  |  |  |  |  |  |  |  |  |  |  |  |  |  |  |  |  |  |  |  |  |  |  |  |  |
|  | 4 | **Fluor Engineering R&C & meetings** |  |  |  |  |  |  |  |  |  |  |  |  |  |  |  |  |  |  |  |  |  |  |  |  |  |
|  | 5 | **Fluor PM R&C & Meetings** |  |  |  |  |  |  |  |  |  |  |  |  |  |  |  |  |  |  |  |  |  |  |  |  |  |
|  | 6 | **RIZZO technical input** |  |  |  |  |  |  |  |  |  |  |  |  |  |  |  |  |  |  |  |  |  |  |  |  |  |
|  | 7 | **RIZZO R&C** |  |  |  |  |  |  |  |  |  |  |  |  |  |  |  |  |  |  |  |  |  |  |  |  |  |
|  | 8 | **LWA Comment Resolution** |  |  |  |  |  |  |  |  |  |  |  |  |  |  |  |  |  |  |  |  |  |  |  |  |  |
|  | 4 | **Enclosure 1 - Information (re technical & financial qualifications) required by 10 CFR 50.33** |  | 2022-12-01 | 2023-04-13 |  |  |  |  |  |  |  |  |  |  |  |  |  |  |  |  |  |  |  |  |  |  |
|  | 1 | **Fluor Licensing to draft Enclosure 1** |  | 2022-12-01 | 2023-04-13 |  |  |  |  |  |  |  |  |  |  |  |  |  |  |  |  |  |  |  |  |  |  |
| CP-LWA-EN1-0100 |  | Enclosure 1 Fluor Licensing to draft Enclosure 1 Draft Rev A | 5d | 2022-12-01 A | 2023-03-09 | CP-LWA-APP-0150 FF+10d | 49d | 2022-12-01 | 2022-12-07 | 41d | 0d |  | 2023-03-09 | Matt/Chris/Mo? | As of 30dec22 updated | FL4 |  |  |  |  |  |  |  |  |  |  |  |
| CP-LWA-EN1-0110 |  | Enclosure 1 Fluor Licensing Lead review/Comment | 5d | 2023-03-10 | 2023-03-16 | CP-LWA-EN1-0100 |  |  |  | 61d | 0d |  |  |  |  | FL4 | cal | y | Yes | FL5 | Sep | 03 | x |  |  |  |  |
| CP-LWA-EN1-0120 |  | Enclosure 1 Rev A Review (LWA Review) | 5d | 2023-03-17 | 2023-03-30 | CP-LWA-EN1-0110 |  | 2023-03-17 | 2023-03-23 | 61d | 0d |  |  |  |  | TO4 |  |  |  |  |  |  |  |  |  |  |  |
| CP-LWA-EN1-0130 |  | Enclosure 1 Comment Resolution | 5d | 2023-03-31 | 2023-04-13 | CP-LWA-EN1-0120 |  | 2023-03-31 | 2023-04-06 | 61d | 114d |  |  |  |  | FL4 |  |  |  |  |  |  |  |  |  |  |  |
|  | 2 | **Fluor Sr. Licensing Eng. R&C** |  |  |  |  |  |  |  |  |  |  |  |  |  |  |  |  |  |  |  |  |  |  |  |  |  |
|  | 3 | **Fluor Construction R&C & mtgs** |  |  |  |  |  |  |  |  |  |  |  |  |  |  |  |  |  |  |  |  |  |  |  |  |  |
|  | 4 | **Fluor Engineering R&C & meetings** |  |  |  |  |  |  |  |  |  |  |  |  |  |  |  |  |  |  |  |  |  |  |  |  |  |
|  | 5 | **Fluor PM R&C & meetings** |  |  |  |  |  |  |  |  |  |  |  |  |  |  |  |  |  |  |  |  |  |  |  |  |  |
|  | 6 | **NuScale Licensing R&C** |  |  |  |  |  |  |  |  |  |  |  |  |  |  |  |  |  |  |  |  |  |  |  |  |  |
|  | 7 | **RIZZO R&C** |  |  |  |  |  |  |  |  |  |  |  |  |  |  |  |  |  |  |  |  |  |  |  |  |  |
|  | 5 | **Enclosure 2 - Safety Analysis Report (SAR)** |  | 2022-12-13 | 2023-07-12 |  |  |  |  |  |  |  |  |  |  |  |  |  |  |  |  |  |  |  |  |  |  |
|  | 1 | **Nuscale Licensing to draft enclosure 2** |  | 2023-02-20 | 2023-07-12 |  |  |  |  |  |  |  |  |  |  |  |  |  |  |  |  |  |  |  |  |  |  |
| CP-LWA-EN2-0100 |  | Enclosure 2 Nuscale Draft Rev A | 5d | 2023-02-20 | 2023-06-13 | CP-LWA-EN2-0260 FF+40d, CP-LWA-EN2-0190 FF, CP-LWA-EN2-0620 FF, CP-LWA-APP-0150 FF+10d |  | 2023-02-20 | 2023-02-24 | -1d | 0d | start on or after 2023-02-15 |  |  |  | NuScale |  |  |  |  |  |  |  | Nuscal has 13jun23 as finish | as of 30dec22 updated | 2023-06-13 | 2023-02-15 |
| CP-LWA-EN2-0110 |  | Enclosure 2 Rev A Review (LWA Review) | 5d | 2023-06-14 | 2023-06-27 | CP-LWA-EN2-0180, CP-LWA-EN2-0100 |  | 2023-06-14 | 2023-06-20 | -1d | 0d | start on or after 2023-06-14 |  |  |  | NuScale |  |  |  |  |  |  |  | reduced from 20d | as of 30dec22 updated | 2023-06-27 | 2023-06-14 |
| CP-LWA-EN2-0120 |  | Enclosure 2 Comment Resolution | 5d | 2023-06-28 | 2023-07-12 | CP-LWA-EN2-0110 |  | 2023-06-28 | 2023-07-05 | -1d | 52d | start on or after 2023-06-28 |  |  |  | NuScale |  |  |  |  |  |  |  | reduced from 15d | as of 30dec22 updated | 2023-07-05 | 2023-06-28 |
|  | 2 | **Fluor Construction R&C & mtgs** |  |  |  |  |  |  |  |  |  |  |  |  |  |  |  |  |  |  |  |  |  |  |  |  |  |
|  | 3 | **Fluor PM R&C & meetings** |  |  |  |  |  |  |  |  |  |  |  |  |  |  |  |  |  |  |  |  |  |  |  |  |  |
|  | 4 | **Fluor Engineering R&C & meetings** |  | 2023-02-16 | 2023-06-13 |  |  |  |  |  |  |  |  |  |  |  |  |  |  |  |  |  |  |  |  |  |  |
| CP-LWA-EN2-0180 |  | Continued GIS/engineering support | 5d | 2023-02-16 | 2023-05-10 | CP-LWA-EN2-0150 SS+10d |  | 2023-02-16 | 2023-02-22 | 22d | 23d |  |  |  |  | FL4 |  |  |  |  |  |  |  |  |  |  |  |
| CP-LWA-EN2-0170 |  | R&C Enclosure 2 (Fluor Licensing, Engineering, Construction, and Project Management) | 5d | 2023-05-23 | 2023-06-13 | CP-LWA-EN2-0100 FF, CP-LWA-EN2-0100 SS |  | 2023-05-23 | 2023-05-30 | 220d |  |  |  |  |  | FL4 |  |  |  |  |  |  |  | Made SS / FF with EN2-0100 |  |  |  |

Notes:
- CP-LWA-EN1-0110: 9A SEP EOM Notes: Sep Update start slip from 29 Aug possible split 1(15Sep) & 2(30 Sep) and add 3rd(Remove LWA #2 from act name)

| ID | WBS | Activity | Type | Duration | Start | Finish | Predecessors | Complete | Remaining | Planned start | Planned finish | Total float | Free float | Constraint | Expected finish | 12B DEC EOM Notes | Forecast Finish | Forecast Start | Author | 11B NOV EOM Notes | Other | zText_CFPP Look Ahead Notes | zText_Level 3 Schedule | Rebaseline details | Monthly Variance | CFPP, LLC WBS Structure | DOE MILESTONE-1 | Deliverable Owner |
| --- | --- | --- | --- | --- | --- | --- | --- | --- | --- | --- | --- | --- | --- | --- | --- | --- | --- | --- | --- | --- | --- | --- | --- | --- | --- | --- | --- | --- |
|  | 5 | **NuScale Licensing – Proposal Item 1** |  |  |  |  |  |  |  |  |  |  |  |  |  |  |  |  |  |  |  |  |  |  |  |  |  |  |
|  | 6 | **NuScale Engineering – Proposal Item 2** |  |  | 2023-01-03 | 2023-06-06 |  |  |  |  |  |  |  |  |  |  |  |  |  |  |  |  |  |  |  |  |  |  |
| CP-LWA-EN2-0600 |  | NuScale SSI Activities / Reactor Building Soil Libraries |  | 5d | 2023-01-03 | 2023-02-28 | CP-LWA-EN2-0270 |  |  | 2023-01-03 | 2023-01-09 | 28d | 0d | start on or after 2023-01-03 |  | As of 30dec22 delayed | 2023-02-27 | 2023-01-03 | NuScale |  |  |  |  |  |  |  |  |  |
| CP-LWA-EN2-0610 |  | Double Building Harmonic Analysis |  | 5d | 2023-03-01 | 2023-04-11 | CP-LWA-EN2-0600 |  |  | 2023-03-01 | 2023-03-07 | 28d | 0d | start on or after 2023-02-28 |  |  | 2023-04-10 | 2023-02-28 | NuScale |  |  |  |  |  |  |  |  |  |
| CP-LWA-EN2-0620 |  | SSI Analysis Report |  | 5d | 2023-03-22 | 2023-05-02 | CP-LWA-EN2-0600, CP-LWA-EN2-0610 SS+15d |  |  | 2023-03-22 | 2023-03-28 | 28d | 29d | start on or after 2023-03-21 |  |  | 2023-05-01 | 2023-03-21 | NuScale |  |  |  |  |  |  |  |  |  |
| CP-LWA-EN2-0190 |  | Qualitative Reports to support position on tie-backs / mud mats |  | 30d | 2023-04-25 | 2023-06-06 | CP-LWA-EN2-0150 |  |  |  |  | 4d | 5d | start on or after 2023-03-23 |  |  | 2023-05-03 | 2023-03-23 | NuScale |  |  |  |  |  |  |  |  |  |
|  | 7 | **RIZZO eng/technical input** |  |  | 2022-12-13 | 2023-04-24 |  |  |  |  |  |  |  |  |  |  |  |  |  |  |  |  |  |  |  |  |  |  |
| CP-LWA-EN2-0270 |  | Time Histories (Tie to COLA - 28 Dec) | milestone | 0d | 2022-12-13 A | 2022-12-13 A | CP-P2-03-07-SD-0040 FF | 100% |  | 2022-12-28 | 2022-12-28 |  |  |  |  | as of 30dec22 updated |  |  | RIZZO |  |  |  |  |  |  |  |  |  |
| CP-LWA-EN2-0250 |  | R2F - Finite Element Analysis of Potential/Unanticipated Rock Voids |  | 5d | 2022-12-15 A | 2023-03-17 | CP-LWA-EN2-0220 SS+22d, CP-LWA-MIL-0100 |  | 32d | 2022-12-29 | 2023-01-04 | 5d | 6d |  |  | as of 30dec22 updated |  |  | RIZZO |  |  |  |  |  |  |  |  |  |
| CP-LWA-EN2-0230 |  | R2D - Settlement Calculations for Excavation Treatments |  | 5d | 2023-01-02 | 2023-03-02 | CP-LWA-MIL-0100 |  |  | 2023-01-02 | 2023-01-06 | 16d | 17d |  |  |  |  |  | RIZZO |  |  |  |  |  |  |  |  |  |
| CP-LWA-EN2-0240 |  | R2E - Bearing Capacity Calcs for Excavation Treatments |  | 5d | 2023-01-02 | 2023-03-02 | CP-LWA-MIL-0100 |  |  | 2023-01-02 | 2023-01-06 | 16d | 17d |  |  |  |  |  | RIZZO |  |  |  |  |  |  |  |  |  |
| CP-LWA-EN2-0220 |  | R2C - Calc of Excavation Treatment Impact on Rock Properties |  | 5d | 2023-01-03 | 2023-03-27 | CP-LWA-MIL-0100 |  |  | 2023-01-03 | 2023-01-09 | -4d | 0d | start on or after 2023-01-03 |  | As of 30dec22 delayed |  |  | RIZZO | As of 29nov22 still need update start 1nov22 |  |  |  |  |  |  |  |  |
| CP-LWA-EN2-0200 |  | R2B - Flowable Fill Mix Design and Testing |  | 5d | 2023-01-10 | 2023-03-01 | CP-LWA-EN2-0220 SS+5d, CP-LWA-MIL-0100 SS |  |  | 2023-01-10 | 2023-01-16 | 14d | 18d | start on or after 2023-01-03 |  |  |  |  | RIZZO |  |  |  |  |  |  |  |  |  |
| CP-LWA-EN2-0150 |  | R2A - Develop Detailed Excavation Treatment Plan |  | 5d | 2023-02-02 | 2023-04-24 | CP-LWA-EN2-0220 FF+20d, CP-LWA-EN2-0200 FF+20d |  |  | 2023-02-02 | 2023-02-08 | -4d | 0d | start on or after 2023-01-03 |  | As of 30dec22 delayed |  |  | RIZZO |  |  |  |  |  |  |  |  |  |
| CP-LWA-EN2-0260 |  | R3 - Develop Engineering Analysis Results for LWA Application |  | 5d | 2023-03-28 | 2023-04-17 | CP-LWA-EN2-0240, CP-LWA-EN2-0220, CP-LWA-EN2-0230, CP-LWA-EN2-0250, CP-LWA-EN2-0200 |  |  | 2023-03-28 | 2023-04-03 | -1d | 0d |  |  |  |  |  | RIZZO |  |  |  |  |  |  |  |  |  |
|  | 8 | **RIZZO R&C** |  |  |  |  |  |  |  |  |  |  |  |  |  |  |  |  |  |  |  |  |  |  |  |  |  |  |
|  | 9 | **S&L Engineering input, R&C, & meetings** |  |  |  |  |  |  |  |  |  |  |  |  |  |  |  |  |  |  |  |  |  |  |  |  |  |  |
|  | 6 | **Enclosure 3 - LWA Environmental Report (ER) per 10 CFR 51.49** |  |  | 2022-11-01 | 2023-10-02 |  |  |  |  |  |  |  |  |  |  |  |  |  |  |  |  |  |  |  |  |  |  |
|  | 1 | **Fluor Environmental prepare LWA ER** |  |  | 2022-11-01 | 2023-10-02 |  |  |  |  |  |  |  |  |  |  |  |  |  |  |  |  |  |  |  |  |  |  |
| CP-LWA-EN3-0100 |  | Enclosure 3 ER- Fluor Environmental prepare LWA ER (Draft Rev A) |  | 5d | 2022-11-01 A | 2023-09-01 | CP-LWA-CON-0440 FF, CP-LWA-CON-0430 FF, CP-LWA-CON-0420 FF, CP-LWA-CON-0410 FF, CP-LWA-CON-0400 FF, CP-LWA-CON-0390 FF, CP-LWA-CON-0380 FF, CP-LWA-CON-0370 FF, CP-LWA-CON-0360 FF, CP-LWA-CON-0350 FF, CP-LWA-CON-0330 FF, CP-LWA-CON-0320 FF, CP-LWA-CON-0310 FF, CP-LWA-EN4-0100 FF, CP-LWA-EN3-0700 FF, CP-LWA-MIL-0100, CP-LWA-EN3-0150 FF, CP-LWA-APP-0150 FF+10d |  | 142d | 2022-11-25 | 2022-12-01 | -53d | 0d |  | 2023-06-15 |  |  |  | FL4 | As of 29nov22 started |  |  |  |  |  |  |  |  |
| CP-LWA-EN3-0110 |  | Enclosure 3 ER Fluor Licensing Lead review/Comment |  | 5d | 2023-08-28 | 2023-09-01 | CP-LWA-EN3-0100 FF |  |  |  |  | -53d | 0d |  |  |  |  |  | FL4 |  | cal | y | Yes | FL5 | Sep | 03 | x |  |
| CP-LWA-EN3-0120 |  | Enclosure 3 ER Rev A Review (LWA Review) |  | 5d | 2023-09-05 | 2023-09-18 | CP-LWA-EN3-0110 |  |  | 2023-09-05 | 2023-09-11 | -53d | 0d |  |  |  |  |  | TO4 |  |  |  |  |  |  |  |  |  |
| CP-LWA-EN3-0130 |  | Enclosure 3 ER Comment Resolution |  | 5d | 2023-09-19 | 2023-10-02 | CP-LWA-EN3-0120 |  |  | 2023-09-19 | 2023-09-25 | -53d | 0d |  |  |  |  |  | FL4 |  |  |  |  |  |  |  |  |  |
|  | 20 | **Fluor Construction plan\schedule input** |  |  | 2022-11-14 | 2023-06-23 |  |  |  |  |  |  |  |  |  |  |  |  |  |  |  |  |  |  |  |  |  |  |
| CP-LWA-CON-0300 |  | Align on revised TCF Plot Plan for CFPP Site |  | 5d | 2022-11-14 A | 2022-12-08 A |  | 100% |  | 2022-11-14 | 2022-11-18 |  |  |  |  | as of 30dec22 updated |  |  | FL4 | As of 29nov22 started | cal | y | Yes | FL5 | Sep | 03 | x | S. Roth |
| CP-LWA-CON-0390 |  | Provide Preconstruction/LWA Workforce Characteristics (number, timing, durations, etc.) as it aligns with scope |  | 5d | 2022-11-15 A | 2022-11-18 A | CP-LWA-CON-0300 | 100% |  | 2022-12-09 | 2022-12-15 |  |  |  |  |  |  |  | FL4 |  | cal | y | Yes | FL5 | Sep | 03 | x | S. Roth |
| CP-LWA-CON-0400 |  | Provide Preconstruction/LWA Equipment list (type and numbers) as it aligns with scope |  | 5d | 2022-12-04 A | 2023-03-01 | CP-LWA-CON-0300 |  | 43d | 2022-12-09 | 2022-12-15 | 77d | 0d |  | 2023-03-01 | As of 30dec22 updated S Roth |  |  | FL4 |  | cal | y | Yes | FL5 | Sep | 03 | x | S. Roth |
| CP-LWA-CON-0430 |  | Provide information/plans for all batch plants (size, location, stockpiles, etc.) |  | 5d | 2022-12-07 A | 2023-03-22 | CP-LWA-CON-0300 FS+5d |  | 58d | 2022-12-16 | 2022-12-22 | 62d | 0d |  | 2023-03-22 | As of 30dec22 updated S Roth |  |  | FL4 |  | cal | y | Yes | FL5 | Sep | 03 | x | S. Roth |
| CP-LWA-CON-0350 |  | Provide list and status of Required Permits for preconstruction/LWA scope |  | 5d | 2022-12-13 A | 2023-02-16 | CP-LWA-CON-0300 |  | 34d | 2022-12-09 | 2022-12-15 | 86d | 0d |  | 2023-02-16 | As of 30dec22 updated S Roth |  |  | FL4 |  | cal | y | Yes | FL5 | Sep | 03 | x | S. Roth |
| CP-LWA-CON-0330 |  | Provide information/plans for Dust Control/Suppression |  | 5d | 2022-12-14 A | 2023-02-22 | CP-LWA-CON-0300 FS+5d |  | 38d | 2022-12-16 | 2022-12-22 | 82d | 0d |  | 2023-02-22 | As of 30dec22 updated S Roth |  |  | FL4 |  | cal | y | Yes | FL5 | Sep | 03 | x | S. Roth |
| CP-LWA-CON-0380 |  | Provide Figures Showing Onsite & Offsite Areas to be Disturbed During Preconstruction/LWA Activities |  | 5d | 2022-12-14 A | 2023-02-24 | CP-LWA-CON-0300 |  | 40d | 2022-12-09 | 2022-12-15 | 80d | 0d |  | 2023-02-24 | As of 30dec22 updated S Roth |  |  | FL4 |  | cal | y | Yes | FL5 | Sep | 03 | x | S. Roth |
| CP-LWA-CON-0410 |  | Provide preconstruction/LWA planned excavations, spoils, any additional backfill material |  | 5d | 2022-12-14 A | 2023-06-23 | CP-LWA-EN2-0150, CP-LWA-CON-0300 FS+9d |  | 43d | 2023-03-23 | 2023-03-29 | -4d | 49d |  |  | as of 30dec22 updated |  |  | FL4 |  | cal | y | Yes | FL5 | Sep | 03 | x |  |
| CP-LWA-CON-0440 |  | Provide information/plans for source materials/borrow areas (location, material, volume estimates, etc.) |  | 5d | 2022-12-14 A | 2023-02-22 | CP-LWA-CON-0300 FS+5d |  | 38d | 2022-12-16 | 2022-12-22 | 82d | 0d |  | 2023-02-22 | As of 30dec22 updated S Roth |  |  | FL4 |  | cal | y | Yes | FL5 | Sep | 03 | x | S. Roth |
| CP-LWA-CON-0320 |  | Provide Preconstruction/LWA anticipated waste to be generated (types, volumes, disposition, etc.) |  | 5d | 2022-12-21 A | 2023-02-27 | CP-LWA-CON-0300 FS+5d |  | 41d | 2022-12-16 | 2022-12-22 | 79d | 0d |  | 2023-02-27 | As of 30dec22 updated S Roth |  |  | FL4 |  | cal | y | Yes | FL5 | Sep | 03 | x | S. Roth |
| CP-LWA-CON-0420 |  | Provide information/plans for Construction Stormwater management (or exemption) |  | 5d | 2022-12-21 A | 2023-02-27 | CP-LWA-CON-0300 FS+5d |  | 41d | 2022-12-16 | 2022-12-22 | 79d | 0d |  | 2023-02-27 | As of 30dec22 updated S Roth |  |  | FL4 |  | cal | y | Yes | FL5 | Sep | 03 | x | S. Roth |
| CP-LWA-CON-0310 |  | Provide Preconstruction/LWA planned water use, demand, source, disposal, etc. |  | 5d | 2022-12-23 A | 2023-03-01 | CP-LWA-CON-0300 FS+5d |  | 43d | 2022-12-16 | 2022-12-22 | 77d | 0d |  | 2023-03-01 | As of 30dec22 updated S Roth |  |  | FL4 |  | cal | y | Yes | FL5 | Sep | 03 | x | S. Roth |
| CP-LWA-CON-0360 |  | Conduct Noise assessment/calculations |  | 5d | 2023-01-03 | 2023-01-25 | CP-LWA-CON-0300 |  |  | 2023-01-03 | 2023-01-09 | 102d | 155d | start on or after 2023-01-03 |  | As of 30dec22 updated S Roth |  |  | FL4 |  | cal | y | Yes | FL5 | Sep | 03 | x | S. Roth |
| CP-LWA-CON-0370 |  | Conduct Preconstruction/LWA Emissions assessment/calculation |  | 5d | 2023-01-03 | 2023-01-25 | CP-LWA-CON-0300 |  |  | 2023-01-03 | 2023-01-09 | 102d | 155d | start on or after 2023-01-03 |  | As of 30dec22 updated S Roth |  |  | FL4 |  | cal | y | Yes | FL5 | Sep | 03 | x | S. Roth |

Notes:
- CP-LWA-EN2-0600: LWA development: need SCP's prior to start / CFPP - Contractor's Remarks: as of 30dec22 updated
- CP-LWA-EN2-0610: CFPP - Contractor's Remarks: as of 30dec22 updated
- CP-LWA-EN2-0620: LWA development: name change from SSI Technical Report duration inc from 20d / CFPP - Contractor's Remarks: as of 30dec22 updated
- CP-LWA-EN2-0190: LWA development: removed mandatory start date of 14feb23 to reduce negative float / 12A DEC MIDMONTH Notes: As of 12dec22 Nuscale update Ignores predecessors, creates out of sequence issues with schedule / CFPP - Contractor's Remarks: as of 30dec22 updated Note: this is a 30 day activity. NuScale will update January schedule with 3/23 start date.
- CP-LWA-EN2-0270: LWA development: tie to COLA CP-P2-03-07-SD-0040 / CFPP - Contractor's Remarks: as of 30dec22 updated
- CP-LWA-EN2-0250: CFPP - Contractor's Remarks: as of 30dec22 updated
- CP-LWA-EN2-0260: LWA development: feed to enclosure 2
- CP-LWA-EN3-0110: 9A SEP EOM Notes: Sep Update start slip from 29 Aug possible split 1(15Sep) & 2(30 Sep) and add 3rd(Remove LWA #2 from act name)
- CP-LWA-CON-0300: 9A SEP EOM Notes: Sep Update start slip from 29 Aug possible split 1(15Sep) & 2(30 Sep) and add 3rd(Remove LWA #2 from act name) / LWA development: Remove tie to R2A
- CP-LWA-CON-0390: 9A SEP EOM Notes: Sep Update start slip from 29 Aug possible split 1(15Sep) & 2(30 Sep) and add 3rd(Remove LWA #2 from act name)
- CP-LWA-CON-0400: 9A SEP EOM Notes: Sep Update start slip from 29 Aug possible split 1(15Sep) & 2(30 Sep) and add 3rd(Remove LWA #2 from act name)
- CP-LWA-CON-0430: 9A SEP EOM Notes: Sep Update start slip from 29 Aug possible split 1(15Sep) & 2(30 Sep) and add 3rd(Remove LWA #2 from act name)
- CP-LWA-CON-0350: 9A SEP EOM Notes: Sep Update start slip from 29 Aug possible split 1(15Sep) & 2(30 Sep) and add 3rd(Remove LWA #2 from act name)
- CP-LWA-CON-0330: 9A SEP EOM Notes: Sep Update start slip from 29 Aug possible split 1(15Sep) & 2(30 Sep) and add 3rd(Remove LWA #2 from act name)
- CP-LWA-CON-0380: 9A SEP EOM Notes: Sep Update start slip from 29 Aug possible split 1(15Sep) & 2(30 Sep) and add 3rd(Remove LWA #2 from act name)
- CP-LWA-CON-0410: 9A SEP EOM Notes: Sep Update start slip from 29 Aug possible split 1(15Sep) & 2(30 Sep) and add 3rd(Remove LWA #2 from act name)
- CP-LWA-CON-0440: 9A SEP EOM Notes: Sep Update start slip from 29 Aug possible split 1(15Sep) & 2(30 Sep) and add 3rd(Remove LWA #2 from act name)
- CP-LWA-CON-0320: 9A SEP EOM Notes: Sep Update start slip from 29 Aug possible split 1(15Sep) & 2(30 Sep) and add 3rd(Remove LWA #2 from act name)
- CP-LWA-CON-0420: 9A SEP EOM Notes: Sep Update start slip from 29 Aug possible split 1(15Sep) & 2(30 Sep) and add 3rd(Remove LWA #2 from act name)
- CP-LWA-CON-0310: 9A SEP EOM Notes: Sep Update start slip from 29 Aug possible split 1(15Sep) & 2(30 Sep) and add 3rd(Remove LWA #2 from act name)
- CP-LWA-CON-0360: 9A SEP EOM Notes: Sep Update start slip from 29 Aug possible split 1(15Sep) & 2(30 Sep) and add 3rd(Remove LWA #2 from act name)
- CP-LWA-CON-0370: 9A SEP EOM Notes: Sep Update start slip from 29 Aug possible split 1(15Sep) & 2(30 Sep) and add 3rd(Remove LWA #2 from act name)

| ID | WBS | Activity | Duration | Start | Finish | Predecessors | Remaining | Planned start | Planned finish | Total float | Free float | Expected finish | LWA development | 12B DEC EOM Notes | Author | 11B NOV EOM Notes |
| --- | --- | --- | --- | --- | --- | --- | --- | --- | --- | --- | --- | --- | --- | --- | --- | --- |
|  | 2 | **COLA Prep - Part 03 - Chapter 01 Introduction Section Writing** |  | 2022-11-28 | 2023-04-03 |  |  |  |  |  |  |  |  |  |  |  |
| CP-LWA-EN3-0050 |  | LWA Prep - Enc 03 - Chapter 01 Introduction | 5d | 2022-11-28 A | 2023-04-03 |  | 66d | 2022-11-28 | 2022-12-02 | 270d | 0d | 2023-04-03 | chapter 2 COLA ER (excluding corridor information) | As of 30dec22 updated | FL4 |  |
|  | 3 | **COLA Prep - Part 03 - Chapter 02 Proposed Site & Affected Environment Section Writing** |  | 2022-11-01 | 2023-06-15 |  |  |  |  |  |  |  |  |  |  |  |
| CP-LWA-EN3-0300 |  | LWA Prep - Enc 03 - Chapter 02 Proposed Site & Affected Environment | 5d | 2022-11-01 A | 2023-06-15 |  | 118d | 2022-10-31 | 2022-11-04 | -53d | 0d | 2023-06-15 | chapter 2 COLA ER (excluding corridor information) | As of 30dec22 delayed | FL4 | As of 29nov22 started |
|  | 18 | **COLA Prep - Part 03 - Chapter 03 Site Layout and Project Description** |  | 2023-01-03 | 2023-01-30 |  |  |  |  |  |  |  |  |  |  |  |
| CP-LWA-EN3-0910 |  | LWA Prep - Enc 03 - Chapter 03 Site Layout and Project Description | 5d | 2023-01-03 | 2023-01-30 | CP-LWA-MIL-0110 |  | 2023-01-03 | 2023-01-09 | 4d | 0d |  | pred is construction scope details |  | FL4 |  |
|  | 4 | **COLA Prep - Part 03 - Chapter 04 Environmental Impacts from Construction Section Writing** |  | 2023-03-23 | 2023-06-15 |  |  |  |  |  |  |  |  |  |  |  |
| CP-LWA-EN3-0400 |  | LWA Prep - Enc 03 - Chapter 04 Environmental Impacts from Construction | 5d | 2023-03-23 | 2023-06-15 | CP-LWA-EN3-0300 FF, CP-LWA-EN3-0910 SS |  | 2023-03-23 | 2023-03-29 | -53d | 0d |  | Some details from COLA | As of 30dec22 delayed | FL4 |  |
|  | 5 | **COLA Prep - Part 03 - Chapter 07 Cumulative Impacts Section Writing** |  | 2023-06-16 | 2023-07-28 |  |  |  |  |  |  |  |  |  |  |  |
| CP-LWA-EN3-0500 |  | LWA Prep - Enc 03 - Chapter 07 Cumulative Impacts | 5d | 2023-06-16 | 2023-07-28 | CP-LWA-EN3-0300, CP-LWA-EN3-0400 |  | 2023-06-16 | 2023-06-22 | -53d | 0d |  |  |  | FL4 |  |
|  | 19 | **COLA Prep - Part 03 - Chapter 09 Environmental Impacts of Alternatives** |  | 2023-01-03 | 2023-01-30 |  |  |  |  |  |  |  |  |  |  |  |
| CP-LWA-EN3-0920 |  | LWA Prep - Enc 03 - Chapter 09 Environmental Impacts of Alternatives | 5d | 2023-01-03 | 2023-01-30 | CP-LWA-MIL-0110, CP-LWA-EN3-0910 SS |  | 2023-01-03 | 2023-01-09 | 74d | 127d |  | parallel with chpt 3 |  | FL4 |  |
|  | 6 | **COLA Prep - Part 03 - Chapter 10 Conclusions Section Writing** |  | 2023-07-31 | 2023-08-25 |  |  |  |  |  |  |  |  |  |  |  |
| CP-LWA-EN3-0600 |  | LWA Prep - Enc 03 - Chapter 10 Conclusions | 5d | 2023-07-31 | 2023-08-25 | CP-LWA-EN3-0900, CP-LWA-EN3-0920, CP-LWA-EN3-0500 |  | 2023-07-31 | 2023-08-04 | -53d | 0d |  |  |  | FL4 |  |
|  | 7 | **COLA Prep - Part 03 - Chapter 11 References Section Writing** |  | 2023-08-28 | 2023-09-01 |  |  |  |  |  |  |  |  |  |  |  |
| CP-LWA-EN3-0700 |  | LWA Prep - Enc 03 - Chapter 11 References | 5d | 2023-08-28 | 2023-09-01 | CP-LWA-EN3-0800, CP-LWA-EN3-0600 |  |  |  | -53d | 0d |  |  |  | FL4 |  |
|  | 8 | **COLA Prep - Part 03 - ER Appendix A Consultations Section Writing** |  | 2023-07-31 | 2023-08-25 |  |  |  |  |  |  |  |  |  |  |  |
| CP-LWA-EN3-0800 |  | LWA Prep - Enc 03 - ER Appendix A Consultations | 5d | 2023-07-31 | 2023-08-25 | CP-LWA-EN3-0600 SS |  | 2023-07-31 | 2023-08-04 | -53d | 0d |  |  |  | FL4 |  |
|  | 9 | **COLA Prep - Part 03 - ER Appendix B Environmental Protection Plan Section Writing** |  | 2023-06-16 | 2023-07-14 |  |  |  |  |  |  |  |  |  |  |  |
| CP-LWA-EN3-0900 |  | LWA Prep - Enc 03 - ER Appendix B Environmental Protection Plan | 5d | 2023-06-16 | 2023-07-14 | CP-LWA-EN3-0400 |  | 2023-06-16 | 2023-06-22 | -43d | 10d |  |  |  | FL4 |  |
|  | 10 | **Fluor Construction input, R&C, & mtgs** |  |  |  |  |  |  |  |  |  |  |  |  |  |  |
|  | 11 | **Fluor Engineering R&C & meetings** |  |  |  |  |  |  |  |  |  |  |  |  |  |  |
|  | 12 | **Fluor Licensing review/comment** |  |  |  |  |  |  |  |  |  |  |  |  |  |  |
|  | 13 | **Fluor PM R&C & meetings** |  |  |  |  |  |  |  |  |  |  |  |  |  |  |
|  | 14 | **NuScale Licensing R&C** |  |  |  |  |  |  |  |  |  |  |  |  |  |  |
|  | 15 | **RIZZO ER section (air, water) drafting/input** |  | 2023-05-18 | 2023-06-15 |  |  |  |  |  |  |  |  |  |  |  |
| CP-LWA-EN3-0150 |  | R4- Develop ER-Related Assessments and Sections for LWA (water/air) | 5d | 2023-05-18 | 2023-06-15 | CP-LWA-EN1-0100, CP-LWA-EN3-0400 FF, CP-LWA-MIL-0100 |  | 2023-05-18 | 2023-05-24 | -8d | 13d |  | driven by year 1 water data (COLA) |  | RIZZO |  |

Notes:
- CP-LWA-EN3-0050: CFPP - Contractor's Remarks: take 11/2822 start; hold 4/3/23 finish although it will be influenced by 1/26/23 NRC/DOE meeting
- CP-LWA-EN3-0300: CFPP - Contractor's Remarks: Due to construction area changes, additional field surveys required
- CP-LWA-EN3-0400: CFPP - Contractor's Remarks: Due to construction area changes, additional field surveys required

| ID | WBS | Activity | Duration | Start | Finish | Predecessors | Remaining | Planned start | Planned finish | Total float | Free float | Constraint | Expected finish | Author | Other | zText_CFPP Look Ahead Notes | zText_Level 3 Schedule | Rebaseline details | Monthly Variance | CFPP, LLC WBS Structure | DOE MILESTONE-1 | CFPP - Contractor's Remarks | Forecast Finish | Forecast Start |
| --- | --- | --- | --- | --- | --- | --- | --- | --- | --- | --- | --- | --- | --- | --- | --- | --- | --- | --- | --- | --- | --- | --- | --- | --- |
|  | 16 | **RIZZO R&C** |  |  |  |  |  |  |  |  |  |  |  |  |  |  |  |  |  |  |  |  |  |  |
|  | 17 | **(New WBS)-16** |  |  |  |  |  |  |  |  |  |  |  |  |  |  |  |  |  |  |  |  |  |  |
|  | 7 | **Enclosure 4 - LWA Site Redress Plan** |  | 2022-10-10 | 2023-08-09 |  |  |  |  |  |  |  |  |  |  |  |  |  |  |  |  |  |  |  |
|  | 1 | **Fluor Licensing to draft site redress plan** |  | 2022-10-10 | 2023-08-09 |  |  |  |  |  |  |  |  |  |  |  |  |  |  |  |  |  |  |  |
| CP-LWA-EN4-0100 |  | Enclosure 4 Fluor Licensing to draft site redress plan Draft Rev A | 5d | 2022-10-10 A | 2023-07-05 | CP-LWA-EN2-0150 FF, CP-LWA-EN3-0150 FF, CP-LWA-APP-0150 FF+10d | 131d | 2022-10-11 | 2022-10-17 | -21d | 0d |  | 2023-05-31 | FL4 |  |  |  |  |  |  |  |  |  |  |
| CP-LWA-EN4-0110 |  | Enclosure 4 Fluor Licensing Lead review/Comment | 5d | 2023-07-06 | 2023-07-12 | CP-LWA-EN4-0100 |  |  |  | -21d | 0d |  |  | FL4 | cal | y | Yes | FL5 | Sep | 03 | x |  |  |  |
| CP-LWA-EN4-0120 |  | Enclosure 4 redress plan Rev A Review (LWA Review) | 5d | 2023-07-13 | 2023-07-26 | CP-LWA-EN4-0110 |  | 2023-07-13 | 2023-07-19 | -21d | 0d |  |  | TO4 |  |  |  |  |  |  |  |  |  |  |
| CP-LWA-EN4-0130 |  | Enclosure 4 redress plan Comment Resolution | 5d | 2023-07-27 | 2023-08-09 | CP-LWA-EN4-0120 |  | 2023-07-27 | 2023-08-02 | -21d | 32d |  |  | FL4 |  |  |  |  |  |  |  |  |  |  |
|  | 2 | **Fluor Licensing Lead review/comment** |  |  |  |  |  |  |  |  |  |  |  |  |  |  |  |  |  |  |  |  |  |  |
|  | 3 | **Fluor Construction input, R&C, & mtgs** |  |  |  |  |  |  |  |  |  |  |  |  |  |  |  |  |  |  |  |  |  |  |
|  | 4 | **Fluor Engineering R&C & meetings** |  |  |  |  |  |  |  |  |  |  |  |  |  |  |  |  |  |  |  |  |  |  |
|  | 5 | **Fluor Environmental input/R&C** |  |  |  |  |  |  |  |  |  |  |  |  |  |  |  |  |  |  |  |  |  |  |
|  | 6 | **Fluor PM reviews, meetings** |  |  |  |  |  |  |  |  |  |  |  |  |  |  |  |  |  |  |  |  |  |  |
|  | 7 | **NuScale Licensing R&C** |  |  |  |  |  |  |  |  |  |  |  |  |  |  |  |  |  |  |  |  |  |  |
|  | 8 | **RIZZO R&C** |  |  |  |  |  |  |  |  |  |  |  |  |  |  |  |  |  |  |  |  |  |  |
|  | 8 | **Enclosure 5 - Proposed ITAAC for LWA Scope** |  | 2023-01-26 | 2023-04-19 |  |  |  |  |  |  |  |  |  |  |  |  |  |  |  |  |  |  |  |
|  | 1 | **Fluor Licensing review/comment & meetings** |  | 2023-01-26 | 2023-04-19 |  |  |  |  |  |  |  |  |  |  |  |  |  |  |  |  |  |  |  |
| CP-LWA-EN5-0100 |  | E5 Develop ITAAC position and justification for LWA Scope Draft Rev A | 5d | 2023-01-26 | 2023-03-21 | CP-LWA-MIL-0100, CP-LWA-APP-0150 FF+10d |  | 2023-01-26 | 2023-02-01 | 58d | 1d | start on or after 2023-01-26 |  | NuScale |  |  |  |  |  |  |  | as of 30dec22 updated | 2023-03-22 | 2023-01-26 |
| CP-LWA-EN5-0120 |  | E5 Fluor Licensing Rev A Review (LWA Review) | 5d | 2023-03-23 | 2023-04-05 | CP-LWA-EN5-0100 |  | 2023-03-23 | 2023-03-29 | 57d | 0d | start on or after 2023-03-23 |  | NuScale |  |  |  |  |  |  |  | as of 30dec22 updated | 2023-04-05 | 2023-03-23 |
| CP-LWA-EN5-0130 |  | Enclosure 5 ITAAC position and justification for LWA Scope Comment resolution | 5d | 2023-04-06 | 2023-04-19 | CP-LWA-EN5-0120 |  | 2023-04-06 | 2023-04-12 | 57d | 110d |  |  | NuScale |  |  |  |  |  |  |  |  |  |  |
|  | 2 | **Fluor PM reviews, meetings** |  |  |  |  |  |  |  |  |  |  |  |  |  |  |  |  |  |  |  |  |  |  |
|  | 3 | **NuScale ITAAC Lead - Proposal Item 3 and Proposal Attachment 1** |  |  |  |  |  |  |  |  |  |  |  |  |  |  |  |  |  |  |  |  |  |  |
|  | 4 | **NuScale Licensing - Proposal Item 1 and Proposal Attachment 1** |  |  |  |  |  |  |  |  |  |  |  |  |  |  |  |  |  |  |  |  |  |  |

Notes:
- CP-LWA-EN4-0110: 9A SEP EOM Notes: Sep Update start slip from 29 Aug possible split 1(15Sep) & 2(30 Sep) and add 3rd(Remove LWA #2 from act name)

## Activity codes

| Code | Value | Meaning |
| --- | --- | --- |
| Author | AT | Atlas |
| Author | BEA | Battell Energy Alliance |
| Author | CFPP | CFPP, LLC |
| Author | CMCG | Contingency Management Consulting Group |
| Author | DOOSKODA | Doosan Skoda (Vendor) |
| Author | FL1 | Fluor Task Order #1 Team |
| Author | FL3 | Fluor Task Order #3 Team |
| Author | FL4 | Fluor Task Order #4 Team |
| Author | FL5 | Fluor Task Order #5 Team |
| Author | NAV | Navton |
| Author | S&L | Sargent & Lundy |
| Author | TO4 | TO4 Team Review |
| CFPP Eval | CC | Completenes Check |
| CFPP Eval | GEN | Topical Report |
| CFPP, LLC WBS Structure | 03 | COLA Development |
| Critical Paths | 1 | SHAAC, COLA, Construction, Commissioning |
| Critical Paths | 3 | Site Development |
| Critical Paths | 4 | Staffing and Training |
| DOE MILESTONE | 11x | (New Code Value) |
| DOE MILESTONE | 12 | (New Code Value) |
| DOE MILESTONE | 13 | (New Code Value) |
| DOE MILESTONE | 14x | (New Code Value) |
| DOE MILESTONE | 16 | (New Code Value) |
| DOE MILESTONE | 17x | (New Code Value) |
| DOE MILESTONE | 18 | (New Code Value) |
| DOE MILESTONE | 19 | (New Code Value) |
| DOE MILESTONE | 2 | (New Code Value) |
| DOE MILESTONE | 20 | (New Code Value) |
| DOE MILESTONE | 21 | (New Code Value) |
| DOE MILESTONE | 22 | (New Code Value) |
| DOE MILESTONE | 3 | (New Code Value) |
| DOE MILESTONE | x | CFPP DOE Milestone |
| DOE MILESTONE-1 | x | CFPP DOE Milestone |
| PIM - Milestone | PKM | PKM chart |
| PSHA | PSHA | part of psha activities |
| Part | P1 | PART 1 |
| Part | P10 | PART 10 |
| Part | P11 | PART 11 |
| Part | P2 | PART 2 |
| Part | P3 | PART 3 |
| Part | P4 | PART 4 |
| Part | P5 | PART 5 |
| Part | P6 | PART 6 |
| Part | P7 | PART 7 |
| Part | P8 | PART 8 |
| Part | P9 | PART 9 |
| Part | PCvd | Cov |
| Part | PLWA | LWA |
| Part | Pfr | Fin Rev |
| Part | Pind | Indirect |
| Part | Ptop | Topcl |
| Period of Performance | FNTP | Full Notice to Proceed |
| Period of Performance | LNTP | Limited Notice to Proceed |
| Progress Deliv Sheet Milestone # | 10 | (New Code Value) |
| Progress Deliv Sheet Milestone # | 11 | (New Code Value) |
| Progress Deliv Sheet Milestone # | 12 | (New Code Value) |
| Progress Deliv Sheet Milestone # | 13 | (New Code Value) |
| Progress Deliv Sheet Milestone # | 14 | (New Code Value) |
| Progress Deliv Sheet Milestone # | 15 | (New Code Value) |
| Progress Deliv Sheet Milestone # | 16 | (New Code Value) |
| Progress Deliv Sheet Milestone # | 17 | (New Code Value) |
| Progress Deliv Sheet Milestone # | 18 | (New Code Value) |
| Progress Deliv Sheet Milestone # | 19 | (New Code Value) |
| Progress Deliv Sheet Milestone # | 20 | (New Code Value) |
| Progress Deliv Sheet Milestone # | 21 | (New Code Value) |
| Progress Deliv Sheet Milestone # | 22 | (New Code Value) |
| Progress Deliv Sheet Milestone # | 26 | (New Code Value) |
| Progress Deliv Sheet Milestone # | 27 | (New Code Value) |
| Progress Deliv Sheet Milestone # | 29 | (New Code Value) |
| Progress Deliv Sheet Milestone # | 30 | (New Code Value) |
| Progress Deliv Sheet Milestone # | 32 | (New Code Value) |
| Progress Deliv Sheet Milestone # | 35 | (New Code Value) |
| Progress Deliv Sheet Milestone # | 40 | (New Code Value) |
| Progress Deliv Sheet Milestone # | 48 | (New Code Value) |
| Progress Deliv Sheet Milestone # | 49 | (New Code Value) |
| Progress Deliv Sheet Milestone # | 50 | (New Code Value) |
| Progress Deliv Sheet Milestone # | 51 | (New Code Value) |
| Progress Deliv Sheet Milestone # | 54 | (New Code Value) |
| Progress Deliv Sheet Milestone # | 55 | (New Code Value) |
| Progress Deliv Sheet Milestone # | 56 | (New Code Value) |
| Progress Deliv Sheet Milestone # | 9 | (New Code Value) |
| SDA needed | No SDA | SDA no tie |
| SDA needed | SDA Tie | SDA tie |
| activity step | 1 | prep draft rev a |
| activity step | 2 | TO4 team review |
| activity step | 3 | resolve comments |
| activity step | 4 | confirm sda |
| activity step | 5 | issue rev 0 |
